# NIH / Surgery, Radiology and Laboratory Medicine (SRLM) Building - Update 40 - DD - 01_DEC_25

Schedule from Primavera P6, 2015-08-11 to 2029-01-25, data date 2025-12-01, A marks actual dates.
Must finish by 2029-01-25

| ID | WBS | Activity | Type | Duration | Start | Finish | Predecessors | Complete | Planned start | Planned finish | Total float | Free float | Temp Orig Dur | Resp / SRLM | 744 | PHASE | RESP UPD | RESP / Trade | Update Status | Z.RESP | Testing Type | Pick | *NIH Resp Check* |
| --- | --- | --- | --- | --- | --- | --- | --- | --- | --- | --- | --- | --- | --- | --- | --- | --- | --- | --- | --- | --- | --- | --- | --- |
|  | 7 | **House Electrical Room 7-5959** |  |  | 2025-07-08 | 2026-01-02 |  |  |  |  |  |  |  |  |  |  |  |  |  |  |  |  |  |
| P2.7.HE.5959.1000 |  | Framing and Blocking / L7 / South / 5959 |  | 3d | 2025-07-08 A | 2025-07-11 A | P2.L7.S.1090 | 100% | 2025-08-01 | 2025-08-05 |  |  | 24 | GYP | ND | P2-5 | ND | GYP-1 |  |  |  |  |  |
| P2.7.HE.5959.1010 |  | In Wall Rough In / L7 / South / 5959 |  | 2d | 2025-07-15 A | 2025-07-18 A | P2.7.HE.5959.1000 | 100% | 2025-08-06 | 2025-08-07 |  |  | 16 | R/I.IW | ND | P2-5 | ND | R/I.IW |  |  |  |  |  |
| P2.7.HE.5959.1020 |  | Inspections - Wall Close In / L7 / South / 5959 |  | 2d | 2025-07-19 A | 2025-07-19 A | P2.7.HE.5959.1010 | 100% | 2025-08-08 | 2025-08-11 |  |  | 16 | AHJ | ND | P2-5 | ND | AHJ |  |  |  |  |  |
| P2.7.HE.5959.1030 |  | Hang-Tape-Finish / L7 / South / 5959 |  | 5d | 2025-07-22 A | 2025-07-30 A | P2.7.HE.5959.1020, P2.FAC.2.Z1.180, P2.L11.5-9.140 | 100% | 2025-08-15 | 2025-08-21 |  |  | 40 | GYP | ND | P2-5 | ND | GYP-1 |  |  |  |  |  |
| P2.7.HE.5959.1040 |  | Paint Prime & 1st Coat / L7 / South / 5959 |  | 2d | 2025-09-02 A | 2025-09-03 A | P2.7.HE.5959.1030 | 100% | 2025-10-03 | 2025-10-06 |  |  | 16 | PAINT | ND | P2-5 | ND | PAINT-1 | O |  |  |  |  |
| P2.7.HE.5959.1050 |  | Cans/Troughs/Backboxes/XFMRs / L7 / South / 5959 |  | 5d | 2025-09-08 A | 2025-09-11 A | P2.7.HE.5959.1040 | 100% | 2025-10-07 | 2025-10-13 |  |  | 40 | ELEC | ND | P2-5 | ND | ELEC-2 | O |  |  |  |  |
| P2.7.HE.5959.1060 |  | Risers and OH Conduit Connections / L7 / South / 5959 |  | 5d | 2025-09-17 A | 2025-09-30 A | P2.7.HE.5959.1050 | 100% | 2025-10-14 | 2025-10-20 |  |  | 40 | ELEC | ND | P2-5 | ND | ELEC-2 | O |  |  |  |  |
| P2.7.HE.5959.1070 |  | Pull Wire - In From Distribution Panels / Out to Branch Circuits / L7 / South / 5959 |  | 5d | 2025-11-03 A | 2025-11-07 A | P2.7.HE.5959.1060 | 100% | 2025-12-01 | 2025-12-05 |  |  | 40 | ELEC | ND | P2-5 | ND | ELEC-2 | O |  |  |  |  |
| P2.7.HE.5959.1080 |  | Panelboards, Interconnect Wiring, and Remaining Room Buildout of All Systems / L7 / South / 5959 |  | 10d | 2025-12-01 | 2025-12-12 | BP1.262.3.100, BP1.262.3.210, P2.7.HE.5959.1060 |  |  |  | 26d | 0d | 80 | ELEC | ND | P2-5 | ND | ELEC-2 | O |  |  |  |  |
| P2.7.HE.5959.1090 |  | Test & Terminate / L7 / South / 5959 |  | 5d | 2025-12-15 | 2025-12-19 | P2.7.HE.5959.1070, P2.7.HE.5959.1080 |  |  |  | 26d | 0d | 40 | ELEC | ND | P2-5 | ND | ELEC-2 | O |  |  |  |  |
| P2.7.HE.5959.1100 |  | Paint - Finish Coat / L7 / South / 5959 |  | 2d | 2025-12-22 | 2025-12-23 | P2.7.HE.5959.1090 |  |  |  | 26d | 0d | 16 | PAINT | ND | P2-5 | ND | PAINT-1 | O |  |  |  |  |
| P2.7.HE.5959.1110 |  | Trim All MEPF Finishes / L7 / South / 5959 |  | 2d | 2025-12-24 | 2025-12-26 | P2.7.HE.5959.1100 |  |  |  | 26d | 0d | 16 | MEP | ND | P2-5 | ND | MEP-2 | O | Harris |  |  |  |
| P2.7.HE.5959.1120 |  | Flooring / L7 / South / 5959 |  | 2d | 2025-12-29 | 2025-12-30 | P2.7.HE.5959.1110 |  |  |  | 26d | 0d | 16 | FLOOR | ND | P2-5 | ND | FLOOR |  |  |  |  |  |
| P2.7.HE.5959.1130 |  | Doors & Hardware / L7 / South / 5959 |  | 2d | 2025-12-31 | 2026-01-02 | P2.7.HE.5959.1120 |  |  |  | 26d | 0d | 16 | DFH | ND | P2-5 | ND | DFH |  |  | AT29 |  |  |
| P2.7.HE.5959.1140 |  | Panels Ready to Energize - Lock Doors and Limit Access / L7 / South / 5959 | milestone | 0d | 2026-01-02 | 2026-01-02 | P2.7.HE.5959.1130 FF, P2.7.HE.5959.1090 |  |  |  | 26d | 0d | 0 | ELEC | ND | P2-5 | ND | ELEC-2 |  |  |  |  |  |
|  | 1 | **FINISHES - Core & Support Spaces / Level 7** |  |  | 2025-12-01 | 2026-12-14 |  |  |  |  |  |  |  |  |  |  |  |  |  |  |  |  |  |
|  | 5 | **Bathrooms - Break Rooms - Locker Rooms / Level 7** |  |  | 2025-12-01 | 2026-09-21 |  |  |  |  |  |  |  |  |  |  |  |  |  |  |  |  |  |
|  | 4 | **Lockers, Toilets, and Showers 7-3910 / 7-3920** |  |  | 2025-12-01 | 2026-09-21 |  |  |  |  |  |  |  |  |  |  |  |  |  |  |  |  |  |
| P2.L7.BR.1010 |  | Countertop Support Framing / L7 / Toilets 39XX |  | 5d | 2025-12-01 | 2025-12-05 | P2.L7.LC.1420 |  |  |  | 132d | 76d | 40 | MISCMTL |  | P2-5 | TA | MISCMTL | O |  | AT50 | ? | T.MISCMTL |
| P2.L7.BR.1000 |  | Plumbing - Set Pipe Carriers / L7 / Toilets 39XX |  | 5d | 2026-03-19 | 2026-03-25 | P2.L6.BR.2000, P2.L7.S.1240, P2.L7.N.1550 |  |  |  | 50d | 0d | 40 | PLMB |  | P2-5 |  | PLMB |  | Harris |  | ? | ! |
| P2.L7.BR.1020 |  | Frame - Chase Walls and Hard Lid Ceilings / L7 / Toilets 39XX |  | 5d | 2026-03-26 | 2026-04-01 | P2.L7.BR.1010, P2.L7.BR.1000 |  |  |  | 56d | 0d | 40 | GYP |  | P2-5 |  | GYP-1 |  |  |  |  | ! |
| P2.L7.BR.1030 |  | Plumbing - Test Pipe @ Chase Walls / L7 / Toilets 39XX |  | 5d | 2026-03-26 | 2026-04-01 | P2.L7.BR.1000 |  |  |  | 66d | 10d | 40 | PLMB |  | P2-5 |  | PLMB |  | Harris |  |  |  |
| P2.L7.BR.1050 |  | Trim Sprinkler Drops _ Hard Lids / L7 / Toilets 39XX |  | 5d | 2026-04-02 | 2026-04-08 | P2.L7.BR.1020 |  |  |  | 56d | 0d | 40 | FP |  | P2-5 |  | FP-1 |  |  |  |  | ! |
| P2.L7.BR.1060 |  | Duct Drops _ Hard Lids / L7 / Toilets 39XX |  | 5d | 2026-04-09 | 2026-04-15 | P2.L7.BR.1050, P2.L7.BR.1020 |  |  |  | 56d | 0d | 40 | HVAC |  | P2-5 |  | HVAC |  | Harris |  |  | T.R/I.IW.MECH.HVAC.SM |
| P2.L7.BR.1080 |  | In Wall - Insulate Plumbing / L7 / Toilets 39XX |  | 5d | 2026-04-16 | 2026-04-22 | P2.L7.BR.1060, P2.L7.BR.1030 |  |  |  | 56d | 0d | 40 | INSUL |  | P2-5 |  | INSUL-3 |  | Harris |  |  |  |
| P2.L7.BR.1040 |  | R/I - Electrical _ Hard Lids / L7 / Toilets 39XX |  | 5d | 2026-04-23 | 2026-04-29 | P2.L7.BR.1020, P2.L7.BR.1080 |  |  |  | 56d | 0d | 40 | ELEC |  | P2-5 |  | ELEC-3 |  |  |  |  | ! |
| P2.L7.BR.1070 |  | R/I - Fire Alarm _ Hard Lids / L7 / Toilets 39XX |  | 5d | 2026-04-30 | 2026-05-06 | P2.L7.BR.1040, P2.L7.BR.1020 |  |  |  | 56d | 0d | 40 | ELEC |  | P2-5 |  | ELEC-3 |  |  |  |  | ! |
| P2.L7.BR.1090 |  | Inspection - Close In - Chase Walls and Hard Lid Ceilings / L7 / Toilets 39XX |  | 5d | 2026-05-07 | 2026-05-13 | P2.L7.BR.1040, P2.L7.BR.1050, P2.L7.BR.1060, P2.L7.BR.1080, P2.L7.BR.1070 |  |  |  | 56d | 0d | 40 | AHJ |  | P2-5 |  | AHJ |  |  |  |  | ! |
| P2.L7.BR.1100 |  | Hang-Tape-Finish _ Chase Walls and Hard Lids Ceilings / L7 / Toilets 39XX |  | 5d | 2026-05-14 | 2026-05-20 | P2.L7.S.1550, P2.L7.BR.1090 |  |  |  | 56d | 0d | 40 | GYP |  | P2-5 |  | GYP-1 |  |  |  |  | ! |
| P2.L7.BR.1110 |  | Paint Prime & 1st Coat _ Walls & Hard Lid Ceilings / L7 / Toilets 39XX |  | 5d | 2026-05-21 | 2026-05-28 | P2.L7.BR.1100 |  |  |  | 56d | 0d | 40 | PAINT |  | P2-5 |  | PAINT-1 |  |  |  |  | ! |
| P2.L7.BR.1140 |  | Ceiling Grid / L7 / Toilets 39XX |  | 5d | 2026-05-29 | 2026-06-04 | P2.L7.BR.1110 |  |  |  | 56d | 0d | 40 | ACT |  | P2-5 |  | ACT |  |  |  |  | ! |
| P2.L7.BR.1170 |  | Trim Sprinkler Drops _ Ceiling Tiles / L7 / Toilets 39XX |  | 5d | 2026-06-05 | 2026-06-11 | P2.L7.BR.1140 |  |  |  | 56d | 0d | 40 | FP |  | P2-5 |  | FP-1 |  |  |  |  | ! |
| P2.L7.BR.1160 |  | Trim - HVAC G/R/D's / L7 / Toilets 39XX |  | 5d | 2026-06-12 | 2026-06-18 | BP1.233.3.410, P2.L7.BR.1140, P2.L7.BR.1170 |  |  |  | 56d | 0d | 40 | HVAC |  | P2-5 |  | HVAC |  | Harris |  |  | ! |
| P2.L7.BR.1130 |  | Pull Wire - Electrical / L7 / Toilets 39XX |  | 5d | 2026-06-19 | 2026-06-25 | P2.L7.BR.1140, P2.L7.BR.1160, P2.L7.BR.1110 |  |  |  | 56d | 0d | 40 | ELEC |  | P2-5 |  | ELEC-2 |  |  |  |  | ! |
| P2.L7.BR.1120 |  | Pull Wire - Fire Alarm / L7 / Toilets 39XX |  | 5d | 2026-06-26 | 2026-07-02 | P2.L7.BR.1140, P2.L7.BR.1130, P2.L7.BR.1110 |  |  |  | 123d | 40d | 40 | ELEC |  | P2-5 |  | ELEC-2 |  |  |  |  | ! |
| P2.L7.BR.1150 |  | Lights - Set & Terminate / L7 / Toilets 39XX |  | 5d | 2026-06-26 | 2026-07-02 | P2.L7.BR.1140, P2.L7.BR.1130 |  |  |  | 56d | 0d | 40 | ELEC |  | P2-5 |  | ELEC-2 |  |  |  |  | ! |
| P2.L7.BR.1180 |  | Inspection - Ceiling Close In - ACT Ceilings / L7 / Toilets 39XX |  | 5d | 2026-07-06 | 2026-07-10 | P2.L7.BR.1160, P2.L7.BR.1150, P2.L7.BR.1170 |  |  |  | 56d | 0d | 40 | AHJ |  | P2-5 |  | AHJ |  |  |  |  |  |
| P2.L7.BR.1190 |  | Ceiling Tiles / L7 / Toilets 39XX |  | 5d | 2026-07-13 | 2026-07-17 | P2.L7.BR.1180 |  |  |  | 56d | 0d | 40 | ACT |  | P2-5 |  | ACT |  |  |  |  | ! |
| P2.L7.BR.1200 |  | Wall Tile / L7 / Toilets 39XX |  | 5d | 2026-07-20 | 2026-07-24 | P2.L7.BR.1190 |  |  |  | 56d | 0d | 40 | TILE |  | P2-5 |  | TILE |  |  |  |  | ! |
| P2.L7.BR.2200 |  | Flooring Prep - Epoxy Floors / L7 / Toilets 39XX |  | 1d | 2026-07-27 | 2026-07-27 | P2.L6.BR.2220, P2.L7.BR.1200 |  |  |  | 56d | 0d | 40 | EPOXYF |  | P2-5 |  | EPOXYF |  |  |  |  | ! |
| P2.L7.BR.2210 |  | Flooring - Epoxy Floors / L7 / Toilets 39XX |  | 4d | 2026-07-28 | 2026-07-31 | P2.L7.BR.2200 |  |  |  | 83d | 0d | 40 | EPOXYF |  | P2-5 |  | EPOXYF |  |  |  |  | ! |
| P2.L7.BR.1210 |  | Paint - Finish Coat / L7 / Toilets 39XX |  | 5d | 2026-08-03 | 2026-08-07 | P2.L7.BR.2210 |  |  |  | 83d | 0d | 40 | PAINT |  | P2-5 |  | PAINT-1 |  |  |  |  | ! |
| P2.L7.BR.1220 |  | Countertops / L7 / Toilets 39XX |  | 5d | 2026-08-10 | 2026-08-14 | P2.L7.BR.1210 |  |  |  | 83d | 0d | 40 | MILL |  | P2-5 |  | MILL |  |  |  |  | ! |
| P2.L7.BR.1260 |  | Lockers & Benches / L7 / Toilets 39XX |  | 5d | 2026-08-17 | 2026-08-21 | P2.L7.BR.1220, P2.L7.BR.1210 |  |  |  | 83d | 0d | 40 | SPECIAL |  | P2-5 |  | SPECIAL |  |  |  |  | ! |
| P2.L7.BR.1270 |  | Plumbing Fixtures / Sinks / Showers / L7 / Toilets 39XX |  | 5d | 2026-08-17 | 2026-08-21 | P2.L7.BR.1220 |  |  |  | 110d | 0d | 40 | PLMB |  | P2-5 |  | PLMB |  | Harris |  |  | ! |
| P2.L7.BR.1240 |  | Trim - Electrical Devices / L7 / Toilets 39XX |  | 5d | 2026-08-24 | 2026-08-28 | P2.L7.BR.1260, P2.L7.BR.1210 |  |  |  | 83d | 0d | 40 | ELEC |  | P2-5 |  | ELEC-2 |  |  |  |  | ! |
| P2.L7.BR.1280 |  | Toilet Partitions / L7 / Toilets 39XX |  | 5d | 2026-08-24 | 2026-08-28 | P2.L7.BR.1270 |  |  |  | 110d | 0d | 40 | SPECIAL |  | P2-5 |  | SPECIAL |  |  |  |  | ! |
| P2.L7.BR.1230 |  | Trim - Fire Alarm Devices / L7 / Toilets 39XX |  | 5d | 2026-08-31 | 2026-09-04 | P2.L7.BR.1240, P2.L7.BR.1210, P2.L7.BR.1120 |  |  |  | 83d | 0d | 40 | FA |  | P2-5 |  | FA-1 |  |  |  |  | ! |
| P2.L7.BR.1290 |  | Bathroom Accessories / L7 / Toilets 39XX |  | 5d | 2026-08-31 | 2026-09-04 | P2.L7.BR.1270, P2.L7.BR.1280 |  |  |  | 110d | 5d | 40 | SPECIAL |  | P2-5 |  | SPECIAL |  |  |  |  | ! |
| P2.L7.BR.1250 |  | Doors & Hardware / L7 / Toilets 39XX |  | 5d | 2026-09-08 | 2026-09-14 | P2.L7.BR.1230, P2.L7.BR.1210 |  |  |  | 83d | 0d | 40 | DFH |  | P2-5 |  | DFH |  |  | AT29 |  | ! |
| P2.L7.BR.1300 |  | Work Completion List - Finishes / L7 / Toilets 39XX |  | 5d | 2026-09-15 | 2026-09-21 | P2.L7.BR.1260, P2.L7.BR.1250, P2.L7.BR.1280, P2.L7.BR.1290, P2.L7.BR.1230, P2.L7.BR.1240 |  |  |  | 105d | 68d | 40 | T |  | P2-5 |  | T |  |  |  | To Punch |  |

| ID | WBS | Activity | Duration | Start | Finish | Predecessors | Total float | Free float | Pick | Temp Orig Dur | *NIH Resp Check* | Resp / SRLM | PHASE | Z.RESP | RESP / Trade | Testing Type | RESP UPD |
| --- | --- | --- | --- | --- | --- | --- | --- | --- | --- | --- | --- | --- | --- | --- | --- | --- | --- |
|  | 1 | **Toilets 7-2805 & 7-2807** |  | 2026-03-26 | 2026-08-14 |  |  |  |  |  |  |  |  |  |  |  |  |
| P2.L7.BR.2000 |  | Plumbing - Set Pipe Carriers / L7 / Toilets 280X | 3d | 2026-03-26 | 2026-03-30 | P2.L7.BR.1000 | 50d | 0d | ? | 24 | ! | PLMB | P2-5 | Harris | PLMB |  |  |
| P2.L7.BR.2010 |  | Framing & Blocking - Walls and Hard Lid Ceilings / L7 / Toilets 280X | 2d | 2026-03-31 | 2026-04-01 | P2.L7.BR.2000 | 97d | 0d |  | 16 | ! | GYP | P2-5 |  | GYP-1 |  |  |
| P2.L7.BR.2020 |  | Plumbing - Test Pipe / L7 / Toilets 280X | 2d | 2026-03-31 | 2026-04-01 | P2.L7.BR.2000 | 101d | 4d |  | 16 |  | PLMB | P2-5 | Harris | PLMB |  |  |
| P2.L7.BR.2040 |  | Trim Sprinkler Drops _ Hard Lids / L7 / Toilets 280X | 2d | 2026-04-02 | 2026-04-03 | P2.L7.BR.2010 | 97d | 0d |  | 16 | ! | FP | P2-5 |  | FP-1 |  |  |
| P2.L7.BR.2050 |  | Duct Drops _ Hard Lids / L7 / Toilets 280X | 2d | 2026-04-06 | 2026-04-07 | P2.L7.BR.2010, P2.L7.BR.2040 | 97d | 0d |  | 16 | T.R/I.IW.MECH.HVAC.SM | HVAC | P2-5 | Harris | HVAC |  |  |
| P2.L7.BR.2070 |  | In Wall - Insulate Plumbing / L7 / Toilets 280X | 2d | 2026-04-08 | 2026-04-09 | P2.L7.BR.2020, P2.L7.BR.2050 | 97d | 0d |  | 16 |  | INSUL | P2-5 | Harris | INSUL-3 |  |  |
| P2.L7.BR.2030 |  | R/I - Electrical _ Hard Lids / L7 / Toilets 280X | 5d | 2026-04-10 | 2026-04-16 | P2.L7.BR.2010, P2.L7.BR.2070 | 97d | 0d |  | 16 | ! | ELEC | P2-5 |  | ELEC-3 |  |  |
| P2.L7.BR.2060 |  | R/I - Fire Alarm _ Hard Lids / L7 / Toilets 280X | 5d | 2026-04-17 | 2026-04-23 | P2.L7.BR.2010, P2.L7.BR.2030 | 97d | 0d |  | 16 | ! | ELEC | P2-5 |  | ELEC-3 |  |  |
| P2.L7.BR.2080 |  | Inspection - Close In - Walls and Hard Lid Ceilings / L7 / Toilets 280X | 3d | 2026-04-24 | 2026-04-28 | P2.L7.BR.2060, P2.L7.BR.2070, P2.L7.BR.2030, P2.L7.BR.2040, P2.L7.BR.2050 | 97d | 0d |  | 24 | ! | AHJ | P2-5 |  | AHJ |  |  |
| P2.L7.BR.2090 |  | Hang-Tape-Finish _ Walls and Hard Lids Ceilings / L7 / Toilets 280X | 5d | 2026-04-29 | 2026-05-05 | P2.L7.BR.2080 | 97d | 0d |  | 40 | ! | GYP | P2-5 |  | GYP-1 |  |  |
| P2.L7.BR.2100 |  | Paint Prime & Final Coat _ Walls & Hard Lid Ceilings / L7 / Toilets 280X | 2d | 2026-05-06 | 2026-05-07 | P2.L7.BR.2090 | 97d | 0d |  | 16 | ! | PAINT | P2-5 |  | PAINT-1 |  |  |
| P2.L7.BR.2140 |  | Trim - HVAC G/R/D's / L7 / Toilets 280X | 2d | 2026-05-08 | 2026-05-11 | BP1.233.3.410, P2.L7.BR.2100 | 97d | 0d |  | 16 | ! | HVAC | P2-5 | Harris | HVAC |  |  |
| P2.L7.BR.2120 |  | Pull Wire & Trim Devices - Electrical / L7 / Toilets 280X | 2d | 2026-05-12 | 2026-05-13 | P2.L7.BR.2140, P2.L7.BR.2100 | 97d | 0d |  | 16 | ! | ELEC | P2-5 |  | ELEC-2 |  |  |
| P2.L7.BR.2130 |  | Lights - Set & Terminate / L7 / Toilets 280X | 2d | 2026-05-12 | 2026-05-13 | P2.L7.BR.2120 SS | 102d | 5d |  | 16 | ! | ELEC | P2-5 |  | ELEC-2 |  |  |
| P2.L7.BR.2110 |  | Pull Wire & Trim Devices - Fire Alarm / L7 / Toilets 280X | 5d | 2026-05-14 | 2026-05-20 | P2.L7.BR.2120, P2.L7.BR.2100 | 97d | 0d |  | 16 | ! | ELEC | P2-5 |  | ELEC-2 |  |  |
| P2.L7.BR.2150 |  | Wall Tile / L7 / Toilets 280X | 5d | 2026-05-21 | 2026-05-28 | P2.L7.BR.2130, P2.L7.BR.2140, P2.L7.BR.2110 | 97d | 41d |  | 40 | ! | TILE | P2-5 |  | TILE |  |  |
| P2.L7.BR.2220 |  | Flooring Prep - Epoxy Floors / L7 / Toilets 280X | 1d | 2026-07-28 | 2026-07-28 | P2.L7.BR.2150, P2.L7.BR.2200 | 56d | 0d |  | 40 | ! | EPOXYF | P2-5 |  | EPOXYF |  |  |
| P2.L7.BR.2230 |  | Flooring - Epoxy Floors / L7 / Toilets 280X | 2d | 2026-07-29 | 2026-07-30 | P2.L7.BR.2220 | 112d | 0d |  | 40 | ! | EPOXYF | P2-5 |  | EPOXYF |  |  |
| P2.L7.BR.2160 |  | Doors & Hardware / L7 / Toilets 280X | 2d | 2026-07-31 | 2026-08-03 | P2.L7.BR.2230 | 112d | 0d |  | 16 | ! | DFH | P2-5 |  | DFH | AT29 |  |
| P2.L7.BR.2170 |  | Plumbing Fixtures / Sinks / Showers / L7 / Toilets 280X | 2d | 2026-08-04 | 2026-08-05 | P2.L7.BR.2230, P2.L7.BR.2160 | 130d | 0d |  | 16 | ! | PLMB | P2-5 | Harris | PLMB |  |  |
| P2.L7.BR.2180 |  | Bathroom Accessories / L7 / Toilets 280X | 2d | 2026-08-06 | 2026-08-07 | P2.L7.BR.2170 | 130d | 0d |  | 16 | ! | SPECIAL | P2-5 |  | SPECIAL |  |  |
| P2.L7.BR.2190 |  | Work Completion List - Finishes / L7 / Toilets 280X | 5d | 2026-08-10 | 2026-08-14 | P2.L7.BR.2180, P2.L7.BR.2160, P2.L7.BR.2110 | 130d | 93d | To Punch | 40 |  | AHJ | P2-5 |  | AHJ |  |  |
|  | 1 | **Corridors & Lobbies / Level 7** |  | 2026-03-12 | 2026-12-14 |  |  |  |  |  |  |  |  |  |  |  |  |
| P2.L7.CL.1000 |  | Paint Prime & 1st Coat Walls / L7 / Corr & Lobbies | 5d | 2026-03-12 | 2026-03-18 | P2.L7.S.1490 | 67d | 0d |  | 40 |  | PAINT | P2-5 |  | PAINT-1 |  | TA |
| P2.L7.CL.1010 |  | Framing - Hard Lid Ceilings / L7 / Corr & Lobbies | 10d | 2026-03-19 | 2026-04-01 | P2.L7.CL.1000 | 67d | 0d |  | 80 |  | GYP | P2-5 |  | GYP-1 |  | TA |
| P2.L7.CL.1020 |  | T-Grid / L7 / Corr & Lobbies | 10d | 2026-03-19 | 2026-04-01 | P2.L7.CL.1000 | 67d | 0d |  | 80 |  | ACT | P2-5 |  | ACT |  | TA |
| P2.L7.CL.1040 |  | R/I - Trim Sprinkler Heads- All Ceilings / L7 / Corr & Lobbies | 5d | 2026-03-30 | 2026-04-03 | P2.L7.CL.1010 FF+2d, P2.L7.CL.1020 FF+2d | 67d | 0d |  | 40 |  | FP | P2-5 |  | FP-1 |  |  |
| P2.L7.CL.1070 |  | Trim - Sprinkler Heads @ T-Grid / L7 / Corr & Lobbies | 5d | 2026-03-30 | 2026-04-03 | P2.L7.CL.1020 FF+2d | 160d | 40d |  | 40 |  | FP | P2-5 |  | FP-1 |  |  |
| P2.L7.CL.1050 |  | R/I - HVAC- All Ceilings / L7 / Corr & Lobbies | 5d | 2026-04-06 | 2026-04-10 | P2.L7.CL.1010 FF+2d, P2.L7.CL.1020 FF+2d, P2.L7.CL.1040 | 67d | 0d |  | 40 |  | HVAC | P2-5 | Harris | HVAC |  |  |
| P2.L7.CL.1030 |  | R/I - Electrical - All Ceilings / L7 / Corr & Lobbies | 15d | 2026-04-13 | 2026-05-01 | P2.L7.CL.1010 FF+2d, P2.L7.CL.1020 FF+2d, P2.L7.CL.1050 | 67d | 0d |  | 40 |  | ELEC | P2-5 |  | ELEC-2 |  |  |
| P2.L7.CL.1060 |  | R/I - All Remaining Low Voltage - All Ceilings / L7 / Corr & Lobbies | 5d | 2026-05-04 | 2026-05-08 | P2.L7.CL.1010 FF+2d, P2.L7.CL.1020 FF+2d, P2.L7.CL.1030 | 67d | 0d |  | 40 |  | LOWVOLT | P2-5 |  | LOWVOLT-1 |  |  |
| P2.L7.CL.1100 |  | Pull Wire - Electrical / L7 / Corr & Lobbies | 10d | 2026-05-04 | 2026-05-15 | P2.L7.CL.1030 | 97d | 0d |  | 40 |  | ELEC | P2-5 |  | ELEC-2 |  |  |
| P2.L7.CL.1080 |  | R/I - Fire Alarm/Life Safety - All Ceilings / L7 / Corr & Lobbies | 5d | 2026-05-11 | 2026-05-15 | P2.L7.CL.1010 FF+2d, P2.L7.CL.1060 | 67d | 0d |  | 40 |  | FA | P2-5 |  | FA-1 |  |  |
| P2.L7.CL.1090 |  | Inspections - Close In- All Ceilings / L7 / Corr & Lobbies | 5d | 2026-05-18 | 2026-05-22 | P2.L7.CL.1080, P2.L7.CL.1030, P2.L7.CL.1040, P2.L7.CL.1050, P2.L7.CL.1060 | 67d | 0d |  | 40 |  | AHJ | P2-5 |  | AHJ |  |  |
| P2.L7.CL.1110 |  | Pull Wire - Fire Alarm / L7 / Corr & Lobbies | 5d | 2026-05-18 | 2026-05-22 | P2.L7.CL.1080, P2.L7.CL.1100 | 102d | 0d |  | 40 |  | FA | P2-5 |  | FA-1 |  |  |
| P2.L7.CL.1120 |  | Pull Wire - All Remianing Low Voltage Systems / L7 / Corr & Lobbies | 5d | 2026-05-26 | 2026-06-01 | P2.L7.CL.1110, P2.L7.CL.1060 | 107d | 0d |  | 40 |  | LOWVOLT | P2-5 |  | LOWVOLT-1 |  |  |
| P2.L7.CL.1130 |  | Hang/Tape/Finish- Hard Lid Ceilings / L7 / Corr & Lobbies | 10d | 2026-05-26 | 2026-06-08 | P2.L7.CL.1090 | 67d | 0d |  | 80 |  | GYP | P2-5 |  | GYP-1 |  |  |
| P2.L7.CL.1140 |  | Drop Ceiling Tiles @ T-Grid / L7 / Corr & Lobbies | 5d | 2026-06-02 | 2026-06-08 | P2.L7.CL.1110, P2.L7.CL.1120, P2.L7.CL.1070, P2.L7.CL.1100 | 120d | 83d |  | 40 |  | ACT | P2-5 |  | ACT |  |  |
| P2.L7.CL.1190 |  | Paint - Hard Lid Ceilings / L7 / Corr & Lobbies | 5d | 2026-06-09 | 2026-06-15 | P2.L7.CL.1130 | 67d | 0d |  | 40 |  | PAINT | P2-5 |  | PAINT-1 |  |  |
| P2.L7.CL.1180 |  | Ceiling Mounted - HVAC GRD's / L7 / Corr & Lobbies | 15d | 2026-06-16 | 2026-07-07 | P2.L7.CL.1190, P2.L7.CL.1020 | 67d | 0d |  | 120 |  | HVAC | P2-5 | Harris | HVAC |  |  |
| P2.L7.CL.1150 |  | Ceiling Mounted - Electrical Devices and Lights / L7 / Corr & Lobbies | 20d | 2026-06-30 | 2026-07-28 | P2.L7.CL.1180 SS+10d, P2.L7.CL.1190, P2.L7.CL.1100 | 67d | 0d |  | 120 |  | ELEC | P2-5 |  | ELEC-2 |  |  |
| P2.L7.CL.1160 |  | Ceiling Mounted - Fire Alarm/Life Saftey Devices / L7 / Corr & Lobbies | 15d | 2026-07-15 | 2026-08-04 | P2.L7.CL.1150 SS+10d, P2.L7.CL.1190, P2.L7.CL.1110, P2.L7.CL.1020 | 67d | 0d |  | 120 |  | FA | P2-5 |  | FA-1 |  |  |
| P2.L7.CL.1170 |  | Ceiling Mounted - All Low Voltage Devices / L7 / Corr & Lobbies | 15d | 2026-07-29 | 2026-08-18 | P2.L7.CL.1160 SS+10d, P2.L7.CL.1190, P2.L7.CL.1120 | 67d | 30d |  | 120 |  | LOWVOLT | P2-5 |  | LOWVOLT-1 |  |  |
| P2.L7.CL.1320 |  | Prep Flooring / L7 / Corr & Lobbies | 2d | 2026-10-01 | 2026-10-02 | P2.L7.CL.1140 SS+2d, P2.L6.CL.1200, P2.L7.CL.1170, P2.L7.CL.1180, P2.L7.CL.1150, P2.L7.CL.1160 | 37d | 0d |  | 80 |  | FLOOR | P2-5 |  | FLOOR |  |  |
| P2.L7.CL.1200 |  | Flooring / L7 / Corr & Lobbies | 8d | 2026-10-05 | 2026-10-14 | P2.L7.CL.1320 | 37d | 0d |  | 80 |  | FLOOR | P2-5 |  | FLOOR |  |  |
| P2.L7.CL.1210 |  | Final Paint / L7 / Corr & Lobbies | 5d | 2026-10-12 | 2026-10-16 | P2.L7.CL.1200 FF+2d, P2.L7.CL.1140, BP7.097.3.100 | 47d | 0d |  | 40 |  | PAINT | P2-5 |  | PAINT-1 |  |  |
| P2.L7.CL.1220 |  | Floor Base / L7 / Corr & Lobbies | 5d | 2026-10-19 | 2026-10-23 | P2.L7.CL.1210 | 67d | 20d |  | 40 |  | FLOOR | P2-5 |  | FLOOR |  |  |
| P2.L7.CL.1250 |  | Trim - HVAC - Wall Mounted Devices / L7 / Corr & Lobbies | 5d | 2026-10-19 | 2026-10-23 | P2.L7.CL.1210 | 47d | 0d |  | 40 |  | BAS | P2-5 | Harris | BAS-1 |  |  |
| P2.L7.CL.1230 |  | Trim - All Electrical - Wall Mounted Devices / L7 / Corr & Lobbies | 5d | 2026-10-26 | 2026-10-30 | P2.L7.CL.1250, P2.L7.CL.1210 | 47d | 0d |  | 40 |  | ELEC | P2-5 |  | ELEC-2 |  |  |
| P2.L7.CL.1240 |  | Trim - Fire Alarm - Wall Mounted Devices / L7 / Corr & Lobbies | 5d | 2026-11-02 | 2026-11-06 | P2.L7.CL.1230, P2.L7.CL.1210 | 47d | 0d |  | 40 |  | FA | P2-5 |  | FA-1 |  |  |
| P2.L7.CL.1260 |  | Trim - All Remining Low Voltage Systems - Wall Mounted Devices / L7 / Corr & Lobbies | 5d | 2026-11-09 | 2026-11-13 | P2.L7.CL.1240, P2.L7.CL.1210 | 47d | 0d |  | 40 |  | LOWVOLT | P2-5 |  | LOWVOLT-1 |  |  |
| P2.L7.CL.1270 |  | Building Signage / L7 / Corr & Lobbies | 5d | 2026-11-16 | 2026-11-20 | P2.L7.CL.1260, P2.L7.CL.1210 | 47d | 0d |  | 40 |  | SIGN | P2-5 |  | SIGN |  |  |
| P2.L7.CL.1280 |  | Work Completion List / L7 / Corr & Lobbies | 5d | 2026-11-23 | 2026-12-01 | P2.L7.CL.1270, P2.L7.CL.1250, P2.L7.CL.1260, P2.L7.CL.1220, P2.L7.CL.1230, P2.L7.CL.1240 | 47d | 0d |  | 40 |  | T | P2-5 |  | T |  |  |
| P2.L7.CL.1290 |  | Rough Clean / L7 / Corr & Lobbies | 2d | 2026-12-02 | 2026-12-03 | P2.L7.CL.1280 | 47d | 0d |  | 16 |  | FCLEAN | P2-5 |  | FCLEAN |  |  |
| P2.L7.CL.1300 |  | Punchlist / L7 / Corr & Lobbies | 5d | 2026-12-04 | 2026-12-10 | P2.L7.CL.1290 | 47d | 0d |  | 40 |  | AHJ | P2-5 |  | AHJ |  |  |
| P2.L7.CL.1310 |  | Final Clean / L7 / Corr & Lobbies | 2d | 2026-12-11 | 2026-12-14 | P2.L7.CL.1300 | 47d | 10d |  | 16 |  | FCLEAN | P2-5 |  | FCLEAN |  |  |

| ID | WBS | Activity | Type | Duration | Start | Finish | Predecessors | Complete | Remaining | Planned start | Planned finish | Total float | Free float | Constraint | Temp Orig Dur | Act ID Temp | Resp / SRLM | 744 | PHASE | Z.RESP | RESP UPD | RESP / Trade | Testing Type | Pick | Update Status | NOTES | **NEAR CRITICAL** |
| --- | --- | --- | --- | --- | --- | --- | --- | --- | --- | --- | --- | --- | --- | --- | --- | --- | --- | --- | --- | --- | --- | --- | --- | --- | --- | --- | --- |
|  | 1 | **LAB & CLINICAL SPACES / LEVEL 7 (Below Interstitials)** |  |  | 2025-06-02 | 2026-12-09 |  |  |  |  |  |  |  |  |  |  |  |  |  |  |  |  |  |  |  |  |  |
|  | 2 | **ROUGH IN - Lab & Clinical Spaces (Below Interstitials) / Level 7** |  |  | 2025-06-02 | 2026-05-18 |  |  |  |  |  |  |  |  |  |  |  |  |  |  |  |  |  |  |  |  |  |
| P2.L7.LC.1000 |  | Layout - All Trades / L7 / Lab & Clinical |  | 5d | 2025-06-02 A | 2025-06-25 A | P2.8.I.05.110 | 100% |  | 2025-07-01 | 2025-07-08 |  |  |  | 40 | P2.B2.01.010 | R/I.OH | TA | P2-5 | Harris | TA | R/I.OH |  |  |  |  |  |
| P2.L7.LC.1030 |  | OH - MEPF - Hangers & Supports / L7 / Lab & Clinical |  | 10d | 2025-06-04 A | 2025-06-18 A | P2.BIM.L7.40.140, P2.L7.LC.1000 FF+7d, P2.L7.LC.1000 SS | 100% |  | 2025-07-03 | 2025-07-17 |  |  |  | 80 | P2.B2.20.05.410 | MEP | TA | P2-5 | Harris | TA | MEP-2 |  |  |  |  |  |
| P2.L7.LC.1020 |  | OH - Structural Supports (All Trades) / L7 / Lab & Clinical |  | 5d | 2025-06-09 A | 2025-06-18 A | P2.L7.LC.1000 | 100% |  | 2025-07-09 | 2025-07-15 |  |  |  | 80 | P2.B2.05.45.110 | R/I.OH | TA | P2-5 | Harris | TA | R/I.OH | AT24 |  |  |  |  |
| P2.L7.LC.1080 |  | OH - Fireproof Interstitial Steel Above / L7 / Lab & Clinical |  | 10d | 2025-06-09 A | 2025-06-13 A | P2.8.I.03.320, P2.L7.LC.1020, P2.L7.LC.1030 | 100% |  | 2025-07-18 | 2025-07-31 |  |  |  | 80 | P2.1.09.81.140X10 | SPRAY | TA | P2-5 |  | TA | SPRAY | AT49 |  |  |  |  |
| P2.L7.LC.1010 |  | Framing - Top Track / L7 / Lab & Clinical |  | 10d | 2025-06-18 A | 2025-07-29 A | P2.L7.N.1010, P2.L7.LC.1000 | 100% |  | 2025-07-18 | 2025-07-31 |  |  |  | 80 | P2.B2.09.21.110 | GYP | TA | P2-5 |  | TA | GYP-1 |  |  |  |  |  |
| P2.L7.LC.1170 |  | OH - Fire Suppression / L7 / Lab & Clinical |  | 10d | 2025-06-23 A | 2025-07-31 A | P2.L7.LC.1080 | 100% |  | 2025-09-22 | 2025-10-03 |  |  |  | 80 | P2.B2.21.13.210 | FP | TA | P2-5 |  | TA | FP-1 |  | 1 |  |  |  |
| P2.L7.LC.1160 |  | Spray/Seal/Firestop - Head of Wall - Priority Walls / L7 / Lab & Clinical |  | 5d | 2025-07-18 A | 2025-07-29 A | P2.L7.LC.1140 | 100% |  | 2025-09-18 | 2025-09-24 |  |  |  | 80 | P2.B2.07.84.410 | FIRESTO | ND | P2-5 |  | ND | FIRESTO | AT47 |  |  |  |  |
| P2.L7.LC.1090 |  | Framing - Priority Walls & Door Frames / L7 / Lab & Clinical |  | 10d | 2025-07-28 A | 2025-08-13 A | P2.L7.N.1090, P2.L7.LC.1010, P2.L7.LC.1080 | 100% |  | 2025-08-13 | 2025-08-26 |  |  |  | 80 | P2.B2.09.21.310 | GYP | ND | P2-5 |  | ND | GYP-1 |  |  |  |  |  |
| P2.L7.LC.1130 |  | Framing - Priority Walls - AHJ Inspections / L7 / Lab & Clinical |  | 5d | 2025-07-28 A | 2025-08-15 A | P2.L7.LC.1090 | 100% |  | 2025-09-12 | 2025-09-18 |  |  |  | 80 | P2.B2.01.43.010 | FM | ND | P2-5 |  | ND | FM |  |  |  |  |  |
| P2.L7.LC.1140 |  | Hang/Tape/Finish - Priority Walls / L7 / Lab & Clinical |  | 10d | 2025-07-30 A | 2025-08-27 A | P2.L7.N.1140, P2.L7.LC.1130 | 100% |  | 2025-09-19 | 2025-10-02 |  |  |  | 80 | P2.B2.09.21.210 | GYP | ND | P2-5 |  | ND | GYP-1 |  |  |  |  |  |
| P2.L7.LC.1150 |  | Paint Prime & 1st Coat - Priority Walls / L7 / Lab & Clinical |  | 10d | 2025-08-11 A | 2025-08-27 A | P2.L7.LC.1160 SS | 100% |  | 2025-10-03 | 2025-10-16 |  |  |  | 80 | P2.B2.09.91.110 | PAINT | TA | P2-5 |  | TA | PAINT-1 |  |  |  |  |  |
| FRG.P2.L7.LC.1670 |  | HVAC Piping Delivery / L7 / Lab & Clinical - FRAGNET | milestone | 0d | 2025-08-29 A | 2025-08-29 A | P2.L7.LC.1030 FF | 100% |  |  |  |  |  | finish on or after 2025-08-29 | 80 | P2.B2.23.20.410 | Harris Fragnet | TA | P2-5 | Harris | TA | FIT-2 |  | 2 | O | Confirm with Harris delivery 8/29 |  |
| P2.L7.LC.1180 |  | OH - Plumbing Piping (High) / L7 / Lab & Clinical |  | 20d | 2025-09-01 A | 2025-09-25 A | P2.L7.LC.1150, P2.L7.LC.1080 | 100% |  | 2025-10-01 | 2025-10-28 |  |  |  | 80 | P2.B2.22.14.210 | PLMB | TA | P2-5 | Harris | TA | PLMB |  | 1 | O |  |  |
| FRG.P2.L7.LC.1680 |  | HVAC Piping - Staging & Layout / L7 / Lab & Clinical - FRAGNET |  | 5d | 2025-09-02 A | 2025-09-08 A | FRG.P2.L7.LC.1670 | 100% |  | 2025-10-01 | 2025-10-07 |  |  |  | 80 | P2.B2.23.20.410 | Harris Fragnet | TA | P2-5 | Harris | TA | FIT-2 |  | 2 | O |  |  |
| P2.L7.LC.1190 |  | OH - Electrical - 480/277v Distribution / L7 / Lab & Clinical |  | 20d | 2025-09-02 A | 2025-09-29 A | P2.L7.LC.1150, P2.L7.LC.1080 | 100% |  | 2025-10-01 | 2025-10-28 |  |  |  | 80 | P2.B2.26.05.210 | ELEC | TA | P2-5 |  | TA | ELEC-2 |  | 1 | O |  |  |
| FRG.P2.L7.LC1690 |  | HVAC Piping - Hanging Copper Racks / L7 / Lab & Clinical - FRAGNET |  | 20d | 2025-09-09 A | 2025-10-06 A | FRG.P2.L7.LC.1680 | 100% |  | 2025-10-08 | 2025-11-04 |  |  |  | 80 | P2.B2.23.20.410 | Harris Fragnet | TA | P2-5 | Harris | TA | FIT-2 |  | 2 |  |  |  |
| P2.L7.LC.1220 |  | OH - HVAC Piping (High) / L7 / Lab & Clinical |  | 20d | 2025-10-07 A | 2025-11-14 A | P2.L7.LC.1080, FRG.P2.L7.LC1690 | 100% |  | 2025-10-07 | 2025-11-03 |  |  |  | 80 | P2.B2.23.20.410 | FIT | TA | P2-5 | Harris | TA | FIT-2 |  | 2 | O |  |  |
| P2.L7.LC.1570 |  | OH - Plumbing Piping (Low) / L7 / Lab & Clinical |  | 20d | 2025-10-13 A | 2025-12-19 | P2.L7.LC.1180, P2.L7.N.1220 | 25% | 15d | 2025-10-30 | 2025-11-26 | 69d | 0d |  | 80 | P2.B2.22.14.210 | PLMB | TA | P2-5 | Harris | TA | PLMB |  | 1 | O |  |  |
| P2.L7.LC.1210 |  | OH - Hang Duct - HP Mains / L7 / Lab & Clinical |  | 20d | 2025-10-20 A | 2025-12-05 | P2.L7.LC.1080, P2.L7.N.1210 SS | 75% | 5d | 2025-10-22 | 2025-11-18 | 44d | 0d |  | 80 | P2.B2.23.30.210 | HVAC | TA | P2-5 | Harris | TA | HVAC |  | 1 | O |  |  |
| P2.L7.LC.1300 |  | OH - Hang Duct - LP Branch (High) / L7 / Lab & Clinical |  | 20d | 2025-10-20 A | 2025-12-12 | P2.L7.LC.1170, P2.L7.LC.1210 SS | 50% | 10d | 2025-10-22 | 2025-11-18 | 44d | 0d |  | 80 | P2.B2.23.30.410 | HVAC | TA | P2-5 | Harris | TA | HVAC |  | 3 | O |  |  |
| P2.L7.LC.1420 |  | Framing - Balance of Framing & Door Frames / L7 / Lab & Clinical |  | 10d | 2025-10-20 A | 2025-10-31 A | P2.L8.N.1420, P2.L8.S.1420 | 100% |  | 2025-11-13 | 2025-11-26 |  |  |  | 80 | A1310 | GYP |  | P2-5 |  |  | GYP-1 |  |  |  |  |  |
| P2.L7.LC.1560 |  | OH - HVAC Piping (Low) / L7 / Lab & Clinical |  | 20d | 2025-10-31 A | 2025-12-05 | P2.L7.LC.1220 | 75% | 5d | 2025-11-04 | 2025-12-03 | 64d | 0d |  | 80 | P2.B2.23.20.410 | FIT | TA | P2-5 | Harris | TA | FIT-2 |  | 2 | O | Per Harris Schedule 12/3/25. |  |
| P2.L7.LC.1230 |  | OH - Electrical - 208/120v Branch / L7 / Lab & Clinical |  | 10d | 2025-11-17 A | 2025-12-12 | P2.L7.LC.1190 |  | 10d | 2025-12-01 | 2025-12-12 | 69d | 0d |  | 80 | P2.B2.26.05.310 | ELEC | TA | P2-5 |  | TA | ELEC-2 |  | 2 | O |  |  |
| P2.L7.LC.1440 |  | In Wall - Electrical - Framing / L7 / Lab & Clinical |  | 10d | 2025-11-17 A | 2025-12-29 | P2.L7.LC.1230, P2.L7.LC.1420 |  | 10d | 2025-12-15 | 2025-12-29 | 69d | 30d |  | 80 | P2.B2.26.05.610 | ELEC |  | P2-5 |  | TA | ELEC-2 |  |  | O |  |  |
| P2.L7.LC.1580 |  | OH - Hang Duct - LP Branch (Low) / L7 / Lab & Clinical |  | 20d | 2025-11-17 A | 2026-01-13 | P2.L7.LC.1300 |  | 20d | 2025-12-15 | 2026-01-13 | 44d | 0d |  | 80 | P2.B2.23.30.410 | HVAC | TA | P2-5 | Harris | TA | HVAC |  | 3 | O |  |  |
| P2.L7.LC.1200 |  | Firestop - Thru Wall - Priority Walls / L7 / Lab & Clinical |  | 5d | 2025-12-01 | 2025-12-05 | P2.L7.LC.1150 |  |  |  |  | 174d | 25d |  | 80 | P2.B2.07.84.110 | FIRESTO | TA | P2-5 |  | TA | FIRESTO | AT48 |  | O |  |  |
| P2.L7.LC.1250 |  | Pull Wire - Electrical - 480/277v Distribution / L7 / Lab & Clinical |  | 10d | 2025-12-01 | 2025-12-12 | P2.L7.LC.1190 |  |  |  |  | 104d |  |  | 80 |  | ELEC | TA | P2-5 |  | TA | ELEC-2 |  | To Trim Devices & Term Panel | O |  |  |
| P2.L7.LC.1260 |  | OH - DALT - HP Mains / L7 / Lab & Clinical |  | 10d | 2025-12-08 | 2025-12-19 | P2.L7.LC.1210 |  |  |  |  | 59d | 0d |  | 80 | P2.B2.23.30.310 | TAB | TA | P2-5 | Harris | TA | TAB-1 |  | 2 | O |  |  |
| P2.L7.LC.1270 |  | OH - HVAC Piping - Test / L7 / Lab & Clinical |  | 15d | 2025-12-08 | 2025-12-29 | P2.L7.LC.1560 |  |  |  |  | 64d | 5d |  | 80 | P2.B2.23.20.510 | FIT | TA | P2-5 | Harris | TA | FIT-2 |  | 3 |  |  |  |
| P2.L7.LC.1240 |  | OH - Plumbing - Test / L7 / Lab & Clinical |  | 10d | 2025-12-22 | 2026-01-06 | P2.L7.LC.1570 |  |  |  |  | 69d | 0d |  | 80 | P2.B2.22.14.310 | PLMB |  | P2-5 | Harris | TA | PLMB |  | 2 |  |  |  |
| P2.L7.LC.1290 |  | OH - Insulate HP Duct / L7 / Lab & Clinical |  | 10d | 2025-12-22 | 2026-01-06 | P2.L7.LC.1260 |  |  |  |  | 59d | 0d |  | 80 | P2.B2.23.07.310 | INSUL | TA | P2-5 | Harris | TA | INSUL-3 |  | 3 |  |  |  |
| P2.L7.LC.1280 |  | OH - Insulate Plumbing / L7 / Lab & Clinical |  | 10d | 2026-01-07 | 2026-01-20 | P2.L7.LC.1240 |  |  |  |  | 69d |  |  | 80 | P2.B2.22.07.510 | INSUL |  | P2-5 | Harris | TA | INSUL-3 |  | 3 |  |  |  |
| P2.L7.LC.1340 |  | OH - Insulate HVAC Pipe / L7 / Lab & Clinical |  | 10d | 2026-01-07 | 2026-01-20 | P2.L7.LC.1270, P2.L7.LC.1290 |  |  |  |  | 59d | 0d |  | 80 | P2.B2.22.07.610 | INSUL | TA | P2-5 | Harris | TA | INSUL-3 |  | 4 |  |  |  |
| P2.L7.LC.1310 |  | OH - Set & Connect Mech Equipment / L7 / Lab & Clinical |  | 10d | 2026-01-14 | 2026-01-27 | P2.L7.LC.1210, P2.L7.LC.1580 |  |  |  |  | 44d | 0d |  | 80 | P2.B2.23.82.110 | HVAC | TA | P2-5 | Harris | TA | HVAC |  | 3 |  |  |  |
| P2.L7.LC.1350 |  | OH - Insulate LP Duct / L7 / Lab & Clinical |  | 10d | 2026-01-14 | 2026-01-27 | P2.L7.LC.1580, P2.L7.LC.1200 |  |  |  |  | 149d | 109d |  | 80 | P2.B2.23.07.410 | INSUL |  | P2-5 | Harris | TA | INSUL-3 |  | 4 |  |  |  |
| P2.L7.LC.1400 |  | OH - Conduit - Low Volt - Security / L7 / Lab & Clinical |  | 10d | 2026-01-21 | 2026-02-03 | P2.L7.LC.1340 |  |  |  |  | 59d |  |  | 80 |  | ELEC | TA | P2-5 |  | TA | ELEC-2 |  | 5 |  |  |  |
| P2.L7.LC.1320 |  | OH - Electrical - Equip Tie In / L7 / Lab & Clinical |  | 10d | 2026-01-28 | 2026-02-10 | P2.L7.LC.1310 |  |  |  |  | 44d | 0d |  | 80 | P2.B2.26.05.410 | ELEC | TA | P2-5 |  | TA | ELEC-2 |  | 4 |  |  |  |
| P2.L7.LC.1330 |  | OH - HVAC Piping - Equip Tie In / L7 / Lab & Clinical |  | 20d | 2026-01-28 | 2026-02-24 | P2.L7.LC.1310, P2.L7.LC.1270 FF+5d, CX.B2.HYDR.1000 |  |  |  |  | 54d |  |  | 80 | P2.B2.23.20.610 | FIT | TA | P2-5 | Harris | TA | FIT-2 |  |  |  |  |  |
| P2.L7.LC.1370 |  | OH - Conduit - Low Volt - BAS/Controls / L7 / Lab & Clinical |  | 10d | 2026-01-28 | 2026-02-10 | P2.L7.LC.1340, P2.L7.LC.1310 |  |  |  |  | 54d |  |  | 80 |  | BAS | TA | P2-5 | Harris | TA | BAS-1 |  | 5 |  |  |  |
| P2.L7.LC.1380 |  | OH - Conduit - Low Volt - Fire Alarm / L7 / Lab & Clinical |  | 10d | 2026-01-28 | 2026-02-10 | P2.L7.LC.1310 |  |  |  |  | 54d |  |  | 80 |  | FA |  | P2-5 |  | TA | FA-1 |  | 5 |  |  |  |
| P2.L7.LC.1390 |  | OH - Conduit - Low Volt - Telecom / L7 / Lab & Clinical |  | 10d | 2026-01-28 | 2026-02-10 | P2.L7.LC.1310 |  |  |  |  | 54d |  |  | 80 |  | ELEC |  | P2-5 |  | TA | ELEC-2 |  | 5 |  |  |  |
| P2.L7.LC.1410 |  | OH - Conduit - Low Volt - Medical Services/Nurse Call (?) / L7 / Lab & Clinical |  | 10d | 2026-01-28 | 2026-02-10 | P2.L7.LC.1310 |  |  |  |  | 54d |  |  | 80 |  | ELEC |  | P2-5 |  | TA | ELEC-2 |  | 5 |  |  |  |
| P2.L7.LC.1360 |  | Pull Wire - Electrical - 208/120v Branch & Equip / L7 / Lab & Clinical |  | 20d | 2026-02-11 | 2026-03-10 | P2.L7.LC.1230, P2.L7.LC.1320, P2.L7.LC.1440 |  |  |  |  | 44d |  |  | 80 |  | ELEC |  | P2-5 |  | TA | ELEC-2 |  | To Trim Devices & Term Panel |  |  |  |
| P2.L7.LC.1430 |  | In Wall - Plumbing - Framing / L7 / Lab & Clinical |  | 10d | 2026-03-24 | 2026-04-06 | P2.L7.LC.1420, PCO.831.1250, PCO.830.1160 |  |  |  |  | 0d |  |  | 80 | P2.B2.22.05.410 | PLMB |  | P2-5 | Harris | TA | PLMB |  |  |  |  | 1 |
| P2.L7.LC.1450 |  | In Wall - Backing/Blocking/Supports / L7 / Lab & Clinical |  | 10d | 2026-03-24 | 2026-04-06 | P2.L7.LC.1420, PCO.831.1250 |  |  |  |  | 0d |  |  | 80 | P2.B2.09.21.510 | R/I.IW |  | P2-5 |  |  | R/I.IW |  |  |  |  | 1 |
| P2.L7.LC.1460 |  | AHJ Inspections - Wall Close In / L7 / Lab & Clinical |  | 5d | 2026-04-07 | 2026-04-13 | P2.L7.LC.1440, P2.L7.LC.1450, P2.L7.LC.1430 |  |  |  |  | 0d |  |  | 40 | P2.B2.01.43.110 | FM |  | P2-5 |  | TA | FM |  |  |  |  | 1 |
| P2.L7.LC.1470 |  | Hang-Tape-Finish - Walls and Hard Lid Ceilings / L7 / Lab & Clinical |  | 10d | 2026-04-14 | 2026-04-27 | P2.SUM.175, BP6.132.3.100, P2.L7.LC.1460, P2.L8.N.1470, P2.L8.S.1470, PCO.831.1250, PCO.830.1160 |  |  |  |  | 0d |  |  | 80 | P2.B2.09.21.710 | GYP |  | P2-5 |  | TA | GYP-1 |  |  |  |  | 1 |
| P2.L7.LC.1480 |  | Spray/Seal/Firestop - Head of Wall / L7 / Lab & Clinical |  | 10d | 2026-04-28 | 2026-05-11 | P2.L7.LC.1470 |  |  |  |  | 0d |  |  | 80 | P2.B2.07.84.310 | FIRSAFE |  | P2-5 |  | TA | FIRSAFE | AT47 | To Finishes - Paint |  |  | 1 |
| P2.L7.LC.1490 |  | Firestop - Thru Wall / L7 / Lab & Clinical |  | 10d | 2026-04-28 | 2026-05-11 | P2.L7.LC.1470, P2.L7.LC.1280 |  |  |  |  | 0d |  |  | 80 | P2.B2.07.84.210 | FIRESTO |  | P2-5 |  |  | FIRESTO | AT48 | To Finishes - Paint |  |  | 1 |
| P2.L7.LC.1500 |  | Pull Wire - Low Volt - BAS/Controls / L7 / Lab & Clinical |  | 10d | 2026-04-28 | 2026-05-11 | P2.L7.LC.1470, P2.L7.LC.1370 |  |  |  |  | 0d |  |  | 80 |  | BAS |  | P2-5 | Harris |  | BAS-1 |  | To Trim Finishes |  |  | 1 |
| P2.L7.LC.1510 |  | Pull Wire - Low Volt - Fire Alarm / L7 / Lab & Clinical |  | 10d | 2026-04-28 | 2026-05-11 | P2.L7.LC.1470, P2.L7.LC.1380 |  |  |  |  | 0d |  |  | 80 |  | FA |  | P2-5 |  |  | FA-1 |  | To Trim Finishes |  |  | 1 |
| P2.L7.LC.1520 |  | Pull Wire - Low Volt - Telecom / L7 / Lab & Clinical |  | 10d | 2026-04-28 | 2026-05-11 | P2.L7.LC.1470, P2.L7.LC.1390 |  |  |  |  | 0d |  |  | 80 |  | CIT |  | P2-5 |  |  | CIT |  | To Trim Finishes |  |  | 1 |
| P2.L7.LC.1530 |  | Pull Wire - Low Volt - Security / L7 / Lab & Clinical |  | 10d | 2026-04-28 | 2026-05-11 | P2.L7.LC.1470, P2.L7.LC.1400 |  |  |  |  | 0d |  |  | 80 |  | LOWVOLT |  | P2-5 |  |  | LOWVOLT-1 |  | To Trim Finishes |  |  | 1 |
| P2.L7.LC.1540 |  | Pull Wire - Low Volt - Medical Services/Nurse Call (?) / L7 / Lab & Clinical |  | 10d | 2026-04-28 | 2026-05-11 | P2.L7.LC.1470, P2.L7.LC.1410 |  |  |  |  | 0d |  |  | 80 |  | LOWVOLT |  | P2-5 |  |  | LOWVOLT-1 |  | To Trim Finishes |  |  | 1 |
| P2.L7.LC.1550 |  | Trades Inspect & Verify R/I Work Completed to Specs / L7 / Lab & Clinical |  | 5d | 2026-05-12 | 2026-05-18 | P2.L7.LC.1330, P2.L7.LC.1490, P2.L7.LC.1480, P2.L7.LC.1250, P2.L7.LC.1540, P2.L7.LC.1360, P2.L7.LC.1500, P2.L7.LC.1510, P2.L7.LC.1520, P2.L7.LC.1530 |  |  |  |  | 0d |  |  | 40 |  | T |  | P2-5 |  | TA | T |  |  |  |  | 1 |

| ID | WBS | Activity | Duration | Start | Finish | Predecessors | Total float | Free float | Temp Orig Dur | Resp / SRLM | PHASE | RESP / Trade | Z.RESP | *NIH Resp Check* | Testing Type |
| --- | --- | --- | --- | --- | --- | --- | --- | --- | --- | --- | --- | --- | --- | --- | --- |
|  | 13 | **FINISHES - Lab & Clinical Spaces (Below Interstitials) / Level 7** |  | 2026-03-31 | 2026-12-09 |  |  |  |  |  |  |  |  |  |  |
|  | 1 | **L7 - F - Freezers / QC Lab / Support Spaces (3,610 sf)** |  | 2026-04-28 | 2026-11-19 |  |  |  |  |  |  |  |  |  |  |
| P2.L7.F.LC.1190 |  | Casework (Before Flooring) / L7 / Freezer, QC | 5d | 2026-04-28 | 2026-05-04 | P2.L7.LC.1470 | 142d | 0d | 120 | LABCASE | P2-5 | LABCASE |  |  |  |
| P2.L7.F.LC.1220 |  | Plumbing Fixtures & Drinking Fountains / L7 / Freezer, QC | 5d | 2026-05-05 | 2026-05-11 | P2.L7.F.LC.1190, PCO.830.1140 | 142d | 80d | 40 | PLMB | P2-5 | PLMB | Harris |  |  |
| P2.L7.F.LC.5090 |  | Equipment / L7 / Freezer, QC | 10d | 2026-05-05 | 2026-05-18 | P2.L7.F.LC.1190 | 157d | 95d | 120 | MEP | P2-5 | MEP-2 |  |  |  |
| P2.L7.F.LC.1000 |  | Paint - Walls / L7 / Freezer, QC | 5d | 2026-05-19 | 2026-05-26 | P2.L7.LC.1550 | 62d | 0d | 40 | PAINT | P2-5 | PAINT-1 |  |  |  |
| P2.L7.F.LC.1010 |  | R/I - Ceiling Assemblies & Supports - Med Equip / L7 / Freezer, QC | 5d | 2026-05-27 | 2026-06-02 | P2.L7.F.LC.1000 | 62d | 0d | 40 | ACT | P2-5 | ACT |  | ! |  |
| P2.L7.F.LC.1210 |  | Wall Protection / L7 / Freezer, QC | 5d | 2026-05-27 | 2026-06-02 | P2.L7.F.LC.1000, BP7.102.3.300 | 122d | 0d | 40 | WALLPRO | P2-5 | WALLPRO |  |  |  |
| P2.L7.F.LC.1400 |  | Fumehood Equipment Install / L7 / Freezer, QC | 2d | 2026-06-02 | 2026-06-03 | P2.L7.F.LC.1190 FF, PCO.831.1230 | 149d | 0d | 120 | LABCASE | P2-5 | LABCASE |  |  |  |
| P2.L7.F.LC.1020 |  | Framing - Hard Lid Ceilings / L7 / Freezer, QC | 5d | 2026-06-03 | 2026-06-09 | P2.L7.F.LC.1010 | 62d | 0d | 40 | GYP | P2-5 | GYP-1 |  | ! |  |
| P2.L7.F.LC.1230 |  | Trim T-Stats / L7 / Freezer, QC | 5d | 2026-06-03 | 2026-06-09 | P2.L7.F.LC.1210 | 122d | 0d | 40 | BAS | P2-5 | BAS-1 | Harris |  |  |
| P2.L7.F.LC.1240 |  | Trim Electrical / L7 / Freezer, QC | 5d | 2026-06-03 | 2026-06-09 | P2.L7.F.LC.1230 SS | 122d | 0d | 40 | ELEC | P2-5 | ELEC-2 |  |  |  |
| P2.L7.F.LC.1250 |  | Trim Telephone/ Data / L7 / Freezer, QC | 5d | 2026-06-03 | 2026-06-09 | P2.L7.F.LC.1240 SS | 122d | 60d | 40 | LOWVOLT | P2-5 | LOWVOLT-1 |  |  |  |
| P2.L7.F.LC.1270 |  | Trim Med Gas / L7 / Freezer, QC | 5d | 2026-06-03 | 2026-06-09 | P2.L7.F.LC.1210 | 122d | 60d | 40 | MECH | P2-5 | MECH-2 | Harris |  |  |
| P2.L7.F.LC.1410 |  | Fumehood Equipment MEP Connection / L7 / Freezer, QC | 2d | 2026-06-04 | 2026-06-05 | P2.L7.F.LC.1400, PCO.831.1230 | 149d | 72d | 120 | LABCASE | P2-5 | LABCASE |  |  |  |
| P2.L7.F.LC.1030 |  | R/I - Lights & Devices - Hard Lids Ceilings / L7 / Freezer, QC | 10d | 2026-06-10 | 2026-06-23 | P2.L7.F.LC.1020 | 62d | 0d | 40 | ELEC | P2-5 | ELEC-2 |  | ! |  |
| P2.L7.F.LC.1040 |  | R/I - Diffusers - Hard Lid Ceilings / L7 / Freezer, QC | 5d | 2026-06-10 | 2026-06-16 | P2.L7.F.LC.1020 | 67d | 5d | 40 | HVAC | P2-5 | HVAC | Harris | ! |  |
| P2.L7.F.LC.1050 |  | R/I - Sprinkler Heads - Hard Lid Ceilings / L7 / Freezer, QC | 5d | 2026-06-10 | 2026-06-16 | P2.L7.F.LC.1020 | 67d | 5d | 40 | FP | P2-5 | FP-1 |  | ! |  |
| P2.L7.F.LC.1060 |  | R/I - Fire Alarm - Hard Lid Ceilings / L7 / Freezer, QC | 5d | 2026-06-10 | 2026-06-16 | P2.L7.F.LC.1020 | 67d | 5d | 40 | FA | P2-5 | FA-1 |  |  |  |
| P2.L7.F.LC.1070 |  | OH Ceiling Inspection & Signoff - Hard Lid Ceilings / L7 / Freezer, QC | 5d | 2026-06-24 | 2026-06-30 | P2.L7.F.LC.1040, P2.L7.F.LC.1050, P2.L7.F.LC.1060, P2.L7.F.LC.1030 | 62d | 0d | 40 | AHJ | P2-5 | AHJ |  | ! |  |
| P2.L7.F.LC.1080 |  | Hang-Tape-Finish _Hard Lid Ceilings / L7 / Freezer, QC | 5d | 2026-07-01 | 2026-07-08 | P2.L7.F.LC.1070 | 62d | 0d | 40 | GYP | P2-5 | GYP-1 |  | ! |  |
| P2.L7.F.LC.1090 |  | Paint Ceilings / L7 / Freezer, QC | 5d | 2026-07-09 | 2026-07-15 | P2.L7.F.LC.1080 | 62d | 0d | 40 | PAINT | P2-5 | PAINT-1 |  |  |  |
| P2.L7.F.LC.1100 |  | Waterproof Ceramic Tile / L7 / Freezer, QC | 5d | 2026-07-16 | 2026-07-22 | P2.L7.F.LC.1090 | 62d | 0d | 40 | TILE | P2-5 | TILE |  |  |  |
| P2.L7.F.LC.1110 |  | Ceramic Tile / L7 / Freezer, QC | 5d | 2026-07-23 | 2026-07-29 | P2.L7.F.LC.1100 | 62d | 0d | 40 | TILE | P2-5 | TILE |  |  |  |
| P2.L7.F.LC.1120 |  | T-Grid / L7 / Freezer, QC | 5d | 2026-07-30 | 2026-08-05 | P2.L7.F.LC.1110 | 62d | 0d | 40 | ACT | P2-5 | ACT |  |  |  |
| P2.L7.F.LC.1130 |  | Diffusers in T-Grid / L7 / Freezer, QC | 5d | 2026-08-06 | 2026-08-12 | P2.L7.F.LC.1120 | 62d | 0d | 40 | HVAC | P2-5 | HVAC | Harris |  |  |
| P2.L7.F.LC.1140 |  | Lights & Devices / L7 / Freezer, QC | 5d | 2026-08-06 | 2026-08-12 | P2.L7.F.LC.1120 | 62d | 0d | 40 | ELEC | P2-5 | ELEC-2 |  |  |  |
| P2.L7.F.LC.1150 |  | Sprinkler Heads / L7 / Freezer, QC | 5d | 2026-08-06 | 2026-08-12 | P2.L7.F.LC.1120 | 62d | 0d | 40 | FP | P2-5 | FP-1 |  |  |  |
| P2.L7.F.LC.1160 |  | Trim Low Voltage / L7 / Freezer, QC | 5d | 2026-08-06 | 2026-08-12 | P2.L7.F.LC.1120 | 62d | 0d | 40 | LOWVOLT | P2-5 | LOWVOLT-1 |  |  |  |
| P2.L7.F.LC.1170 |  | Trim Fire Alarm / L7 / Freezer, QC | 5d | 2026-08-06 | 2026-08-12 | P2.L7.F.LC.1120 | 62d | 0d | 40 | FA | P2-5 | FA-1 |  |  |  |
| P2.L7.F.LC.1180 |  | OH Ceiling Signoff / L7 / Freezer, QC | 10d | 2026-08-13 | 2026-08-26 | P2.L7.F.LC.1130, P2.L7.F.LC.1140, P2.L7.F.LC.1150, P2.L7.F.LC.1170, P2.L7.F.LC.1160 | 62d | 0d | 80 | MEP | P2-5 | MEP | Harris |  |  |
| P2.L7.F.LC.1200 |  | Drop Ceiling Tile / L7 / Freezer, QC | 5d | 2026-08-27 | 2026-09-02 | P2.L7.F.LC.1180 | 62d | 0d | 40 | ACT | P2-5 | ACT |  |  |  |
| P2.L7.F.LC.5060 |  | Floor Prep - Epoxy Floors / L7 / Autoclave 7-3915 | 2d | 2026-08-27 | 2026-08-28 | P2.L7.F.LC.1180 | 87d | 0d | 40 | EPOXYF | P2-5 | EPOXYF |  |  |  |
| P2.L7.F.LC.5070 |  | Flooring - Epoxy Floors / L7 / Autoclave 7-3915 | 1d | 2026-08-31 | 2026-08-31 | P2.L7.F.LC.5060 | 87d | 0d | 40 | EPOXYF | P2-5 | EPOXYF |  |  |  |
| P2.L7.F.LC.1260 |  | Doors & Hardware / L7 / Freezer, QC | 5d | 2026-09-01 | 2026-09-08 | P2.L7.F.LC.5070 | 87d |  | 40 | DFH | P2-5 | DFH |  |  | AT29 |
| P2.L7.F.LC.5080 |  | Casework (After Flooring) / L7 / Freezer, QC | 1d | 2026-09-01 | 2026-09-01 | P2.L7.F.LC.5070 | 88d | 26d | 120 | LABCASE | P2-5 | LABCASE |  |  |  |
| P2.L7.F.LC.1280 |  | Floor Prep / L7 / Freezer, QC | 5d | 2026-09-03 | 2026-09-10 | P2.L7.F.LC.1220, P2.L7.F.LC.1230, P2.L7.F.LC.1240, P2.L7.F.LC.1270, P2.L7.F.LC.1200, P2.L7.F.LC.1250 | 62d | 0d | 40 | FLOOR | P2-5 | FLOOR |  |  |  |
| P2.L7.F.LC.1290 |  | Flooring / L7 / Freezer, QC | 5d | 2026-09-11 | 2026-09-17 | P2.L7.F.LC.1280 | 62d | 0d | 40 | FLOOR | P2-5 | FLOOR |  |  |  |
| P2.L7.F.LC.1300 |  | Building Specialities / L7 / Freezer, QC | 5d | 2026-09-18 | 2026-09-24 | P2.L7.F.LC.1290 | 62d | 0d | 40 | SPECIAL | P2-5 | SPECIAL |  |  |  |
| P2.L7.F.LC.1310 |  | Interior Building Signage / L7 / Freezer, QC | 5d | 2026-09-18 | 2026-09-24 | P2.L7.F.LC.1290 | 62d | 0d | 40 | SIGN | P2-5 | SIGN |  |  |  |
| P2.L7.F.LC.1320 |  | Work Completion List - Finishes / L7 / Freezer, QC | 5d | 2026-09-25 | 2026-10-01 | P2.L7.F.LC.1310, P2.L7.F.LC.1300 | 62d | 0d | 40 | FINISH | P2-5 | FINISH |  |  |  |
| P2.L7.F.LC.1330 |  | Remaining Equipment Post Flooring / L7 / Freezer, QC | 5d | 2026-10-02 | 2026-10-08 | P2.L7.F.LC.1320, P2.L7.F.LC.5090, PCO.831.1230 | 62d | 0d | 40 | EQUIP | P2-5 | EQUIP |  |  |  |
| P2.L7.F.LC.1340 |  | Remaining MEP Hook-Ups / L7 / Freezer, QC | 5d | 2026-10-09 | 2026-10-15 | P2.L7.F.LC.1410, P2.L7.F.LC.1330, P2.L7.F.LC.5080, P2.L7.F.LC.5090 | 62d | 0d | 40 | MEP | P2-5 | MEP | Harris |  |  |
| P2.L7.F.LC.1350 |  | OFOI Furniture & Equipment / L7 / Freezer, QC | 5d | 2026-10-09 | 2026-10-15 | P2.L7.F.LC.1340 SS | 72d | 10d | 40 | FURN | P2-5 | FURN |  |  |  |
| P2.L7.F.LC.1360 |  | Rough Clean / L7 / Freezer, QC | 5d | 2026-10-16 | 2026-10-22 | P2.L7.F.LC.1340 | 62d | 0d | 40 | FCLEAN | P2-5 | FCLEAN |  |  |  |
| P2.L7.F.LC.1370 |  | Prepare Punchlist / L7 / Freezer, QC | 5d | 2026-10-23 | 2026-10-29 | P2.L7.F.LC.1340 SS, P2.L7.F.LC.1360 | 62d | 0d | 40 | QC | P2-5 | QC |  |  |  |
| P2.L7.F.LC.1380 |  | Correct Punchlist / L7 / Freezer, QC | 10d | 2026-10-30 | 2026-11-12 | P2.L7.F.LC.1370, P2.L7.F.LC.1350 | 62d | 0d | 80 | FINISH | P2-5 | FINISH |  |  |  |
| P2.L7.F.LC.1390 |  | Final Clean / L7 / Freezer, QC | 5d | 2026-11-13 | 2026-11-19 | P2.L7.F.LC.1380 | 62d | 25d | 40 | QC | P2-5 | QC |  |  |  |

| ID | WBS | Activity | Duration | Start | Finish | Predecessors | Total float | Free float | Temp Orig Dur | Resp / SRLM | PHASE | RESP / Trade | Z.RESP | *NIH Resp Check* | Testing Type |
| --- | --- | --- | --- | --- | --- | --- | --- | --- | --- | --- | --- | --- | --- | --- | --- |
|  | 2 | **Wet Lab - Z1 (11,243 sf) / Level 7** |  | 2026-04-28 | 2026-11-30 |  |  |  |  |  |  |  |  |  |  |
| P2.L7.F.LC.2190 |  | Casework (Before Flooring) / L7 / Wet Lab Z1 | 15d | 2026-04-28 | 2026-05-18 | P2.L7.LC.1470 | 57d | 0d | 120 | LABCASE | P2-5 | LABCASE |  |  |  |
| P2.L7.F.LC.2220 |  | Plumbing Fixtures & Drinking Fountains / L7 / Wet Lab Z1 | 5d | 2026-05-19 | 2026-05-26 | P2.L7.F.LC.2190, PCO.830.1140 | 132d | 75d | 40 | PLMB | P2-5 | PLMB | Harris |  |  |
| P2.L7.F.LC.5190 |  | Interior Glazing / L7 / Wet Lab Z1 | 5d | 2026-05-19 | 2026-05-26 | P2.L7.F.LC.2190 | 57d | 0d | 40 | GLASS | P2-5 | GLASS |  | TBD |  |
| P2.L7.F.LC.2000 |  | Paint - Walls / L7 / Wet Lab Z1 | 5d | 2026-05-27 | 2026-06-02 | P2.L7.LC.1550, P2.L7.F.LC.5190 | 57d | 0d | 40 | PAINT | P2-5 | PAINT-1 |  |  |  |
| P2.L7.F.LC.2400 |  | Fumehood Equipment Install / L7 / Wet Lab Z1 | 1d | 2026-06-02 | 2026-06-02 | P2.L7.F.LC.2190 FF, PCO.831.1230 | 151d | 0d | 120 | LABCASE | P2-5 | LABCASE |  |  |  |
| P2.L7.F.LC.2010 |  | R/I - Ceiling Assemblies & Supports - Med Equip / L7 / Wet Lab Z1 | 5d | 2026-06-03 | 2026-06-09 | P2.L7.F.LC.2000 | 57d | 0d | 40 | ACT | P2-5 | ACT |  | ! |  |
| P2.L7.F.LC.2210 |  | Wall Protection / L7 / Wet Lab Z1 | 5d | 2026-06-03 | 2026-06-09 | P2.L7.F.LC.2000, BP7.102.3.300 | 117d | 0d | 40 | WALLPRO | P2-5 | WALLPRO |  |  |  |
| P2.L7.F.LC.2410 |  | Fumehood Equipment MEP Connection / L7 / Wet Lab Z1 | 1d | 2026-06-03 | 2026-06-03 | P2.L7.F.LC.2400, PCO.831.1230 | 151d | 74d | 120 | LABCASE | P2-5 | LABCASE |  |  |  |
| P2.L7.F.LC.2020 |  | Framing - Hard Lid Ceilings / L7 / Wet Lab Z1 | 5d | 2026-06-10 | 2026-06-16 | P2.L7.F.LC.2010 | 57d | 0d | 40 | GYP | P2-5 | GYP-1 |  | ! |  |
| P2.L7.F.LC.2230 |  | Trim T-Stats / L7 / Wet Lab Z1 | 5d | 2026-06-10 | 2026-06-16 | P2.L7.F.LC.2210 | 117d | 0d | 40 | BAS | P2-5 | BAS-1 | Harris |  |  |
| P2.L7.F.LC.2240 |  | Trim Electrical / L7 / Wet Lab Z1 | 5d | 2026-06-10 | 2026-06-16 | P2.L7.F.LC.2230 SS | 117d | 0d | 40 | ELEC | P2-5 | ELEC-2 |  |  |  |
| P2.L7.F.LC.2250 |  | Trim Telephone/ Data / L7 / Wet Lab Z1 | 5d | 2026-06-10 | 2026-06-16 | P2.L7.F.LC.2240 SS | 117d | 60d | 40 | LOWVOLT | P2-5 | LOWVOLT-1 |  |  |  |
| P2.L7.F.LC.2270 |  | Trim Med Gas / L7 / Wet Lab Z1 | 5d | 2026-06-10 | 2026-06-16 | P2.L7.F.LC.2210 | 117d | 60d | 40 | MECH | P2-5 | MECH-2 | Harris |  |  |
| P2.L7.F.LC.2030 |  | R/I - Lights & Devices - Hard Lids Ceilings / L7 / Wet Lab Z1 | 10d | 2026-06-17 | 2026-06-30 | P2.L7.F.LC.2020 | 57d | 0d | 40 | ELEC | P2-5 | ELEC-2 |  | ! |  |
| P2.L7.F.LC.2040 |  | R/I - Diffusers - Hard Lid Ceilings / L7 / Wet Lab Z1 | 5d | 2026-06-17 | 2026-06-23 | P2.L7.F.LC.2020 | 62d | 5d | 40 | HVAC | P2-5 | HVAC | Harris | ! |  |
| P2.L7.F.LC.2050 |  | R/I - Sprinkler Heads - Hard Lid Ceilings / L7 / Wet Lab Z1 | 5d | 2026-06-17 | 2026-06-23 | P2.L7.F.LC.2020 | 62d | 5d | 40 | FP | P2-5 | FP-1 |  | ! |  |
| P2.L7.F.LC.2060 |  | R/I - Fire Alarm - Hard Lid Ceilings / L7 / Wet Lab Z1 | 5d | 2026-06-17 | 2026-06-23 | P2.L7.F.LC.2020 | 62d | 5d | 40 | FA | P2-5 | FA-1 |  |  |  |
| P2.L7.F.LC.5120 |  | Equipment / L7 / Wet Lab Z1 | 10d | 2026-06-17 | 2026-06-30 | P2.L7.F.LC.2020 | 107d | 50d | 120 | LABCASE | P2-5 | LABCASE |  |  |  |
| P2.L7.F.LC.2070 |  | OH Ceiling Inspection & Signoff - Hard Lid Ceilings / L7 / Wet Lab Z1 | 5d | 2026-07-01 | 2026-07-08 | P2.L7.F.LC.2060, P2.L7.F.LC.2040, P2.L7.F.LC.2050, P2.L7.F.LC.2030 | 57d | 0d | 40 | AHJ | P2-5 | AHJ |  | ! |  |
| P2.L7.F.LC.2080 |  | Hang-Tape-Finish _Hard Lid Ceilings / L7 / Wet Lab Z1 | 5d | 2026-07-09 | 2026-07-15 | P2.L7.F.LC.2070, PCO.831.1250 | 57d | 0d | 40 | GYP | P2-5 | GYP-1 |  | ! |  |
| P2.L7.F.LC.2090 |  | Paint Ceilings / L7 / Wet Lab Z1 | 5d | 2026-07-16 | 2026-07-22 | P2.L7.F.LC.2080 | 57d | 0d | 40 | PAINT | P2-5 | PAINT-1 |  |  |  |
| P2.L7.F.LC.2100 |  | Waterproof Ceramic Tile / L7 / Wet Lab Z1 | 5d | 2026-07-23 | 2026-07-29 | P2.L7.F.LC.2090 | 57d | 0d | 40 | TILE | P2-5 | TILE |  |  |  |
| P2.L7.F.LC.2110 |  | Ceramic Tile / L7 / Wet Lab Z1 | 5d | 2026-07-30 | 2026-08-05 | P2.L7.F.LC.2100 | 57d | 0d | 40 | TILE | P2-5 | TILE |  |  |  |
| P2.L7.F.LC.2120 |  | T-Grid / L7 / Wet Lab Z1 | 5d | 2026-08-06 | 2026-08-12 | P2.L7.F.LC.2110 | 57d | 0d | 40 | ACT | P2-5 | ACT |  |  |  |
| P2.L7.F.LC.2130 |  | Diffusers in T-Grid / L7 / Wet Lab Z1 | 5d | 2026-08-13 | 2026-08-19 | P2.L7.F.LC.2120 | 57d | 0d | 40 | HVAC | P2-5 | HVAC | Harris |  |  |
| P2.L7.F.LC.2140 |  | Lights & Devices / L7 / Wet Lab Z1 | 5d | 2026-08-13 | 2026-08-19 | P2.L7.F.LC.2120 | 57d | 0d | 40 | ELEC | P2-5 | ELEC-2 |  |  |  |
| P2.L7.F.LC.2150 |  | Sprinkler Heads / L7 / Wet Lab Z1 | 5d | 2026-08-13 | 2026-08-19 | P2.L7.F.LC.2120 | 57d | 0d | 40 | FP | P2-5 | FP-1 |  |  |  |
| P2.L7.F.LC.2160 |  | Trim Low Voltage / L7 / Wet Lab Z1 | 5d | 2026-08-13 | 2026-08-19 | P2.L7.F.LC.2120 | 57d | 0d | 40 | LOWVOLT | P2-5 | LOWVOLT-1 |  |  |  |
| P2.L7.F.LC.2170 |  | Trim Fire Alarm / L7 / Wet Lab Z1 | 5d | 2026-08-13 | 2026-08-19 | P2.L7.F.LC.2120 | 57d | 0d | 40 | FA | P2-5 | FA-1 |  |  |  |
| P2.L7.F.LC.5110 |  | Ceiling Service Panel / L7 / Wet Lab Z1 | 2d | 2026-08-13 | 2026-08-14 | P2.L7.F.LC.2120 | 60d | 3d | 120 | LABCASE | P2-5 | LABCASE |  |  |  |
| P2.L7.F.LC.2180 |  | OH Ceiling Signoff / L7 / Wet Lab Z1 | 10d | 2026-08-20 | 2026-09-02 | P2.L7.F.LC.2160, P2.L7.F.LC.2170, P2.L7.F.LC.2140, P2.L7.F.LC.2150, P2.L7.F.LC.2130, P2.L7.F.LC.5110 | 57d | 0d | 80 | MEP | P2-5 | MEP | Harris |  |  |
| P2.L7.F.LC.2200 |  | Drop Ceiling Tile / L7 / Wet Lab Z1 | 5d | 2026-09-03 | 2026-09-10 | P2.L7.F.LC.2180, P2.L7.F.LC.5110 | 57d | 0d | 40 | ACT | P2-5 | ACT |  |  |  |
| P2.L7.F.LC.2280 |  | Floor Prep / L7 / Wet Lab Z1 | 5d | 2026-09-11 | 2026-09-17 | P2.L7.F.LC.2270, P2.L7.F.LC.2200, P2.L7.F.LC.2230, P2.L7.F.LC.2240, P2.L7.F.LC.2250, P2.L7.F.LC.2220, P2.L7.F.LC.5120 | 57d | 0d | 40 | FLOOR | P2-5 | FLOOR |  |  |  |
| P2.L7.F.LC.2290 |  | Flooring / L7 / Wet Lab Z1 | 5d | 2026-09-18 | 2026-09-24 | P2.L7.F.LC.2280 | 57d | 0d | 40 | FLOOR | P2-5 | FLOOR |  |  |  |
| P2.L7.F.LC.2260 |  | Doors & Hardware / L7 / Wet Lab Z1 | 5d | 2026-09-25 | 2026-10-01 | P2.L7.F.LC.2290 | 70d |  | 40 | DFH | P2-5 | DFH |  |  | AT29 |
| P2.L7.F.LC.2300 |  | Building Specialities / L7 / Wet Lab Z1 | 5d | 2026-09-25 | 2026-10-01 | P2.L7.F.LC.2290 | 57d | 0d | 40 | SPECIAL | P2-5 | SPECIAL |  |  |  |
| P2.L7.F.LC.2310 |  | Interior Building Signage / L7 / Wet Lab Z1 | 5d | 2026-09-25 | 2026-10-01 | P2.L7.F.LC.2290 | 57d | 0d | 40 | SIGN | P2-5 | SIGN |  |  |  |
| P2.L7.F.LC.5100 |  | Casework (After Flooring) / L7 / Wet Lab Z1 | 3d | 2026-09-25 | 2026-09-29 | P2.L7.F.LC.2290 | 64d | 7d | 120 | LABCASE | P2-5 | LABCASE |  |  |  |
| P2.L7.F.LC.2320 |  | Work Completion List - Finishes / L7 / Wet Lab Z1 | 5d | 2026-10-02 | 2026-10-08 | P2.L7.F.LC.2310, P2.L7.F.LC.2300 | 57d | 0d | 40 | FINISH | P2-5 | FINISH |  |  |  |
| P2.L7.F.LC.2330 |  | Remaining Equipment Post Flooring / L7 / Wet Lab Z1 | 5d | 2026-10-09 | 2026-10-15 | P2.L7.F.LC.2320, P2.L7.F.LC.5100, P2.L7.F.LC.5120, PCO.831.1230 | 57d | 0d | 40 | EQUIP | P2-5 | EQUIP |  |  |  |
| P2.L7.F.LC.2340 |  | Remaining MEP Hook-Ups / L7 / Wet Lab Z1 | 5d | 2026-10-16 | 2026-10-22 | P2.L7.F.LC.2330, P2.L7.F.LC.2410 | 57d | 0d | 40 | MEP | P2-5 | MEP | Harris |  |  |
| P2.L7.F.LC.2350 |  | OFOI Furniture & Equipment / L7 / Wet Lab Z1 | 5d | 2026-10-16 | 2026-10-22 | P2.L7.F.LC.2340 SS | 67d | 10d | 40 | FURN | P2-5 | FURN |  |  |  |
| P2.L7.F.LC.2360 |  | Rough Clean / L7 / Wet Lab Z1 | 5d | 2026-10-23 | 2026-10-29 | P2.L7.F.LC.2340 | 57d | 0d | 40 | FCLEAN | P2-5 | FCLEAN |  |  |  |
| P2.L7.F.LC.2370 |  | Prepare Punchlist / L7 / Wet Lab Z1 | 5d | 2026-10-30 | 2026-11-05 | P2.L7.F.LC.2340 SS, P2.L7.F.LC.2360 | 57d | 0d | 40 | QC | P2-5 | QC |  |  |  |
| P2.L7.F.LC.2380 |  | Correct Punchlist / L7 / Wet Lab Z1 | 10d | 2026-11-06 | 2026-11-19 | P2.L7.F.LC.2350, P2.L7.F.LC.2370 | 57d | 0d | 80 | FINISH | P2-5 | FINISH |  |  |  |
| P2.L7.F.LC.2390 |  | Final Clean / L7 / Wet Lab Z1 | 5d | 2026-11-20 | 2026-11-30 | P2.L7.F.LC.2380 | 57d | 20d | 40 | QC | P2-5 | QC |  |  |  |

| ID | WBS | Activity | Duration | Start | Finish | Predecessors | Total float | Free float | Temp Orig Dur | Resp / SRLM | PHASE | RESP / Trade | Z.RESP | *NIH Resp Check* | Testing Type |
| --- | --- | --- | --- | --- | --- | --- | --- | --- | --- | --- | --- | --- | --- | --- | --- |
|  | 3 | **Wet Lab - Z2 (10,831 sf) / Level 7** |  | 2026-04-28 | 2026-12-01 |  |  |  |  |  |  |  |  |  |  |
| P2.L7.F.LC.3190 |  | Casework (Before Flooring) / L7 / Wet Lab Z2 | 13d | 2026-04-28 | 2026-05-14 | P2.L7.LC.1470 | 56d | 0d | 120 | LABCASE | P2-5 | LABCASE |  |  |  |
| P2.L7.F.LC.3220 |  | Plumbing Fixtures & Drinking Fountains / L7 / Wet Lab Z2 | 5d | 2026-05-15 | 2026-05-21 | P2.L7.F.LC.3190, PCO.830.1140 | 134d | 78d | 40 | PLMB | P2-5 | PLMB | Harris |  |  |
| P2.L7.F.LC.5150 |  | Equipment / L7 / Wet Lab Z2 | 10d | 2026-05-15 | 2026-05-29 | P2.L7.F.LC.3190 | 149d | 93d | 120 | LABCASE | P2-5 | LABCASE |  |  |  |
| P2.L7.F.LC.5200 |  | Interior Glazing / L7 / Wet Lab Z2 | 3d | 2026-05-15 | 2026-05-19 | P2.L7.F.LC.3190 | 56d | 0d | 40 | GLASS | P2-5 | GLASS |  | TBD |  |
| P2.L7.F.LC.3000 |  | Paint - Walls / L7 / Wet Lab Z2 | 5d | 2026-05-20 | 2026-05-27 | P2.L7.LC.1550, P2.L7.F.LC.5200 | 56d | 0d | 40 | PAINT | P2-5 | PAINT-1 |  |  |  |
| P2.L7.F.LC.3010 |  | R/I - Ceiling Assemblies & Supports - Med Equip / L7 / Wet Lab Z2 | 5d | 2026-05-28 | 2026-06-03 | P2.L7.F.LC.3000 | 56d | 0d | 40 | ACT | P2-5 | ACT |  | ! |  |
| P2.L7.F.LC.3400 |  | Fumehood Equipment Install / L7 / Wet Lab Z2 | 1d | 2026-06-02 | 2026-06-02 | P2.L7.F.LC.3190 FF, PCO.831.1230 | 156d | 0d | 120 | LABCASE | P2-5 | LABCASE |  |  |  |
| P2.L7.F.LC.3410 |  | Fumehood Equipment MEP Connection / L7 / Wet Lab Z2 | 1d | 2026-06-03 | 2026-06-03 | P2.L7.F.LC.3400, PCO.831.1230 | 156d | 74d | 120 | LABCASE | P2-5 | LABCASE |  |  |  |
| P2.L7.F.LC.3020 |  | Framing - Hard Lid Ceilings / L7 / Wet Lab Z2 | 5d | 2026-06-04 | 2026-06-10 | P2.L7.F.LC.3010 | 56d | 0d | 40 | GYP | P2-5 | GYP-1 |  | ! |  |
| P2.L7.F.LC.3030 |  | R/I - Lights & Devices - Hard Lids Ceilings / L7 / Wet Lab Z2 | 10d | 2026-06-11 | 2026-06-24 | P2.L7.F.LC.3020 | 56d | 0d | 40 | ELEC | P2-5 | ELEC-2 |  | ! |  |
| P2.L7.F.LC.3040 |  | R/I - Diffusers - Hard Lid Ceilings / L7 / Wet Lab Z2 | 5d | 2026-06-11 | 2026-06-17 | P2.L7.F.LC.3020 | 61d | 5d | 40 | HVAC | P2-5 | HVAC | Harris | ! |  |
| P2.L7.F.LC.3050 |  | R/I - Sprinkler Heads - Hard Lid Ceilings / L7 / Wet Lab Z2 | 5d | 2026-06-11 | 2026-06-17 | P2.L7.F.LC.3020 | 61d | 5d | 40 | FP | P2-5 | FP-1 |  | ! |  |
| P2.L7.F.LC.3060 |  | R/I - Fire Alarm - Hard Lid Ceilings / L7 / Wet Lab Z2 | 5d | 2026-06-11 | 2026-06-17 | P2.L7.F.LC.3020 | 61d | 5d | 40 | FA | P2-5 | FA-1 |  |  |  |
| P2.L7.F.LC.3070 |  | OH Ceiling Inspection & Signoff - Hard Lid Ceilings / L7 / Wet Lab Z2 | 5d | 2026-06-25 | 2026-07-01 | P2.L7.F.LC.3050, P2.L7.F.LC.3060, P2.L7.F.LC.3030, P2.L7.F.LC.3040 | 56d | 0d | 40 | AHJ | P2-5 | AHJ |  | ! |  |
| P2.L7.F.LC.3080 |  | Hang-Tape-Finish _Hard Lid Ceilings / L7 / Wet Lab Z2 | 5d | 2026-07-02 | 2026-07-09 | P2.L7.F.LC.3070, PCO.831.1250 | 56d | 0d | 40 | GYP | P2-5 | GYP-1 |  | ! |  |
| P2.L7.F.LC.3090 |  | Paint Ceilings / L7 / Wet Lab Z2 | 5d | 2026-07-10 | 2026-07-16 | P2.L7.F.LC.3080 | 56d | 0d | 40 | PAINT | P2-5 | PAINT-1 |  |  |  |
| P2.L7.F.LC.3100 |  | Waterproof Ceramic Tile / L7 / Wet Lab Z2 | 5d | 2026-07-17 | 2026-07-23 | P2.L7.F.LC.3090 | 56d | 0d | 40 | TILE | P2-5 | TILE |  |  |  |
| P2.L7.F.LC.3110 |  | Ceramic Tile / L7 / Wet Lab Z2 | 5d | 2026-07-24 | 2026-07-30 | P2.L7.F.LC.3100 | 56d | 0d | 40 | TILE | P2-5 | TILE |  |  |  |
| P2.L7.F.LC.3120 |  | T-Grid / L7 / Wet Lab Z2 | 5d | 2026-07-31 | 2026-08-06 | P2.L7.F.LC.3110 | 56d | 0d | 40 | ACT | P2-5 | ACT |  |  |  |
| P2.L7.F.LC.3130 |  | Diffusers in T-Grid / L7 / Wet Lab Z2 | 5d | 2026-08-07 | 2026-08-13 | P2.L7.F.LC.3120 | 56d | 0d | 40 | HVAC | P2-5 | HVAC | Harris |  |  |
| P2.L7.F.LC.3140 |  | Lights & Devices / L7 / Wet Lab Z2 | 5d | 2026-08-07 | 2026-08-13 | P2.L7.F.LC.3120 | 56d | 0d | 40 | ELEC | P2-5 | ELEC-2 |  |  |  |
| P2.L7.F.LC.3150 |  | Sprinkler Heads / L7 / Wet Lab Z2 | 5d | 2026-08-07 | 2026-08-13 | P2.L7.F.LC.3120 | 56d | 0d | 40 | FP | P2-5 | FP-1 |  |  |  |
| P2.L7.F.LC.3160 |  | Trim Low Voltage / L7 / Wet Lab Z2 | 5d | 2026-08-07 | 2026-08-13 | P2.L7.F.LC.3120 | 56d | 0d | 40 | LOWVOLT | P2-5 | LOWVOLT-1 |  |  |  |
| P2.L7.F.LC.3170 |  | Trim Fire Alarm / L7 / Wet Lab Z2 | 5d | 2026-08-07 | 2026-08-13 | P2.L7.F.LC.3120 | 56d | 0d | 40 | FA | P2-5 | FA-1 |  |  |  |
| P2.L7.F.LC.5140 |  | Ceiling Service Panel / L7 / Wet Lab Z2 | 2d | 2026-08-07 | 2026-08-10 | P2.L7.F.LC.3120 | 74d | 13d | 120 | LABCASE | P2-5 | LABCASE |  |  |  |
| P2.L7.F.LC.3180 |  | OH Ceiling Signoff / L7 / Wet Lab Z2 | 10d | 2026-08-14 | 2026-08-27 | P2.L7.F.LC.3160, P2.L7.F.LC.3170, P2.L7.F.LC.3130, P2.L7.F.LC.3140, P2.L7.F.LC.3150 | 56d | 0d | 80 | MEP | P2-5 | MEP | Harris |  |  |
| P2.L7.F.LC.3200 |  | Drop Ceiling Tile / L7 / Wet Lab Z2 | 5d | 2026-08-28 | 2026-09-03 | P2.L7.F.LC.5140, P2.L7.F.LC.3180 | 61d | 5d | 40 | ACT | P2-5 | ACT |  |  |  |
| P2.L7.F.LC.3210 |  | Wall Protection / L7 / Wet Lab Z2 | 5d | 2026-08-28 | 2026-09-03 | P2.L7.F.LC.3180, BP7.102.3.300 | 56d | 0d | 40 | WALLPRO | P2-5 | WALLPRO |  |  |  |
| P2.L7.F.LC.3230 |  | Trim T-Stats / L7 / Wet Lab Z2 | 5d | 2026-09-04 | 2026-09-11 | P2.L7.F.LC.3210 | 56d | 0d | 40 | BAS | P2-5 | BAS-1 | Harris |  |  |
| P2.L7.F.LC.3240 |  | Trim Electrical / L7 / Wet Lab Z2 | 5d | 2026-09-04 | 2026-09-11 | P2.L7.F.LC.3230 SS | 56d | 0d | 40 | ELEC | P2-5 | ELEC-2 |  |  |  |
| P2.L7.F.LC.3250 |  | Trim Telephone/ Data / L7 / Wet Lab Z2 | 5d | 2026-09-04 | 2026-09-11 | P2.L7.F.LC.3240 SS | 56d | 0d | 40 | LOWVOLT | P2-5 | LOWVOLT-1 |  |  |  |
| P2.L7.F.LC.3270 |  | Trim Med Gas / L7 / Wet Lab Z2 | 5d | 2026-09-04 | 2026-09-11 | P2.L7.F.LC.3210 | 56d | 0d | 40 | MECH | P2-5 | MECH-2 | Harris |  |  |
| P2.L7.F.LC.3280 |  | Floor Prep / L7 / Wet Lab Z2 | 5d | 2026-09-14 | 2026-09-18 | P2.L7.F.LC.3200, P2.L7.F.LC.3220, P2.L7.F.LC.3230, P2.L7.F.LC.3240, P2.L7.F.LC.3250, P2.L7.F.LC.3190, P2.L7.F.LC.3270 | 56d | 0d | 40 | FLOOR | P2-5 | FLOOR |  |  |  |
| P2.L7.F.LC.3290 |  | Flooring / L7 / Wet Lab Z2 | 5d | 2026-09-21 | 2026-09-25 | P2.L7.F.LC.3280 | 56d | 0d | 40 | FLOOR | P2-5 | FLOOR |  |  |  |
| P2.L7.F.LC.3260 |  | Doors & Hardware / L7 / Wet Lab Z2 | 5d | 2026-09-28 | 2026-10-02 | P2.L7.F.LC.3290 | 69d |  | 40 | DFH | P2-5 | DFH |  |  | AT29 |
| P2.L7.F.LC.3300 |  | Building Specialities / L7 / Wet Lab Z2 | 5d | 2026-09-28 | 2026-10-02 | P2.L7.F.LC.3290 | 56d | 0d | 40 | SPECIAL | P2-5 | SPECIAL |  |  |  |
| P2.L7.F.LC.3310 |  | Interior Building Signage / L7 / Wet Lab Z2 | 5d | 2026-09-28 | 2026-10-02 | P2.L7.F.LC.3290 | 56d | 0d | 40 | SIGN | P2-5 | SIGN |  |  |  |
| P2.L7.F.LC.5130 |  | Casework (After Flooring) / L7 / Wet Lab Z2 | 4d | 2026-09-28 | 2026-10-01 | P2.L7.F.LC.3290 | 62d | 6d | 120 | LABCASE | P2-5 | LABCASE |  |  |  |
| P2.L7.F.LC.3320 |  | Work Completion List - Finishes / L7 / Wet Lab Z2 | 5d | 2026-10-05 | 2026-10-09 | P2.L7.F.LC.3300, P2.L7.F.LC.3310 | 56d | 0d | 40 | FINISH | P2-5 | FINISH |  |  |  |
| P2.L7.F.LC.3330 |  | Remaining Equipment Post Flooring / L7 / Wet Lab Z2 | 5d | 2026-10-12 | 2026-10-16 | P2.L7.F.LC.5130, P2.L7.F.LC.5150, P2.L7.F.LC.3320, PCO.831.1230 | 56d | 0d | 40 | EQUIP | P2-5 | EQUIP |  |  |  |
| P2.L7.F.LC.3340 |  | Remaining MEP Hook-Ups / L7 / Wet Lab Z2 | 5d | 2026-10-19 | 2026-10-23 | P2.L7.F.LC.3410 FF, P2.L7.F.LC.5150, P2.L7.F.LC.3330 | 56d | 0d | 40 | MEP | P2-5 | MEP | Harris |  |  |
| P2.L7.F.LC.3350 |  | OFOI Furniture & Equipment / L7 / Wet Lab Z2 | 5d | 2026-10-19 | 2026-10-23 | P2.L7.F.LC.3340 SS | 66d | 10d | 40 | FURN | P2-5 | FURN |  |  |  |
| P2.L7.F.LC.3360 |  | Rough Clean / L7 / Wet Lab Z2 | 5d | 2026-10-26 | 2026-10-30 | P2.L7.F.LC.3340 | 56d | 0d | 40 | FCLEAN | P2-5 | FCLEAN |  |  |  |
| P2.L7.F.LC.3370 |  | Prepare Punchlist / L7 / Wet Lab Z2 | 5d | 2026-11-02 | 2026-11-06 | P2.L7.F.LC.3340 SS, P2.L7.F.LC.3360 | 56d | 0d | 40 | QC | P2-5 | QC |  |  |  |
| P2.L7.F.LC.3380 |  | Correct Punchlist / L7 / Wet Lab Z2 | 10d | 2026-11-09 | 2026-11-20 | P2.L7.F.LC.3350, P2.L7.F.LC.3370 | 56d | 0d | 80 | FINISH | P2-5 | FINISH |  |  |  |
| P2.L7.F.LC.3390 |  | Final Clean / L7 / Wet Lab Z2 | 5d | 2026-11-23 | 2026-12-01 | P2.L7.F.LC.3380 | 56d | 19d | 40 | QC | P2-5 | QC |  |  |  |

| ID | WBS | Activity | Duration | Start | Finish | Predecessors | Total float | Free float | Temp Orig Dur | *NIH Resp Check* | Resp / SRLM | PHASE | RESP UPD | RESP / Trade | Z.RESP | Testing Type |
| --- | --- | --- | --- | --- | --- | --- | --- | --- | --- | --- | --- | --- | --- | --- | --- | --- |
|  | 4 | **Wet Lab - Z3 (10,271 sf) / Level 7** |  | 2026-04-01 | 2026-12-09 |  |  |  |  |  |  |  |  |  |  |  |
| P2.L7.F.LC.5220 |  | Cleanroom - Hang - Finish Walls and Cielings / L7 / Wet Lab Z3 | 15d | 2026-04-01 | 2026-04-21 | P2.L7.N.1470, P2.L5.F.LC.4300 | 149d | 0d | 40 | ! | CLEAN-1 | P2-5 | TA | CLEAN-1 |  |  |
| P2.L7.F.LC.5230 |  | Cleanroom - Install Doors and Hardware / L7 / Wet Lab Z3 | 5d | 2026-04-22 | 2026-04-28 | P2.L7.F.LC.5220 | 149d | 0d | 40 | ! | CLEAN-1 | P2-5 |  | CLEAN-1 |  |  |
| P2.L7.F.LC.4190 |  | Casework (Before Flooring) / L7 / Wet Lab Z3 | 12d | 2026-04-28 | 2026-05-13 | P2.L7.LC.1470 | 50d | 0d | 120 |  | LABCASE | P2-5 |  | LABCASE |  |  |
| P2.L7.F.LC.5180 |  | Equipment (Before Flooring) / L7 / Wet Lab Z3 | 1d | 2026-04-28 | 2026-04-28 | P2.L7.LC.1470 | 151d | 101d | 120 |  | LABCASE | P2-5 |  | LABCASE |  |  |
| P2.L7.F.LC.5240 |  | Cleanroom - Install Windows / L7 / Wet Lab Z3 | 2d | 2026-04-29 | 2026-04-30 | P2.L7.F.LC.5230 | 149d | 99d | 40 | ! | CLEAN-1 | P2-5 |  | CLEAN-1 |  |  |
| P2.L7.F.LC.4220 |  | Plumbing Fixtures & Drinking Fountains / L7 / Wet Lab Z3 | 5d | 2026-05-14 | 2026-05-20 | P2.L7.F.LC.4190, PCO.830.1140 | 135d | 85d | 40 |  | PLMB | P2-5 |  | PLMB | Harris |  |
| P2.L7.F.LC.5210 |  | Interior Glazing / L7 / Wet Lab Z3 | 5d | 2026-05-14 | 2026-05-20 | P2.L7.F.LC.4190 | 50d | 0d | 40 | TBD | GLASS | P2-5 |  | GLASS |  |  |
| P2.L7.F.LC.4000 |  | Paint - Walls / L7 / Wet Lab Z3 | 5d | 2026-05-21 | 2026-05-28 | P2.L7.LC.1550, P2.L7.F.LC.5210 | 50d | 0d | 40 |  | PAINT | P2-5 |  | PAINT-1 |  |  |
| P2.L7.F.LC.4010 |  | R/I - Ceiling Assemblies & Supports - Med Equip / L7 / Wet Lab Z3 | 5d | 2026-05-29 | 2026-06-04 | P2.L7.F.LC.4000 | 50d | 0d | 40 | ! | ACT | P2-5 |  | ACT |  |  |
| P2.L7.F.LC.4020 |  | Framing - Hard Lid Ceilings / L7 / Wet Lab Z3 | 5d | 2026-06-05 | 2026-06-11 | P2.L7.F.LC.4010 | 50d | 0d | 40 | ! | GYP | P2-5 |  | GYP-1 |  |  |
| P2.L7.F.LC.4030 |  | R/I - Lights & Devices - Hard Lids Ceilings / L7 / Wet Lab Z3 | 10d | 2026-06-12 | 2026-06-25 | P2.L7.F.LC.4020 | 50d | 0d | 40 | ! | ELEC | P2-5 |  | ELEC-2 |  |  |
| P2.L7.F.LC.4040 |  | R/I - Diffusers - Hard Lid Ceilings / L7 / Wet Lab Z3 | 5d | 2026-06-12 | 2026-06-18 | P2.L7.F.LC.4020 | 55d | 5d | 40 | ! | HVAC | P2-5 |  | HVAC | Harris |  |
| P2.L7.F.LC.4050 |  | R/I - Sprinkler Heads - Hard Lid Ceilings / L7 / Wet Lab Z3 | 5d | 2026-06-12 | 2026-06-18 | P2.L7.F.LC.4020 | 55d | 5d | 40 | ! | FP | P2-5 |  | FP-1 |  |  |
| P2.L7.F.LC.4060 |  | R/I - Fire Alarm - Hard Lid Ceilings / L7 / Wet Lab Z3 | 5d | 2026-06-12 | 2026-06-18 | P2.L7.F.LC.4020 | 55d | 5d | 40 |  | FA | P2-5 |  | FA-1 |  |  |
| P2.L7.F.LC.4070 |  | OH Ceiling Inspection & Signoff - Hard Lid Ceilings / L7 / Wet Lab Z3 | 5d | 2026-06-26 | 2026-07-02 | P2.L7.F.LC.4030, P2.L7.F.LC.4040, P2.L7.F.LC.4050, P2.L7.F.LC.4060 | 50d | 0d | 40 | ! | AHJ | P2-5 |  | AHJ |  |  |
| P2.L7.F.LC.4080 |  | Hang-Tape-Finish _Hard Lid Ceilings / L7 / Wet Lab Z3 | 5d | 2026-07-06 | 2026-07-10 | P2.L7.F.LC.4070, PCO.831.1250 | 50d | 0d | 40 | ! | GYP | P2-5 |  | GYP-1 |  |  |
| P2.L7.F.LC.4090 |  | Paint Ceilings / L7 / Wet Lab Z3 | 5d | 2026-07-13 | 2026-07-17 | P2.L7.F.LC.4080 | 50d | 0d | 40 |  | PAINT | P2-5 |  | PAINT-1 |  |  |
| P2.L7.F.LC.4100 |  | Waterproof Ceramic Tile / L7 / Wet Lab Z3 | 5d | 2026-07-20 | 2026-07-24 | P2.L7.F.LC.4090 | 50d | 0d | 40 |  | TILE | P2-5 |  | TILE |  |  |
| P2.L7.F.LC.4110 |  | Ceramic Tile / L7 / Wet Lab Z3 | 5d | 2026-07-27 | 2026-07-31 | P2.L7.F.LC.4100 | 50d | 0d | 40 |  | TILE | P2-5 |  | TILE |  |  |
| P2.L7.F.LC.4120 |  | T-Grid / L7 / Wet Lab Z3 | 5d | 2026-08-03 | 2026-08-07 | P2.L7.F.LC.4110 | 50d | 0d | 40 |  | ACT | P2-5 |  | ACT |  |  |
| P2.L7.F.LC.4130 |  | Diffusers in T-Grid / L7 / Wet Lab Z3 | 5d | 2026-08-10 | 2026-08-14 | P2.L7.F.LC.4120 | 55d | 5d | 40 |  | HVAC | P2-5 |  | HVAC | Harris |  |
| P2.L7.F.LC.4140 |  | Lights & Devices / L7 / Wet Lab Z3 | 10d | 2026-08-10 | 2026-08-21 | P2.L7.F.LC.4120 | 50d | 0d | 40 |  | ELEC | P2-5 |  | ELEC-2 |  |  |
| P2.L7.F.LC.4150 |  | Sprinkler Heads / L7 / Wet Lab Z3 | 5d | 2026-08-10 | 2026-08-14 | P2.L7.F.LC.4120 | 55d | 5d | 40 |  | FP | P2-5 |  | FP-1 |  |  |
| P2.L7.F.LC.4160 |  | Trim Low Voltage / L7 / Wet Lab Z3 | 5d | 2026-08-10 | 2026-08-14 | P2.L7.F.LC.4120 | 55d | 5d | 40 |  | LOWVOLT | P2-5 |  | LOWVOLT-1 |  |  |
| P2.L7.F.LC.4170 |  | Trim Fire Alarm / L7 / Wet Lab Z3 | 5d | 2026-08-10 | 2026-08-14 | P2.L7.F.LC.4120 | 55d | 5d | 40 |  | FA | P2-5 |  | FA-1 |  |  |
| P2.L7.F.LC.5170 |  | Ceiling Service Panel / L7 / Wet Lab Z3 | 2d | 2026-08-10 | 2026-08-11 | P2.L7.F.LC.4120 | 73d | 18d | 120 |  | LABCASE | P2-5 |  | LABCASE |  |  |
| P2.L7.F.LC.4180 |  | OH Ceiling Signoff / L7 / Wet Lab Z3 | 10d | 2026-08-24 | 2026-09-04 | P2.L7.F.LC.4170, P2.L7.F.LC.4160, P2.L7.F.LC.4130, P2.L7.F.LC.4140, P2.L7.F.LC.4150 | 50d | 0d | 80 |  | MEP | P2-5 |  | MEP | Harris |  |
| P2.L7.F.LC.4200 |  | Drop Ceiling Tile / L7 / Wet Lab Z3 | 5d | 2026-09-08 | 2026-09-14 | P2.L7.F.LC.4180, P2.L7.F.LC.5170 | 55d | 5d | 40 |  | ACT | P2-5 |  | ACT |  |  |
| P2.L7.F.LC.4210 |  | Wall Protection / L7 / Wet Lab Z3 | 5d | 2026-09-08 | 2026-09-14 | P2.L7.F.LC.4180, BP7.102.3.300 | 50d | 0d | 40 |  | WALLPRO | P2-5 |  | WALLPRO |  |  |
| P2.L7.F.LC.4230 |  | Trim T-Stats / L7 / Wet Lab Z3 | 5d | 2026-09-15 | 2026-09-21 | P2.L7.F.LC.4210 | 50d | 0d | 40 |  | BAS | P2-5 |  | BAS-1 | Harris |  |
| P2.L7.F.LC.4240 |  | Trim Electrical / L7 / Wet Lab Z3 | 5d | 2026-09-15 | 2026-09-21 | P2.L7.F.LC.4230 SS | 50d | 0d | 40 |  | ELEC | P2-5 |  | ELEC-2 |  |  |
| P2.L7.F.LC.4250 |  | Trim Telephone/ Data / L7 / Wet Lab Z3 | 5d | 2026-09-15 | 2026-09-21 | P2.L7.F.LC.4240 SS | 50d | 0d | 40 |  | LOWVOLT | P2-5 |  | LOWVOLT-1 |  |  |
| P2.L7.F.LC.4270 |  | Trim Med Gas / L7 / Wet Lab Z3 | 5d | 2026-09-15 | 2026-09-21 | P2.L7.F.LC.4180, P2.L7.F.LC.4210 | 50d | 0d | 40 |  | MECH | P2-5 |  | MECH-2 | Harris |  |
| P2.L7.F.LC.4280 |  | Floor Prep / L7 / Wet Lab Z3 | 5d | 2026-09-22 | 2026-09-28 | P2.L7.F.LC.4270, P2.L7.F.LC.4200, P2.L7.F.LC.4250, P2.L7.F.LC.4190, P2.L7.F.LC.4220, P2.L7.F.LC.4230, P2.L7.F.LC.4240, P2.L7.F.LC.5180, P2.L7.F.LC.5240 | 50d | 0d | 40 |  | FLOOR | P2-5 |  | FLOOR |  |  |
| P2.L7.F.LC.4290 |  | Flooring / L7 / Wet Lab Z3 | 5d | 2026-09-29 | 2026-10-05 | P2.L7.F.LC.4280 | 50d | 0d | 40 |  | FLOOR | P2-5 |  | FLOOR |  |  |
| P2.L7.F.LC.4260 |  | Doors & Hardware / L7 / Wet Lab Z3 | 5d | 2026-10-06 | 2026-10-12 | P2.L7.F.LC.4290 | 63d |  | 40 |  | DFH | P2-5 |  | DFH |  | AT29 |
| P2.L7.F.LC.4300 |  | Building Specialities / L7 / Wet Lab Z3 | 5d | 2026-10-06 | 2026-10-12 | P2.L7.F.LC.4290 | 50d | 0d | 40 |  | SPECIAL | P2-5 |  | SPECIAL |  |  |
| P2.L7.F.LC.4310 |  | Interior Building Signage / L7 / Wet Lab Z3 | 5d | 2026-10-06 | 2026-10-12 | P2.L7.F.LC.4290 | 50d | 0d | 40 |  | SIGN | P2-5 |  | SIGN |  |  |
| P2.L7.F.LC.5160 |  | Casework (After Flooring) / L7 / Wet Lab Z3 / L7 / Wet Lab Z3 | 3d | 2026-10-06 | 2026-10-08 | P2.L7.F.LC.4290 | 57d | 7d | 120 |  | LABCASE | P2-5 |  | LABCASE |  |  |
| P2.L7.F.LC.4320 |  | Work Completion List - Finishes / L7 / Wet Lab Z3 | 5d | 2026-10-13 | 2026-10-19 | P2.L7.F.LC.4310, P2.L7.F.LC.4300 | 50d | 0d | 40 |  | FINISH | P2-5 |  | FINISH |  |  |
| P2.L7.F.LC.4330 |  | Remaining Equipment Post Flooring / L7 / Wet Lab Z3 | 5d | 2026-10-20 | 2026-10-26 | P2.L7.F.LC.4320, P2.L7.F.LC.4290, P2.L7.F.LC.5160, PCO.831.1230 | 50d | 0d | 40 |  | EQUIP | P2-5 |  | EQUIP |  |  |
| P2.L7.F.LC.4340 |  | Remaining MEP Hook-Ups / L7 / Wet Lab Z3 | 5d | 2026-10-27 | 2026-11-02 | P2.L7.F.LC.4330 | 50d | 0d | 40 |  | MEP | P2-5 |  | MEP | Harris |  |
| P2.L7.F.LC.4350 |  | OFOI Furniture & Equipment / L7 / Wet Lab Z3 | 5d | 2026-10-27 | 2026-11-02 | P2.L7.F.LC.4340 SS | 60d | 10d | 40 |  | FURN | P2-5 |  | FURN |  |  |
| P2.L7.F.LC.4360 |  | Rough Clean / L7 / Wet Lab Z3 | 5d | 2026-11-03 | 2026-11-09 | P2.L7.F.LC.4340 | 50d | 0d | 40 |  | FCLEAN | P2-5 |  | FCLEAN |  |  |
| P2.L7.F.LC.4370 |  | Prepare Punchlist / L7 / Wet Lab Z3 | 5d | 2026-11-10 | 2026-11-16 | P2.L7.F.LC.4360, P2.L7.F.LC.4340 SS | 50d | 0d | 40 |  | QC | P2-5 |  | QC |  |  |
| P2.L7.F.LC.4380 |  | Correct Punchlist / L7 / Wet Lab Z3 | 10d | 2026-11-17 | 2026-12-02 | P2.L7.F.LC.4370, P2.L7.F.LC.4350 | 50d | 0d | 80 |  | FINISH | P2-5 |  | FINISH |  |  |
| P2.L7.F.LC.4390 |  | Final Clean / L7 / Wet Lab Z3 | 5d | 2026-12-03 | 2026-12-09 | P2.L7.F.LC.4380 | 50d | 13d | 40 |  | QC | P2-5 |  | QC |  |  |

| ID | WBS | Activity | Type | Duration | Start | Finish | Predecessors | Complete | Planned start | Planned finish | Total float | Free float | Temp Orig Dur | Resp / SRLM | PHASE | RESP / Trade | *NIH Resp Check* | 744 | Z.RESP | RESP UPD | Act ID Temp | Update Status | Testing Type | Pick | **NEAR CRITICAL** |
| --- | --- | --- | --- | --- | --- | --- | --- | --- | --- | --- | --- | --- | --- | --- | --- | --- | --- | --- | --- | --- | --- | --- | --- | --- | --- |
|  | 5 | **Cold Rooms - 7-3942A, 7-3935A, 7-2949, 7-2905A, & 7-2855A** |  |  | 2026-03-31 | 2026-09-10 |  |  |  |  |  |  |  |  |  |  |  |  |  |  |  |  |  |  |  |
| P2.L7.F.LC.5000 |  | Cold Room Walls, Ceilings & Floors Build-Out / L7 / 7-3942A, 7-3935A, 7-2949, 7-2905A, & 7-2855A |  | 20d | 2026-03-31 | 2026-04-27 | BP6.132.3.100, P2.L7.LC.1470 FF, P2.L7.S.1470 |  |  |  | 95d | 0d | 40 | COLD | P2-5 | COLD |  |  |  |  |  |  |  |  |  |
| P2.L7.F.LC.5010 |  | Cold Room Set-Equipment / L7 / 7-3942A, 7-3935A, 7-2949, 7-2905A, & 7-2855A |  | 5d | 2026-04-28 | 2026-05-04 | P2.L7.F.LC.5000 |  |  |  | 95d | 0d | 40 | COLD | P2-5 | COLD | ! |  |  |  |  |  |  |  |  |
| P2.L7.F.LC.5020 |  | Braze Lines, Pressure Test, Insulate / L7 / 7-3942A, 7-3935A, 7-2949, 7-2905A, & 7-2855A |  | 5d | 2026-05-05 | 2026-05-11 | P2.L7.F.LC.5010 |  |  |  | 95d | 0d | 40 | COLD | P2-5 | COLD | ! |  |  |  |  |  |  |  |  |
| P2.L7.F.LC.5030 |  | Final Mechanical/Plumbing Tie-In / L7 / 7-3942A, 7-3935A, 7-2949, 7-2905A, & 7-2855A |  | 5d | 2026-05-12 | 2026-05-18 | P2.L7.F.LC.5020 |  |  |  | 95d | 0d | 40 | COLD | P2-5 | COLD | ! |  |  |  |  |  |  |  |  |
| P2.L7.F.LC.5040 |  | Controls, Lights, LV, and Final Power / L7 / 7-3942A, 7-3935A, 7-2949, 7-2905A, & 7-2855A |  | 5d | 2026-05-19 | 2026-05-26 | P2.L7.F.LC.5030, CX.B2.SWGR.1010, CX.B2.MVEE.1010 |  |  |  | 95d | 70d | 40 | COLD | P2-5 | COLD | ! |  |  |  |  |  |  |  |  |
| P2.L7.F.LC.5050 |  | Start-up / L7 / 7-3942A, 7-3935A, 7-2949, 7-2905A, & 7-2855A |  | 5d | 2026-09-03 | 2026-09-10 | P2.L7.F.LC.5040, CX.B2.MVEE.1010 FF, CX.L7.FRZ.1000 FF, CX.L7.GSE.1000 FF, CX.L7.GSE.1010 FF, CX.L7.AHU.2000 FF, CX.L7.AHU.1000 FF, CX.L7.SLT.1000 FF, P2.L5.F.LC.4050 FF |  |  |  | 25d | 0d | 40 | COLD | P2-5 | COLD | ! |  |  |  |  |  |  |  |  |
|  | 2 | **MECHANICAL TOWERS / LEVEL 7** |  |  | 2025-05-10 | 2026-04-14 |  |  |  |  |  |  |  |  |  |  |  |  |  |  |  |  |  |  |  |
|  | 4 | **South Mechanical Tower / Rough In & Finish / Level 7** |  |  | 2025-06-02 | 2026-04-14 |  |  |  |  |  |  |  |  |  |  |  |  |  |  |  |  |  |  |  |
| P2.L7.SMT.1070 |  | Set & Connect - Mech Equipment / L7 - S. Mech Tower |  | 20d | 2025-06-02 A | 2025-06-03 A | P2.7.03.610, P2.L6.SMT.1070 | 100% | 2025-08-27 | 2025-09-24 |  |  | 80 | HVAC | P2-5 | HVAC |  | TS | Harris | TS |  |  |  |  |  |
| P2.L7.SMT.1000 |  | Insulation - Exterior Wall Assembly / L7 - S. Mech Tower |  | 5d | 2025-07-02 A | 2025-07-09 A | P2.FAC.2.Z1.150 | 100% | 2025-08-01 | 2025-08-07 |  |  | 40 | INSUL | P2-5 | INSUL-1 |  | TS |  | TS |  |  |  |  |  |
| P2.L7.SMT.1020 |  | In Wall - Electrical - CMU / L7 - S. Mech Tower |  | 10d | 2025-09-01 A | 2025-09-04 A | P2.L7.SMT.1010 SS | 100% | 2025-10-20 | 2025-10-31 |  |  | 80 | ELEC | P2-5 | ELEC-2 |  | TS |  | TS | P2.B2.26.05.510 |  |  |  |  |
| P2.L7.SMT.1030 |  | In Wall - Mech/Plumbing - CMU / L7 - S. Mech Tower |  | 10d | 2025-09-01 A | 2025-09-04 A | P2.L7.SMT.1010 SS | 100% | 2025-10-20 | 2025-10-31 |  |  | 80 | PLMB | P2-5 | PLMB |  | TS | Harris | TS | P2.B2.22.05.310 |  |  |  |  |
| P2.L7.SMT.1100 |  | HVAC Piping Connections to Shaft Riser (Chilled Water) / L7 - S. Mech Tower |  | 20d | 2025-09-02 A | 2025-09-26 A | P2.L7.SMT.1070 | 100% | 2025-10-01 | 2025-10-28 |  |  | 40 | HVAC | P2-5 | HVAC | ! | TS | Harris | TS |  | O |  |  |  |
| P2.L7.SMT.1250 |  | HVAC Piping Connections to Shaft Riser (Reheat) / L7 - S. Mech Tower |  | 20d | 2025-09-02 A | 2025-09-26 A | P2.L7.SMT.1100 | 100% | 2025-10-29 | 2025-11-25 |  |  | 40 | HVAC | P2-5 | HVAC | ! | TS | Harris | TS |  | O |  |  |  |
| P2.L7.SMT.1010 |  | CMU - Lay Block / L7 - S. Mech Tower |  | 10d | 2025-09-08 A | 2025-09-11 A | P2.L7.SMT.1000, P2.L6.SMT.1010 | 100% | 2025-10-20 | 2025-10-31 |  |  | 80 | CMU | P2-5 | CMU |  | TS |  | TS | P2.B2.04.20.210 |  | AT3 |  |  |
| P2.L7.SMT.1005 |  | HVAC Duct Connections to Shaft Riser / L7 - S. Mech Tower |  | 5d | 2025-09-15 A | 2025-09-25 A | P2.L7.SMT.1070 | 100% | 2025-10-01 | 2025-10-07 |  |  | 40 | HVAC | P2-5 | HVAC | ! | TS | Harris | TS |  | O |  |  |  |
| P2.L7.SMT.1130 |  | Test/Inspect Duct & Piping / L7 - S. Mech Tower |  | 5d | 2025-09-26 A | 2025-09-30 A | P2.L7.SMT.1005, P2.L7.SMT.1250 | 100% | 2025-11-26 | 2025-12-04 |  |  | 40 | MECH | P2-5 | MECH-2 | ! |  | Harris | TS |  |  |  |  |  |
| P2.L7.SMT.1040 |  | Paint - CMU Block Fill / L7 - S. Mech Tower |  | 10d | 2025-10-06 A | 2025-10-17 A | P2.L7.SMT.1010 | 100% |  |  |  |  | 80 | PAINT | P2-5 | PAINT-1 |  | TS |  | TS | P2.B2.09.97.110 |  |  |  |  |
| P2.L7.SMT.1050 |  | CMU - Point & Patch / L7 - S. Mech Tower |  | 10d | 2025-10-20 A | 2025-10-22 A | P2.L7.SMT.1040, P2.L7.SMT.1030, P2.L7.SMT.1020 | 100% | 2025-10-20 | 2025-10-31 |  |  | 80 | CMU | P2-5 | CMU |  | TS |  | TS | P2.B2.04.20.310 |  |  |  |  |
| P2.L7.SMT.1060 |  | Paint Prime & 1st Coat - CMU / L7 - S. Mech Tower |  | 10d | 2025-10-20 A | 2025-10-22 A | P2.L7.SMT.1050 SS | 100% | 2025-10-20 | 2025-10-31 |  |  | 80 | PAINT | P2-5 | PAINT-1 |  | TS |  | TS | P2.B2.09.97.210 |  |  |  |  |
| P2.L7.SMT.1080 |  | Set & Connect - Elect Panels and Equipment / L7 - S. Mech Tower |  | 5d | 2025-11-03 A | 2025-11-07 A | P2.L7.SMT.1060 | 100% | 2025-12-01 | 2025-12-05 |  |  | 40 | ELEC | P2-5 | ELEC-2 |  | TS |  | TS |  | O |  |  |  |
| P2.L7.SMT.1120 |  | BAS - Equip Tie In / L7 - S. Mech Tower |  | 5d | 2025-12-01 | 2025-12-05 | P2.L7.SMT.1070, P2.L7.SMT.1060 |  |  |  | 104d | 80d | 40 | BAS | P2-5 | BAS-1 |  | TS | Harris | TS |  | O |  |  |  |
| FRG.P2.L7.SMT.1050 |  | AHU Piping Install / L7 - S. Mech Tower - FRAGNET |  | 20d | 2025-12-30 | 2026-01-27 | FRG.P2.L6.SMT.1040 |  |  |  | 24d | 0d | 80 | Harris Fragnet | P2-5 | FIT-2 |  | TA | Harris | TS | P2.B2.23.20.410 |  |  | 2 | 4.1 |
| P2.L7.SMT.1110 |  | HVAC Piping - Equip Tie In (Chilled Water) / L7 - S. Mech Tower |  | 20d | 2026-01-28 | 2026-02-24 | P2.L7.SMT.1070, CX.B2.HYDR.1000, FRG.P2.L7.SMT.1050 |  |  |  | 24d | 0d | 80 | FIT | P2-5 | FIT-2 |  | TS | Harris | TS | P2.B2.23.20.610 |  |  |  |  |
| P2.L7.SMT.1200 |  | Flooring Prep - Epoxy Floors / L7 - S. Mech Tower |  | 3d | 2026-02-02 | 2026-02-04 | P2.L7.SMT.1080, P2.L6.SMT.1270 |  |  |  | 34d | 0d | 16 | EPOXYF | P2-5 | EPOXYF |  |  |  | TS |  |  |  |  |  |
| P2.L7.SMT.1270 |  | Flooring - Epoxy Floors / L7 - S. Mech Tower |  | 2d | 2026-02-05 | 2026-02-06 | P2.L7.SMT.1200 |  |  |  | 34d | 0d | 16 | EPOXYF | P2-5 | EPOXYF |  |  |  | TS |  |  |  |  |  |
| P2.L7.SMT.1090 |  | Panelboards, Interconnect Wiring, and Remaining Room Buildout of All Elec/FA Systems / L7 - S. Mech Tower |  | 10d | 2026-02-09 | 2026-02-20 | P2.L7.SMT.1080, P2.L7.SMT.1270, BP1.262.3.200, BP1.262.3.100 |  |  |  | 34d | 0d | 80 | ELEC | P2-5 | ELEC-2 |  |  |  | TS |  |  |  |  |  |
| P2.L7.SMT.1140 |  | Pull Wire - In From Distribution Panels / Out to Branch Circuits / L7 - S. Mech Tower |  | 5d | 2026-02-23 | 2026-02-27 | P2.L7.SMT.1090 |  |  |  | 34d | 0d | 40 | ELEC | P2-5 | ELEC-2 |  |  |  | TS |  |  |  |  |  |
| P2.L7.SMT.1260 |  | HVAC Piping - Equip Tie In (Reheat) / L7 - S. Mech Tower |  | 20d | 2026-02-25 | 2026-03-24 | P2.L7.SMT.1110, CX.B2.HYDR.1000, FRG.P2.L7.SMT.1050 |  |  |  | 24d | 0d | 80 | FIT | P2-5 | FIT-2 |  | TS | Harris | TS | P2.B2.23.20.610 |  |  |  |  |
| P2.L7.SMT.1160 |  | Electrical Tie in to Equipment / L7 - S. Mech Tower |  | 5d | 2026-03-02 | 2026-03-06 | P2.L7.SMT.1140, P2.L7.SMT.1070 |  |  |  | 51d | 27d | 40 | ELEC | P2-5 | ELEC-2 |  |  |  | TS |  |  |  |  |  |
| P2.L7.SMT.1170 |  | Test & Terminate / L7 - S. Mech Tower |  | 5d | 2026-03-02 | 2026-03-06 | P2.L7.SMT.1140 |  |  |  | 34d | 0d | 40 | ELEC | P2-5 | ELEC-2 |  |  |  | TS |  |  |  |  |  |
| P2.L7.SMT.1180 |  | Paint - Finish Coat / L7 - S. Mech Tower |  | 2d | 2026-03-09 | 2026-03-10 | P2.L7.SMT.1170 |  |  |  | 34d | 0d | 16 | PAINT | P2-5 | PAINT-1 |  |  |  | TS |  |  |  |  |  |
| P2.L7.SMT.1190 |  | Trim All MEPF Finishes / L7 - S. Mech Tower |  | 2d | 2026-03-11 | 2026-03-12 | P2.L7.SMT.1180 |  |  |  | 35d | 0d | 16 | MEP | P2-5 | MEP-2 |  |  | Harris | TS |  |  |  |  |  |
| P2.L7.SMT.1340 |  | Wall Protection / L7 - S. Mech Tower |  | 5d | 2026-03-11 | 2026-03-17 | P2.L7.SMT.1180, BP7.102.3.300 |  |  |  | 34d | 10d | 40 | WALLPRO | P2-5 | WALLPRO |  |  |  | TS |  |  |  |  |  |
| P2.L7.SMT.1210 |  | Doors & Hardware / L7 - S. Mech Tower |  | 2d | 2026-03-13 | 2026-03-16 | P2.L7.SMT.1190 |  |  |  | 35d | 11d | 16 | DFH | P2-5 | DFH |  |  |  | TS |  |  | AT29 |  |  |
| P2.L7.SMT.1150 |  | Insulate HVAC / Plumbing Pipe / L7 - S. Mech Tower |  | 5d | 2026-03-25 | 2026-03-31 | P2.L7.SMT.1130, P2.L7.SMT.1260 |  |  |  | 24d | 0d | 40 | INSUL | P2-5 | INSUL-3 | ! |  | Harris |  |  |  |  |  |  |
| P2.L7.SMT.1220 |  | Trades Inspect & Verify R/I Work Completed to Specs / L7 - S. Mech Tower |  | 5d | 2026-04-01 | 2026-04-07 | P2.L7.SMT.1120, P2.L7.SMT.1150, P2.L7.SMT.1210, P2.L7.SMT.1340 |  |  |  | 24d | 0d | 40 | T | P2-5 | T |  |  |  |  |  |  |  |  |  |
| P2.L7.SMT.1240 |  | Energize Elec Panels - Lock Doors and Limit Access / L7 - S. Mech Tower |  | 5d | 2026-04-08 | 2026-04-14 | P2.L7.SMT.1220, CX.B2.SWGR.1010, CX.B2.MVEE.1010 |  |  |  | 24d | 0d | 40 | ELEC | P2-5 | ELEC-2 |  |  |  |  |  |  |  |  |  |
| P2.L7.SMT.1230 |  | HVAC System Ready for Start Up / L7 - S. Mech Tower | milestone | 0d | 2026-04-14 | 2026-04-14 | P2.L7.SMT.1240, P2.L7.SMT.1160 FF |  |  |  | 24d | 19d | 0 | MECH | P2-5 | MECH-2 |  |  | Harris |  |  |  |  |  |  |

| ID | WBS | Activity | Type | Duration | Start | Finish | Predecessors | Complete | Planned start | Planned finish | Total float | Free float | Temp Orig Dur | Resp / SRLM | 744 | PHASE | Z.RESP | RESP UPD | RESP / Trade | Act ID Temp | Update Status | *NIH Resp Check* | Testing Type | Pick | **NEAR CRITICAL** |
| --- | --- | --- | --- | --- | --- | --- | --- | --- | --- | --- | --- | --- | --- | --- | --- | --- | --- | --- | --- | --- | --- | --- | --- | --- | --- |
|  | 8 | **East Mechanical Tower / Rough In & Finish / Level 7** |  |  | 2025-05-10 | 2026-03-24 |  |  |  |  |  |  |  |  |  |  |  |  |  |  |  |  |  |  |  |
| P2.L7.EMT.1070 |  | Set & Connect - Mech Equipment / L7 - E. Mech Tower |  | 10d | 2025-05-10 A | 2025-05-17 A | P2.7.03.630, P2.L6.EMT.1070 | 100% | 2025-07-01 | 2025-07-15 |  |  | 80 | HVAC | SM | P2-5 | Harris | SM | HVAC |  |  |  |  |  |  |
| P2.L7.EMT.1030 |  | In Wall - Mech/Plumbing - CMU / L7 - E. Mech Tower |  | 10d | 2025-08-11 A | 2025-08-29 A | P2.L7.EMT.1010 SS | 100% | 2025-10-29 | 2025-11-11 |  |  | 80 | PLMB | SM | P2-5 | Harris | SM | PLMB | P2.B2.22.05.310 |  |  |  |  |  |
| P2.L7.EMT.1100 |  | HVAC Piping Connections to Shaft Riser / L7 - E. Mech Tower |  | 20d | 2025-09-02 A | 2025-09-26 A | P2.L7.EMT.1070, P2.L7.SMT.1250 | 100% | 2025-10-01 | 2025-10-28 |  |  | 40 | HVAC | SM | P2-5 | Harris | SM | HVAC |  | O | ! |  |  |  |
| P2.L7.EMT.1000 |  | Insulation - Exterior Wall Assembly / L7 - E. Mech Tower |  | 5d | 2025-09-11 A | 2025-09-17 A | P2.FAC.2.Z3.150 | 100% | 2025-10-01 | 2025-10-07 |  |  | 40 | INSUL | SM | P2-5 |  | SM | INSUL-1 |  | O |  |  |  |  |
| P2.L7.EMT.1005 |  | HVAC Duct Connections to Shaft Riser / L7 - E. Mech Tower |  | 5d | 2025-09-15 A | 2025-09-26 A | P2.L7.EMT.1070 | 100% | 2025-10-01 | 2025-10-07 |  |  | 40 | HVAC | SM | P2-5 | Harris | SM | HVAC |  | O | ! |  |  |  |
| P2.L7.EMT.1130 |  | Test/Inspect Duct & Piping / L7 - E. Mech Tower |  | 20d | 2025-09-26 A | 2025-09-30 A | P2.L7.EMT.1100, P2.L7.EMT.1005 | 100% | 2025-10-29 | 2025-11-25 |  |  | 40 | MECH | SM | P2-5 | Harris | SM | MECH-2 |  | O | ! |  |  |  |
| P2.L7.EMT.1010 |  | CMU - Lay Block / L7 - E. Mech Tower |  | 10d | 2025-10-20 A | 2025-10-28 A | P2.L5.EMT.1010, P2.L7.EMT.1000 | 100% | 2025-10-29 | 2025-11-11 |  |  | 80 | CMU | SM | P2-5 |  | SM | CMU | P2.B2.04.20.210 |  |  | AT3 |  |  |
| P2.L7.EMT.1020 |  | In Wall - Electrical - CMU / L7 - E. Mech Tower |  | 10d | 2025-10-20 A | 2025-10-28 A | P2.L7.EMT.1010 SS | 100% | 2025-10-29 | 2025-11-11 |  |  | 80 | ELEC | SM | P2-5 |  | SM | ELEC-2 | P2.B2.26.05.510 |  |  |  |  |  |
| P2.L7.EMT.1040 |  | Paint - CMU Block Fill / L7 - E. Mech Tower |  | 10d | 2025-11-10 A | 2025-11-15 A | P2.L7.EMT.1010 | 100% | 2025-12-01 | 2025-12-12 |  |  | 80 | PAINT | SM | P2-5 |  | SM | PAINT-1 | P2.B2.09.97.110 | O |  |  |  |  |
| P2.L7.EMT.1050 |  | CMU - Point & Patch / L7 - E. Mech Tower |  | 10d | 2025-11-10 A | 2025-11-15 A | P2.L7.EMT.1020, P2.L7.EMT.1040, P2.L7.EMT.1030 | 100% | 2025-12-15 | 2025-12-29 |  |  | 80 | CMU | SM | P2-5 |  | SM | CMU | P2.B2.04.20.310 | O |  |  |  |  |
| P2.L7.EMT.1060 |  | Paint Prime & 1st Coat - CMU / L7 - E. Mech Tower |  | 10d | 2025-11-10 A | 2025-11-15 A | P2.L7.EMT.1050 SS | 100% | 2025-12-15 | 2025-12-29 |  |  | 80 | PAINT | SM | P2-5 |  | SM | PAINT-1 | P2.B2.09.97.210 | O |  |  |  |  |
| P2.L7.EMT.1120 |  | BAS - Equip Tie In / L7 - E. Mech Tower |  | 5d | 2025-11-18 A | 2025-11-24 A | P2.L7.EMT.1070, P2.L7.EMT.1060 | 100% | 2025-12-30 | 2026-01-06 |  |  | 40 | BAS | SM | P2-5 | Harris | SM | BAS-1 |  |  |  |  |  |  |
| P2.L7.EMT.1080 |  | Set & Connect - Elect Panels and Equipment / L7 - E. Mech Tower |  | 5d | 2025-12-01 | 2025-12-05 | P2.L7.EMT.1060 |  |  |  | 72d | 19d | 40 | ELEC | SM | P2-5 |  | SM | ELEC-2 |  |  |  |  |  |  |
| P2.L7.EMT.1200 |  | Flooring Prep - Epoxy Floors / L7 - E. Mech Tower |  | 3d | 2026-01-06 | 2026-01-08 | P2.L7.EMT.1080, P2.L6.EMT.1260 |  |  |  | 53d | 0d | 16 | EPOXYF |  | P2-5 |  | SM | EPOXYF |  |  |  |  |  |  |
| P2.L7.EMT.1250 |  | Flooring - Epoxy Floors / L7 - E. Mech Tower |  | 2d | 2026-01-09 | 2026-01-12 | P2.L7.EMT.1200 |  |  |  | 53d | 0d | 16 | EPOXYF |  | P2-5 |  | SM | EPOXYF |  |  |  |  |  |  |
| P2.L7.EMT.1090 |  | Panelboards, Interconnect Wiring, and Remaining Room Buildout of All Elec/FA Systems / L7 - E. Mech Tower |  | 10d | 2026-01-13 | 2026-01-26 | P2.L7.EMT.1080, P2.L7.EMT.1250, BP1.262.3.200, BP1.262.3.100 |  |  |  | 53d | 0d | 80 | ELEC |  | P2-5 |  | SM | ELEC-2 |  |  |  |  |  |  |
| P2.L7.EMT.1140 |  | Pull Wire - In From Distribution Panels / Out to Branch Circuits / L7 - E. Mech Tower |  | 5d | 2026-01-27 | 2026-02-02 | P2.L7.EMT.1090 |  |  |  | 53d | 0d | 40 | ELEC |  | P2-5 |  | SM | ELEC-2 |  |  |  |  |  |  |
| P2.L7.EMT.1110 |  | HVAC Piping - Equip Tie In / L7 - E. Mech Tower |  | 20d | 2026-01-28 | 2026-02-24 | P2.L7.EMT.1070, CX.B2.HYDR.1000 |  |  |  | 44d | 0d | 80 | FIT | SM | P2-5 | Harris | SM | FIT-2 | P2.B2.23.20.610 |  |  |  |  |  |
| P2.L7.EMT.1160 |  | Electrical Tie in to Equipment / L7 - E. Mech Tower |  | 5d | 2026-02-03 | 2026-02-09 | P2.L7.EMT.1140, P2.L7.EMT.1070 |  |  |  | 70d | 31d | 40 | ELEC |  | P2-5 |  | SM | ELEC-2 |  |  |  |  |  |  |
| P2.L7.EMT.1170 |  | Test & Terminate / L7 - E. Mech Tower |  | 5d | 2026-02-03 | 2026-02-09 | P2.L7.EMT.1140 |  |  |  | 53d | 0d | 40 | ELEC |  | P2-5 |  | SM | ELEC-2 |  |  |  |  |  |  |
| P2.L7.EMT.1180 |  | Paint - Finish Coat / L7 - E. Mech Tower |  | 2d | 2026-02-10 | 2026-02-11 | P2.L7.EMT.1170 |  |  |  | 53d | 0d | 16 | PAINT |  | P2-5 |  | SM | PAINT-1 |  |  |  |  |  |  |
| P2.L7.EMT.1190 |  | Trim All MEPF Finishes / L7 - E. Mech Tower |  | 2d | 2026-02-12 | 2026-02-13 | P2.L7.EMT.1180 |  |  |  | 54d | 0d | 16 | MEP |  | P2-5 | Harris | SM | MEP-2 |  |  |  |  |  |  |
| P2.L7.EMT.1210 |  | Doors & Hardware / L7 - E. Mech Tower |  | 2d | 2026-02-16 | 2026-02-17 | P2.L7.EMT.1190 |  |  |  | 54d | 10d | 16 | DFH |  | P2-5 |  | SM | DFH |  |  |  | AT29 |  |  |
| FRG.P2.L7.EMT.1050 |  | AHU Piping Install / L7 - E. Mech Tower - FRAGNET |  | 20d | 2026-02-18 | 2026-03-17 | FRG.P2.L6.EMT.1040 |  |  |  | 39d | 0d | 80 | Harris Fragnet | TA | P2-5 | Harris | SM | FIT-2 | P2.B2.23.20.410 |  |  |  | 2 | 4.1 |
| P2.L7.EMT.1340 |  | Wall Protection / L7 - E. Mech Tower |  | 5d | 2026-02-19 | 2026-02-25 | P2.L7.EMT.1180, BP7.102.3.300 |  |  |  | 48d | 4d | 40 | WALLPRO |  | P2-5 |  | SM | WALLPRO |  |  |  |  |  |  |
| P2.L7.EMT.1150 |  | Insulate HVAC / Plumbing Pipe / L7 - E. Mech Tower |  | 5d | 2026-02-25 | 2026-03-03 | P2.L7.EMT.1110, P2.L7.EMT.1130 |  |  |  | 44d | 0d | 40 | INSUL | SM | P2-5 | Harris | SM | INSUL-3 |  |  | ! |  |  |  |
| P2.L7.EMT.1220 |  | Trades Inspect & Verify R/I Work Completed to Specs / L7 - E. Mech Tower |  | 5d | 2026-03-04 | 2026-03-10 | P2.L7.EMT.1120, P2.L7.EMT.1150, P2.L7.EMT.1210, P2.L7.EMT.1340 |  |  |  | 44d | 5d | 40 | T |  | P2-5 |  | SM | T |  |  |  |  |  |  |
| P2.L7.EMT.1240 |  | Energize Elec Panels - Lock Doors and Limit Access / L7 - E. Mech Tower |  | 5d | 2026-03-18 | 2026-03-24 | P2.L7.EMT.1220, CX.B2.SWGR.1010, CX.B2.MVEE.1010, FRG.P2.L7.EMT.1050 |  |  |  | 39d | 0d | 40 | ELEC |  | P2-5 |  |  | ELEC-2 |  |  |  |  |  |  |
| P2.L7.EMT.1230 |  | HVAC System Ready for Start Up / L7 - E. Mech Tower | milestone | 0d | 2026-03-24 | 2026-03-24 | P2.L7.EMT.1240, P2.L7.EMT.1160 FF, FRG.P2.L7.EMT.1050 |  |  |  | 39d | 34d | 0 | MECH |  | P2-5 | Harris |  | MECH-2 |  |  |  |  |  |  |

| ID | WBS | Activity | Type | Duration | Start | Finish | Predecessors | Complete | Remaining | Planned start | Planned finish | Total float | Free float | Constraint | Temp Orig Dur | Act ID Temp | Resp / SRLM | 744 | PHASE | Z.RESP | RESP UPD | RESP / Trade | Testing Type | Pick | Update Status | NOTES | **NEAR CRITICAL** |
| --- | --- | --- | --- | --- | --- | --- | --- | --- | --- | --- | --- | --- | --- | --- | --- | --- | --- | --- | --- | --- | --- | --- | --- | --- | --- | --- | --- |
|  | L8 | **L8 / BUILDOUT** |  |  | 2025-05-26 | 2026-12-29 |  |  |  |  |  |  |  |  |  |  |  |  |  |  |  |  |  |  |  |  |  |
|  | L8 | **CORE & SUPPORT SPACES / LEVEL 8** |  |  | 2025-06-26 | 2026-12-29 |  |  |  |  |  |  |  |  |  |  |  |  |  |  |  |  |  |  |  |  |  |
|  | 2 | **ROUGH IN - Core & Support Spaces / Level 8** |  |  | 2025-06-26 | 2026-05-14 |  |  |  |  |  |  |  |  |  |  |  |  |  |  |  |  |  |  |  |  |  |
|  | Z112 | **South / Level 8** |  |  | 2025-06-26 | 2026-02-25 |  |  |  |  |  |  |  |  |  |  |  |  |  |  |  |  |  |  |  |  |  |
| P2.L8.S.1000 |  | Layout - All Trades / L8 / South |  | 5d | 2025-06-26 A | 2025-06-30 A | P2.8.03.610, P2.BIM.L8.40.150, P2.8.03.620 | 100% |  | 2025-07-01 | 2025-07-08 |  |  |  | 40 | P2.B2.01.010 | R/I.OH | TA | P2-5 | Harris | TA | R/I.OH |  |  |  |  |  |
| P2.L8.S.1020 |  | OH - Structural Supports (All Trades) / L8 / South |  | 5d | 2025-06-27 A | 2025-06-30 A | P2.L8.S.1000 | 100% |  | 2025-07-09 | 2025-07-15 |  |  |  | 80 | P2.B2.05.45.110 | R/I.OH | TA | P2-5 | Harris | TA | R/I.OH | AT24 |  |  |  |  |
| P2.L8.S.1030 |  | OH - MEPF - Hangers & Supports / L8 / South |  | 10d | 2025-06-27 A | 2025-07-31 A | P2.L8.S.1000, P2.BIM.L8.40.150 | 100% |  | 2025-07-09 | 2025-07-22 |  |  |  | 80 | P2.B2.20.05.410 | MEP | TA | P2-5 | Harris | TA | MEP-2 |  |  |  |  |  |
| P2.L8.S.1010 |  | Framing - Top Track / L8 / South |  | 10d | 2025-07-14 A | 2025-07-21 A | P2.L7.S.1010, P2.L8.S.1000 FF+1d | 100% |  | 2025-08-01 | 2025-08-14 |  |  |  | 80 | P2.B2.09.21.110 | GYP | TA | P2-5 |  | TA | GYP-1 |  |  |  |  |  |
| P2.L8.S.1090 |  | Framing - Priority Walls & Door Frames / L8 / South |  | 10d | 2025-07-21 A | 2025-08-11 A | P2.L8.S.1010 FF+2d, P2.L7.N.1090 FF+3d | 100% |  | 2025-08-05 | 2025-08-18 |  |  |  | 80 | P2.B2.09.21.310 | GYP | ND | P2-5 |  | ND | GYP-1 |  |  |  |  |  |
| P2.L8.S.1160 |  | Spray/Seal/Firestop - Head of Wall - Priority Walls / L8 / South |  | 5d | 2025-07-21 A | 2025-07-28 A | P2.L8.S.1140 FF | 100% |  | 2025-09-11 | 2025-09-17 |  |  |  | 80 | P2.B2.07.84.410 | FIRESTO | ND | P2-5 |  | ND | FIRESTO | AT47 |  |  |  |  |
| P2.L8.S.1170 |  | OH - Fire Suppression / L8 / South |  | 10d | 2025-07-21 A | 2025-08-29 A | P2.L8.S.1030 | 100% |  | 2025-08-13 | 2025-08-26 |  |  |  | 80 | P2.B2.21.13.210 | FP | TA | P2-5 |  | TA | FP-1 |  | 1 |  |  |  |
| P2.L8.S.1130 |  | Framing - Priority Walls - AHJ Inspections / L8 / South |  | 5d | 2025-07-28 A | 2025-08-13 A | P2.L8.S.1090 | 100% |  | 2025-08-19 | 2025-08-25 |  |  |  | 80 | P2.B2.01.43.010 | FM | ND | P2-5 |  | ND | FM |  |  |  |  |  |
| P2.L8.S.1140 |  | Hang/Tape/Finish - Priority Walls / L8 / South |  | 10d | 2025-08-14 A | 2025-09-04 A | P2.L8.S.1020, P2.L8.S.1130 | 100% |  | 2025-09-16 | 2025-09-29 |  |  |  | 80 | P2.B2.09.21.210 | GYP | ND | P2-5 |  | ND | GYP-1 |  |  | O |  |  |
| P2.L8.S.1150 |  | Paint Prime & 1st Coat - Priority Walls / L8 / South |  | 10d | 2025-08-15 A | 2025-08-29 A | P2.L8.S.1160 SS | 100% |  | 2025-09-30 | 2025-10-13 |  |  |  | 80 | P2.B2.09.91.110 | PAINT | TA | P2-5 |  | TA | PAINT-1 |  |  |  |  |  |
| P2.L8.S.1190 |  | OH - Electrical - 480/277v Distribution / L8 / South |  | 10d | 2025-09-01 A | 2025-09-12 A | P2.L8.S.1030, P2.L8.S.1150 | 100% |  | 2025-10-03 | 2025-10-16 |  |  |  | 80 | P2.B2.26.05.210 | ELEC | TA | P2-5 |  | TA | ELEC-2 |  | 1 | O |  |  |
| P2.L8.S.1180 |  | OH - Plumbing Piping / L8 / South |  | 20d | 2025-09-08 A | 2025-12-12 | P2.L8.S.1030, P2.L8.S.1150, P2.L7.S.1180 | 50% | 10d | 2025-10-01 | 2025-10-28 | 67d | 0d |  | 80 | P2.B2.22.14.210 | PLMB | TA | P2-5 | Harris | TA | PLMB |  | 1 | O |  |  |
| P2.L8.S.1230 |  | OH - Electrical - 208/120v Branch / L8 / South |  | 10d | 2025-09-15 A | 2025-12-12 | P2.L8.S.1190, P2.BIM.L8.40.140 |  | 10d | 2025-10-17 | 2025-10-30 | 16d | 0d |  | 80 | P2.B2.26.05.310 | ELEC | TA | P2-5 |  | TA | ELEC-2 |  | 2 | O |  |  |
| P2.L8.S.1420 |  | Framing - Balance of Framing & Door Frames / L8 / South |  | 10d | 2025-09-29 A | 2025-10-24 A | P2.L8.S.1150 | 100% |  | 2025-10-01 | 2025-10-14 |  |  |  | 80 | A1310 | GYP |  | P2-5 |  | TA | GYP-1 |  |  |  |  |  |
| FRG.P2.L8.S.1620 |  | HVAC Piping - Staging & Layout / L8 / South - FRAGNET |  | 5d | 2025-10-20 A | 2025-10-27 A | FRG.P2.L8.S.1610 | 100% |  | 2025-10-01 | 2025-10-07 |  |  |  | 80 | P2.B2.23.20.410 | Harris Fragnet | TA | P2-5 | Harris | TA | FIT-2 |  | 2 |  |  |  |
| FRG.P2.L8.S.1610 |  | HVAC Piping Delivery Steel / L8 / South - FRAGNET | milestone | 0d | 2025-10-24 A | 2025-10-24 A | P2.L8.S.1030 FF | 100% |  |  |  |  |  | finish on or after 2025-09-26 | 80 | P2.B2.23.20.410 | Harris Fragnet | TA | P2-5 | Harris | TA | FIT-2 |  | 2 |  | Per Harris schedule |  |
| P2.L8.S.1210 |  | OH - Hang Duct - HP Mains / L8 / South |  | 20d | 2025-10-31 A | 2025-12-01 A | P2.L8.S.1030, P2.L8.S.1170 | 100% |  | 2025-10-01 | 2025-10-28 |  |  |  | 80 | P2.B2.23.30.210 | HVAC | TA | P2-5 | Harris | TA | HVAC |  | 1 | O | Per TA not started in the south |  |
| FRG.P2.L8.S.1630 |  | HVAC Piping - Hanging Copper Racks / L8 / South - FRAGNET |  | 20d | 2025-11-03 A | 2025-12-01 A | FRG.P2.L8.S.1620, FRG.P2.L8.S.1650 | 100% |  | 2025-12-01 | 2025-12-29 |  |  |  | 80 | P2.B2.23.20.410 | Harris Fragnet | TA | P2-5 | Harris | TA | FIT-2 |  | 2 | O |  |  |
| FRG.P2.L8.S.1640 |  | HVAC Piping - Hang Steel Racks/Spool / L8 / South - FRAGNET |  | 20d | 2025-11-03 A | 2025-12-01 A | FRG.P2.L8.S.1620 | 100% |  | 2025-12-01 | 2025-12-29 |  |  |  | 80 | P2.B2.23.20.410 | Harris Fragnet | TA | P2-5 | Harris | TA | FIT-2 |  | 2 | O |  |  |
| P2.L8.S.1430 |  | In Wall - Plumbing - Framing / L8 / South |  | 10d | 2025-11-11 A | 2025-11-28 A | P2.L8.S.1420 | 100% |  | 2025-12-01 | 2025-12-12 |  |  |  | 80 | P2.B2.22.05.410 | PLMB |  | P2-5 | Harris | TA | PLMB |  |  | O |  |  |
| FRG.P2.L8.S.1650 |  | HVAC Piping Delivery Copper / L8 / South - FRAGNET | milestone | 0d | 2025-12-01 | 2025-12-01 | P2.L8.S.1030 FF |  |  |  |  | 51d | 0d | finish on or after 2025-10-10 | 80 | P2.B2.23.20.410 | Harris Fragnet | TA | P2-5 | Harris | TA | FIT-2 |  | 2 | O | Per Harris schedule |  |
| P2.L8.S.1200 |  | Firestop - Thru Wall - Priority Walls / L8 / South |  | 5d | 2025-12-01 | 2025-12-05 | P2.L8.S.1150 |  |  |  |  | 79d | 10d |  | 80 | P2.B2.07.84.110 | FIRESTO | TA | P2-5 |  | TA | FIRESTO | AT48 |  | O |  |  |
| P2.L8.S.1220 |  | OH - HVAC Piping (High) / L8 / South |  | 20d | 2025-12-01 A | 2025-12-29 | P2.L8.S.1030, FRG.P2.L8.S.1610, FRG.P2.L8.S.1640 |  | 20d | 2025-12-30 | 2026-01-27 | 41d | 0d |  | 80 | P2.B2.23.20.410 | FIT | TA | P2-5 | Harris | TA | FIT-2 |  | 2 |  |  |  |
| P2.L8.S.1250 |  | Pull Wire - Electrical - 480/277v Distribution / L8 / South |  | 10d | 2025-12-01 | 2025-12-12 | P2.L8.S.1190, P2.8.HE.5959.1050 |  |  |  |  | 104d | 46d |  | 80 |  | ELEC | TA | P2-5 |  | TA | ELEC-2 |  | To Trim Devices & Term Panel | O |  |  |
| P2.L8.S.1260 |  | OH - DALT - HP Mains / L8 / South |  | 5d | 2025-12-01 | 2025-12-05 | P2.L8.S.1210 |  |  |  |  | 69d | 0d |  | 80 | P2.B2.23.30.310 | TAB | TA | P2-5 | Harris | TA | TAB-1 |  | 2 |  |  |  |
| P2.L8.S.1300 |  | OH - Hang Duct - LP Branch / L8 / South |  | 15d | 2025-12-01 | 2025-12-19 | P2.L8.S.1260 SS |  |  |  |  | 69d | 0d |  | 80 | P2.B2.23.30.410 | HVAC | TA | P2-5 | Harris | TA | HVAC |  | 3 |  |  |  |
| P2.L8.S.1450 |  | In Wall - Backing/Blocking/Supports / L8 / South |  | 10d | 2025-12-01 | 2025-12-12 | P2.L8.S.1420 |  |  |  |  | 26d | 10d |  | 80 | P2.B2.09.21.510 | R/I.IW |  | P2-5 |  | TA | R/I.IW |  |  | O |  |  |
| P2.L8.S.1560 |  | OH - HVAC Piping (Low) / L8 / South |  | 20d | 2025-12-01 A | 2025-12-29 | FRG.P2.L8.S.1630 |  | 20d | 2025-12-30 | 2026-01-27 | 51d | 0d |  | 80 | P2.B2.23.20.410 | FIT | TA | P2-5 | Harris | TA | FIT-2 |  | 2 |  | Jan. 7th per Harris Schedule |  |
| P2.L8.S.1290 |  | OH - Insulate HP Duct / L8 / South |  | 10d | 2025-12-08 | 2025-12-19 | P2.L8.S.1260 |  |  |  |  | 109d | 20d |  | 80 | P2.B2.23.07.310 | INSUL | TA | P2-5 | Harris | TA | INSUL-3 |  | 3 |  |  |  |
| P2.L8.S.1310 |  | OH - Set & Connect Mech Equipment / L8 / South |  | 10d | 2025-12-08 | 2025-12-19 | P2.L8.S.1260 |  |  |  |  | 69d | 0d |  | 80 | P2.B2.23.82.110 | HVAC | TA | P2-5 | Harris | TA | HVAC |  | 3 |  |  |  |
| P2.L8.S.1240 |  | OH - Plumbing - Test / L8 / South |  | 10d | 2025-12-15 | 2025-12-29 | P2.L8.S.1180 |  |  |  |  | 74d | 0d |  | 80 | P2.B2.22.14.310 | PLMB |  | P2-5 | Harris | TA | PLMB |  | 2 | O |  |  |
| P2.L8.S.1440 |  | In Wall - Electrical - Framing / L8 / South |  | 10d | 2025-12-15 | 2025-12-29 | P2.L8.S.1230, P2.L8.S.1090, P2.L8.S.1420 |  |  |  |  | 16d | 0d |  | 80 | P2.B2.26.05.610 | ELEC |  | P2-5 |  | TA | ELEC-2 |  |  | O |  |  |
| P2.L8.S.1320 |  | OH - Electrical - Equip Tie In / L8 / South |  | 10d | 2025-12-22 | 2026-01-06 | P2.L8.S.1310 |  |  |  |  | 69d | 0d |  | 80 | P2.B2.26.05.410 | ELEC | TA | P2-5 |  | TA | ELEC-2 |  | 4 |  |  |  |
| P2.L8.S.1350 |  | OH - Insulate LP Duct / L8 / South |  | 10d | 2025-12-22 | 2026-01-06 | P2.L8.S.1300, P2.L8.S.1200 |  |  |  |  | 69d | 0d |  | 80 | P2.B2.23.07.410 | INSUL |  | P2-5 | Harris | TA | INSUL-3 |  | 4 |  |  |  |
| P2.L8.S.1370 |  | OH - Conduit - Low Volt - BAS/Controls / L8 / South |  | 10d | 2025-12-22 | 2026-01-06 | P2.L8.S.1310 |  |  |  |  | 79d | 21d |  | 80 |  | BAS |  | P2-5 | Harris | TA | BAS-1 |  | 5 |  |  |  |
| P2.L8.S.1400 |  | OH - Conduit - Low Volt - Security / L8 / South |  | 10d | 2025-12-22 | 2026-01-06 | P2.L8.S.1310 |  |  |  |  | 79d | 21d |  | 80 |  | ELEC |  | P2-5 |  | TA | ELEC-2 |  | 5 |  |  |  |
| P2.L8.S.1270 |  | OH - HVAC Piping - Test / L8 / South |  | 15d | 2025-12-30 | 2026-01-20 | P2.L8.S.1560 |  |  |  |  | 69d | 0d |  | 80 | P2.B2.23.20.510 | FIT | TA | P2-5 | Harris | TA | FIT-2 |  | 3 |  |  |  |
| P2.L8.S.1280 |  | OH - Insulate Plumbing / L8 / South |  | 10d | 2025-12-30 | 2026-01-13 | P2.L8.S.1240 |  |  |  |  | 74d | 16d |  | 80 | P2.B2.22.07.510 | INSUL |  | P2-5 | Harris | TA | INSUL-3 |  | 3 |  |  |  |
| P2.L8.S.1460 |  | AHJ Inspections - Wall Close In / L8 / South |  | 5d | 2025-12-30 | 2026-01-06 | P2.L8.S.1450, P2.L8.S.1430, P2.L8.S.1440 |  |  |  |  | 16d | 8d |  | 40 | P2.B2.01.43.110 | FM |  | P2-5 |  | TA | FM |  |  | O |  |  |
| P2.L8.S.1360 |  | Pull Wire - Electrical - 208/120v Branch & Equip / L8 / South |  | 20d | 2026-01-07 | 2026-02-03 | P2.L8.S.1230, P2.L8.S.1320, P2.L8.S.1440 |  |  |  |  | 69d | 11d |  | 80 |  | ELEC |  | P2-5 |  | TA | ELEC-2 |  | To Trim Devices & Term Panel |  |  |  |
| P2.L8.S.1380 |  | OH - Conduit - Low Volt - Fire Alarm / L8 / South |  | 10d | 2026-01-07 | 2026-01-20 | P2.L8.S.1310, P2.L8.S.1350 |  |  |  |  | 69d | 11d |  | 80 |  | FA |  | P2-5 |  | TA | FA-1 |  | 5 |  |  |  |
| P2.L8.S.1390 |  | OH - Conduit - Low Volt - Telecom / L8 / South |  | 10d | 2026-01-07 | 2026-01-20 | P2.L8.S.1350 |  |  |  |  | 69d | 11d |  | 80 |  | ELEC |  | P2-5 |  | TA | ELEC-2 |  | 5 |  |  |  |
| P2.L8.S.1470 |  | Hang-Tape-Finish - Walls and Hard Lid Ceilings / L8 / South |  | 13d | 2026-01-19 | 2026-02-04 | P2.L8.S.1460, P2.SUM.175, P2.L6.S.1470 |  |  |  |  | 8d | 0d |  | 80 | P2.B2.09.21.710 | GYP |  | P2-5 |  | TA | GYP-1 |  |  |  |  | 2 |
| P2.L8.S.1340 |  | OH - Insulate HVAC Pipe / L8 / South |  | 15d | 2026-01-21 | 2026-02-10 | P2.L8.S.1270, P2.L8.S.1290 |  |  |  |  | 89d | 67d |  | 80 | P2.B2.22.07.610 | INSUL | TA | P2-5 | Harris | TA | INSUL-3 |  | 4 |  |  |  |
| P2.L8.S.1330 |  | OH - HVAC Piping - Equip Tie In / L8 / South |  | 10d | 2026-01-28 | 2026-02-10 | P2.L8.S.1270, P2.L8.S.1310, CX.B2.HYDR.1000 |  |  |  |  | 64d | 6d |  | 80 | P2.B2.23.20.610 | FIT | TA | P2-5 | Harris | TA | FIT-2 |  |  |  |  |  |
| P2.L8.S.1480 |  | Spray/Seal/Firestop - Head of Wall / L8 / South |  | 10d | 2026-02-05 | 2026-02-18 | P2.L8.S.1470 |  |  |  |  | 58d | 0d |  | 80 | P2.B2.07.84.310 | FIRSAFE |  | P2-5 |  | TA | FIRSAFE | AT47 | To Finishes - Paint |  |  |  |
| P2.L8.S.1490 |  | Firestop - Thru Wall / L8 / South |  | 10d | 2026-02-05 | 2026-02-18 | P2.L8.S.1470, P2.L8.S.1280 |  |  |  |  | 58d | 0d |  | 80 | P2.B2.07.84.210 | FIRESTO |  | P2-5 |  | TA | FIRESTO | AT48 | To Finishes - Paint |  |  |  |
| P2.L8.S.1500 |  | Pull Wire - Low Volt - BAS/Controls / L8 / South |  | 10d | 2026-02-05 | 2026-02-18 | P2.L8.S.1470, P2.L8.S.1370 |  |  |  |  | 58d | 0d |  | 80 |  | BAS |  | P2-5 | Harris | TA | BAS-1 |  | To Trim Finishes |  |  |  |
| P2.L8.S.1510 |  | Pull Wire - Low Volt - Fire Alarm / L8 / South |  | 10d | 2026-02-05 | 2026-02-18 | P2.L8.S.1470, P2.L8.S.1380 |  |  |  |  | 58d | 0d |  | 80 |  | FA |  | P2-5 |  | TA | FA-1 |  | To Trim Finishes |  |  |  |
| P2.L8.S.1520 |  | Pull Wire - Low Volt - Telecom / L8 / South |  | 10d | 2026-02-05 | 2026-02-18 | P2.L8.S.1470, P2.L8.S.1390 |  |  |  |  | 58d | 0d |  | 80 |  | CIT |  | P2-5 |  | TA | CIT |  | To Trim Finishes |  |  |  |
| P2.L8.S.1530 |  | Pull Wire - Low Volt - Security / L8 / South |  | 10d | 2026-02-05 | 2026-02-18 | P2.L8.S.1470, P2.L8.S.1400 |  |  |  |  | 58d | 0d |  | 80 |  | LOWVOLT |  | P2-5 |  | TA | LOWVOLT-1 |  | To Trim Finishes |  |  |  |
| P2.L8.S.1550 |  | Trades Inspect & Verify R/I Work Completed to Specs / L8 / South |  | 5d | 2026-02-19 | 2026-02-25 | P2.L8.S.1490, P2.L8.S.1480, P2.L8.S.1530, P2.L8.S.1250, P2.L8.S.1360, P2.L8.S.1500, P2.L8.S.1510, P2.L8.S.1520, P2.L8.S.1330 |  |  |  |  | 58d | 0d |  | 40 |  | T |  | P2-5 |  | TA | T |  |  |  |  |  |

| ID | WBS | Activity | Duration | Start | Finish | Predecessors | Complete | Remaining | Planned start | Planned finish | Total float | Free float | Temp Orig Dur | Act ID Temp | Resp / SRLM | 744 | PHASE | Z.RESP | RESP UPD | RESP / Trade | Testing Type | Pick | Update Status | NOTES | **NEAR CRITICAL** |
| --- | --- | --- | --- | --- | --- | --- | --- | --- | --- | --- | --- | --- | --- | --- | --- | --- | --- | --- | --- | --- | --- | --- | --- | --- | --- |
|  | Z1121 | **North / Level 8** |  | 2025-07-07 | 2026-03-20 |  |  |  |  |  |  |  |  |  |  |  |  |  |  |  |  |  |  |  |  |
| P2.L8.N.1000 |  | Layout - All Trades / L8 / North | 5d | 2025-07-07 A | 2025-07-11 A | P2.8.03.630 | 100% |  | 2025-08-01 | 2025-08-07 |  |  | 40 | P2.B2.01.010 | R/I.OH | TA | P2-5 | Harris | TA | R/I.OH |  |  |  |  |  |
| P2.L8.N.1030 |  | OH - MEPF - Hangers & Supports / L8 / North | 10d | 2025-07-11 A | 2025-07-28 A | P2.L8.N.1000, P2.BIM.L8.40.150 | 100% |  | 2025-08-08 | 2025-08-21 |  |  | 80 | P2.B2.20.05.410 | MEP | TA | P2-5 | Harris | TA | MEP-2 |  |  |  |  |  |
| P2.L8.N.1020 |  | OH - Structural Supports (All Trades) / L8 / North | 5d | 2025-07-14 A | 2025-07-18 A | P2.L8.N.1000 | 100% |  | 2025-08-08 | 2025-08-14 |  |  | 80 | P2.B2.05.45.110 | R/I.OH | TA | P2-5 | Harris | TA | R/I.OH | AT24 |  |  |  |  |
| P2.L8.N.1010 |  | Framing - Top Track / L8 / North | 10d | 2025-07-21 A | 2025-07-31 A | P2.L8.N.1000, P2.L7.N.1010 | 100% |  | 2025-08-08 | 2025-08-21 |  |  | 80 | P2.B2.09.21.110 | GYP | TA | P2-5 |  | TA | GYP-1 |  |  |  |  |  |
| P2.L8.N.1170 |  | OH - Fire Suppression / L8 / North | 10d | 2025-07-28 A | 2025-08-29 A | P2.L8.N.1030 | 100% |  | 2025-08-22 | 2025-09-05 |  |  | 80 | P2.B2.21.13.210 | FP | TA | P2-5 |  | TA | FP-1 |  | 1 |  |  |  |
| P2.L8.N.1090 |  | Framing - Priority Walls & Door Frames / L8 / North | 10d | 2025-07-29 A | 2025-08-21 A | P2.L8.S.1090, P2.L8.N.1010 | 100% |  | 2025-08-22 | 2025-09-05 |  |  | 80 | P2.B2.09.21.310 | GYP | ND | P2-5 |  | ND | GYP-1 |  |  |  |  |  |
| P2.L8.N.1160 |  | Spray/Seal/Firestop - Head of Wall - Priority Walls / L8 / North | 5d | 2025-07-29 A | 2025-08-21 A | P2.L8.N.1140 | 100% |  | 2025-10-14 | 2025-10-20 |  |  | 80 | P2.B2.07.84.410 | FIRESTO | ND | P2-5 |  | ND | FIRESTO | AT47 |  |  |  |  |
| P2.L8.N.1130 |  | Framing - Priority Walls - AHJ Inspections / L8 / North | 5d | 2025-08-18 A | 2025-08-22 A | P2.L8.N.1090 | 100% |  | 2025-09-15 | 2025-09-19 |  |  | 80 | P2.B2.01.43.010 | FM | ND | P2-5 |  | ND | FM |  |  |  |  |  |
| P2.L8.N.1140 |  | Hang/Tape/Finish - Priority Walls / L8 / North | 10d | 2025-08-18 A | 2025-09-15 A | P2.L8.N.1020, P2.L8.S.1140, P2.L8.N.1130, DDD3200 FF | 100% |  | 2025-09-30 | 2025-10-13 |  |  | 80 | P2.B2.09.21.210 | GYP | ND | P2-5 |  | ND | GYP-1 |  |  | O |  |  |
| P2.L8.N.1150 |  | Paint Prime & 1st Coat - Priority Walls / L8 / North | 10d | 2025-08-19 A | 2025-08-29 A | P2.L8.N.1160 SS | 100% |  | 2025-10-14 | 2025-10-27 |  |  | 80 | P2.B2.09.91.110 | PAINT | TA | P2-5 |  | TA | PAINT-1 |  |  |  |  |  |
| P2.L8.N.1190 |  | OH - Electrical - 480/277v Distribution / L8 / North | 10d | 2025-09-22 A | 2025-11-07 A | P2.L8.N.1030, P2.L8.N.1150 | 100% |  | 2025-10-10 | 2025-10-23 |  |  | 80 | P2.B2.26.05.210 | ELEC | TA | P2-5 |  | TA | ELEC-2 |  | 1 | O |  |  |
| P2.L8.N.1420 |  | Framing - Balance of Framing & Door Frames / L8 / North | 10d | 2025-09-29 A | 2025-10-24 A | P2.L8.N.1150 | 100% |  | 2025-09-29 | 2025-10-10 |  |  | 80 | A1310 | GYP |  | P2-5 |  | TA | GYP-1 |  |  |  |  |  |
| P2.L8.N.1180 |  | OH - Plumbing Piping / L8 / North | 15d | 2025-09-30 A | 2025-12-12 | P2.L8.N.1030 | 33% | 10d | 2025-12-01 | 2025-12-19 | 67d | 0d | 80 | P2.B2.22.14.210 | PLMB | TA | P2-5 | Harris | TA | PLMB |  | 1 | O |  |  |
| P2.L8.N.1230 |  | OH - Electrical - 208/120v Branch / L8 / North | 10d | 2025-11-10 A | 2025-12-12 | P2.L8.N.1190, P2.BIM.L8.40.140 |  | 10d | 2025-12-08 | 2025-12-19 | 16d | 0d | 80 | P2.B2.26.05.310 | ELEC | TA | P2-5 |  | TA | ELEC-2 |  | 2 | O |  |  |
| P2.L8.N.1210 |  | OH - Hang Duct - HP Mains / L8 / North | 10d | 2025-11-17 A | 2025-12-12 | P2.L8.N.1170, P2.L8.N.1030, DDD3200, P2.L8.N.1090, P2.L8.S.1210 |  | 10d | 2025-12-29 | 2026-01-12 | 54d | 0d | 80 | P2.B2.23.30.210 | HVAC | TA | P2-5 | Harris | TA | HVAC |  | 1 |  |  |  |
| P2.L8.N.1200 |  | Firestop - Thru Wall - Priority Walls / L8 / North | 5d | 2025-12-01 | 2025-12-05 | P2.L8.N.1150 |  |  |  |  | 79d | 25d | 80 | P2.B2.07.84.110 | FIRESTO | TA | P2-5 |  | TA | FIRESTO | AT48 |  | O |  |  |
| P2.L8.N.1220 |  | OH - HVAC Piping (High) / L8 / North | 10d | 2025-12-01 A | 2026-01-13 | P2.L8.N.1170, P2.L8.N.1030, P2.L8.N.1090, P2.L8.S.1220 |  | 10d | 2026-01-28 | 2026-02-10 | 41d | 0d | 80 | P2.B2.23.20.410 | FIT | TA | P2-5 | Harris | TA | FIT-2 |  | 2 |  |  |  |
| P2.L8.N.1250 |  | Pull Wire - Electrical - 480/277v Distribution / L8 / North | 10d | 2025-12-01 | 2025-12-12 | P2.L8.N.1190, P2.8.HE.2803.1050 |  |  |  |  | 104d | 63d | 80 |  | ELEC | TA | P2-5 |  | TA | ELEC-2 |  | To Trim Devices & Term Panel | O |  |  |
| P2.L8.N.1260 |  | OH - DALT - HP Mains / L8 / North | 5d | 2025-12-01 A | 2025-12-19 | P2.L8.N.1210 |  | 5d | 2026-01-13 | 2026-01-19 | 54d | 0d | 80 | P2.B2.23.30.310 | TAB | TA | P2-5 | Harris | TA | TAB-1 |  | 2 |  |  |  |
| P2.L8.N.1300 |  | OH - Hang Duct - LP Branch (High) / L8 / North | 10d | 2025-12-01 A | 2025-12-29 | P2.L8.N.1260 SS |  | 10d | 2026-01-13 | 2026-01-26 | 54d | 0d | 80 | P2.B2.23.30.410 | HVAC | TA | P2-5 | Harris | TA | HVAC |  | 3 |  |  |  |
| P2.L8.N.1310 |  | OH - Set & Connect Mech Equipment / L8 / North | 15d | 2025-12-01 A | 2026-01-13 | P2.L8.N.1260 |  | 15d | 2026-01-20 | 2026-02-09 | 54d | 0d | 80 | P2.B2.23.82.110 | HVAC | TA | P2-5 | Harris | TA | HVAC |  | 3 |  |  |  |
| P2.L8.N.1430 |  | In Wall - Plumbing - Framing / L8 / North | 10d | 2025-12-01 A | 2025-12-12 | P2.L8.N.1420 |  | 10d |  |  | 26d | 10d | 80 | P2.B2.22.05.410 | PLMB |  | P2-5 | Harris | TA | PLMB |  |  | O |  |  |
| P2.L8.N.1450 |  | In Wall - Backing/Blocking/Supports / L8 / North | 10d | 2025-12-01 | 2025-12-12 | P2.L8.N.1420 |  |  |  |  | 26d | 10d | 80 | P2.B2.09.21.510 | R/I.IW |  | P2-5 |  | TA | R/I.IW |  |  | O |  |  |
| P2.L8.N.1570 |  | OH - Hang Duct - LP Branch (Low) / L8 / North | 10d | 2025-12-01 A | 2026-01-13 | P2.L8.N.1300 |  | 10d | 2026-01-27 | 2026-02-09 | 54d | 0d | 80 | P2.B2.23.30.410 | HVAC | TA | P2-5 | Harris | TA | HVAC |  | 3 |  |  |  |
| P2.L8.N.1240 |  | OH - Plumbing - Test / L8 / North | 15d | 2025-12-15 | 2026-01-06 | P2.L8.N.1180 |  |  |  |  | 69d | 0d | 80 | P2.B2.22.14.310 | PLMB |  | P2-5 | Harris | TA | PLMB |  | 2 | O |  |  |
| P2.L8.N.1440 |  | In Wall - Electrical - Framing / L8 / North | 10d | 2025-12-15 | 2025-12-29 | P2.L8.N.1090, P2.L8.N.1420, P2.L8.N.1230 |  |  |  |  | 16d | 0d | 80 | P2.B2.26.05.610 | ELEC |  | P2-5 |  | TA | ELEC-2 |  |  | O |  |  |
| P2.L8.N.1290 |  | OH - Insulate HP Duct / L8 / North | 10d | 2025-12-22 | 2026-01-06 | P2.L8.N.1260 |  |  |  |  | 104d | 33d | 80 | P2.B2.23.07.310 | INSUL | TA | P2-5 | Harris | TA | INSUL-3 |  | 3 |  |  |  |
| P2.L8.N.1460 |  | AHJ Inspections - Wall Close In / L8 / North | 5d | 2025-12-30 | 2026-01-06 | P2.L8.N.1430, P2.L8.N.1440, P2.L8.N.1450 |  |  |  |  | 16d | 8d | 40 | P2.B2.01.43.110 | FM |  | P2-5 |  | TA | FM |  |  |  |  |  |
| P2.L8.N.1280 |  | OH - Insulate Plumbing / L8 / North | 10d | 2026-01-07 | 2026-01-20 | P2.L8.N.1240 |  |  |  |  | 69d | 11d | 80 | P2.B2.22.07.510 | INSUL |  | P2-5 | Harris | TA | INSUL-3 |  | 3 |  |  |  |
| P2.L8.N.1320 |  | OH - Electrical - Equip Tie In / L8 / North | 10d | 2026-01-14 | 2026-01-27 | P2.L8.N.1310 |  |  |  |  | 54d | 0d | 80 | P2.B2.26.05.410 | ELEC | TA | P2-5 |  | TA | ELEC-2 |  | 4 |  |  |  |
| P2.L8.N.1350 |  | OH - Insulate LP Duct / L8 / North | 10d | 2026-01-14 | 2026-01-27 | P2.L8.N.1570, P2.L8.N.1200 |  |  |  |  | 54d | 0d | 80 | P2.B2.23.07.410 | INSUL |  | P2-5 | Harris | TA | INSUL-3 |  | 4 |  |  |  |
| P2.L8.N.1370 |  | OH - Conduit - Low Volt - BAS/Controls / L8 / North | 10d | 2026-01-14 | 2026-01-27 | P2.L8.N.1310 |  |  |  |  | 64d | 6d | 80 |  | BAS | TA | P2-5 | Harris | TA | BAS-1 |  | 5 |  |  |  |
| P2.L8.N.1400 |  | OH - Conduit - Low Volt - Security / L8 / North | 10d | 2026-01-14 | 2026-01-27 | P2.L8.N.1310 |  |  |  |  | 64d | 6d | 80 |  | ELEC | TA | P2-5 |  | TA | ELEC-2 |  | 5 |  |  |  |
| P2.L8.N.1560 |  | OH - HVAC Piping (Low) / L8 / North | 13d | 2026-01-14 | 2026-01-30 | P2.L8.N.1220, P2.L8.S.1560 |  |  |  |  | 41d | 0d | 80 | P2.B2.23.20.410 | FIT | TA | P2-5 | Harris | TA | FIT-2 |  | 2 |  | Jan. 7th per Harris Schedule |  |
| P2.L8.N.1470 |  | Hang-Tape-Finish - Walls and Hard Lid Ceilings / L8 / North | 13d | 2026-01-19 | 2026-02-04 | P2.L8.N.1460, P2.SUM.175, DDD3200, P2.L6.S.1470 |  |  |  |  | 8d | 0d | 80 | P2.B2.09.21.710 | GYP |  | P2-5 |  | TA | GYP-1 |  |  |  |  | 2 |
| P2.L8.N.1360 |  | Pull Wire - Electrical - 208/120v Branch & Equip / L8 / North | 20d | 2026-01-28 | 2026-02-24 | P2.L8.N.1230, P2.L8.N.1320, P2.L8.N.1440 FF+5d |  |  |  |  | 54d | 13d | 80 |  | ELEC |  | P2-5 |  | TA | ELEC-2 |  | To Trim Devices & Term Panel |  |  |  |
| P2.L8.N.1380 |  | OH - Conduit - Low Volt - Fire Alarm / L8 / North | 10d | 2026-01-28 | 2026-02-10 | P2.L8.N.1310, P2.L8.N.1350 |  |  |  |  | 54d | 0d | 80 |  | FA |  | P2-5 |  | TA | FA-1 |  | 5 |  |  |  |
| P2.L8.N.1390 |  | OH - Conduit - Low Volt - Telecom / L8 / North | 10d | 2026-01-28 | 2026-02-10 | P2.L8.N.1350 |  |  |  |  | 54d | 0d | 80 |  | ELEC |  | P2-5 |  | TA | ELEC-2 |  | 5 |  |  |  |
| P2.L8.N.1270 |  | OH - HVAC Piping - Test / L8 / North | 15d | 2026-02-02 | 2026-02-20 | P2.L8.N.1560 |  |  |  |  | 41d | 0d | 80 | P2.B2.23.20.510 | FIT | TA | P2-5 | Harris | TA | FIT-2 |  | 3 |  |  |  |
| P2.L8.N.1480 |  | Spray/Seal/Firestop - Head of Wall / L8 / North | 10d | 2026-02-05 | 2026-02-18 | P2.L8.N.1470 |  |  |  |  | 58d | 17d | 80 | P2.B2.07.84.310 | FIRSAFE |  | P2-5 |  | TA | FIRSAFE | AT47 | To Finishes - Paint |  |  |  |
| P2.L8.N.1490 |  | Firestop - Thru Wall / L8 / North | 10d | 2026-02-05 | 2026-02-18 | P2.L8.N.1470, P2.L8.N.1280 |  |  |  |  | 58d | 17d | 80 | P2.B2.07.84.210 | FIRESTO |  | P2-5 |  | TA | FIRESTO | AT48 | To Finishes - Paint |  |  |  |
| P2.L8.N.1500 |  | Pull Wire - Low Volt - BAS/Controls / L8 / North | 10d | 2026-02-05 | 2026-02-18 | P2.L8.N.1470, P2.L8.N.1370 |  |  |  |  | 58d | 17d | 80 |  | BAS |  | P2-5 | Harris | TA | BAS-1 |  | To Trim Finishes |  |  |  |
| P2.L8.N.1530 |  | Pull Wire - Low Volt - Security / L8 / North | 10d | 2026-02-05 | 2026-02-18 | P2.L8.N.1470, P2.L8.N.1400 |  |  |  |  | 58d | 17d | 80 |  | LOWVOLT |  | P2-5 |  | TA | LOWVOLT-1 |  | To Trim Finishes |  |  |  |
| P2.L8.N.1510 |  | Pull Wire - Low Volt - Fire Alarm / L8 / North | 10d | 2026-02-11 | 2026-02-24 | P2.L8.N.1470, P2.L8.N.1380 |  |  |  |  | 54d | 13d | 80 |  | FA |  | P2-5 |  | TA | FA-1 |  | To Trim Finishes |  |  |  |
| P2.L8.N.1520 |  | Pull Wire - Low Volt - Telecom / L8 / North | 10d | 2026-02-11 | 2026-02-24 | P2.L8.N.1470, P2.L8.N.1390 |  |  |  |  | 54d | 13d | 80 |  | CIT |  | P2-5 |  | TA | CIT |  | To Trim Finishes |  |  |  |
| P2.L8.N.1330 |  | OH - HVAC Piping - Equip Tie In / L8 / North | 15d | 2026-02-23 | 2026-03-13 | P2.L8.N.1310, P2.L8.N.1270, CX.B2.HYDR.1000 |  |  |  |  | 41d | 0d | 80 | P2.B2.23.20.610 | FIT | TA | P2-5 | Harris | TA | FIT-2 |  |  |  |  |  |
| P2.L8.N.1340 |  | OH - Insulate HVAC Pipe / L8 / North | 10d | 2026-02-23 | 2026-03-06 | P2.L8.N.1290, P2.L8.N.1270 |  |  |  |  | 71d | 49d | 80 | P2.B2.22.07.610 | INSUL | TA | P2-5 | Harris | TA | INSUL-3 |  | 4 |  |  |  |
| P2.L8.N.1550 |  | Trades Inspect & Verify R/I Work Completed to Specs / L8 / North | 5d | 2026-03-16 | 2026-03-20 | P2.L8.N.1250, P2.L8.N.1360, P2.L8.N.1500, P2.L8.N.1510, P2.L8.N.1520, P2.L8.N.1530, P2.L8.N.1490, P2.L8.N.1480, P2.L8.N.1330 |  |  |  |  | 41d | 0d | 40 |  | T |  | P2-5 |  |  | T |  |  |  |  |  |

| ID | WBS | Activity | Type | Duration | Start | Finish | Predecessors | Complete | Planned start | Planned finish | Total float | Free float | Temp Orig Dur | Resp / SRLM | 744 | PHASE | RESP UPD | RESP / Trade | Update Status | Z.RESP | Testing Type |
| --- | --- | --- | --- | --- | --- | --- | --- | --- | --- | --- | --- | --- | --- | --- | --- | --- | --- | --- | --- | --- | --- |
|  | 1 | **House Electrical Rooms / Level 8** |  |  | 2025-07-21 | 2026-01-02 |  |  |  |  |  |  |  |  |  |  |  |  |  |  |  |
|  | 9 | **House Electrical Room 8-5959** |  |  | 2025-07-21 | 2026-01-02 |  |  |  |  |  |  |  |  |  |  |  |  |  |  |  |
| P2.8.HE.5959.1000 |  | Framing and Blocking / L8 / South / 5959 |  | 3d | 2025-07-21 A | 2025-07-24 A | P2.L8.S.1090 | 100% | 2025-08-19 | 2025-08-21 |  |  | 24 | GYP | ND | P2-5 | ND | GYP-1 |  |  |  |
| P2.8.HE.5959.1010 |  | In Wall Rough In / L8 / South / 5959 |  | 2d | 2025-07-28 A | 2025-07-31 A | P2.8.HE.5959.1000 | 100% | 2025-08-22 | 2025-08-25 |  |  | 16 | R/I.IW | ND | P2-5 | ND | R/I.IW |  |  |  |
| P2.8.HE.5959.1020 |  | Inspections - Wall Close In / L8 / South / 5959 |  | 2d | 2025-07-28 A | 2025-07-31 A | P2.8.HE.5959.1010 | 100% | 2025-08-26 | 2025-08-27 |  |  | 16 | AHJ | ND | P2-5 | ND | AHJ |  |  |  |
| P2.8.HE.5959.1030 |  | Hang-Tape-Finish / L8 / South / 5959 |  | 5d | 2025-09-02 A | 2025-09-10 A | P2.8.HE.5959.1020, P2.FAC.2.Z1.180, P2.L11.5-9.140 | 100% | 2025-10-03 | 2025-10-09 |  |  | 40 | GYP | ND | P2-5 | ND | GYP-1 | O |  |  |
| P2.8.HE.5959.1040 |  | Paint Prime & 1st Coat / L8 / South / 5959 |  | 2d | 2025-09-29 A | 2025-09-30 A | P2.8.HE.5959.1030 | 100% | 2025-10-10 | 2025-10-13 |  |  | 16 | PAINT | ND | P2-5 | ND | PAINT-1 | O |  |  |
| P2.8.HE.5959.1050 |  | Cans/Troughs/Backboxes/XFMRs / L8 / South / 5959 |  | 5d | 2025-11-03 A | 2025-11-07 A | P2.8.HE.5959.1040 | 100% | 2025-12-01 | 2025-12-05 |  |  | 40 | ELEC | ND | P2-5 | ND | ELEC-2 | O |  |  |
| P2.8.HE.5959.1060 |  | Risers and OH Conduit Connections / L8 / South / 5959 |  | 5d | 2025-11-10 A | 2025-11-14 A | P2.8.HE.5959.1050 | 100% | 2025-12-08 | 2025-12-12 |  |  | 40 | ELEC | ND | P2-5 | ND | ELEC-2 | O |  |  |
| P2.8.HE.5959.1070 |  | Pull Wire - In From Distribution Panels / Out to Branch Circuits / L8 / South / 5959 |  | 5d | 2025-12-01 | 2025-12-05 | P2.8.HE.5959.1060 |  |  |  | 31d | 0d | 40 | ELEC | ND | P2-5 | ND | ELEC-2 | O |  |  |
| P2.8.HE.5959.1080 |  | Panelboards, Interconnect Wiring, and Remaining Room Buildout of All Systems / L8 / South / 5959 |  | 10d | 2025-12-01 | 2025-12-12 | BP1.262.3.100, P2.8.HE.5959.1060, BP1.262.3.210 |  |  |  | 26d | 0d | 80 | ELEC | ND | P2-5 | ND | ELEC-2 | O |  |  |
| P2.8.HE.5959.1090 |  | Test & Terminate / L8 / South / 5959 |  | 5d | 2025-12-15 | 2025-12-19 | P2.8.HE.5959.1080, P2.8.HE.5959.1070 |  |  |  | 26d | 0d | 40 | ELEC | ND | P2-5 | ND | ELEC-2 |  |  |  |
| P2.8.HE.5959.1100 |  | Paint - Finish Coat / L8 / South / 5959 |  | 2d | 2025-12-22 | 2025-12-23 | P2.8.HE.5959.1090 |  |  |  | 26d | 0d | 16 | PAINT | ND | P2-5 | ND | PAINT-1 |  |  |  |
| P2.8.HE.5959.1110 |  | Trim All MEPF Finishes / L8 / South / 5959 |  | 2d | 2025-12-24 | 2025-12-26 | P2.8.HE.5959.1100 |  |  |  | 26d | 0d | 16 | MEP | ND | P2-5 | ND | MEP-2 |  | Harris |  |
| P2.8.HE.5959.1120 |  | Flooring / L8 / South / 5959 |  | 2d | 2025-12-29 | 2025-12-30 | P2.8.HE.5959.1110 |  |  |  | 26d | 0d | 16 | FLOOR | ND | P2-5 | ND | FLOOR |  |  |  |
| P2.8.HE.5959.1130 |  | Doors & Hardware / L8 / South / 5959 |  | 2d | 2025-12-31 | 2026-01-02 | P2.8.HE.5959.1120 |  |  |  | 26d | 0d | 16 | DFH | ND | P2-5 | ND | DFH |  |  | AT29 |
| P2.8.HE.5959.1140 |  | Panels Ready to Energize - Lock Doors and Limit Access / L8 / South / 5959 | milestone | 0d | 2026-01-02 | 2026-01-02 | P2.8.HE.5959.1090, P2.8.HE.5959.1130 FF |  |  |  | 26d | 0d | 0 | ELEC | ND | P2-5 | ND | ELEC-2 |  |  |  |
|  | 8 | **House Electrical Room 8-2803** |  |  | 2025-08-14 | 2026-01-02 |  |  |  |  |  |  |  |  |  |  |  |  |  |  |  |
| P2.8.HE.2803.1000 |  | Framing and Blocking / L8 / North / 2803 |  | 3d | 2025-08-14 A | 2025-08-18 A | P2.L8.N.1090 | 100% | 2025-09-15 | 2025-09-17 |  |  | 24 | GYP | ND | P2-5 | ND | GYP-1 |  |  |  |
| P2.8.HE.2803.1010 |  | In Wall Rough In / L8 / North / 2803 |  | 2d | 2025-08-15 A | 2025-08-19 A | P2.8.HE.2803.1000 | 100% | 2025-09-18 | 2025-09-19 |  |  | 16 | R/I.IW | ND | P2-5 | ND | R/I.IW |  |  |  |
| P2.8.HE.2803.1020 |  | Inspections - Wall Close In / L8 / North / 2803 |  | 2d | 2025-08-19 A | 2025-08-21 A | P2.8.HE.2803.1010 | 100% | 2025-09-22 | 2025-09-23 |  |  | 16 | AHJ | ND | P2-5 | ND | AHJ |  |  |  |
| P2.8.HE.2803.1030 |  | Hang-Tape-Finish / L8 / North / 2803 |  | 5d | 2025-08-22 A | 2025-09-04 A | P2.8.HE.2803.1020, P2.FAC.2.Z1.190, P2.MR.2-8.140 | 100% | 2025-09-24 | 2025-09-30 |  |  | 40 | GYP | ND | P2-5 | ND | GYP-1 | O |  |  |
| P2.8.HE.2803.1040 |  | Paint Prime & 1st Coat / L8 / North / 2803 |  | 2d | 2025-09-29 A | 2025-09-30 A | P2.8.HE.2803.1030 | 100% | 2025-10-08 | 2025-10-09 |  |  | 16 | PAINT | ND | P2-5 | ND | PAINT-1 | O |  |  |
| P2.8.HE.2803.1050 |  | Cans/Troughs/Backboxes/XFMRs / L8 / North / 2803 |  | 5d | 2025-11-05 A | 2025-11-11 A | P2.8.HE.2803.1040 | 100% | 2025-12-03 | 2025-12-09 |  |  | 40 | ELEC | ND | P2-5 | ND | ELEC-2 | O |  |  |
| P2.8.HE.2803.1060 |  | Risers and OH Conduit Connections / L8 / North / 2803 |  | 5d | 2025-11-12 A | 2025-11-18 A | P2.8.HE.2803.1050 | 100% | 2025-12-10 | 2025-12-16 |  |  | 40 | ELEC | ND | P2-5 | ND | ELEC-2 | O |  |  |
| P2.8.HE.2803.1070 |  | Pull Wire - In From Distribution Panels / Out to Branch Circuits / L8 / North / 2803 |  | 5d | 2025-12-01 | 2025-12-05 | P2.8.HE.2803.1060 |  |  |  | 31d | 0d | 40 | ELEC | ND | P2-5 | ND | ELEC-2 | O |  |  |
| P2.8.HE.2803.1080 |  | Panelboards, Interconnect Wiring, and Remaining Room Buildout of All Systems / L8 / North / 2803 |  | 10d | 2025-12-01 | 2025-12-12 | P2.8.HE.2803.1060, BP1.262.3.100, BP1.262.3.210 |  |  |  | 26d | 0d | 80 | ELEC | ND | P2-5 | ND | ELEC-2 | O |  |  |
| P2.8.HE.2803.1090 |  | Test & Terminate / L8 / North / 2803 |  | 5d | 2025-12-15 | 2025-12-19 | P2.8.HE.2803.1080, P2.8.HE.2803.1070 |  |  |  | 26d | 0d | 40 | ELEC | ND | P2-5 | ND | ELEC-2 |  |  |  |
| P2.8.HE.2803.1100 |  | Paint - Finish Coat / L8 / North / 2803 |  | 2d | 2025-12-22 | 2025-12-23 | P2.8.HE.2803.1090 |  |  |  | 26d | 0d | 16 | PAINT | ND | P2-5 | ND | PAINT-1 |  |  |  |
| P2.8.HE.2803.1110 |  | Trim All MEPF Finishes / L8 / North / 2803 |  | 2d | 2025-12-24 | 2025-12-26 | P2.8.HE.2803.1100 |  |  |  | 26d | 0d | 16 | MEP | ND | P2-5 | ND | MEP-2 |  | Harris |  |
| P2.8.HE.2803.1120 |  | Flooring / L8 / North / 2803 |  | 2d | 2025-12-29 | 2025-12-30 | P2.8.HE.2803.1110 |  |  |  | 26d | 0d | 16 | FLOOR | ND | P2-5 | ND | FLOOR |  |  |  |
| P2.8.HE.2803.1130 |  | Doors & Hardware / L8 / North / 2803 |  | 2d | 2025-12-31 | 2026-01-02 | P2.8.HE.2803.1120 |  |  |  | 26d | 0d | 16 | DFH | ND | P2-5 | ND | DFH |  |  | AT29 |
| P2.8.HE.2803.1140 |  | Panels Ready to Energize - Lock Doors and Limit Access / L8 / North / 2803 | milestone | 0d | 2026-01-02 | 2026-01-02 | P2.8.HE.2803.1090, P2.8.HE.2803.1130 FF |  |  |  | 26d | 0d | 0 | ELEC | ND | P2-5 | ND | ELEC-2 |  |  |  |

| ID | WBS | Activity | Type | Duration | Start | Finish | Predecessors | Complete | Planned start | Planned finish | Total float | Free float | Temp Orig Dur | Resp / SRLM | 744 | PHASE | RESP UPD | RESP / Trade | Z.RESP | Testing Type | Update Status |
| --- | --- | --- | --- | --- | --- | --- | --- | --- | --- | --- | --- | --- | --- | --- | --- | --- | --- | --- | --- | --- | --- |
|  | 2 | **L8 / IT Closets** |  |  | 2025-09-05 | 2026-05-14 |  |  |  |  |  |  |  |  |  |  |  |  |  |  |  |
|  | 1 | **IT Closet 8-2822** |  |  | 2025-10-20 | 2026-05-07 |  |  |  |  |  |  |  |  |  |  |  |  |  |  |  |
| P2.8.IT.2822.100 |  | Hang Plywood Backboards / L8 / North / 2822 |  | 2d | 2025-10-20 A | 2025-10-24 A | P2.L8.N.1140 | 100% | 2025-10-01 | 2025-10-02 |  |  | 16 | CRAFT | ND | P2-5 | ND | CRAFT |  |  |  |
| P2.8.IT.2822.110 |  | Paint Prime & 1st Coat / L8 / North / 2822 |  | 2d | 2025-10-27 A | 2025-10-28 A | P2.8.IT.2822.100 | 100% | 2025-10-03 | 2025-10-06 |  |  | 16 | PAINT | ND | P2-5 | ND | PAINT-1 |  |  |  |
| P2.8.IT.2822.120 |  | Electrical Panels / Conduit Connections / Wire Terminations / L8 / North / 2822 |  | 5d | 2025-10-28 A | 2025-10-31 A | P2.8.IT.2822.110, P2.8.HE.2803.1070 FF | 100% | 2025-10-17 | 2025-10-23 |  |  | 40 | ELEC | ND | P2-5 | ND | ELEC-2 |  |  |  |
| P2.8.IT.2822.130 |  | HVAC Equipment / L8 / North / 2822 |  | 5d | 2025-12-30 | 2026-01-06 | P2.L8.N.1300, P2.8.IT.2822.110 |  |  |  | 143d | 0d | 40 | HVAC | ND | P2-5 | ND | HVAC | Harris |  |  |
| P2.8.IT.2822.140 |  | Trim all MEPF / L8 / North / 2822 |  | 2d | 2026-01-07 | 2026-01-08 | P2.8.IT.2822.130, P2.8.IT.2822.120 |  |  |  | 143d | 0d | 16 | MEP | ND | P2-5 | ND | MEP-2 | Harris |  |  |
| P2.8.IT.2822.150 |  | Flooring / L8 / North / 2822 |  | 5d | 2026-01-09 | 2026-01-15 | P2.8.IT.2822.140 |  |  |  | 143d | 0d | 40 | FLOOR | ND | P2-5 | ND | FLOOR |  |  |  |
| P2.8.IT.2822.180 |  | Grounding and Bonding / L8 / North / 2822 |  | 2d | 2026-01-16 | 2026-01-19 | P2.8.IT.2822.150 |  |  |  | 143d | 46d | 16 | ELEC |  | P2-5 | ND | ELEC-2 |  |  |  |
| P2.8.IT.2822.170 |  | OH Cable Tray / L8 / North / 2822 |  | 5d | 2026-03-18 | 2026-03-24 | P2.L8.N.1390, P2.L8.S.1390, P2.L8.INT.S.1340, P2.L8.INT.N.1340 |  |  |  | 97d | 0d | 40 | ELEC |  | P2-5 | ND | ELEC-2 |  |  |  |
| P2.8.IT.2822.260 |  | Room Ready - CIT / L8 / North / 2822 |  | 5d | 2026-03-25 | 2026-03-31 | P2.8.IT.2822.150, P2.8.IT.2822.170, P2.8.IT.2822.180 |  |  |  | 97d | 0d | 40 | CIT |  | P2-5 |  | CIT |  |  |  |
| P2.8.IT.2822.160 |  | Equipment Racks and Ladders / L8 / North / 2822 |  | 5d | 2026-04-01 | 2026-04-07 | P2.8.IT.2822.150, P2.8.IT.2822.260 |  |  |  | 97d | 0d | 40 | CIT |  | P2-5 |  | CIT |  |  |  |
| P2.8.IT.2822.190 |  | Pull Wire - Backbone Cabling Into Racks / L8 / North / 2822 |  | 5d | 2026-04-08 | 2026-04-14 | P2.8.IT.2822.160, P2.8.IT.2822.260 |  |  |  | 97d | 0d | 40 | CIT |  | P2-5 |  | CIT |  |  |  |
| P2.8.IT.2822.200 |  | Pull Wire - Horizontal Cabling Out to Termination Points / L8 / North / 2822 |  | 5d | 2026-04-08 | 2026-04-14 | P2.8.IT.2822.160, P2.8.IT.2822.260 |  |  |  | 97d | 0d | 40 | CIT |  | P2-5 |  | CIT |  |  |  |
| P2.8.IT.2822.210 |  | Paint - Finish Coat / L8 / North / 2822 |  | 2d | 2026-04-15 | 2026-04-16 | P2.8.IT.2822.200, P2.8.IT.2822.190 |  |  |  | 97d | 0d | 16 | PAINT |  | P2-5 |  | PAINT-1 |  |  |  |
| P2.8.IT.2822.220 |  | Terminations and Punch Downs - All Cabling / L8 / North / 2822 |  | 15d | 2026-04-17 | 2026-05-07 | P2.8.IT.2822.210, P2.8.IT.2822.160, P2.8.IT.2822.260 |  |  |  | 97d | 0d | 40 | CIT |  | P2-5 |  | CIT |  |  |  |
| P2.8.IT.2822.230 |  | Doors & Hardware / L8 / North / 2822 |  | 2d | 2026-04-17 | 2026-04-20 | P2.8.IT.2822.210 |  |  |  | 107d | 0d | 16 | DFH |  | P2-5 |  | DFH |  | AT29 |  |
| P2.8.IT.2822.240 |  | Energize Elec Panels Serving Comms Racks / L8 / North / 2822 |  | 3d | 2026-04-21 | 2026-04-23 | P2.8.HE.2803.1140, P2.8.IT.2822.230, CX.B2.SWGR.1010, CX.B2.MVEE.1010 |  |  |  | 107d | 10d | 24 | ELEC |  | P2-5 |  | ELEC-2 |  |  |  |
| P2.8.IT.2822.250 |  | Comms Racks In Service / L8 / North / 2822 | milestone | 0d | 2026-05-07 | 2026-05-07 | P2.8.IT.2822.220, P2.8.IT.2822.240 |  |  |  | 97d | 5d | 0 | CIT |  | P2-5 |  | CIT |  |  |  |
|  | 2 | **IT Closet 8-3903** |  |  | 2025-09-05 | 2026-05-14 |  |  |  |  |  |  |  |  |  |  |  |  |  |  |  |
| P2.8.IT.3903.130 |  | HVAC Equipment / L8 / South / 3903 |  | 5d | 2025-09-05 A | 2025-09-19 A | P2.L8.S.1140 | 100% | 2025-11-19 | 2025-11-25 |  |  | 40 | HVAC |  | P2-5 | ND | HVAC | Harris |  |  |
| P2.8.IT.3903.100 |  | Hang Plywood Backboards / L8 / South / 3903 |  | 2d | 2025-10-20 A | 2025-10-24 A | P2.L8.S.1140 | 100% | 2025-10-01 | 2025-10-02 |  |  | 16 | CRAFT | ND | P2-5 | ND | CRAFT |  |  |  |
| P2.8.IT.3903.110 |  | Paint Prime & 1st Coat / L8 / South / 3903 |  | 2d | 2025-10-27 A | 2025-10-28 A | P2.8.IT.3903.100 | 100% | 2025-10-03 | 2025-10-06 |  |  | 16 | PAINT | ND | P2-5 | ND | PAINT-1 |  |  |  |
| P2.8.IT.3903.120 |  | Electrical Panels / Conduit Connections / Wire Terminations / L8 / South / 3903 |  | 5d | 2025-10-28 A | 2025-10-31 A | P2.8.IT.3903.110, P2.8.HE.5959.1070 FF | 100% | 2025-10-17 | 2025-10-23 |  |  | 40 | ELEC | ND | P2-5 | ND | ELEC-2 |  |  |  |
| P2.8.IT.3903.140 |  | Trim all MEPF / L8 / South / 3903 |  | 2d | 2025-12-08 | 2025-12-09 | P2.8.IT.3903.130, P2.8.IT.3903.120 |  |  |  | 158d | 0d | 16 | MEP |  | P2-5 | ND | MEP-2 | Harris |  | O |
| P2.8.IT.3903.150 |  | Flooring / L8 / South / 3903 |  | 5d | 2025-12-10 | 2025-12-16 | P2.8.IT.3903.140 |  |  |  | 158d | 0d | 40 | FLOOR |  | P2-5 | ND | FLOOR |  |  | O |
| P2.8.IT.3903.180 |  | Grounding and Bonding / L8 / South / 3903 |  | 2d | 2025-12-17 | 2025-12-18 | P2.8.IT.3903.150 |  |  |  | 158d | 66d | 16 | ELEC |  | P2-5 | ND | ELEC-2 |  |  |  |
| P2.8.IT.3903.170 |  | OH Cable Tray / L8 / South / 3903 |  | 5d | 2026-03-18 | 2026-03-24 | P2.L8.S.1390, P2.L8.N.1390, P2.L8.INT.S.1340, P2.L8.INT.N.1340 |  |  |  | 92d | 0d | 40 | ELEC |  | P2-5 | ND | ELEC-2 |  |  |  |
| P2.8.IT.3903.260 |  | Room Ready - CIT / L8 / South / 3903 |  | 5d | 2026-03-25 | 2026-03-31 | P2.8.IT.3903.150, P2.8.IT.3903.170, P2.8.IT.3903.180 |  |  |  | 92d | 0d | 40 | CIT |  | P2-5 |  | CIT |  |  |  |
| P2.8.IT.3903.160 |  | Equipment Racks and Ladders / L8 / South / 3903 |  | 5d | 2026-04-01 | 2026-04-07 | P2.8.IT.3903.150, P2.8.IT.3903.260 |  |  |  | 92d | 0d | 40 | CIT |  | P2-5 |  | CIT |  |  |  |
| P2.8.IT.3903.190 |  | Pull Wire - Backbone Cabling Into Racks / L8 / South / 3903 |  | 5d | 2026-04-08 | 2026-04-14 | P2.8.IT.3903.160, P2.8.IT.3903.260 |  |  |  | 92d | 0d | 40 | CIT |  | P2-5 |  | CIT |  |  |  |
| P2.8.IT.3903.200 |  | Pull Wire - Horizontal Cabling Out to Termination Points / L8 / South / 3903 |  | 5d | 2026-04-08 | 2026-04-14 | P2.8.IT.3903.160, P2.8.IT.3903.260 |  |  |  | 92d | 0d | 40 | CIT |  | P2-5 |  | CIT |  |  |  |
| P2.8.IT.3903.210 |  | Paint - Finish Coat / L8 / South / 3903 |  | 2d | 2026-04-15 | 2026-04-16 | P2.8.IT.3903.200, P2.8.IT.3903.190 |  |  |  | 92d | 0d | 16 | PAINT |  | P2-5 |  | PAINT-1 |  |  |  |
| P2.8.IT.3903.220 |  | Terminations and Punch Downs - All Cabling / L8 / South / 3903 |  | 20d | 2026-04-17 | 2026-05-14 | P2.8.IT.3903.210, P2.8.IT.3903.160, P2.8.IT.3903.260 |  |  |  | 92d | 0d | 40 | CIT |  | P2-5 |  | CIT |  |  |  |
| P2.8.IT.3903.230 |  | Doors & Hardware / L8 / South / 3903 |  | 2d | 2026-04-17 | 2026-04-20 | P2.8.IT.3903.210 |  |  |  | 107d | 0d | 16 | DFH |  | P2-5 |  | DFH |  | AT29 |  |
| P2.8.IT.3903.240 |  | Energize Elec Panels Serving Comms Racks / L8 / South / 3903 |  | 3d | 2026-04-21 | 2026-04-23 | P2.8.HE.5959.1140, P2.8.IT.3903.230, CX.B2.SWGR.1010, CX.B2.MVEE.1010 |  |  |  | 107d | 15d | 24 | ELEC |  | P2-5 |  | ELEC-2 |  |  |  |
| P2.8.IT.3903.250 |  | Comms Racks In Service / L8 / South / 3903 | milestone | 0d | 2026-05-14 | 2026-05-14 | P2.8.IT.3903.220, P2.8.IT.3903.240 |  |  |  | 92d | 0d | 0 | CIT |  | P2-5 |  | CIT |  |  |  |

| ID | WBS | Activity | Type | Duration | Start | Finish | Predecessors | Complete | Planned start | Planned finish | Total float | Free float | Temp Orig Dur | Resp / SRLM | PHASE | Z.RESP | RESP UPD | RESP / Trade | 744 | Update Status | Testing Type | Pick | *NIH Resp Check* |
| --- | --- | --- | --- | --- | --- | --- | --- | --- | --- | --- | --- | --- | --- | --- | --- | --- | --- | --- | --- | --- | --- | --- | --- |
|  | 4 | **IT Closet 8-3948** |  |  | 2025-09-05 | 2026-05-07 |  |  |  |  |  |  |  |  |  |  |  |  |  |  |  |  |  |
| P2.8.IT.3948.130 |  | HVAC Equipment / L8 / South / 3948 |  | 5d | 2025-09-05 A | 2025-09-19 A | P2.L8.S.1140 | 100% | 2025-11-19 | 2025-11-25 |  |  | 40 | HVAC | P2-5 | Harris | ND | HVAC |  |  |  |  |  |
| P2.8.IT.3948.100 |  | Hang Plywood Backboards / L8 / South / 3948 |  | 2d | 2025-10-20 A | 2025-10-24 A | P2.L8.S.1140 | 100% | 2025-10-01 | 2025-10-02 |  |  | 16 | CRAFT | P2-5 |  | ND | CRAFT | ND |  |  |  |  |
| P2.8.IT.3948.110 |  | Paint Prime & 1st Coat / L8 / South / 3948 |  | 2d | 2025-10-27 A | 2025-10-28 A | P2.8.IT.3948.100 | 100% | 2025-10-03 | 2025-10-06 |  |  | 16 | PAINT | P2-5 |  | ND | PAINT-1 | ND |  |  |  |  |
| P2.8.IT.3948.120 |  | Electrical Panels / Conduit Connections / Wire Terminations / L8 / South / 3948 |  | 5d | 2025-10-28 A | 2025-10-31 A | P2.8.IT.3948.110, P2.8.HE.5959.1070 FF | 100% | 2025-10-17 | 2025-10-23 |  |  | 40 | ELEC | P2-5 |  | ND | ELEC-2 | ND |  |  |  |  |
| P2.8.IT.3948.140 |  | Trim all MEPF / L8 / South / 3948 |  | 2d | 2025-12-08 | 2025-12-09 | P2.8.IT.3948.130, P2.8.IT.3948.120 |  |  |  | 163d | 0d | 16 | MEP | P2-5 | Harris | ND | MEP-2 |  | O |  |  |  |
| P2.8.IT.3948.150 |  | Flooring / L8 / South / 3948 |  | 5d | 2025-12-10 | 2025-12-16 | P2.8.IT.3948.140 |  |  |  | 163d | 0d | 40 | FLOOR | P2-5 |  | ND | FLOOR |  | O |  |  |  |
| P2.8.IT.3948.180 |  | Grounding and Bonding / L8 / South / 3948 |  | 2d | 2025-12-17 | 2025-12-18 | P2.8.IT.3948.150 |  |  |  | 163d | 66d | 16 | ELEC | P2-5 |  | ND | ELEC-2 |  |  |  |  |  |
| P2.8.IT.3948.170 |  | OH Cable Tray / L8 / South / 3948 |  | 5d | 2026-03-18 | 2026-03-24 | P2.L8.S.1390, P2.L8.N.1390, P2.L8.INT.S.1340, P2.L8.INT.N.1340 |  |  |  | 97d | 0d | 40 | ELEC | P2-5 |  | ND | ELEC-2 |  |  |  |  |  |
| P2.8.IT.3948.260 |  | Room Ready - CIT / L8 / South / 3948 |  | 5d | 2026-03-25 | 2026-03-31 | P2.8.IT.3948.150, P2.8.IT.3948.170, P2.8.IT.3948.180 |  |  |  | 97d | 0d | 40 | CIT | P2-5 |  |  | CIT |  |  |  |  |  |
| P2.8.IT.3948.160 |  | Equipment Racks and Ladders / L8 / South / 3948 |  | 5d | 2026-04-01 | 2026-04-07 | P2.8.IT.3948.150, P2.8.IT.3948.260 |  |  |  | 97d | 0d | 40 | CIT | P2-5 |  |  | CIT |  |  |  |  |  |
| P2.8.IT.3948.190 |  | Pull Wire - Backbone Cabling Into Racks / L8 / South / 3948 |  | 5d | 2026-04-08 | 2026-04-14 | P2.8.IT.3948.160, P2.8.IT.3948.260 |  |  |  | 97d | 0d | 40 | CIT | P2-5 |  |  | CIT |  |  |  |  |  |
| P2.8.IT.3948.200 |  | Pull Wire - Horizontal Cabling Out to Termination Points / L8 / South / 3948 |  | 5d | 2026-04-08 | 2026-04-14 | P2.8.IT.3948.160, P2.8.IT.3948.260 |  |  |  | 97d | 0d | 40 | CIT | P2-5 |  |  | CIT |  |  |  |  |  |
| P2.8.IT.3948.210 |  | Paint - Finish Coat / L8 / South / 3948 |  | 2d | 2026-04-15 | 2026-04-16 | P2.8.IT.3948.200, P2.8.IT.3948.190 |  |  |  | 97d | 0d | 16 | PAINT | P2-5 |  |  | PAINT-1 |  |  |  |  |  |
| P2.8.IT.3948.220 |  | Terminations and Punch Downs - All Cabling / L8 / South / 3948 |  | 15d | 2026-04-17 | 2026-05-07 | P2.8.IT.3948.210, P2.8.IT.3948.160, P2.8.IT.3948.260 |  |  |  | 97d | 0d | 40 | CIT | P2-5 |  |  | CIT |  |  |  |  |  |
| P2.8.IT.3948.230 |  | Doors & Hardware / L8 / South / 3948 |  | 2d | 2026-04-17 | 2026-04-20 | P2.8.IT.3948.210 |  |  |  | 107d | 0d | 16 | DFH | P2-5 |  |  | DFH |  |  | AT29 |  |  |
| P2.8.IT.3948.240 |  | Energize Elec Panels Serving Comms Racks / L8 / South / 3948 |  | 3d | 2026-04-21 | 2026-04-23 | P2.8.HE.5959.1140, P2.8.IT.3948.230, CX.B2.SWGR.1010, CX.B2.MVEE.1010 |  |  |  | 107d | 10d | 24 | ELEC | P2-5 |  |  | ELEC-2 |  |  |  |  |  |
| P2.8.IT.3948.250 |  | Comms Racks In Service / L8 / South / 3948 | milestone | 0d | 2026-05-07 | 2026-05-07 | P2.8.IT.3948.220, P2.8.IT.3948.240 |  |  |  | 97d | 5d | 0 | CIT | P2-5 |  |  | CIT |  |  |  |  |  |
|  | 7 | **FINISHES - CORE & SUPPORT SPACES / Level 8** |  |  | 2025-12-01 | 2026-12-29 |  |  |  |  |  |  |  |  |  |  |  |  |  |  |  |  |  |
|  | 7KSF12 | **Offices - Z1/Z2 (~7,300 sf) / Level 8** |  |  | 2026-02-26 | 2026-09-28 |  |  |  |  |  |  |  |  |  |  |  |  |  |  |  |  |  |
|  | 1 | **Finishes** |  |  | 2026-02-26 | 2026-09-28 |  |  |  |  |  |  |  |  |  |  |  |  |  |  |  |  |  |
| P2.L8.F.CS.1000 |  | Paint Prime & 1st Coat Walls / L8 / Offices Z1/Z2 |  | 5d | 2026-02-26 | 2026-03-04 | P2.L8.S.1550 |  |  |  | 82d | 0d | 40 | PAINT | P2-5 |  | TA | PAINT-1 |  |  |  | From R/I Work Completion |  |
| P2.L8.F.CS.1020 |  | R/I - Ceiling Assemblies & Supports - All Trades (A/V, Oper Part, Glass Part, etc.) / L8 / Offices Z1/Z2 |  | 5d | 2026-03-05 | 2026-03-11 | P2.L8.F.CS.1000 |  |  |  | 93d | 0d | 40 | ACT | P2-5 |  | TA | ACT |  |  |  |  | ! |
| P2.L8.F.CS.1010 |  | T-Grid / L8 / Offices Z1/Z2 |  | 5d | 2026-03-12 | 2026-03-18 | P2.L8.F.CS.1020 |  |  |  | 93d | 0d | 40 | ACT | P2-5 |  | TA | ACT |  |  |  |  |  |
| P2.L8.F.CS.1050 |  | Sprinkler Heads in T-Grid / L8 / Offices Z1/Z2 |  | 5d | 2026-03-19 | 2026-03-25 | P2.L8.F.CS.1010 |  |  |  | 93d | 0d | 40 | FP | P2-5 |  | TA | FP-1 |  |  |  |  |  |
| P2.L8.F.CS.1030 |  | Diffusers in T-Grid / L8 / Offices Z1/Z2 |  | 5d | 2026-03-26 | 2026-04-01 | P2.L8.F.CS.1050, P2.L8.F.CS.1010 |  |  |  | 93d | 0d | 40 | HVAC | P2-5 | Harris |  | HVAC |  |  |  |  |  |
| P2.L8.F.CS.1040 |  | Lights & Elec Devices in T-Grid / L8 / Offices Z1/Z2 |  | 10d | 2026-04-02 | 2026-04-15 | P2.L8.F.CS.1010, P2.L8.F.CS.1030 |  |  |  | 93d | 0d | 40 | ELEC | P2-5 |  |  | ELEC-2 |  |  |  |  |  |
| P2.L8.F.CS.1070 |  | Fire Alarm in T-Grid / L8 / Offices Z1/Z2 |  | 5d | 2026-04-16 | 2026-04-22 | P2.L8.F.CS.1010, P2.L8.F.CS.1040 |  |  |  | 93d | 0d | 40 | FA | P2-5 |  |  | FA-1 |  |  |  |  |  |
| P2.L8.F.CS.1060 |  | Low Voltage in T-Grid / L8 / Offices Z1/Z2 |  | 5d | 2026-04-23 | 2026-04-29 | P2.L8.F.CS.1010, P2.L8.F.CS.1070 |  |  |  | 93d | 0d | 40 | LOWVOLT | P2-5 |  |  | LOWVOLT-1 |  |  |  |  |  |
| P2.L8.F.CS.1080 |  | OH Ceiling Signoff / L8 / Offices Z1/Z2 |  | 5d | 2026-04-30 | 2026-05-06 | P2.L8.F.CS.1040, P2.L8.F.CS.1050, P2.L8.F.CS.1030, P2.L8.F.CS.1060, P2.L8.F.CS.1070 |  |  |  | 93d | 0d | 40 | MEP | P2-5 | Harris |  | MEP |  |  |  |  |  |
| P2.L8.F.CS.1110 |  | Drop Ceiling Tile / L8 / Offices Z1/Z2 |  | 5d | 2026-05-07 | 2026-05-13 | P2.L8.F.CS.1080 |  |  |  | 93d | 0d | 40 | ACT | P2-5 |  |  | ACT |  |  |  |  |  |
| P2.L8.F.CS.1090 |  | Millwork / L8 / Offices Z1/Z2 |  | 5d | 2026-05-14 | 2026-05-20 | P2.L8.F.CS.1080, P2.L8.F.CS.1110 |  |  |  | 93d | 0d | 40 | MILL | P2-5 |  |  | MILL |  |  |  |  |  |
| P2.L8.F.CS.1100 |  | Plumbing Fixtures / L8 / Offices Z1/Z2 |  | 5d | 2026-05-21 | 2026-05-28 | P2.L8.F.CS.1090 FF, P2.L8.F.CS.1090, P2.L8.F.CS.1080 |  |  |  | 93d | 0d | 40 | PLMB | P2-5 | Harris |  | PLMB |  |  |  |  |  |
| P2.L8.F.CS.1120 |  | Floor Prep / L8 / Offices Z1/Z2 |  | 5d | 2026-05-29 | 2026-06-04 | P2.L8.F.CS.1090, P2.L8.F.CS.1100, P2.L8.F.CS.1110 |  |  |  | 93d | 0d | 40 | FLOOR | P2-5 |  |  | FLOOR |  |  |  |  |  |
| P2.L8.F.CS.1130 |  | Floor Finishes / L8 / Offices Z1/Z2 |  | 5d | 2026-06-05 | 2026-06-11 | P2.L8.F.CS.1120 |  |  |  | 93d | 0d | 40 | FLOOR | P2-5 |  |  | FLOOR |  |  |  |  |  |
| P2.L8.F.CS.1140 |  | Doors & Hardware / L8 / Offices Z1/Z2 |  | 5d | 2026-06-12 | 2026-06-18 | P2.L8.F.CS.1130 |  |  |  | 93d | 0d | 40 | DFH | P2-5 |  |  | DFH |  |  | AT29 |  |  |
| P2.L8.F.CS.2300 |  | Interior Glazing / L8 / Offices Z1/Z2 |  | 5d | 2026-06-12 | 2026-06-18 | P2.L8.F.CS.1130 |  |  |  | 100d | 0d | 40 | GLASS | P2-5 |  |  | GLASS |  |  |  |  | TBD |
| P2.L8.F.CS.1150 |  | Paint - Finish Coat / L8 / Offices Z1/Z2 |  | 5d | 2026-06-19 | 2026-06-25 | P2.L8.F.CS.1130, P2.L8.F.CS.1140, P2.L8.F.CS.2300 |  |  |  | 100d | 0d | 40 | PAINT | P2-5 |  |  | PAINT-1 |  |  |  |  |  |
| P2.L8.F.CS.1190 |  | Interior Building Signage / L8 / Offices Z1/Z2 |  | 5d | 2026-06-26 | 2026-07-02 | P2.L8.F.CS.1150 |  |  |  | 125d | 25d | 40 | SIGN | P2-5 |  |  | SIGN |  |  |  |  |  |
| P2.L8.F.CS.1200 |  | Floor Base / L8 / Offices Z1/Z2 |  | 5d | 2026-06-26 | 2026-07-02 | P2.L8.F.CS.1150 |  |  |  | 100d | 0d | 40 | FLOOR | P2-5 |  |  | FLOOR |  |  |  |  |  |
| P2.L8.F.CS.1180 |  | Building Specialities / L8 / Offices Z1/Z2 |  | 5d | 2026-07-06 | 2026-07-10 | P2.L8.F.CS.1150, P2.L8.F.CS.1200 |  |  |  | 100d | 0d | 40 | SPECIAL | P2-5 |  |  | SPECIAL |  |  |  |  |  |
| P2.L8.F.CS.1210 |  | Demountable Partitions / L8 / Offices Z1/Z2 |  | 5d | 2026-07-06 | 2026-07-10 | P2.L8.F.CS.1200 |  |  |  | 110d | 10d | 40 | DPART | P2-5 |  |  | DPART |  |  |  |  | TBD |
| P2.L8.F.CS.1170 |  | Trim T-Stats / L8 / Offices Z1/Z2 |  | 5d | 2026-07-13 | 2026-07-17 | P2.L8.F.CS.1180, P2.L8.F.CS.1150 |  |  |  | 100d | 0d | 40 | BAS | P2-5 | Harris |  | BAS-1 |  |  |  |  |  |
| P2.L8.F.CS.1160 |  | Set AV/IT Devices and Configure / L8 / Offices Z1/Z2 |  | 5d | 2026-07-20 | 2026-07-24 | P2.L8.F.CS.1170, P2.L8.F.CS.1150 |  |  |  | 100d | 0d | 40 | LOWVOLT | P2-5 |  |  | LOWVOLT-1 |  |  |  |  |  |
| P2.L8.F.CS.1220 |  | Trim Electrical / L8 / Offices Z1/Z2 |  | 5d | 2026-07-27 | 2026-07-31 | P2.L8.F.CS.1160, P2.L8.F.CS.1210, P2.L8.F.CS.1170 SS |  |  |  | 100d | 0d | 40 | ELEC | P2-5 |  |  | ELEC-2 |  |  |  |  |  |
| P2.L8.F.CS.1230 |  | Trim Telephone/ Data / L8 / Offices Z1/Z2 |  | 5d | 2026-08-03 | 2026-08-07 | P2.L8.F.CS.1220, P2.L8.F.CS.1220 SS |  |  |  | 100d | 0d | 40 | LOWVOLT | P2-5 |  |  | LOWVOLT-1 |  |  |  |  |  |
| P2.L8.F.CS.1240 |  | Work Completion List - Finishes / L8 / Offices Z1/Z2 |  | 5d | 2026-08-10 | 2026-08-14 | P2.L8.F.CS.1230, P2.L8.F.CS.1180, P2.L8.F.CS.1100, P2.L8.F.CS.1160, P2.L8.F.CS.1190, P2.L8.F.CS.1140 |  |  |  | 100d | 0d | 40 | FINISH | P2-5 |  |  | FINISH |  |  |  |  |  |
| P2.L8.F.CS.1250 |  | Rough Clean / L8 / Offices Z1/Z2 |  | 5d | 2026-08-17 | 2026-08-21 | P2.L8.F.CS.1240 |  |  |  | 100d | 0d | 40 | FCLEAN | P2-5 |  |  | FCLEAN |  |  |  |  |  |
| P2.L8.F.CS.1260 |  | FF&E / L8 / Offices Z1/Z2 |  | 5d | 2026-08-24 | 2026-08-28 | P2.L8.F.CS.1250 |  |  |  | 100d | 0d | 40 | FURN | P2-5 |  |  | FURN |  |  |  |  |  |
| P2.L8.F.CS.1270 |  | Prepare Punchlist / L8 / Offices Z1/Z2 |  | 5d | 2026-08-31 | 2026-09-04 | P2.L8.F.CS.1260 |  |  |  | 100d | 0d | 40 | QC | P2-5 |  |  | QC |  |  |  |  |  |
| P2.L8.F.CS.1280 |  | Correct Punchlist / L8 / Offices Z1/Z2 |  | 10d | 2026-09-08 | 2026-09-21 | P2.L8.F.CS.1270 |  |  |  | 100d | 0d | 80 | FINISH | P2-5 |  |  | FINISH |  |  |  |  |  |
| P2.L8.F.CS.1290 |  | Final Clean / L8 / Offices Z1/Z2 |  | 5d | 2026-09-22 | 2026-09-28 | P2.L8.F.CS.1280 |  |  |  | 100d | 63d | 40 | QC | P2-5 |  |  | QC |  |  |  | To QC |  |

| ID | WBS | Activity | Duration | Start | Finish | Predecessors | Total float | Free float | Pick | Temp Orig Dur | Resp / SRLM | PHASE | RESP / Trade | *NIH Resp Check* | Z.RESP | Testing Type |
| --- | --- | --- | --- | --- | --- | --- | --- | --- | --- | --- | --- | --- | --- | --- | --- | --- |
|  | 2 | **Closeout** |  |  |  |  |  |  |  |  |  |  |  |  |  |  |
|  | 7KSF1 | **Offices - Z2/Z3 (~7,500 sf) / Level 8** |  | 2026-03-23 | 2026-10-21 |  |  |  |  |  |  |  |  |  |  |  |
|  | 1 | **Finishes** |  | 2026-03-23 | 2026-10-21 |  |  |  |  |  |  |  |  |  |  |  |
| P2.L8.F.CS.2000 |  | Paint Prime & 1st Coat Walls / L8 / Offices Z2/Z3 | 5d | 2026-03-23 | 2026-03-27 | P2.L8.N.1550, P2.L8.F.CS.1000 | 70d | 0d | From R/I Work Completion | 40 | PAINT | P2-5 | PAINT-1 |  |  |  |
| P2.L8.F.CS.2020 |  | R/I - Ceiling Assemblies & Supports - All Trades (A/V, Oper Part, Glass Part, etc.) / L8 / Offices Z2/Z3 | 5d | 2026-03-30 | 2026-04-03 | P2.L8.F.CS.2000 | 76d | 0d |  | 40 | ACT | P2-5 | ACT | ! |  |  |
| P2.L8.F.CS.2010 |  | T-Grid / L8 / Offices Z2/Z3 | 5d | 2026-04-06 | 2026-04-10 | P2.L8.F.CS.2020 | 76d | 0d |  | 40 | ACT | P2-5 | ACT |  |  |  |
| P2.L8.F.CS.2050 |  | Sprinkler Heads in T-Grid / L8 / Offices Z2/Z3 | 5d | 2026-04-13 | 2026-04-17 | P2.L8.F.CS.2010 | 76d | 0d |  | 40 | FP | P2-5 | FP-1 |  |  |  |
| P2.L8.F.CS.2030 |  | Diffusers in T-Grid / L8 / Offices Z2/Z3 | 5d | 2026-04-20 | 2026-04-24 | P2.L8.F.CS.2050, P2.L8.F.CS.2010 | 76d | 0d |  | 40 | HVAC | P2-5 | HVAC |  | Harris |  |
| P2.L8.F.CS.2040 |  | Lights & Elec Devices in T-Grid / L8 / Offices Z2/Z3 | 10d | 2026-04-27 | 2026-05-08 | P2.L8.F.CS.2030, P2.L8.F.CS.2010 | 76d | 0d |  | 40 | ELEC | P2-5 | ELEC-2 |  |  |  |
| P2.L8.F.CS.2070 |  | Fire Alarm in T-Grid / L8 / Offices Z2/Z3 | 5d | 2026-05-11 | 2026-05-15 | P2.L8.F.CS.2010, P2.L8.F.CS.2040 | 76d | 0d |  | 40 | FA | P2-5 | FA-1 |  |  |  |
| P2.L8.F.CS.2060 |  | Low Voltage in T-Grid / L8 / Offices Z2/Z3 | 5d | 2026-05-18 | 2026-05-22 | P2.L8.F.CS.2070, P2.L8.F.CS.2010 | 76d | 0d |  | 40 | LOWVOLT | P2-5 | LOWVOLT-1 |  |  |  |
| P2.L8.F.CS.2080 |  | OH Ceiling Signoff / L8 / Offices Z2/Z3 | 5d | 2026-05-26 | 2026-06-01 | P2.L8.F.CS.2060, P2.L8.F.CS.2070, P2.L8.F.CS.2030, P2.L8.F.CS.2040, P2.L8.F.CS.2050 | 76d | 0d |  | 40 | MEP | P2-5 | MEP |  | Harris |  |
| P2.L8.F.CS.2110 |  | Drop Ceiling Tile / L8 / Offices Z2/Z3 | 5d | 2026-06-02 | 2026-06-08 | P2.L8.F.CS.2080 | 76d | 0d |  | 40 | ACT | P2-5 | ACT |  |  |  |
| P2.L8.F.CS.2090 |  | Millwork / L8 / Offices Z2/Z3 | 5d | 2026-06-09 | 2026-06-15 | P2.L8.F.CS.2110, P2.L8.F.CS.2080 | 76d | 0d |  | 40 | MILL | P2-5 | MILL |  |  |  |
| P2.L8.F.CS.2100 |  | Plumbing Fixtures / L8 / Offices Z2/Z3 | 5d | 2026-06-16 | 2026-06-22 | P2.L8.F.CS.2090 FF, P2.L8.F.CS.2090, P2.L8.F.CS.2080 | 76d | 0d |  | 40 | PLMB | P2-5 | PLMB |  | Harris |  |
| P2.L8.F.CS.2120 |  | Floor Prep / L8 / Offices Z2/Z3 | 5d | 2026-06-23 | 2026-06-29 | P2.L8.F.CS.2110, P2.L8.F.CS.2090, P2.L8.F.CS.2100 | 76d | 0d |  | 40 | FLOOR | P2-5 | FLOOR |  |  |  |
| P2.L8.F.CS.2130 |  | Floor Finishes / L8 / Offices Z2/Z3 | 5d | 2026-06-30 | 2026-07-07 | P2.L8.F.CS.2120 | 76d | 0d |  | 40 | FLOOR | P2-5 | FLOOR |  |  |  |
| P2.L8.F.CS.2140 |  | Doors & Hardware / L8 / Offices Z2/Z3 | 5d | 2026-07-08 | 2026-07-14 | P2.L8.F.CS.2130 | 76d | 0d |  | 40 | DFH | P2-5 | DFH |  |  | AT29 |
| P2.L8.F.CS.2310 |  | Interior Glazing / L8 / Offices Z1/Z2 | 5d | 2026-07-08 | 2026-07-14 | P2.L8.F.CS.2130 | 83d | 0d |  | 40 | GLASS | P2-5 | GLASS | TBD |  |  |
| P2.L8.F.CS.2150 |  | Paint - Finish Coat / L8 / Offices Z2/Z3 | 5d | 2026-07-15 | 2026-07-21 | P2.L8.F.CS.2140, P2.L8.F.CS.2130, P2.L8.F.CS.2310 | 83d | 0d |  | 40 | PAINT | P2-5 | PAINT-1 |  |  |  |
| P2.L8.F.CS.2190 |  | Interior Building Signage / L8 / Offices Z2/Z3 | 5d | 2026-07-22 | 2026-07-28 | P2.L8.F.CS.2150 | 108d | 25d |  | 40 | SIGN | P2-5 | SIGN |  |  |  |
| P2.L8.F.CS.2200 |  | Floor Base / L8 / Offices Z2/Z3 | 5d | 2026-07-22 | 2026-07-28 | P2.L8.F.CS.2150 | 83d | 0d |  | 40 | FLOOR | P2-5 | FLOOR |  |  |  |
| P2.L8.F.CS.2180 |  | Building Specialities / L8 / Offices Z2/Z3 | 5d | 2026-07-29 | 2026-08-04 | P2.L8.F.CS.2150, P2.L8.F.CS.2200 | 83d | 0d |  | 40 | SPECIAL | P2-5 | SPECIAL |  |  |  |
| P2.L8.F.CS.2210 |  | Demountable Partitions / L8 / Offices Z2/Z3 | 5d | 2026-07-29 | 2026-08-04 | P2.L8.F.CS.2200 | 93d | 10d |  | 40 | DPART | P2-5 | DPART | TBD |  |  |
| P2.L8.F.CS.2170 |  | Trim T-Stats / L8 / Offices Z2/Z3 | 5d | 2026-08-05 | 2026-08-11 | P2.L8.F.CS.2180, P2.L8.F.CS.2150 | 83d | 0d |  | 40 | BAS | P2-5 | BAS-1 |  | Harris |  |
| P2.L8.F.CS.2160 |  | Set AV/IT Devices and Configure / L8 / Offices Z2/Z3 | 5d | 2026-08-12 | 2026-08-18 | P2.L8.F.CS.2170, P2.L8.F.CS.2150 | 83d | 0d |  | 40 | LOWVOLT | P2-5 | LOWVOLT-1 |  |  |  |
| P2.L8.F.CS.2220 |  | Trim Electrical / L8 / Offices Z2/Z3 | 5d | 2026-08-19 | 2026-08-25 | P2.L8.F.CS.2160, P2.L8.F.CS.2210, P2.L8.F.CS.2170 SS | 83d | 0d |  | 40 | ELEC | P2-5 | ELEC-2 |  |  |  |
| P2.L8.F.CS.2230 |  | Trim Telephone/ Data / L8 / Offices Z2/Z3 | 5d | 2026-08-26 | 2026-09-01 | P2.L8.F.CS.2220, P2.L8.F.CS.2220 SS | 83d | 0d |  | 40 | LOWVOLT | P2-5 | LOWVOLT-1 |  |  |  |
| P2.L8.F.CS.2240 |  | Work Completion List - Finishes / L8 / Offices Z2/Z3 | 5d | 2026-09-02 | 2026-09-09 | P2.L8.F.CS.2180, P2.L8.F.CS.2100, P2.L8.F.CS.2230, P2.L8.F.CS.2160, P2.L8.F.CS.2190, P2.L8.F.CS.2140 | 83d | 0d |  | 40 | FINISH | P2-5 | FINISH |  |  |  |
| P2.L8.F.CS.2250 |  | Rough Clean / L8 / Offices Z2/Z3 | 5d | 2026-09-10 | 2026-09-16 | P2.L8.F.CS.2240 | 83d | 0d |  | 40 | FCLEAN | P2-5 | FCLEAN |  |  |  |
| P2.L8.F.CS.2260 |  | FF&E / L8 / Offices Z2/Z3 | 5d | 2026-09-17 | 2026-09-23 | P2.L8.F.CS.2250 | 83d | 0d |  | 40 | FURN | P2-5 | FURN |  |  |  |
| P2.L8.F.CS.2270 |  | Prepare Punchlist / L8 / Offices Z2/Z3 | 5d | 2026-09-24 | 2026-09-30 | P2.L8.F.CS.2260, P2.HZ.E.81 | 83d | 0d |  | 40 | QC | P2-5 | QC |  |  |  |
| P2.L8.F.CS.2280 |  | Correct Punchlist / L8 / Offices Z2/Z3 | 10d | 2026-10-01 | 2026-10-14 | P2.L8.F.CS.2270 | 83d | 0d |  | 80 | FINISH | P2-5 | FINISH |  |  |  |
| P2.L8.F.CS.2290 |  | Final Clean / L8 / Offices Z2/Z3 | 5d | 2026-10-15 | 2026-10-21 | P2.L8.F.CS.2280 | 83d | 46d | To QC | 40 | QC | P2-5 | QC |  |  |  |

| ID | WBS | Activity | Duration | Start | Finish | Predecessors | Total float | Free float | Pick | Temp Orig Dur | Update Status | *NIH Resp Check* | Resp / SRLM | PHASE | RESP UPD | RESP / Trade | Z.RESP | Testing Type |
| --- | --- | --- | --- | --- | --- | --- | --- | --- | --- | --- | --- | --- | --- | --- | --- | --- | --- | --- |
|  | 2 | **Closeout** |  |  |  |  |  |  |  |  |  |  |  |  |  |  |  |  |
|  | 5 | **Bathrooms - Break Rooms - Locker Rooms / Level 8** |  | 2025-12-01 | 2026-10-01 |  |  |  |  |  |  |  |  |  |  |  |  |  |
|  | 4 | **Bathrooms 8-3952 / 8-3954** |  | 2025-12-01 | 2026-10-01 |  |  |  |  |  |  |  |  |  |  |  |  |  |
| P2.L8.BR.1010 |  | Countertop Support Framing / L8 / Toilets 395X | 5d | 2025-12-01 | 2025-12-05 | P2.L8.S.1420 | 134d | 84d | ? | 40 | O | T.MISCMTL | MISCMTL | P2-5 | ND | MISCMTL |  |  |
| P2.L8.BR.1000 |  | Plumbing - Set Pipe Carriers / L8 / Toilets 395X | 5d | 2026-03-31 | 2026-04-06 | P2.L8.S.1240, P2.L7.BR.2000 | 50d | 0d | ? | 40 |  | ! | PLMB | P2-5 |  | PLMB | Harris |  |
| P2.L8.BR.1020 |  | Frame - Chase Walls and Hard Lid Ceilings / L8 / Toilets 395X | 5d | 2026-04-07 | 2026-04-13 | P2.L8.BR.1010, P2.L8.BR.1000 | 50d | 0d |  | 40 |  | ! | GYP | P2-5 |  | GYP-1 |  |  |
| P2.L8.BR.1030 |  | Plumbing - Test Pipe @ Chase Walls / L8 / Toilets 395X | 5d | 2026-04-07 | 2026-04-13 | P2.L8.BR.1000 | 60d | 10d |  | 40 |  |  | PLMB | P2-5 |  | PLMB | Harris |  |
| P2.L8.BR.1050 |  | Trim Sprinkler Drops _ Hard Lids / L8 / Toilets 395X | 5d | 2026-04-14 | 2026-04-20 | P2.L8.BR.1020 | 50d | 0d |  | 40 |  | ! | FP | P2-5 |  | FP-1 |  |  |
| P2.L8.BR.1060 |  | Duct Drops _ Hard Lids / L8 / Toilets 395X | 5d | 2026-04-21 | 2026-04-27 | P2.L8.BR.1050, P2.L8.BR.1020 | 50d | 0d |  | 40 |  | T.R/I.IW.MECH.HVAC.SM | HVAC | P2-5 |  | HVAC | Harris |  |
| P2.L8.BR.1080 |  | In Wall - Insulate Plumbing / L8 / Toilets 395X | 5d | 2026-04-28 | 2026-05-04 | P2.L8.BR.1060, P2.L8.BR.1030 | 50d | 0d |  | 40 |  |  | INSUL | P2-5 |  | INSUL-3 | Harris |  |
| P2.L8.BR.1040 |  | R/I - Electrical _ Hard Lids / L8 / Toilets 395X | 5d | 2026-05-05 | 2026-05-11 | P2.L8.BR.1080, P2.L8.BR.1020 | 50d | 0d |  | 40 |  | ! | ELEC | P2-5 |  | ELEC-3 |  |  |
| P2.L8.BR.1070 |  | R/I - Fire Alarm _ Hard Lids / L8 / Toilets 395X | 5d | 2026-05-12 | 2026-05-18 | P2.L8.BR.1040, P2.L8.BR.1020 | 50d | 0d |  | 40 |  | ! | ELEC | P2-5 |  | ELEC-3 |  |  |
| P2.L8.BR.1090 |  | Inspection - Close In - Chase Walls and Hard Lid Ceilings / L8 / Toilets 395X | 5d | 2026-05-19 | 2026-05-26 | P2.L8.BR.1060, P2.L8.BR.1040, P2.L8.BR.1050, P2.L8.BR.1080, P2.L8.BR.1070 | 50d | 0d |  | 40 |  | ! | AHJ | P2-5 |  | AHJ |  |  |
| P2.L8.BR.1100 |  | Hang-Tape-Finish _ Chase Walls and Hard Lids Ceilings / L8 / Toilets 395X | 5d | 2026-05-27 | 2026-06-02 | P2.L8.BR.1090 | 50d | 0d |  | 40 |  | ! | GYP | P2-5 |  | GYP-1 |  |  |
| P2.L8.BR.1110 |  | Paint Prime & 1st Coat _ Walls & Hard Lid Ceilings / L8 / Toilets 395X | 5d | 2026-06-03 | 2026-06-09 | P2.L8.BR.1100 | 50d | 0d |  | 40 |  | ! | PAINT | P2-5 |  | PAINT-1 |  |  |
| P2.L8.BR.1140 |  | Ceiling Grid / L8 / Toilets 395X | 5d | 2026-06-10 | 2026-06-16 | P2.L8.BR.1110 | 50d | 0d |  | 40 |  | ! | ACT | P2-5 |  | ACT |  |  |
| P2.L8.BR.1170 |  | Trim Sprinkler Drops _ Ceiling Tiles / L8 / Toilets 395X | 5d | 2026-06-17 | 2026-06-23 | P2.L8.BR.1140 | 50d | 0d |  | 40 |  | ! | FP | P2-5 |  | FP-1 |  |  |
| P2.L8.BR.1160 |  | Trim - HVAC G/R/D's / L8 / Toilets 395X | 5d | 2026-06-24 | 2026-06-30 | BP1.233.3.410, P2.L8.BR.1170, P2.L8.BR.1140 | 50d | 0d |  | 40 |  | ! | HVAC | P2-5 |  | HVAC | Harris |  |
| P2.L8.BR.1130 |  | Pull Wire - Electrical / L8 / Toilets 395X | 5d | 2026-07-01 | 2026-07-08 | P2.L8.BR.1110, P2.L8.BR.1140, P2.L8.BR.1160 | 50d | 0d |  | 40 |  | ! | ELEC | P2-5 |  | ELEC-2 |  |  |
| P2.L8.BR.1120 |  | Pull Wire - Fire Alarm / L8 / Toilets 395X | 5d | 2026-07-09 | 2026-07-15 | P2.L8.BR.1130, P2.L8.BR.1110, P2.L8.BR.1140 | 142d | 45d |  | 40 |  | ! | ELEC | P2-5 |  | ELEC-2 |  |  |
| P2.L8.BR.1150 |  | Lights - Set & Terminate / L8 / Toilets 395X | 5d | 2026-07-09 | 2026-07-15 | P2.L8.BR.1130, P2.L8.BR.1140 | 50d | 0d |  | 40 |  | ! | ELEC | P2-5 |  | ELEC-2 |  |  |
| P2.L8.BR.1180 |  | Inspection - Ceiling Close In - ACT Ceilings / L8 / Toilets 395X | 5d | 2026-07-16 | 2026-07-22 | P2.L8.BR.1170, P2.L8.BR.1150, P2.L8.BR.1160 | 50d | 0d |  | 40 |  |  | AHJ | P2-5 |  | AHJ |  |  |
| P2.L8.BR.1190 |  | Ceiling Tiles / L8 / Toilets 395X | 5d | 2026-07-23 | 2026-07-29 | P2.L8.BR.1180 | 50d | 0d |  | 40 |  | ! | ACT | P2-5 |  | ACT |  |  |
| P2.L8.BR.1200 |  | Wall Tile / L8 / Toilets 395X | 5d | 2026-07-30 | 2026-08-05 | P2.L8.BR.1190 | 50d | 0d |  | 40 |  | ! | TILE | P2-5 |  | TILE |  |  |
| P2.L8.BR.1310 |  | Flooring Prep - Epoxy Floors / L8 / Toilets 395X | 1d | 2026-08-06 | 2026-08-06 | P2.L8.BR.1200, P2.L7.BR.2220 | 50d | 0d |  | 40 |  | ! | EPOXYF | P2-5 |  | EPOXYF |  |  |
| P2.L8.BR.1320 |  | Flooring - Epoxy Floors / L8 / Toilets 395X | 4d | 2026-08-07 | 2026-08-12 | P2.L8.BR.1310 | 50d | 0d |  | 40 |  | ! | EPOXYF | P2-5 |  | EPOXYF |  |  |
| P2.L8.BR.1250 |  | Doors & Hardware / L8 / Toilets 395X | 5d | 2026-08-13 | 2026-08-19 | P2.L8.BR.1320 | 50d | 0d |  | 40 |  | ! | DFH | P2-5 |  | DFH |  | AT29 |
| P2.L8.BR.1210 |  | Paint - Finish Coat / L8 / Toilets 395X | 5d | 2026-08-20 | 2026-08-26 | P2.L8.BR.1250 | 97d | 0d |  | 40 |  | ! | PAINT | P2-5 |  | PAINT-1 |  |  |
| P2.L8.BR.1220 |  | Countertops / L8 / Toilets 395X | 5d | 2026-08-27 | 2026-09-02 | P2.L8.BR.1250, P2.L8.BR.1210 | 97d | 0d |  | 40 |  | ! | MILL | P2-5 |  | MILL |  |  |
| P2.L8.BR.1260 |  | Lockers & Benches / L8 / Toilets 395X | 5d | 2026-09-03 | 2026-09-10 | P2.L8.BR.1210, P2.L8.BR.1220 | 97d | 0d |  | 40 |  | ! | SPECIAL | P2-5 |  | SPECIAL |  |  |
| P2.L8.BR.1270 |  | Plumbing Fixtures / Sinks / Showers / L8 / Toilets 395X | 5d | 2026-09-03 | 2026-09-10 | P2.L8.BR.1220 | 102d | 0d |  | 40 |  | ! | PLMB | P2-5 |  | PLMB | Harris |  |
| P2.L8.BR.1240 |  | Trim - Electrical Devices / L8 / Toilets 395X | 5d | 2026-09-11 | 2026-09-17 | P2.L8.BR.1210, P2.L8.BR.1260 | 97d | 0d |  | 40 |  | ! | ELEC | P2-5 |  | ELEC-2 |  |  |
| P2.L8.BR.1280 |  | Toilet Partitions / L8 / Toilets 395X | 5d | 2026-09-11 | 2026-09-17 | P2.L8.BR.1270 | 102d | 5d |  | 40 |  | ! | SPECIAL | P2-5 |  | SPECIAL |  |  |
| P2.L8.BR.1290 |  | Bathroom Accessories / L8 / Toilets 395X | 5d | 2026-09-11 | 2026-09-17 | P2.L8.BR.1270 | 102d | 5d |  | 40 |  | ! | SPECIAL | P2-5 |  | SPECIAL |  |  |
| P2.L8.BR.1230 |  | Trim - Fire Alarm Devices / L8 / Toilets 395X | 5d | 2026-09-18 | 2026-09-24 | P2.L8.BR.1240, P2.L8.BR.1210, P2.L8.BR.1120 | 97d | 0d |  | 40 |  | ! | FA | P2-5 |  | FA-1 |  |  |
| P2.L8.BR.1300 |  | Work Completion List - Finishes / L8 / Toilets 395X | 5d | 2026-09-25 | 2026-10-01 | P2.L8.BR.1230, P2.L8.BR.1240, P2.L8.BR.1250, P2.L8.BR.1280, P2.L8.BR.1290, P2.L8.BR.1260 | 97d | 60d | To Punch | 40 |  |  | FINISH | P2-5 |  | FINISH |  |  |

| ID | WBS | Activity | Duration | Start | Finish | Predecessors | Total float | Free float | Temp Orig Dur | Resp / SRLM | PHASE | RESP / Trade | Z.RESP | *NIH Resp Check* |
| --- | --- | --- | --- | --- | --- | --- | --- | --- | --- | --- | --- | --- | --- | --- |
|  | 1 | **Corridors & Lobbies / Level 8** |  | 2026-03-30 | 2026-12-29 |  |  |  |  |  |  |  |  |  |
| P2.L8.CL.1000 |  | Paint Prime & 1st Coat Walls / L8 / Corr & Lobbies | 5d | 2026-03-30 | 2026-04-03 | P2.L8.N.1550, P2.L8.F.CS.2000 | 70d | 0d | 40 | PAINT | P2-5 | PAINT-1 |  |  |
| P2.L8.CL.1010 |  | Framing - Hard Lid Ceilings / L8 / Corr & Lobbies | 10d | 2026-04-06 | 2026-04-17 | P2.L8.CL.1000 | 75d | 5d | 80 | GYP | P2-5 | GYP-1 |  |  |
| P2.L8.CL.1020 |  | T-Grid / L8 / Corr & Lobbies | 10d | 2026-04-06 | 2026-04-17 | P2.L8.CL.1000 | 70d | 0d | 80 | ACT | P2-5 | ACT |  |  |
| P2.L8.CL.1070 |  | Trim - Sprinkler Heads @ T-Grid / L8 / Corr & Lobbies | 5d | 2026-04-15 | 2026-04-21 | P2.L8.CL.1020 FF+2d | 70d | 0d | 40 | FP | P2-5 | FP-1 |  |  |
| P2.L8.CL.1040 |  | R/I - Trim Sprinkler Heads- All Ceilings / L8 / Corr & Lobbies | 5d | 2026-04-22 | 2026-04-28 | P2.L8.CL.1010 FF+2d, P2.L8.CL.1020 FF+2d, P2.L8.CL.1070 | 70d | 0d | 40 | FP | P2-5 | FP-1 |  |  |
| P2.L8.CL.1050 |  | R/I - HVAC- All Ceilings / L8 / Corr & Lobbies | 5d | 2026-04-29 | 2026-05-05 | P2.L8.CL.1010 FF+2d, P2.L8.CL.1020 FF+2d, P2.L8.CL.1040 | 70d | 0d | 40 | MECH | P2-5 | MECH-2 | Harris |  |
| P2.L8.CL.1030 |  | R/I - Electrical - All Ceilings / L8 / Corr & Lobbies | 5d | 2026-05-06 | 2026-05-12 | P2.L8.CL.1010 FF+2d, P2.L8.CL.1020 FF+2d, P2.L8.CL.1050 | 70d | 0d | 40 | ELEC | P2-5 | ELEC-2 |  |  |
| P2.L8.CL.1060 |  | R/I - All Remaining Low Voltage - All Ceilings / L8 / Corr & Lobbies | 5d | 2026-05-13 | 2026-05-19 | P2.L8.CL.1010 FF+2d, P2.L8.CL.1020 FF+2d, P2.L8.CL.1030 | 70d | 0d | 40 | LOWVOLT | P2-5 | LOWVOLT-1 |  |  |
| P2.L8.CL.1100 |  | Pull Wire - Electrical / L8 / Corr & Lobbies | 10d | 2026-05-13 | 2026-05-27 | P2.L8.CL.1030 | 100d | 0d | 40 | ELEC | P2-5 | ELEC-2 |  |  |
| P2.L8.CL.1080 |  | R/I - Fire Alarm/Life Safety - All Ceilings / L8 / Corr & Lobbies | 5d | 2026-05-20 | 2026-05-27 | P2.L8.CL.1010 FF+2d, P2.L8.CL.1060 | 70d | 0d | 40 | FA | P2-5 | FA-1 |  |  |
| P2.L8.CL.1090 |  | Inspections - Close In- All Ceilings / L8 / Corr & Lobbies | 5d | 2026-05-28 | 2026-06-03 | P2.L8.CL.1030, P2.L8.CL.1040, P2.L8.CL.1050, P2.L8.CL.1060, P2.L8.CL.1080 | 70d | 0d | 40 | AHJ | P2-5 | AHJ |  |  |
| P2.L8.CL.1110 |  | Pull Wire - Fire Alarm / L8 / Corr & Lobbies | 5d | 2026-05-28 | 2026-06-03 | P2.L8.CL.1100, P2.L8.CL.1080 | 105d | 0d | 40 | FA | P2-5 | FA-1 |  |  |
| P2.L8.CL.1120 |  | Pull Wire - All Remianing Low Voltage Systems / L8 / Corr & Lobbies | 5d | 2026-06-04 | 2026-06-10 | P2.L8.CL.1110, P2.L8.CL.1060 | 110d | 0d | 40 | LOWVOLT | P2-5 | LOWVOLT-1 |  |  |
| P2.L8.CL.1130 |  | Hang/Tape/Finish- Hard Lid Ceilings / L8 / Corr & Lobbies | 10d | 2026-06-04 | 2026-06-17 | P2.L8.CL.1090 | 70d | 0d | 80 | GYP | P2-5 | GYP-1 |  |  |
| P2.L8.CL.1330 |  | Interior Glazing / L8 / Corr & Lobbies | 5d | 2026-06-04 | 2026-06-10 | P2.L8.CL.1090 | 132d | 95d | 40 | GLASS | P2-5 | GLASS |  | TBD |
| P2.L8.CL.1140 |  | Drop Ceiling Tiles @ T-Grid / L8 / Corr & Lobbies | 5d | 2026-06-11 | 2026-06-17 | P2.L8.CL.1110, P2.L8.CL.1120, P2.L8.CL.1070, P2.L8.CL.1100 | 123d | 86d | 40 | ACT | P2-5 | ACT |  |  |
| P2.L8.CL.1190 |  | Paint - Hard Lid Ceilings / L8 / Corr & Lobbies | 5d | 2026-06-18 | 2026-06-24 | P2.L8.CL.1130 | 70d | 0d | 40 | PAINT | P2-5 | PAINT-1 |  |  |
| P2.L8.CL.1180 |  | Ceiling Mounted - HVAC GRD's / L8 / Corr & Lobbies | 15d | 2026-06-25 | 2026-07-16 | P2.L8.CL.1020, P2.L8.CL.1190 | 70d | 0d | 120 | HVAC | P2-5 | HVAC | Harris |  |
| P2.L8.CL.1150 |  | Ceiling Mounted - Electrical Devices and Lights / L8 / Corr & Lobbies | 20d | 2026-07-10 | 2026-08-06 | P2.L8.CL.1100, P2.L8.CL.1190, P2.L8.CL.1180 SS+10d | 70d | 0d | 120 | ELEC | P2-5 | ELEC-2 |  |  |
| P2.L8.CL.1160 |  | Ceiling Mounted - Fire Alarm/Life Saftey Devices / L8 / Corr & Lobbies | 15d | 2026-07-24 | 2026-08-13 | P2.L8.CL.1110, P2.L8.CL.1020, P2.L8.CL.1190, P2.L8.CL.1150 SS+10d | 70d | 0d | 120 | FA | P2-5 | FA-1 |  |  |
| P2.L8.CL.1170 |  | Ceiling Mounted - All Low Voltage Devices / L8 / Corr & Lobbies | 15d | 2026-08-07 | 2026-08-27 | P2.L8.CL.1120, P2.L8.CL.1190, P2.L8.CL.1160 SS+10d | 70d | 33d | 120 | LOWVOLT | P2-5 | LOWVOLT-1 |  |  |
| P2.L8.CL.1320 |  | Prep Flooring / L8 / Corr & Lobbies | 2d | 2026-10-15 | 2026-10-16 | P2.L8.CL.1150, P2.L8.CL.1160, P2.L8.CL.1170, P2.L8.CL.1180, P2.L8.CL.1140 SS+2d, P2.L7.CL.1200 | 37d | 0d | 80 | FLOOR | P2-5 | FLOOR |  |  |
| P2.L8.CL.1200 |  | Flooring / L8 / Corr & Lobbies | 8d | 2026-10-19 | 2026-10-28 | P2.L8.CL.1320 | 37d | 0d | 80 | FLOOR | P2-5 | FLOOR |  |  |
| P2.L8.CL.1210 |  | Final Paint / L8 / Corr & Lobbies | 5d | 2026-10-26 | 2026-10-30 | P2.L8.CL.1200 FF+2d, P2.L8.CL.1140, P2.L8.CL.1330, BP7.097.3.100 | 37d | 0d | 40 | PAINT | P2-5 | PAINT-1 |  |  |
| P2.L8.CL.1220 |  | Floor Base / L8 / Corr & Lobbies | 5d | 2026-11-02 | 2026-11-06 | P2.L8.CL.1210 | 52d | 0d | 40 | FLOOR | P2-5 | FLOOR |  |  |
| P2.L8.CL.1250 |  | Trim - HVAC - Wall Mounted Devices / L8 / Corr & Lobbies | 5d | 2026-11-02 | 2026-11-06 | P2.L8.CL.1210 | 37d | 0d | 40 | BAS | P2-5 | BAS-1 | Harris |  |
| P2.L8.CL.1230 |  | Trim - All Electrical - Wall Mounted Devices / L8 / Corr & Lobbies | 5d | 2026-11-09 | 2026-11-13 | P2.L8.CL.1210, P2.L8.CL.1250 | 37d | 0d | 40 | ELEC | P2-5 | ELEC-2 |  |  |
| P2.L8.CL.1340 |  | Wall Protection / L8 / Corr & Lobbies | 5d | 2026-11-09 | 2026-11-13 | P2.L8.CL.1220, BP7.102.3.300 | 52d | 15d | 40 | AHJ | P2-5 | AHJ |  |  |
| P2.L8.CL.1240 |  | Trim - Fire Alarm - Wall Mounted Devices / L8 / Corr & Lobbies | 5d | 2026-11-16 | 2026-11-20 | P2.L8.CL.1210, P2.L8.CL.1230 | 37d | 0d | 40 | FA | P2-5 | FA-1 |  |  |
| P2.L8.CL.1260 |  | Trim - All Remining Low Voltage Systems - Wall Mounted Devices / L8 / Corr & Lobbies | 5d | 2026-11-23 | 2026-12-01 | P2.L8.CL.1210, P2.L8.CL.1240 | 37d | 0d | 40 | LOWVOLT | P2-5 | LOWVOLT-1 |  |  |
| P2.L8.CL.1270 |  | Building Signage / L8 / Corr & Lobbies | 5d | 2026-12-02 | 2026-12-08 | P2.L8.CL.1260, P2.L8.CL.1210 | 37d | 0d | 40 | SIGN | P2-5 | SIGN |  |  |
| P2.L8.CL.1280 |  | Work Completion List / L8 / Corr & Lobbies | 5d | 2026-12-09 | 2026-12-15 | P2.L8.CL.1270, P2.L8.CL.1250, P2.L8.CL.1260, P2.L8.CL.1220, P2.L8.CL.1230, P2.L8.CL.1240, P2.L8.CL.1340 | 37d | 0d | 40 | T | P2-5 | T |  |  |
| P2.L8.CL.1290 |  | Rough Clean / L8 / Corr & Lobbies | 2d | 2026-12-16 | 2026-12-17 | P2.L8.CL.1280 | 37d | 0d | 16 | FCLEAN | P2-5 | FCLEAN |  |  |
| P2.L8.CL.1300 |  | Punchlist / L8 / Corr & Lobbies | 5d | 2026-12-18 | 2026-12-24 | P2.L8.CL.1290 | 37d | 0d | 40 | AHJ | P2-5 | AHJ |  |  |
| P2.L8.CL.1310 |  | Final Clean / L8 / Corr & Lobbies | 2d | 2026-12-28 | 2026-12-29 | P2.L8.CL.1300 | 37d | 0d | 16 | FCLEAN | P2-5 | FCLEAN |  |  |

| ID | WBS | Activity | Type | Duration | Start | Finish | Predecessors | Complete | Remaining | Planned start | Planned finish | Total float | Free float | Constraint | Temp Orig Dur | Testing Type | Act ID Temp | Resp / SRLM | 744 | PHASE | Z.RESP | RESP UPD | RESP / Trade | Pick | Update Status | NOTES | *NIH Resp Check* |
| --- | --- | --- | --- | --- | --- | --- | --- | --- | --- | --- | --- | --- | --- | --- | --- | --- | --- | --- | --- | --- | --- | --- | --- | --- | --- | --- | --- |
|  | INT | **L8 / INTERSTITIAL** |  |  | 2025-06-09 | 2026-06-12 |  |  |  |  |  |  |  |  |  |  |  |  |  |  |  |  |  |  |  |  |  |
|  | 6 | **South Interstitial 8-3905** |  |  | 2025-06-09 | 2026-06-05 |  |  |  |  |  |  |  |  |  |  |  |  |  |  |  |  |  |  |  |  |  |
|  | Z1 | **Rough In - South Interstitial 8-3905** |  |  | 2025-06-09 | 2026-03-26 |  |  |  |  |  |  |  |  |  |  |  |  |  |  |  |  |  |  |  |  |  |
| P2.L8.INT.S.1020 |  | OH - Structural Supports (All Trades) / L8 / South Int |  | 5d | 2025-06-09 A | 2025-06-13 A | P2.L8.INT.S.1000 | 100% |  | 2025-07-09 | 2025-07-15 |  |  |  | 80 | AT24 | P2.B2.05.45.110 | R/I.OH | SM | P2-5 | Harris | SM | R/I.OH |  |  |  |  |
| P2.L8.INT.S.1040 |  | Fireproof Interstitial Steel / L8 / South Int |  | 5d | 2025-06-18 A | 2025-06-25 A | P2.L8.INT.S.1030, P2.L8.INT.S.1010, P2.L8.INT.S.1020 | 100% |  | 2025-08-29 | 2025-09-05 |  |  |  | 40 | AT49 | P2.1.09.81.140X10 | SPRAY | SM | P2-5 |  | SM | SPRAY |  |  |  |  |
| P2.L8.INT.S.1000 |  | Layout - All Trades / L8 / South Int |  | 5d | 2025-07-14 A | 2025-07-18 A | P2.8.I.03.310 | 100% |  | 2025-08-01 | 2025-08-07 |  |  |  | 40 |  | P2.B2.01.010 | R/I.OH | SM | P2-5 | Harris | SM | R/I.OH |  |  |  |  |
| P2.L8.INT.S.1030 |  | OH - MEPF - Hangers & Supports / L8 / South Int |  | 5d | 2025-07-14 A | 2025-07-18 A | P2.L8.INT.S.1000, P2.BIM.L8.40.150 | 100% |  | 2025-08-08 | 2025-08-14 |  |  |  | 80 |  | P2.B2.20.05.410 | MEP | SM | P2-5 | Harris | SM | MEP-2 |  |  |  |  |
| P2.L8.INT.S.1010 |  | Framing - Top Track / L8 / South Int |  | 5d | 2025-07-23 A | 2025-07-31 A | P2.L8.N.1010, P2.L8.INT.S.1000 | 100% |  | 2025-08-22 | 2025-08-28 |  |  |  | 80 |  | P2.B2.09.21.110 | GYP | SM | P2-5 |  | SM | GYP-1 |  |  |  |  |
| P2.L8.INT.S.1130 |  | OH - Fire Suppression / L8 / South Int |  | 10d | 2025-08-01 A | 2025-09-26 A | P2.L8.INT.S.1040 | 100% |  | 2025-08-01 | 2025-08-14 |  |  |  | 80 |  | P2.B2.21.13.210 | FP | SM | P2-5 |  | SM | FP-1 | 1 | O |  |  |
| P2.L8.INT.S.1070 |  | Framing - Perimeter Studs and Door Frames / L8 / South Int |  | 10d | 2025-08-05 A | 2025-09-17 A | P2.L8.INT.S.1040 | 100% |  | 2025-08-01 | 2025-08-14 |  |  |  | 80 |  | A1310 | GYP | SM | P2-5 |  | SM | GYP-1 |  | O |  |  |
| P2.L8.INT.S.1160 |  | OH - Electrical - 480/277v Distribution / L8 / South Int |  | 20d | 2025-08-11 A | 2025-09-30 A | P2.L8.INT.S.1120 FF+2d, P2.L8.INT.S.1100 FF+2d, P2.L8.INT.S.1040 | 100% |  | 2025-08-12 | 2025-09-09 |  |  |  | 80 |  | P2.B2.26.05.210 | ELEC | SM | P2-5 |  | SM | ELEC-2 | 1 | O |  |  |
| P2.L8.INT.S.1190 |  | OH - Electrical - 208/120v Branch / L8 / South Int |  | 10d | 2025-09-05 A | 2025-10-30 A | P2.L8.INT.S.1160 | 100% |  | 2025-10-31 | 2025-11-13 |  |  |  | 80 |  | P2.B2.26.05.310 | ELEC | SM | P2-5 |  | SM | ELEC-2 | 2 |  |  |  |
| P2.L8.INT.S.1220 |  | OH - Plumbing - Test / L8 / South Int |  | 10d | 2025-09-18 A | 2025-09-22 A | P2.L8.INT.S.1150 | 100% |  | 2025-12-15 | 2025-12-29 |  |  |  | 80 |  | P2.B2.22.14.310 | PLMB |  | P2-5 | Harris | SM | PLMB | 2 | O |  |  |
| P2.L8.INT.S.1050 |  | In Wall - Electrical - Framing / L8 / South Int |  | 10d | 2025-09-22 A | 2025-09-30 A | P2.L8.INT.S.1070 SS | 100% |  | 2025-10-01 | 2025-10-14 |  |  |  | 80 |  | P2.B2.26.05.610 | ELEC | SM | P2-5 |  | SM | ELEC-2 |  | O |  |  |
| P2.L8.INT.S.1060 |  | In Wall - Backing/Blocking/Supports / L8 / South Int |  | 10d | 2025-09-22 A | 2025-09-30 A | P2.L8.INT.S.1070 SS | 100% |  | 2025-10-01 | 2025-10-14 |  |  |  | 80 |  | P2.B2.09.21.510 | R/I.IW | SM | P2-5 |  | SM | R/I.IW |  | O |  |  |
| P2.L8.INT.S.1140 |  | OH - Hang Duct - HP Mains / L8 / South Int |  | 20d | 2025-09-22 A | 2025-10-31 A | P2.L8.INT.S.1120 FF+2d, P2.L8.INT.S.1100 FF+2d, P2.L8.INT.S.1040 | 100% |  | 2025-08-12 | 2025-09-09 |  |  |  | 80 |  | P2.B2.23.30.210 | HVAC | SM | P2-5 | Harris | SM | HVAC | 1 |  |  |  |
| P2.L8.INT.S.1260 |  | OH - Insulate Plumbing / L8 / South Int |  | 10d | 2025-09-25 A | 2025-09-28 A | P2.L8.INT.S.1220 | 100% |  | 2025-12-30 | 2026-01-13 |  |  |  | 80 |  | P2.B2.22.07.510 | INSUL |  | P2-5 | Harris | SM | INSUL-3 | 3 |  |  |  |
| P2.L8.INT.S.1080 |  | AHJ Inspections - Wall Close In / L8 / South Int |  | 5d | 2025-09-30 A | 2025-10-09 A | P2.L8.INT.S.1050 FF, P2.L8.INT.S.1060 FF, P2.L8.INT.S.1070 | 100% |  | 2025-10-08 | 2025-10-14 |  |  |  | 40 |  | P2.B2.01.43.110 | FM | SM | P2-5 |  | SM | FM |  |  |  |  |
| P2.L8.INT.S.1150 |  | OH - Plumbing Piping / L8 / South Int |  | 10d | 2025-10-01 A | 2025-10-10 A | P2.L8.INT.S.1120 FF+2d, P2.L8.S.1180, P2.L8.INT.S.1100 FF+2d, P2.L8.INT.S.1040 | 100% |  | 2025-10-15 | 2025-10-28 |  |  |  | 80 |  | P2.B2.22.14.210 | PLMB |  | P2-5 | Harris | SM | PLMB | 1 |  |  |  |
| P2.L8.INT.S.1090 |  | Hang-Tape-Finish / L8 / South Int |  | 10d | 2025-10-14 A | 2025-10-22 A | P2.L8.INT.S.1080 | 100% |  | 2025-10-02 | 2025-10-15 |  |  |  | 80 |  | P2.B2.09.21.710 | GYP | SM | P2-5 |  | SM | GYP-1 |  |  |  |  |
| P2.L8.INT.S.1100 |  | Spray/Seal/Firestop - Head of Wall / L8 / South Int |  | 5d | 2025-10-23 A | 2025-10-29 A | P2.L8.INT.S.1090 FF | 100% |  | 2025-10-09 | 2025-10-15 |  |  |  | 40 | AT47 | P2.B2.07.84.310 | FIRSAFE | SM | P2-5 |  | SM | FIRSAFE | To Finishes - Paint |  |  |  |
| P2.L8.INT.S.1120 |  | Paint Prime & 1st Coat / L8 / South Int |  | 5d | 2025-10-23 A | 2025-10-29 A | P2.L8.INT.S.1100 SS | 100% |  | 2025-10-09 | 2025-10-15 |  |  |  | 40 |  |  | PAINT | SM | P2-5 |  | SM | PAINT-1 |  |  |  |  |
| FRG.P2.L8.INT.S.1690 |  | HVAC Piping - Staging & Layout / L8 / South Int - FRAGNET |  | 5d | 2025-10-27 A | 2025-10-31 A | FRG.P2.L8.INT.S.1680 | 100% |  | 2025-10-01 | 2025-10-07 |  |  |  | 80 |  | P2.B2.23.20.410 | Harris Fragnet | TA | P2-5 | Harris | TA | FIT-2 | 2 |  |  |  |
| FRG.P2.L8.INT.S.1700 |  | HVAC Piping - Hanging Steel Racks (West) / L8 / South Int - FRAGNET |  | 20d | 2025-10-27 A | 2025-11-21 A | FRG.P2.L8.INT.S.1690 | 100% |  | 2025-10-08 | 2025-11-04 |  |  |  | 80 |  | P2.B2.23.20.410 | Harris Fragnet | TA | P2-5 | Harris | SM | FIT-2 | 2 | O |  |  |
| FRG.P2.L8.INT.S.1710 |  | HVAC Piping - Hanging Steel Racks (East) / L8 / South Int - FRAGNET |  | 20d | 2025-10-27 A | 2025-12-29 | FRG.P2.L8.INT.S.1700 |  | 20d | 2025-11-05 | 2025-12-04 | 37d | 0d |  | 80 |  | P2.B2.23.20.410 | Harris Fragnet | TA | P2-5 | Harris | SM | FIT-2 | 2 | O |  |  |
| FRG.P2.L8.INT.S.1680 |  | HVAC Piping - Steel Racks Delivery / L8 / South Int - FRAGNET | milestone | 0d | 2025-10-28 A | 2025-10-28 A | P2.L8.INT.S.1030 FF | 100% |  |  |  |  |  | finish on or after 2025-09-29 | 80 |  | P2.B2.23.20.410 | Harris Fragnet | TA | P2-5 | Harris | TA | FIT-2 | 2 |  | Per Harris schedule |  |
| P2.L8.INT.S.1175 |  | Set & Connect - Elect Panels and Equipment / L8 / South Int |  | 5d | 2025-11-03 A | 2025-11-07 A | P2.L8.INT.S.1100, P2.L8.INT.S.1120 | 100% |  | 2025-12-01 | 2025-12-05 |  |  |  | 40 |  |  | ELEC | SM | P2-5 |  | SM | ELEC-2 |  | O |  |  |
| P2.L8.INT.S.1170 |  | Set & Connect - Mech Equipment / L8 / South Int |  | 15d | 2025-12-01 | 2025-12-19 | P2.L8.INT.S.1040 |  |  |  |  | 72d | 0d |  | 80 |  |  | HVAC | SM | P2-5 | Harris | SM | HVAC |  | O |  |  |
| P2.L8.INT.S.1210 |  | OH - DALT - HP Mains / L8 / South Int |  | 10d | 2025-12-01 | 2025-12-12 | P2.L8.INT.S.1140 |  |  |  |  | 62d | 0d |  | 80 |  | P2.B2.23.30.310 | TAB | SM | P2-5 | Harris | SM | TAB-1 | 2 | O |  |  |
| P2.L8.INT.S.1230 |  | OH - Insulate HP Duct / L8 / South Int |  | 10d | 2025-12-15 | 2025-12-29 | P2.L8.INT.S.1210 |  |  |  |  | 67d | 30d |  | 80 |  | P2.B2.23.07.310 | INSUL | SM | P2-5 | Harris | SM | INSUL-3 | 3 | O |  |  |
| P2.L8.INT.S.1240 |  | OH - Hang Duct - LP Branch / L8 / South Int |  | 15d | 2025-12-15 | 2026-01-06 | P2.L8.INT.S.1210 |  |  |  |  | 62d | 0d |  | 80 |  | P2.B2.23.30.410 | HVAC | SM | P2-5 | Harris | SM | HVAC | 3 | O |  |  |
| P2.L8.INT.S.1200 |  | OH - Electrical - Equip Tie In / L8 / South Int |  | 10d | 2025-12-22 | 2026-01-06 | P2.L8.INT.S.1160, P2.L8.INT.S.1175, P2.L8.INT.S.1170 |  |  |  |  | 72d | 0d |  | 80 |  | P2.B2.26.05.410 | ELEC | SM | P2-5 |  | SM | ELEC-2 | 4 | O |  |  |
| P2.L8.INT.S.1180 |  | OH - HVAC Piping / L8 / South Int |  | 20d | 2025-12-30 | 2026-01-27 | P2.L8.INT.S.1100 FF+2d, P2.L8.INT.S.1130, P2.L8.INT.S.1040, FRG.P2.L8.INT.S.1710 |  |  |  |  | 37d | 0d |  | 80 |  | P2.B2.23.20.410 | FIT | SM | P2-5 | Harris | SM | FIT-2 | 2 |  | Broke tie with L8 S (low). Per harris Schedule 1/22/26 |  |
| P2.L8.INT.S.1270 |  | Pull Wire - Electrical - 208/120v Branch & Equip / L8 / South Int |  | 20d | 2026-01-07 | 2026-02-03 | P2.L8.INT.S.1190, P2.L8.INT.S.1200 |  |  |  |  | 72d | 35d |  | 80 |  |  | ELEC | SM | P2-5 |  | SM | ELEC-2 | To Trim Devices & Term Panel |  |  |  |
| P2.L8.INT.S.1280 |  | Pull Wire - Electrical - 480/277v Distribution / L8 / South Int |  | 10d | 2026-01-07 | 2026-01-20 | P2.L8.INT.S.1200 |  |  |  |  | 82d | 45d |  | 80 |  |  | ELEC | SM | P2-5 |  | SM | ELEC-2 | To Trim Devices & Term Panel |  |  |  |
| P2.L8.INT.S.1310 |  | OH - Insulate LP Duct / L8 / South Int |  | 10d | 2026-01-07 | 2026-01-20 | P2.L8.INT.S.1240 |  |  |  |  | 62d | 0d |  | 80 |  | P2.B2.23.07.410 | INSUL | SM | P2-5 | Harris | SM | INSUL-3 | 4 |  |  |  |
| P2.L8.INT.S.1330 |  | OH - Conduit - Low Volt - Fire Alarm / L8 / South Int |  | 10d | 2026-01-21 | 2026-02-03 | P2.L8.INT.S.1310 |  |  |  |  | 62d | 0d |  | 80 |  |  | FA | SM | P2-5 |  | SM | FA-1 | 5 |  |  |  |
| P2.L8.INT.S.1340 |  | OH - Conduit - Low Volt - Telecom / L8 / South Int |  | 10d | 2026-01-21 | 2026-02-03 | P2.L8.INT.S.1310 |  |  |  |  | 62d | 0d |  | 80 |  |  | ELEC | SM | P2-5 |  | SM | ELEC-2 | 5 |  |  |  |
| P2.L8.INT.S.1250 |  | OH - HVAC Piping - Test / L8 / South Int |  | 10d | 2026-01-28 | 2026-02-10 | P2.L8.INT.S.1180 |  |  |  |  | 37d | 0d |  | 80 |  | P2.B2.23.20.510 | FIT | SM | P2-5 | Harris | SM | FIT-2 | 3 |  |  |  |
| P2.L8.INT.S.1370 |  | Pull Wire - Low Volt - Fire Alarm / L8 / South Int |  | 10d | 2026-02-04 | 2026-02-17 | P2.L8.INT.S.1330 |  |  |  |  | 62d | 25d |  | 80 |  |  | FA |  | P2-5 |  | SM | FA-1 | To Trim Finishes |  |  |  |
| P2.L8.INT.S.1380 |  | Pull Wire - Low Volt - Telecom / L8 / South Int |  | 10d | 2026-02-04 | 2026-02-17 | P2.L8.INT.S.1340 |  |  |  |  | 62d | 25d |  | 80 |  |  | CIT |  | P2-5 |  | SM | CIT | To Trim Finishes |  |  |  |
| P2.L8.INT.S.1290 |  | OH - HVAC Piping - Equip Tie In / L8 / South Int |  | 15d | 2026-02-11 | 2026-03-03 | P2.L8.INT.S.1170, P2.L8.INT.S.1250, CX.B2.HYDR.1000 |  |  |  |  | 42d | 5d |  | 80 |  | P2.B2.23.20.610 | FIT | SM | P2-5 | Harris | SM | FIT-2 |  |  |  |  |
| P2.L8.INT.S.1300 |  | OH - Insulate HVAC Pipe / L8 / South Int |  | 10d | 2026-02-11 | 2026-02-24 | P2.L8.INT.S.1230, P2.L8.INT.S.1250 |  |  |  |  | 37d | 0d |  | 80 |  | P2.B2.22.07.610 | INSUL | SM | P2-5 | Harris | SM | INSUL-3 | 4 |  |  |  |
| P2.L8.INT.S.1320 |  | OH - Conduit - Low Volt - BAS/Controls / L8 / South Int |  | 10d | 2026-02-25 | 2026-03-10 | P2.L8.INT.S.1300 |  |  |  |  | 37d | 0d |  | 80 |  |  | BAS | SM | P2-5 | Harris | SM | BAS-1 | 5 |  |  |  |
| P2.L8.INT.S.1350 |  | OH - Conduit - Low Volt - Security / L8 / South Int |  | 10d | 2026-02-25 | 2026-03-10 | P2.L8.INT.S.1300 |  |  |  |  | 37d | 0d |  | 80 |  |  | ELEC | SM | P2-5 |  | SM | ELEC-2 | 5 |  |  |  |
| P2.L8.INT.S.1110 |  | Firestop - Thru Wall / L8 / South Int |  | 5d | 2026-03-11 | 2026-03-17 | P2.L8.INT.S.1160, P2.L8.INT.S.1180, P2.L8.INT.S.1130, P2.L8.INT.S.1150, P2.L8.INT.S.1320, P2.L8.INT.S.1330, P2.L8.INT.S.1340, P2.L8.INT.S.1350, P2.L8.INT.S.1120 SS |  |  |  |  | 42d | 5d |  | 40 | AT48 | P2.B2.07.84.210 | FIRESTO |  | P2-5 |  | SM | FIRESTO | To Finishes - Paint |  |  |  |
| P2.L8.INT.S.1360 |  | Pull Wire - Low Volt - BAS/Controls / L8 / South Int |  | 10d | 2026-03-11 | 2026-03-24 | P2.L8.INT.S.1320, P2.L8.INT.S.1290 |  |  |  |  | 37d | 0d |  | 80 |  |  | BAS |  | P2-5 | Harris | SM | BAS-1 | To Trim Finishes |  |  |  |
| P2.L8.INT.S.1390 |  | Pull Wire - Low Volt - Security / L8 / South Int |  | 10d | 2026-03-11 | 2026-03-24 | P2.L8.INT.S.1350 |  |  |  |  | 37d | 0d |  | 80 |  |  | LOWVOLT |  | P2-5 |  | SM | LOWVOLT-1 | To Trim Finishes |  |  |  |
| P2.L8.INT.S.1400 |  | Trades Inspect & Verify R/I Work Completed to Specs / L8 / South Int |  | 2d | 2026-03-25 | 2026-03-26 | P2.L8.INT.S.1110, P2.L8.INT.S.1360, P2.L8.INT.S.1370, P2.L8.INT.S.1380, P2.L8.INT.S.1390, P2.L8.INT.S.1280, P2.L8.INT.S.1260, P2.L8.INT.S.1270 |  |  |  |  | 37d | 0d |  | 16 |  |  | T |  | P2-5 |  |  | T | To Finishes |  |  | ! |

| ID | WBS | Activity | Duration | Start | Finish | Predecessors | Complete | Remaining | Planned start | Planned finish | Total float | Free float | Temp Orig Dur | Resp / SRLM | 744 | PHASE | RESP UPD | RESP / Trade | *NIH Resp Check* | Testing Type | Z.RESP | Pick | Act ID Temp | Update Status | NOTES |
| --- | --- | --- | --- | --- | --- | --- | --- | --- | --- | --- | --- | --- | --- | --- | --- | --- | --- | --- | --- | --- | --- | --- | --- | --- | --- |
|  | 2 | **Finishes - South Interstitial 8-3905 (4,786 sf)** |  | 2026-03-27 | 2026-06-05 |  |  |  |  |  |  |  |  |  |  |  |  |  |  |  |  |  |  |  |  |
| P2.L8.INT.S.2000 |  | Flooring Prep - Epoxy Floors / L8 / South Int | 7d | 2026-03-27 | 2026-04-06 | P2.L8.INT.S.1175, P2.L8.INT.S.1400 |  |  |  |  | 132d | 0d | 80 | EPOXYF | SM | P2-5 | SM | EPOXYF |  |  |  |  |  |  |  |
| P2.L8.INT.S.2090 |  | Flooring - Epoxy Floors / L8 / South Int | 3d | 2026-04-07 | 2026-04-09 | P2.L8.INT.S.2000 |  |  |  |  | 132d | 0d | 80 | EPOXYF | SM | P2-5 | SM | EPOXYF |  |  |  |  |  |  |  |
| P2.L8.INT.S.2010 |  | Paint - Finish Coat / L8 / South Int | 5d | 2026-04-10 | 2026-04-16 | P2.L8.INT.S.1400, P2.L8.INT.S.2090 |  |  |  |  | 132d | 0d | 40 | PAINT |  | P2-5 |  | PAINT-1 | ! |  |  |  |  |  |  |
| P2.L8.INT.S.2020 |  | Doors & Hardware / L8 / South Int | 5d | 2026-04-17 | 2026-04-23 | P2.L8.INT.S.2010 |  |  |  |  | 132d | 0d | 40 | DFH |  | P2-5 |  | DFH |  | AT29 |  |  |  |  |  |
| P2.L8.INT.S.2040 |  | Building Signage / L8 / South Int | 5d | 2026-04-17 | 2026-04-23 | P2.L8.INT.S.2010 |  |  |  |  | 184d | 5d | 40 | SIGN |  | P2-5 |  | SIGN |  |  |  |  |  |  |  |
| P2.L8.INT.S.2030 |  | Trim All MEP Finishes / L8 / South Int | 5d | 2026-04-24 | 2026-04-30 | P2.L8.INT.S.2020, P2.L8.INT.S.2010 |  |  |  |  | 179d | 0d | 40 | MEP |  | P2-5 |  | MEP-2 |  |  | Harris |  |  |  |  |
| P2.L8.INT.S.2050 |  | Rough Clean / L8 / South Int | 5d | 2026-05-01 | 2026-05-07 | P2.L8.INT.S.2040, P2.L8.INT.S.2030 |  |  |  |  | 179d | 0d | 40 | FCLEAN |  | P2-5 |  | FCLEAN |  |  |  |  |  |  |  |
| P2.L8.INT.S.2060 |  | Prepare Punchlist / L8 / South Int | 5d | 2026-05-08 | 2026-05-14 | P2.L8.INT.S.2050 |  |  |  |  | 179d | 0d | 40 | QC |  | P2-5 |  | QC |  |  |  |  |  |  |  |
| P2.L8.INT.S.2070 |  | Correct Punchlist / L8 / South Int | 10d | 2026-05-15 | 2026-05-29 | P2.L8.INT.S.2060 FF, P2.L8.INT.S.2060 |  |  |  |  | 179d | 0d | 80 | FINISH |  | P2-5 |  | FINISH |  |  |  |  |  |  |  |
| P2.L8.INT.S.2080 |  | Final Clean / L8 / South Int | 5d | 2026-06-01 | 2026-06-05 | P2.L8.INT.S.2070 FF, P2.L8.INT.S.2070 |  |  |  |  | 179d | 142d | 40 | FCLEAN |  | P2-5 |  | FCLEAN |  |  |  | To QC |  |  |  |
|  | 1 | **North Interstitial 8-2855** |  | 2025-06-09 | 2026-06-12 |  |  |  |  |  |  |  |  |  |  |  |  |  |  |  |  |  |  |  |  |
|  | Z11 | **Rough In - North Interstitial 8-2855** |  | 2025-06-09 | 2026-04-02 |  |  |  |  |  |  |  |  |  |  |  |  |  |  |  |  |  |  |  |  |
| P2.L8.INT.N.1020 |  | OH - Structural Supports (All Trades) / L8 / North Int | 5d | 2025-06-09 A | 2025-06-13 A | P2.L8.INT.N.1000 SS | 100% |  | 2025-07-09 | 2025-07-15 |  |  | 80 | R/I.OH | SM | P2-5 | SM | R/I.OH |  | AT24 | Harris |  | P2.B2.05.45.110 |  |  |
| P2.L8.INT.N.1040 |  | Fireproof Interstitial Steel / L8 / North Int | 5d | 2025-06-17 A | 2025-06-24 A | P2.L8.INT.N.1020, P2.L7.N.1010 | 100% |  | 2025-07-18 | 2025-07-24 |  |  | 40 | SPRAY | SM | P2-5 | SM | SPRAY |  | AT49 |  |  | P2.1.09.81.140X10 |  |  |
| P2.L8.INT.N.1000 |  | Layout - All Trades / L8 / North Int | 5d | 2025-07-14 A | 2025-07-18 A | P2.8.I.03.320 | 100% |  | 2025-08-01 | 2025-08-07 |  |  | 40 | R/I.OH | SM | P2-5 | SM | R/I.OH |  |  | Harris |  | P2.B2.01.010 |  |  |
| P2.L8.INT.N.1010 |  | Framing - Top Track / L8 / North Int | 5d | 2025-08-13 A | 2025-08-20 A | P2.L8.INT.S.1010, P2.L8.INT.N.1000 SS | 100% |  | 2025-09-02 | 2025-09-08 |  |  | 80 | GYP | SM | P2-5 | SM | GYP-1 |  |  |  |  | P2.B2.09.21.110 |  |  |
| P2.L8.INT.N.1030 |  | OH - MEPF - Hangers & Supports / L8 / North Int | 10d | 2025-08-15 A | 2025-09-11 A | P2.L8.INT.N.1000 SS | 100% |  | 2025-08-01 | 2025-08-14 |  |  | 80 | MEP | SM | P2-5 | SM | MEP-2 |  |  | Harris |  | P2.B2.20.05.410 | O |  |
| P2.L8.INT.N.1130 |  | OH - Fire Suppression / L8 / North Int | 10d | 2025-08-15 A | 2025-09-30 A | P2.L8.INT.N.1040, P2.L8.INT.N.1030 | 100% |  | 2025-08-15 | 2025-08-28 |  |  | 80 | FP | SM | P2-5 | SM | FP-1 |  |  |  | 1 | P2.B2.21.13.210 | O |  |
| P2.L8.INT.N.1070 |  | Framing - Perimeter Studs and Door Frames / L8 / North Int | 10d | 2025-08-21 A | 2025-08-29 A | P2.L8.INT.N.1040, P2.L8.INT.N.1010 | 100% |  | 2025-08-08 | 2025-08-21 |  |  | 80 | GYP | SM | P2-5 | SM | GYP-1 |  |  |  |  | A1310 |  |  |
| P2.L8.INT.N.1150 |  | OH - Plumbing Piping / L8 / North Int | 15d | 2025-09-01 A | 2025-09-10 A | P2.L8.INT.N.1120 FF+2d, P2.L8.INT.N.1100 FF+2d, P2.L8.N.1180, P2.L8.INT.N.1040, P2.L8.INT.S.1150 | 100% |  | 2025-12-22 | 2026-01-13 |  |  | 80 | PLMB |  | P2-5 | SM | PLMB |  |  | Harris | 1 | P2.B2.22.14.210 | O |  |
| P2.L8.INT.N.1160 |  | OH - Electrical - 480/277v Distribution / L8 / North Int | 20d | 2025-09-08 A | 2025-09-30 A | P2.L8.INT.N.1120 FF+2d, P2.L8.INT.N.1100 FF+2d, P2.L8.INT.N.1040 | 100% |  | 2025-10-17 | 2025-11-13 |  |  | 80 | ELEC | SM | P2-5 | SM | ELEC-2 |  |  |  | 1 | P2.B2.26.05.210 | O |  |
| P2.L8.INT.N.1050 |  | In Wall - Electrical - Framing / L8 / North Int | 10d | 2025-09-22 A | 2025-09-30 A | P2.L8.INT.N.1070 | 100% |  | 2025-10-01 | 2025-10-14 |  |  | 80 | ELEC | SM | P2-5 | SM | ELEC-2 |  |  |  |  | P2.B2.26.05.610 | O |  |
| P2.L8.INT.N.1060 |  | In Wall - Backing/Blocking/Supports / L8 / North Int | 10d | 2025-09-22 A | 2025-09-30 A | P2.L8.INT.N.1050 SS+5d | 100% |  | 2025-10-08 | 2025-10-21 |  |  | 80 | R/I.IW | SM | P2-5 | SM | R/I.IW |  |  |  |  | P2.B2.09.21.510 | O |  |
| P2.L8.INT.N.1080 |  | AHJ Inspections - Wall Close In / | 5d | 2025-09-30 A | 2025-10-01 A | P2.L8.INT.N.1050 FF, P2.L8.INT.N.1060 FF, P2.L8.INT.N.1070 | 100% |  | 2025-10-15 | 2025-10-21 |  |  | 40 | FM | SM | P2-5 | SM | FM |  |  |  |  | P2.B2.01.43.110 |  |  |
| P2.L8.INT.N.1120 |  | Paint Prime & 1st Coat / L8 / North Int | 5d | 2025-10-16 A | 2025-10-31 A | P2.L8.INT.N.1100 SS | 100% |  | 2025-10-16 | 2025-10-22 |  |  | 40 | PAINT | SM | P2-5 | SM | PAINT-1 |  |  |  |  |  |  |  |
| P2.L8.INT.N.1090 |  | Hang-Tape-Finish / L8 / North Int | 10d | 2025-10-22 A | 2025-10-31 A | P2.L8.INT.N.1080 | 100% |  | 2025-10-02 | 2025-10-15 |  |  | 80 | GYP | SM | P2-5 | SM | GYP-1 |  |  |  |  | P2.B2.09.21.710 |  |  |
| P2.L8.INT.N.1100 |  | Spray/Seal/Firestop - Head of Wall / L8 / North Int | 5d | 2025-10-22 A | 2025-10-31 A | P2.L8.INT.N.1090 | 100% |  | 2025-10-16 | 2025-10-22 |  |  | 40 | FIRSAFE | SM | P2-5 | SM | FIRSAFE |  | AT47 |  | To Finishes - Paint | P2.B2.07.84.310 |  |  |
| P2.L8.INT.N.1140 |  | OH - Hang Duct - HP Mains (High) / L8 / North Int | 20d | 2025-10-31 A | 2025-11-28 A | P2.L8.INT.N.1120 FF+2d, P2.L8.INT.N.1100 FF+2d, P2.L8.INT.S.1140, P2.L8.INT.N.1040 | 100% |  | 2025-10-24 | 2025-11-20 |  |  | 80 | HVAC | SM | P2-5 | SM | HVAC |  |  | Harris | 1 | P2.B2.23.30.210 | O |  |
| P2.L8.INT.N.1175 |  | Set & Connect - Elect Panels and Equipment / L8 / North Int | 5d | 2025-11-07 A | 2025-11-18 A | P2.L8.INT.N.1100, P2.L8.INT.N.1120 | 100% |  | 2025-12-01 | 2025-12-05 |  |  | 40 | ELEC | SM | P2-5 | SM | ELEC-2 |  |  |  |  |  | O |  |
| P2.L8.INT.N.1190 |  | OH - Electrical - 208/120v Branch / L8 / North Int | 10d | 2025-11-15 A | 2025-12-05 | P2.L8.INT.N.1160 | 50% | 5d | 2025-12-01 | 2025-12-12 | 92d | 15d | 80 | ELEC | SM | P2-5 | SM | ELEC-2 |  |  |  | 2 | P2.B2.26.05.310 | O |  |
| P2.L8.INT.N.1200 |  | OH - Electrical - Equip Tie In / L8 / North Int | 10d | 2025-11-19 A | 2025-12-29 | P2.L8.INT.N.1160, P2.L8.INT.N.1175, P2.L8.INT.N.1170 | 50% | 5d | 2025-12-22 | 2026-01-06 | 77d | 0d | 80 | ELEC | SM | P2-5 | SM | ELEC-2 |  |  |  | 4 | P2.B2.26.05.410 | O |  |
| P2.L8.INT.N.1170 |  | Set & Connect - Mech Equipment / L8 / North Int | 15d | 2025-12-01 | 2025-12-19 | P2.L8.INT.N.1040 |  |  |  |  | 77d | 0d | 80 | HVAC | SM | P2-5 | SM | HVAC |  |  | Harris |  |  | O |  |
| P2.L8.INT.N.1210 |  | OH - DALT - HP Mains / L8 / North Int | 10d | 2025-12-01 A | 2026-01-06 | P2.L8.INT.N.2090 |  | 15d | 2026-01-06 | 2026-01-19 | 32d | 0d | 80 | TAB |  | P2-5 | SM | TAB-1 |  |  | Harris | 2 | P2.B2.23.30.310 |  |  |
| P2.L8.INT.N.2090 |  | OH - Hang Duct - HP Mains (Low) / L8 / North Int | 10d | 2025-12-01 A | 2025-12-12 | P2.L8.INT.N.1140 |  | 10d | 2025-12-19 | 2026-01-05 | 32d | 0d | 80 | HVAC | SM | P2-5 | SM | HVAC |  |  | Harris | 1 | P2.B2.23.30.210 | O |  |
| P2.L8.INT.N.1220 |  | OH - Plumbing - Test / L8 / North Int | 20d | 2025-12-15 | 2026-01-13 | P2.L8.INT.N.1150 |  |  |  |  | 67d | 0d | 80 | PLMB |  | P2-5 | SM | PLMB |  |  | Harris | 2 | P2.B2.22.14.310 |  |  |
| P2.L8.INT.N.1180 |  | OH - HVAC Piping (High-Steel) / L8 / North Int | 10d | 2025-12-30 | 2026-01-13 | P2.L8.INT.N.1040, P2.L8.INT.N.1130 SS, P2.L8.INT.N.1030, P2.L8.S.1220, FRG.P2.L8.INT.S.1690 |  |  |  |  | 43d | 0d | 80 | FIT | SM | P2-5 | SM | FIT-2 |  |  | Harris | 2 | P2.B2.23.20.410 |  |  |
| P2.L8.INT.N.1270 |  | Pull Wire - Electrical - 208/120v Branch & Equip / L8 / North Int | 20d | 2025-12-30 | 2026-01-27 | P2.L8.INT.N.1190, P2.L8.INT.N.1200, P2.L8.INT.N.1050 |  |  |  |  | 77d | 45d | 80 | ELEC |  | P2-5 | SM | ELEC-2 |  |  |  | To Trim Devices & Term Panel |  |  |  |
| P2.L8.INT.N.1280 |  | Pull Wire - Electrical - 480/277v Distribution / L8 / North Int | 10d | 2025-12-30 | 2026-01-13 | P2.L8.INT.N.1200 |  |  |  |  | 87d | 55d | 80 | ELEC |  | P2-5 | SM | ELEC-2 |  |  |  | To Trim Devices & Term Panel |  |  |  |
| P2.L8.INT.N.1230 |  | OH - Insulate HP Duct / L8 / North Int | 10d | 2026-01-07 | 2026-01-20 | P2.L8.INT.N.1210 |  |  |  |  | 52d | 9d | 80 | INSUL |  | P2-5 | SM | INSUL-3 |  |  | Harris | 3 | P2.B2.23.07.310 |  |  |
| P2.L8.INT.N.1240 |  | OH - Hang Duct - LP Branch (High) / L8 / North Int | 20d | 2026-01-07 | 2026-02-03 | P2.L8.INT.N.1210 |  |  |  |  | 32d | 0d | 80 | HVAC |  | P2-5 | SM | HVAC |  |  | Harris | 3 | P2.B2.23.30.410 |  |  |
| P2.L8.INT.N.1260 |  | OH - Insulate Plumbing / L8 / North Int | 20d | 2026-01-14 | 2026-02-10 | P2.L8.INT.N.1220 |  |  |  |  | 67d | 35d | 80 | INSUL |  | P2-5 | SM | INSUL-3 |  |  | Harris | 3 | P2.B2.22.07.510 |  |  |
| P2.L8.INT.N.2100 |  | OH - HVAC Piping (Low) / L8 / North Int | 10d | 2026-01-14 | 2026-01-27 | P2.L8.INT.N.1180 |  |  |  |  | 43d | 0d | 80 | FIT | SM | P2-5 | SM | FIT-2 |  |  | Harris | 2 | P2.B2.23.20.410 |  | Per Harris Schedule 1/22/25 |
| P2.L8.INT.N.1250 |  | OH - HVAC Piping - Test / L8 / North Int | 10d | 2026-01-20 | 2026-02-02 | P2.L8.INT.N.2100 FF+4d |  |  |  |  | 43d | 0d | 80 | FIT | SM | P2-5 | SM | FIT-2 |  |  | Harris | 3 | P2.B2.23.20.510 |  |  |
| P2.L8.INT.N.1290 |  | OH - HVAC Piping - Equip Tie In / L8 / North Int | 15d | 2026-02-03 | 2026-02-23 | P2.L8.INT.N.1250, P2.L8.INT.N.1170, CX.B2.HYDR.1000 |  |  |  |  | 48d | 5d | 80 | FIT | SM | P2-5 | SM | FIT-2 |  |  | Harris |  | P2.B2.23.20.610 |  |  |
| P2.L8.INT.N.1300 |  | OH - Insulate HVAC Pipe / L8 / North Int | 10d | 2026-02-03 | 2026-02-16 | P2.L8.INT.N.1250, P2.L8.INT.N.1230 |  |  |  |  | 43d | 0d | 80 | INSUL |  | P2-5 | SM | INSUL-3 |  |  | Harris | 4 | P2.B2.22.07.610 |  |  |
| P2.L8.INT.N.2110 |  | OH - Hang Duct - LP Branch (Low) / L8 / North Int | 10d | 2026-02-04 | 2026-02-17 | P2.L8.INT.N.1240 |  |  |  |  | 32d | 0d | 80 | HVAC |  | P2-5 | SM | HVAC |  |  | Harris | 3 | P2.B2.23.30.410 |  |  |
| P2.L8.INT.N.1320 |  | OH - Conduit - Low Volt - BAS/Controls / L8 / North Int | 10d | 2026-02-17 | 2026-03-02 | P2.L8.INT.N.1300 |  |  |  |  | 43d | 0d | 80 | BAS |  | P2-5 | SM | BAS-1 |  |  | Harris | 5 |  |  |  |
| P2.L8.INT.N.1350 |  | OH - Conduit - Low Volt - Security / L8 / North Int | 10d | 2026-02-17 | 2026-03-02 | P2.L8.INT.N.1300 |  |  |  |  | 43d | 0d | 80 | ELEC |  | P2-5 | SM | ELEC-2 |  |  |  | 5 |  |  |  |
| P2.L8.INT.N.1310 |  | OH - Insulate LP Duct / L8 / North Int | 10d | 2026-02-18 | 2026-03-03 | P2.L8.INT.N.2110 |  |  |  |  | 32d | 0d | 80 | INSUL |  | P2-5 | SM | INSUL-3 |  |  | Harris | 4 | P2.B2.23.07.410 |  |  |
| P2.L8.INT.N.1360 |  | Pull Wire - Low Volt - BAS/Controls / L8 / North Int | 10d | 2026-03-03 | 2026-03-16 | P2.L8.INT.N.1290, P2.L8.INT.N.1320 |  |  |  |  | 43d | 11d | 80 | BAS |  | P2-5 | SM | BAS-1 |  |  | Harris | To Trim Finishes |  |  |  |
| P2.L8.INT.N.1390 |  | Pull Wire - Low Volt - Security / L8 / North Int | 10d | 2026-03-03 | 2026-03-16 | P2.L8.INT.N.1350 |  |  |  |  | 43d | 11d | 80 | LOWVOLT |  | P2-5 | SM | LOWVOLT-1 |  |  |  | To Trim Finishes |  |  |  |
| P2.L8.INT.N.1330 |  | OH - Conduit - Low Volt - Fire Alarm / L8 / North Int | 10d | 2026-03-04 | 2026-03-17 | P2.L8.INT.N.1310 |  |  |  |  | 32d | 0d | 80 | FA |  | P2-5 | SM | FA-1 |  |  |  | 5 |  |  |  |
| P2.L8.INT.N.1340 |  | OH - Conduit - Low Volt - Telecom / L8 / North Int | 10d | 2026-03-04 | 2026-03-17 | P2.L8.INT.N.1310 |  |  |  |  | 32d | 0d | 80 | ELEC |  | P2-5 | SM | ELEC-2 |  |  |  | 5 |  |  |  |
| P2.L8.INT.N.1110 |  | Firestop - Thru Wall / L8 / North Int | 5d | 2026-03-18 | 2026-03-24 | P2.L8.INT.N.1160, P2.L8.INT.N.1180, P2.L8.INT.N.1130, P2.L8.INT.N.1140, P2.L8.INT.N.1150, P2.L8.INT.N.2090, P2.L8.INT.N.2100, P2.L8.INT.N.1320, P2.L8.INT.N.1330, P2.L8.INT.N.1340, P2.L8.INT.N.1350, P2.L8.INT.N.1120 SS |  |  |  |  | 37d | 5d | 40 | FIRESTO |  | P2-5 | SM | FIRESTO |  | AT48 |  | To Finishes - Paint | P2.B2.07.84.210 |  |  |
| P2.L8.INT.N.1370 |  | Pull Wire - Low Volt - Fire Alarm / L8 / North Int | 10d | 2026-03-18 | 2026-03-31 | P2.L8.INT.N.1330 |  |  |  |  | 32d | 0d | 80 | FA |  | P2-5 | SM | FA-1 |  |  |  | To Trim Finishes |  |  |  |
| P2.L8.INT.N.1380 |  | Pull Wire - Low Volt - Telecom / L8 / North Int | 10d | 2026-03-18 | 2026-03-31 | P2.L8.INT.N.1340 |  |  |  |  | 32d | 0d | 80 | CIT |  | P2-5 | SM | CIT |  |  |  | To Trim Finishes |  |  |  |
| P2.L8.INT.N.1400 |  | Trades Inspect & Verify R/I Work Completed to Specs / L8 / North Int | 2d | 2026-04-01 | 2026-04-02 | P2.L8.INT.N.1260, P2.L8.INT.N.1270, P2.L8.INT.N.1110, P2.L8.INT.N.1360, P2.L8.INT.N.1370, P2.L8.INT.N.1380, P2.L8.INT.N.1390, P2.L8.INT.N.1280 |  |  |  |  | 32d | 0d | 16 | T |  | P2-5 |  | T | ! |  |  | To Finishes |  |  |  |

| ID | WBS | Activity | Type | Duration | Start | Finish | Predecessors | Complete | Remaining | Planned start | Planned finish | Total float | Free float | Temp Orig Dur | Resp / SRLM | 744 | PHASE | RESP UPD | RESP / Trade | *NIH Resp Check* | Testing Type | Z.RESP | Pick | Act ID Temp | Update Status |
| --- | --- | --- | --- | --- | --- | --- | --- | --- | --- | --- | --- | --- | --- | --- | --- | --- | --- | --- | --- | --- | --- | --- | --- | --- | --- |
|  | 1 | **Finishes - North Interstitial 8-2855 (12,785 sf)** |  |  | 2026-04-03 | 2026-06-12 |  |  |  |  |  |  |  |  |  |  |  |  |  |  |  |  |  |  |  |
| P2.L8.INT.N.2000 |  | Flooring Prep - Epoxy Floors / L8 / North Int |  | 7d | 2026-04-03 | 2026-04-13 | P2.L8.INT.N.1400 |  |  |  |  | 127d | 0d | 80 | EPOXYF | SM | P2-5 | SM | EPOXYF |  |  |  |  |  |  |
| P2.L8.INT.N.2120 |  | Flooring - Epoxy Floors / L8 / North Int |  | 3d | 2026-04-14 | 2026-04-16 | P2.L8.INT.N.2000 |  |  |  |  | 127d | 0d | 80 | EPOXYF | SM | P2-5 | SM | EPOXYF |  |  |  |  |  |  |
| P2.L8.INT.N.2010 |  | Paint - Finish Coat / L8 / North Int |  | 5d | 2026-04-17 | 2026-04-23 | P2.L8.INT.N.1400, P2.L8.INT.N.2120 |  |  |  |  | 127d | 0d | 40 | PAINT |  | P2-5 |  | PAINT-1 | ! |  |  |  |  |  |
| P2.L8.INT.N.2020 |  | Doors & Hardware / L8 / North Int |  | 5d | 2026-04-24 | 2026-04-30 | P2.L8.INT.N.2010 |  |  |  |  | 127d | 0d | 40 | DFH |  | P2-5 |  | DFH |  | AT29 |  |  |  |  |
| P2.L8.INT.N.2040 |  | Building Signage / L8 / North Int |  | 5d | 2026-04-24 | 2026-04-30 | P2.L8.INT.N.2010 |  |  |  |  | 179d | 5d | 40 | SIGN |  | P2-5 |  | SIGN |  |  |  |  |  |  |
| P2.L8.INT.N.2030 |  | Trim All MEP Finishes / L8 / North Int |  | 5d | 2026-05-01 | 2026-05-07 | P2.L8.INT.N.2020, P2.L8.INT.N.2010 |  |  |  |  | 174d | 0d | 40 | MEP |  | P2-5 |  | MEP-2 |  |  | Harris |  |  |  |
| P2.L8.INT.N.2050 |  | Rough Clean / L8 / North Int |  | 5d | 2026-05-08 | 2026-05-14 | P2.L8.INT.N.2040, P2.L8.INT.N.2030 |  |  |  |  | 174d | 0d | 40 | FCLEAN |  | P2-5 |  | FCLEAN |  |  |  |  |  |  |
| P2.L8.INT.N.2060 |  | Prepare Punchlist / L8 / North Int |  | 5d | 2026-05-15 | 2026-05-21 | P2.L8.INT.N.2050 |  |  |  |  | 174d | 0d | 40 | QC |  | P2-5 |  | QC |  |  |  |  |  |  |
| P2.L8.INT.N.2070 |  | Correct Punchlist / L8 / North Int |  | 10d | 2026-05-22 | 2026-06-05 | P2.L8.INT.N.2060 FF, P2.L8.INT.N.2060 |  |  |  |  | 174d | 0d | 80 | FINISH |  | P2-5 |  | FINISH |  |  |  |  |  |  |
| P2.L8.INT.N.2080 |  | Final Clean / L8 / North Int |  | 5d | 2026-06-08 | 2026-06-12 | P2.L8.INT.N.2070 |  |  |  |  | 174d | 137d | 40 | FCLEAN |  | P2-5 |  | FCLEAN |  |  |  | To QC |  |  |
|  | 1 | **MECHANICAL TOWERS / LEVEL 8** |  |  | 2025-05-26 | 2026-05-19 |  |  |  |  |  |  |  |  |  |  |  |  |  |  |  |  |  |  |  |
|  | 4 | **South Mechanical Tower / Rough In & Finish / Level 8** |  |  | 2025-07-01 | 2026-04-07 |  |  |  |  |  |  |  |  |  |  |  |  |  |  |  |  |  |  |  |
| P2.L8.SMT.1070 |  | Set & Connect - Mech Equipment / L8 - S. Mech Tower |  | 10d | 2025-07-01 A | 2025-07-15 A | P2.L7.SMT.1070, P2.8.03.610 | 100% |  | 2025-08-01 | 2025-08-14 |  |  | 80 | HVAC | TS | P2-5 | TS | HVAC |  |  | Harris |  |  |  |
| P2.L8.SMT.1000 |  | Insulation - Exterior Wall Assembly / L8 - S. Mech Tower |  | 5d | 2025-07-02 A | 2025-07-09 A | P2.FAC.2.Z1.150 | 100% |  | 2025-08-01 | 2025-08-07 |  |  | 40 | INSUL | TS | P2-5 | TS | INSUL-1 |  |  |  |  |  |  |
| P2.L8.SMT.1020 |  | In Wall - Electrical - CMU / L8 - S. Mech Tower |  | 10d | 2025-07-10 A | 2025-07-23 A | P2.L8.SMT.1010 SS | 100% |  | 2025-08-08 | 2025-08-21 |  |  | 80 | ELEC | TS | P2-5 | TS | ELEC-2 |  |  |  |  | P2.B2.26.05.510 |  |
| P2.L8.SMT.1030 |  | In Wall - Mech/Plumbing - CMU / L8 - S. Mech Tower |  | 10d | 2025-07-10 A | 2025-07-23 A | P2.L8.SMT.1010 SS | 100% |  | 2025-08-08 | 2025-08-21 |  |  | 80 | PLMB | TS | P2-5 | TS | PLMB |  |  | Harris |  | P2.B2.22.05.310 |  |
| P2.L8.SMT.1100 |  | HVAC Piping Connections to Shaft Riser / L8 - S. Mech Tower |  | 20d | 2025-09-02 A | 2025-09-26 A | P2.L8.SMT.1070 | 100% |  | 2025-10-01 | 2025-10-28 |  |  | 40 | HVAC | TS | P2-5 | TS | HVAC | ! |  | Harris |  |  | O |
| P2.L8.SMT.1105 |  | HVAC Duct Connections to Shaft Riser / L8 - S. Mech Tower |  | 20d | 2025-09-02 A | 2025-09-26 A | P2.L8.SMT.1070 | 100% |  | 2026-01-21 | 2026-02-17 |  |  | 40 | HVAC |  | P2-5 |  | HVAC | ! |  | Harris |  |  |  |
| P2.L8.SMT.1010 |  | CMU - Lay Block / L8 - S. Mech Tower |  | 10d | 2025-09-15 A | 2025-09-18 A | BP4.040.3.100, P2.L8.SMT.1000 | 100% |  | 2025-10-01 | 2025-10-14 |  |  | 80 | CMU | TS | P2-5 | TS | CMU |  | AT3 |  |  | P2.B2.04.20.210 | O |
| P2.L8.SMT.1040 |  | Paint - CMU Block Fill / L8 - S. Mech Tower |  | 10d | 2025-09-22 A | 2025-09-26 A | P2.L8.SMT.1010 | 100% |  | 2025-10-15 | 2025-10-28 |  |  | 80 | PAINT | TS | P2-5 | TS | PAINT-1 |  |  |  |  | P2.B2.09.97.110 | O |
| P2.L8.SMT.1050 |  | CMU - Point & Patch / L8 - S. Mech Tower |  | 10d | 2025-09-22 A | 2025-09-22 A | P2.L8.SMT.1030, P2.L8.SMT.1020, P2.L8.SMT.1040 | 100% |  | 2025-10-29 | 2025-11-11 |  |  | 80 | CMU | TS | P2-5 | TS | CMU |  |  |  |  | P2.B2.04.20.310 | O |
| P2.L8.SMT.1060 |  | Paint Prime & 1st Coat - CMU / L8 - S. Mech Tower |  | 10d | 2025-10-15 A | 2025-10-17 A | P2.L8.SMT.1050 SS | 100% |  | 2025-10-01 | 2025-10-14 |  |  | 80 | PAINT | TS | P2-5 | TS | PAINT-1 |  |  |  |  | P2.B2.09.97.210 |  |
| P2.L8.SMT.1080 |  | Set & Connect - Elect Panels and Equipment / L8 - S. Mech Tower |  | 5d | 2025-10-27 A | 2025-12-02 | P2.L8.SMT.1060 | 60% | 2d | 2025-10-15 | 2025-10-21 | 135d | 46d | 40 | ELEC | TS | P2-5 | TS | ELEC-2 |  |  |  |  |  | O |
| P2.L8.SMT.1120 |  | BAS - Equip Tie In / L8 - S. Mech Tower |  | 5d | 2025-10-27 A | 2025-12-02 | P2.L8.SMT.1070, P2.L8.SMT.1060 | 60% | 2d | 2025-10-27 | 2025-10-31 | 147d | 78d | 40 | BAS | TS | P2-5 | TS | BAS-1 |  |  | Harris |  |  | O |
| P2.L8.SMT.1130 |  | Test/Inspect Duct & Piping / L8 - S. Mech Tower |  | 10d | 2025-12-01 | 2025-12-12 | P2.L8.SMT.1100, P2.L8.SMT.1105 |  |  |  |  | 154d | 50d | 40 | MECH |  | P2-5 | TS | MECH-2 | ! |  | Harris |  |  | O |
| P2.L8.SMT.1110 |  | HVAC Piping - Equip Tie In / L8 - S. Mech Tower |  | 20d | 2026-01-28 | 2026-02-24 | P2.L8.SMT.1070, CX.B2.HYDR.1000 |  |  |  |  | 104d | 0d | 80 | FIT | TS | P2-5 | TS | FIT-2 |  |  | Harris |  | P2.B2.23.20.610 |  |
| P2.L8.SMT.1200 |  | Flooring Prep - Epoxy Floors / L8 - S. Mech Tower |  | 3d | 2026-02-09 | 2026-02-11 | P2.L7.SMT.1270, P2.L8.SMT.1070, P2.L8.SMT.1080 |  |  |  |  | 89d | 0d | 16 | EPOXYF |  | P2-5 | TS | EPOXYF |  |  |  |  |  |  |
| P2.L8.SMT.1250 |  | Flooring - Epoxy Floors / L8 - S. Mech Tower |  | 2d | 2026-02-12 | 2026-02-13 | P2.L8.SMT.1200 |  |  |  |  | 89d | 0d | 16 | EPOXYF |  | P2-5 | TS | EPOXYF |  |  |  |  |  |  |
| P2.L8.SMT.1090 |  | Panelboards, Interconnect Wiring, and Remaining Room Buildout of All Elec/FA Systems / L8 - S. Mech Tower |  | 10d | 2026-02-16 | 2026-02-27 | BP1.262.3.200, BP1.262.3.100, P2.L8.SMT.1250, P2.L8.SMT.1080 |  |  |  |  | 89d | 0d | 80 | ELEC |  | P2-5 | TS | ELEC-2 |  |  |  |  |  |  |
| P2.L8.SMT.1150 |  | Insulate HVAC / Plumbing Pipe / L8 - S. Mech Tower |  | 5d | 2026-02-25 | 2026-03-03 | P2.L8.SMT.1130, P2.L8.SMT.1110 |  |  |  |  | 104d | 15d | 40 | INSUL |  | P2-5 | TS | INSUL-3 | ! |  | Harris |  |  |  |
| P2.L8.SMT.1140 |  | Pull Wire - In From Distribution Panels / Out to Branch Circuits / L8 - S. Mech Tower |  | 5d | 2026-03-02 | 2026-03-06 | P2.L8.SMT.1090 |  |  |  |  | 89d | 0d | 40 | ELEC |  | P2-5 | TS | ELEC-2 |  |  |  |  |  |  |
| P2.L8.SMT.1160 |  | Electrical Tie in to Equipment / L8 - S. Mech Tower |  | 5d | 2026-03-09 | 2026-03-13 | P2.L8.SMT.1140, P2.L8.SMT.1070 |  |  |  |  | 106d | 17d | 40 | ELEC |  | P2-5 | TS | ELEC-2 |  |  |  |  |  |  |
| P2.L8.SMT.1170 |  | Test & Terminate / L8 - S. Mech Tower |  | 5d | 2026-03-09 | 2026-03-13 | P2.L8.SMT.1140 |  |  |  |  | 89d | 0d | 40 | ELEC |  | P2-5 | TS | ELEC-2 |  |  |  |  |  |  |
| P2.L8.SMT.1180 |  | Paint - Finish Coat / L8 - S. Mech Tower |  | 2d | 2026-03-16 | 2026-03-17 | P2.L8.SMT.1170 |  |  |  |  | 89d | 0d | 16 | PAINT |  | P2-5 | TS | PAINT-1 |  |  |  |  |  |  |
| P2.L8.SMT.1190 |  | Trim All MEPF Finishes / L8 - S. Mech Tower |  | 2d | 2026-03-18 | 2026-03-19 | P2.L8.SMT.1180 |  |  |  |  | 90d | 0d | 16 | MEP |  | P2-5 | TS | MEP-2 |  |  | Harris |  |  |  |
| P2.L8.SMT.1340 |  | Wall Protection / L8 - S. Mech Tower |  | 5d | 2026-03-18 | 2026-03-24 | P2.L8.SMT.1180, BP7.102.3.300 |  |  |  |  | 89d | 0d | 40 | WALLPRO |  | P2-5 | TS | WALLPRO |  |  |  |  |  |  |
| P2.L8.SMT.1210 |  | Doors & Hardware / L8 - S. Mech Tower |  | 2d | 2026-03-20 | 2026-03-23 | P2.L8.SMT.1190 |  |  |  |  | 90d | 1d | 16 | DFH |  | P2-5 | TS | DFH |  | AT29 |  |  |  |  |
| P2.L8.SMT.1220 |  | Trades Inspect & Verify R/I Work Completed to Specs / L8 - S. Mech Tower |  | 5d | 2026-03-25 | 2026-03-31 | P2.L8.SMT.1150, P2.L8.SMT.1210, P2.L8.SMT.1120, P2.L8.SMT.1340 |  |  |  |  | 89d | 0d | 40 | T |  | P2-5 | TS | T |  |  |  |  |  |  |
| P2.L8.SMT.1240 |  | Energize Elec Panels - Lock Doors and Limit Access / L8 - S. Mech Tower |  | 5d | 2026-04-01 | 2026-04-07 | P2.L8.SMT.1220, CX.B2.SWGR.1010, CX.B2.MVEE.1010 |  |  |  |  | 89d | 0d | 40 | ELEC |  | P2-5 |  | ELEC-2 |  |  |  |  |  |  |
| P2.L8.SMT.1230 |  | HVAC System Ready for Start Up / L8 - S. Mech Tower | milestone | 0d | 2026-04-07 | 2026-04-07 | P2.L8.SMT.1160 FF, P2.L8.SMT.1240 |  |  |  |  | 89d | 10d | 0 | MECH |  | P2-5 |  | MECH-2 |  |  | Harris |  |  |  |

| ID | WBS | Activity | Type | Duration | Start | Finish | Predecessors | Complete | Planned start | Planned finish | Total float | Free float | Temp Orig Dur | Resp / SRLM | PHASE | Z.RESP | RESP / Trade | Update Status | Testing Type | Act ID Temp | 744 | RESP UPD | *NIH Resp Check* | Pick | **NEAR CRITICAL** |
| --- | --- | --- | --- | --- | --- | --- | --- | --- | --- | --- | --- | --- | --- | --- | --- | --- | --- | --- | --- | --- | --- | --- | --- | --- | --- |
|  | 8 | **East Mechanical Tower / Rough In & Finish / Level 8** |  |  | 2025-05-26 | 2026-05-19 |  |  |  |  |  |  |  |  |  |  |  |  |  |  |  |  |  |  |  |
| P2.L8.EMT.1070 |  | Set & Connect - Mech Equipment / L8 - E. Mech Tower |  | 10d | 2025-05-26 A | 2025-05-29 A | P2.L7.EMT.1070, P2.8.03.630 | 100% | 2025-06-16 | 2025-06-27 |  |  | 80 | HVAC | P2-5 | Harris | HVAC |  |  |  |  |  |  |  |  |
| P2.L8.EMT.1010 |  | CMU - Lay Block / L8 - E. Mech Tower |  | 10d | 2025-08-14 A | 2025-09-26 A | P2.L8.INT.N.1000 | 100% | 2025-08-01 | 2025-08-14 |  |  | 80 | CMU | P2-5 |  | CMU | O | AT3 | P2.B2.04.20.210 | SM | SM |  |  |  |
| P2.L8.EMT.1100 |  | HVAC Piping Connections to Shaft Riser / L8 - E. Mech Tower |  | 20d | 2025-09-02 A | 2025-09-26 A | P2.L8.EMT.1070 | 100% | 2025-10-01 | 2025-10-28 |  |  | 40 | HVAC | P2-5 | Harris | HVAC | O |  |  | SM | SM | ! |  |  |
| P2.L8.EMT.1040 |  | Paint - CMU Block Fill / L8 - E. Mech Tower |  | 10d | 2025-11-10 A | 2025-11-14 A | P2.L8.EMT.1010 | 100% | 2025-12-01 | 2025-12-12 |  |  | 80 | PAINT | P2-5 |  | PAINT-1 | O |  | P2.B2.09.97.110 | SM | SM |  |  |  |
| P2.L8.EMT.1050 |  | CMU - Point & Patch / L8 - E. Mech Tower |  | 10d | 2025-11-10 A | 2025-11-14 A | P2.L8.EMT.1040, P2.L8.EMT.1010 | 100% | 2025-12-15 | 2025-12-29 |  |  | 80 | CMU | P2-5 |  | CMU | O |  | P2.B2.04.20.310 | SM | SM |  |  |  |
| P2.L8.EMT.1060 |  | Paint Prime & 1st Coat - CMU / L8 - E. Mech Tower |  | 10d | 2025-11-10 A | 2025-11-14 A | P2.L8.EMT.1050 SS | 100% | 2025-12-15 | 2025-12-29 |  |  | 80 | PAINT | P2-5 |  | PAINT-1 | O |  | P2.B2.09.97.210 | SM | SM |  |  |  |
| P2.L8.EMT.1080 |  | Set & Connect - Elect Panels and Equipment / L8 - E. Mech Tower |  | 5d | 2025-12-01 | 2025-12-05 | P2.L8.EMT.1060 |  |  |  | 132d | 24d | 40 | ELEC | P2-5 |  | ELEC-2 |  |  |  | SM | SM |  |  |  |
| P2.L8.EMT.1105 |  | HVAC Duct Connections to Shaft Riser / L8 - E. Mech Tower |  | 20d | 2025-12-01 | 2025-12-29 | P2.L8.EMT.1070 |  |  |  | 134d | 0d | 40 | HVAC | P2-5 | Harris | HVAC | O |  |  | SM | SM | ! |  |  |
| P2.L8.EMT.1120 |  | BAS - Equip Tie In / L8 - E. Mech Tower |  | 5d | 2025-12-01 | 2025-12-05 | P2.L8.EMT.1070, P2.L8.EMT.1060 |  |  |  | 144d | 56d | 40 | BAS | P2-5 | Harris | BAS-1 |  |  |  | SM | SM |  |  |  |
| P2.L8.EMT.1130 |  | Test/Inspect Duct & Piping / L8 - E. Mech Tower |  | 10d | 2025-12-30 | 2026-01-13 | P2.L8.EMT.1100, P2.L8.EMT.1105 |  |  |  | 134d | 0d | 40 | MECH | P2-5 | Harris | MECH-2 |  |  |  | SM | SM | ! |  |  |
| P2.L8.EMT.1200 |  | Flooring Prep - Epoxy Floors / L8 - E. Mech Tower |  | 3d | 2026-01-13 | 2026-01-15 | P2.L7.EMT.1250, P2.L8.EMT.1080 |  |  |  | 108d | 0d | 16 | EPOXYF | P2-5 |  | EPOXYF |  |  |  |  | SM |  |  |  |
| P2.L8.EMT.1150 |  | Insulate HVAC / Plumbing Pipe / L8 - E. Mech Tower |  | 5d | 2026-01-14 | 2026-01-20 | P2.L8.EMT.1130 |  |  |  | 134d | 26d | 40 | INSUL | P2-5 | Harris | INSUL-3 |  |  |  |  | SM | ! |  |  |
| P2.L8.EMT.1280 |  | Flooring - Epoxy Floors / L8 - E. Mech Tower |  | 2d | 2026-01-16 | 2026-01-19 | P2.L8.EMT.1200 |  |  |  | 108d | 0d | 16 | EPOXYF | P2-5 |  | EPOXYF |  |  |  |  | SM |  |  |  |
| P2.L8.EMT.1090 |  | Panelboards, Interconnect Wiring, and Remaining Room Buildout of All Elec/FA Systems / L8 - E. Mech Tower |  | 10d | 2026-01-20 | 2026-02-02 | BP1.262.3.100, BP1.262.3.200, P2.L8.EMT.1280, P2.L8.EMT.1080 |  |  |  | 108d | 0d | 80 | ELEC | P2-5 |  | ELEC-2 |  |  |  |  | SM |  |  |  |
| P2.L8.EMT.1110 |  | HVAC Piping - Equip Tie In (Chilled Water) / L8 - E. Mech Tower |  | 20d | 2026-01-28 | 2026-02-24 | P2.L8.EMT.1070, CX.B2.HYDR.1000 |  |  |  | 69d | 0d | 80 | FIT | P2-5 | Harris | FIT-2 |  |  | P2.B2.23.20.610 | SM | SM |  |  |  |
| P2.L8.EMT.1140 |  | Pull Wire - In From Distribution Panels / Out to Branch Circuits / L8 - E. Mech Tower |  | 5d | 2026-02-03 | 2026-02-09 | P2.L8.EMT.1090 |  |  |  | 108d | 0d | 40 | ELEC | P2-5 |  | ELEC-2 |  |  |  |  | SM |  |  |  |
| P2.L8.EMT.1160 |  | Electrical Tie in to Equipment / L8 - E. Mech Tower |  | 5d | 2026-02-10 | 2026-02-16 | P2.L8.EMT.1070, P2.L8.EMT.1140 |  |  |  | 125d | 46d | 40 | ELEC | P2-5 |  | ELEC-2 |  |  |  |  | SM |  |  |  |
| P2.L8.EMT.1170 |  | Test & Terminate / L8 - E. Mech Tower |  | 5d | 2026-02-10 | 2026-02-16 | P2.L8.EMT.1140 |  |  |  | 108d | 0d | 40 | ELEC | P2-5 |  | ELEC-2 |  |  |  |  | SM |  |  |  |
| P2.L8.EMT.1180 |  | Paint - Finish Coat / L8 - E. Mech Tower |  | 2d | 2026-02-17 | 2026-02-18 | P2.L8.EMT.1170 |  |  |  | 108d | 0d | 16 | PAINT | P2-5 |  | PAINT-1 |  |  |  |  | SM |  |  |  |
| P2.L8.EMT.1190 |  | Trim All MEPF Finishes / L8 - E. Mech Tower |  | 2d | 2026-02-19 | 2026-02-20 | P2.L8.EMT.1180 |  |  |  | 109d | 0d | 16 | MEP | P2-5 | Harris | MEP-2 |  |  |  |  | SM |  |  |  |
| P2.L8.EMT.1340 |  | Wall Protection / L8 - E. Mech Tower |  | 5d | 2026-02-19 | 2026-02-25 | P2.L8.EMT.1180, BP7.102.3.300 |  |  |  | 108d | 0d | 40 | WALLPRO | P2-5 |  | WALLPRO |  |  |  |  | SM |  |  |  |
| P2.L8.EMT.1210 |  | Doors & Hardware / L8 - E. Mech Tower |  | 2d | 2026-02-23 | 2026-02-24 | P2.L8.EMT.1190 |  |  |  | 109d | 1d | 16 | DFH | P2-5 |  | DFH |  | AT29 |  |  | SM |  |  |  |
| P2.L8.EMT.1250 |  | HVAC Piping - Equip Tie In (Reheat) / L8 - E. Mech Tower |  | 20d | 2026-02-25 | 2026-03-24 | P2.L8.EMT.1110, CX.B2.HYDR.1000 |  |  |  | 69d | 0d | 80 | FIT | P2-5 | Harris | FIT-2 |  |  | P2.B2.23.20.610 | SM | SM |  |  |  |
| P2.L8.EMT.1220 |  | Trades Inspect & Verify R/I Work Completed to Specs / L8 - E. Mech Tower |  | 5d | 2026-02-26 | 2026-03-04 | P2.L8.EMT.1150, P2.L8.EMT.1210, P2.L8.EMT.1120, P2.L8.EMT.1340 |  |  |  | 108d | 29d | 40 | T | P2-5 |  | T |  |  |  |  | SM |  |  |  |
| FRG.P2.L8.EMT.1050 |  | AHU Piping Install / L8 - E. Mech Tower - FRAGNET |  | 20d | 2026-03-18 | 2026-04-14 | FRG.P2.L7.EMT.1050 |  |  |  | 79d | 0d | 80 | Harris Fragnet | P2-5 | Harris | FIT-2 | O |  | P2.B2.23.20.410 | TA | TA |  | 2 | 4.1 |
| P2.L8.EMT.1260 |  | HVAC Piping - Equip Tie In (Steam) / L8 - E. Mech Tower |  | 20d | 2026-03-25 | 2026-04-21 | P2.L8.EMT.1250, CX.B2.HYDR.1000 |  |  |  | 69d | 0d | 80 | FIT | P2-5 | Harris | FIT-2 |  |  | P2.B2.23.20.610 | SM | SM |  |  |  |
| P2.L8.EMT.1240 |  | Energize Elec Panels - Lock Doors and Limit Access / L8 - E. Mech Tower |  | 5d | 2026-04-15 | 2026-04-21 | P2.L8.EMT.1220, CX.B2.SWGR.1010, CX.B2.MVEE.1010, FRG.P2.L8.EMT.1050 |  |  |  | 79d | 0d | 40 | ELEC | P2-5 |  | ELEC-2 |  |  |  |  |  |  |  |  |
| P2.L8.EMT.1230 |  | HVAC System Ready for Start Up / L8 - E. Mech Tower | milestone | 0d | 2026-04-21 | 2026-04-21 | P2.L8.EMT.1160 FF, P2.L8.EMT.1240, FRG.P2.L8.EMT.1050 |  |  |  | 79d | 0d | 0 | MECH | P2-5 | Harris | MECH-2 |  |  |  |  |  |  |  |  |
| P2.L8.EMT.1270 |  | HVAC Piping - Equip Tie In (Humidification) / L8 - E. Mech Tower |  | 20d | 2026-04-22 | 2026-05-19 | P2.L8.EMT.1260, P2.L8.EMT.1280, CX.B2.HYDR.1000 |  |  |  | 69d | 0d | 80 | FIT | P2-5 | Harris | FIT-2 |  |  | P2.B2.23.20.610 |  |  |  |  |  |

| ID | WBS | Activity | Type | Duration | Start | Finish | Predecessors | Complete | Remaining | Planned start | Planned finish | Total float | Free float | Constraint | Temp Orig Dur | Act ID Temp | Resp / SRLM | PHASE | Z.RESP | RESP / Trade | 744 | RESP UPD | Testing Type | Pick | Update Status | NOTES |
| --- | --- | --- | --- | --- | --- | --- | --- | --- | --- | --- | --- | --- | --- | --- | --- | --- | --- | --- | --- | --- | --- | --- | --- | --- | --- | --- |
|  | L9 | **L9 PENTHOUSE / BUILDOUT** |  |  | 2025-05-01 | 2026-08-21 |  |  |  |  |  |  |  |  |  |  |  |  |  |  |  |  |  |  |  |  |
|  | 1 | **CORE & SUPPORT SPACES / LEVEL 9 - Penthouse** |  |  | 2025-05-01 | 2026-08-21 |  |  |  |  |  |  |  |  |  |  |  |  |  |  |  |  |  |  |  |  |
|  | L81 | **ROUGH IN - Core & Support Spaces / Level 9 - Penthouse** |  |  | 2025-05-01 | 2026-05-22 |  |  |  |  |  |  |  |  |  |  |  |  |  |  |  |  |  |  |  |  |
|  | Z112 | **South / Level 9 - Penthouse** |  |  | 2025-05-01 | 2026-05-22 |  |  |  |  |  |  |  |  |  |  |  |  |  |  |  |  |  |  |  |  |
| P2.PH.S.1000 |  | Layout - All Trades / L9 PH / South |  | 5d | 2025-05-01 A | 2025-05-07 A | P2.PR.03.610, P2.MR/PS.03.610 | 100% |  | 2025-06-02 | 2025-06-06 |  |  |  | 40 | P2.B2.01.010 | R/I.OH | P2-5 | Harris | R/I.OH |  |  |  |  |  |  |
| P2.PH.S.1010 |  | Framing - Top Track / L9 PH / South |  | 5d | 2025-05-01 A | 2025-05-08 A | P2.PH.S.1000 | 100% |  | 2025-07-30 | 2025-08-05 |  |  |  | 80 | P2.B2.09.21.110 | GYP | P2-5 |  | GYP-1 | JW | JW |  |  |  |  |
| P2.PH.S.1090 |  | Framing - Priority Walls & Door Frames / L9 PH / South |  | 10d | 2025-05-08 A | 2025-05-22 A | P2.PH.S.1010 | 100% |  | 2025-07-22 | 2025-08-04 |  |  |  | 80 | P2.B2.09.21.310 | GYP | P2-5 |  | GYP-1 | ND | ND |  |  |  |  |
| P2.PH.S.1020 |  | OH - Structural Supports (All Trades) / L9 PH / South |  | 5d | 2025-05-19 A | 2025-06-18 A | P2.PH.S.1000 | 100% |  | 2025-06-09 | 2025-06-13 |  |  |  | 80 | P2.B2.05.45.110 | R/I.OH | P2-5 | Harris | R/I.OH | JW | JW | AT24 |  |  |  |
| P2.PH.S.1030 |  | OH - MEPF - Hangers & Supports / L9 PH / South |  | 5d | 2025-05-19 A | 2025-06-27 A | P2.BIM.MRPH.30.120, P2.PH.S.1000 | 100% |  | 2025-06-09 | 2025-06-13 |  |  |  | 80 | P2.B2.20.05.410 | MEP | P2-5 | Harris | MEP-2 | JW | JW |  |  |  |  |
| P2.PH.S.1130 |  | Framing - Priority Walls - AHJ Inspections / L9 PH / South |  | 5d | 2025-05-22 A | 2025-05-22 A | P2.PH.S.1090 | 100% |  | 2025-08-05 | 2025-08-11 |  |  |  | 80 | P2.B2.01.43.010 | FM | P2-5 |  | FM | ND | ND |  |  |  |  |
| P2.PH.S.1140 |  | Hang/Tape/Finish - Priority Walls / L9 PH / South |  | 10d | 2025-05-23 A | 2025-06-06 A | P2.PH.S.1130 | 100% |  | 2025-08-12 | 2025-08-25 |  |  |  | 80 | P2.B2.09.21.210 | GYP | P2-5 |  | GYP-1 | ND | ND |  |  |  |  |
| P2.PH.S.1040 |  | CMU - Drill_Epoxy Masonry Dowels / L9 PH / South |  | 10d | 2025-05-27 A | 2025-06-18 A | P2.PH.S.1000 | 100% |  | 2025-06-09 | 2025-06-20 |  |  |  | 80 | P2.B2.04.20.110 | CMU | P2-5 |  | CMU | JW | JW | AT4 |  |  |  |
| P2.PH.S.1050 |  | CMU - Lay Block / L9 PH / South |  | 10d | 2025-05-27 A | 2025-07-30 A | P2.PH.S.1040 | 100% |  | 2025-06-23 | 2025-07-07 |  |  |  | 80 | P2.B2.04.20.210 | CMU | P2-5 |  | CMU | JW | JW | AT3 |  |  |  |
| P2.PH.S.1160 |  | Spray/Seal/Firestop - Head of Wall - Priority Walls / L9 PH / South |  | 5d | 2025-06-06 A | 2025-06-13 A | P2.PH.S.1140 | 100% |  | 2025-08-26 | 2025-09-02 |  |  |  | 80 | P2.B2.07.84.410 | FIRESTO | P2-5 |  | FIRESTO | ND | ND | AT47 |  |  |  |
| P2.PH.S.1150 |  | Paint Prime & 1st Coat - Priority Walls / L9 PH / South |  | 10d | 2025-06-13 A | 2025-06-20 A | P2.PH.S.1160 SS | 100% |  | 2025-08-26 | 2025-09-09 |  |  |  | 80 | P2.B2.09.91.110 | PAINT | P2-5 |  | PAINT-1 | JW | JW |  |  |  |  |
| P2.PH.S.1310 |  | OH - Set & Connect Mech Equipment / L9 PH / South |  | 20d | 2025-06-16 A | 2025-07-21 A | P2.PH.S.1000, P2.PH.S.1020 | 100% |  | 2025-07-02 | 2025-07-30 |  |  |  | 80 | P2.B2.23.82.110 | HVAC | P2-5 | Harris | HVAC | JW | JW |  | 3 |  |  |
| P2.PH.S.1200 |  | Firestop - Thru Wall - Priority Walls / L9 PH / South |  | 5d | 2025-06-20 A | 2025-06-30 A | P2.PH.S.1150 | 100% |  | 2025-09-10 | 2025-09-16 |  |  |  | 80 | P2.B2.07.84.110 | FIRESTO | P2-5 |  | FIRESTO | JW | JW | AT48 |  |  |  |
| P2.PH.S.1690 |  | OH - Elevator Priority Conduit / L9 PH / South |  | 5d | 2025-06-23 A | 2025-09-18 A | P2.PH.S.1030 | 100% |  | 2025-06-16 | 2025-06-20 |  |  |  | 80 | P2.B2.26.05.210 | ELEC | P2-5 |  | ELEC-2 | JW | JW |  | 1 | O |  |
| P2.PH.S.1170 |  | OH - Fire Suppression / L9 PH / South |  | 10d | 2025-06-30 A | 2025-07-11 A | P2.PH.S.1030, P2.PH.S.1150 | 100% |  | 2025-06-30 | 2025-07-14 |  |  |  | 80 | P2.B2.21.13.210 | FP | P2-5 |  | FP-1 | JW | JW |  | 1 |  |  |
| P2.PH.S.1060 |  | In Wall - Electrical - CMU / L9 PH / South |  | 10d | 2025-07-01 A | 2025-07-15 A | P2.PH.S.1050 SS, P2.PH.S.1200 | 100% |  | 2025-08-01 | 2025-08-14 |  |  |  | 80 | P2.B2.26.05.510 | ELEC | P2-5 |  | ELEC-2 | JW | JW |  |  |  |  |
| P2.PH.S.1070 |  | In Wall - Plumbing - CMU / L9 PH / South |  | 10d | 2025-07-01 A | 2025-07-15 A | P2.PH.S.1050 SS, P2.PH.S.1200 | 100% |  | 2025-08-01 | 2025-08-14 |  |  |  | 80 | P2.B2.22.05.310 | PLMB | P2-5 | Harris | PLMB | JW | JW |  |  |  |  |
| P2.PH.S.1180 |  | OH - Plumbing Piping / L9 PH / South |  | 20d | 2025-07-16 A | 2025-08-28 A | P2.PH.S.1030, P2.PH.S.1150 | 100% |  | 2025-08-04 | 2025-08-29 |  |  |  | 80 | P2.B2.22.14.210 | PLMB | P2-5 | Harris | PLMB | JW | JW |  | 1 | O |  |
| P2.PH.S.1100 |  | Paint - CMU Block Fill / L9 PH / South |  | 10d | 2025-08-04 A | 2025-08-21 A | P2.PH.S.1050 | 100% |  | 2025-08-01 | 2025-08-14 |  |  |  | 80 | P2.B2.09.97.110 | PAINT | P2-5 |  | PAINT-1 | JW | JW |  |  |  |  |
| P2.PH.S.1280 |  | OH - Insulate Plumbing / L9 PH / South |  | 10d | 2025-08-04 A | 2025-09-18 A | P2.PH.S.1240 | 100% |  | 2025-08-29 | 2025-09-12 |  |  |  | 80 | P2.B2.22.07.510 | INSUL | P2-5 | Harris | INSUL-3 | JW | JW |  | 3 | O |  |
| P2.PH.S.1240 |  | OH - Plumbing - Test / L9 PH / South |  | 10d | 2025-08-07 A | 2025-09-04 A | P2.PH.S.1180 | 100% |  | 2025-08-15 | 2025-08-28 |  |  |  | 80 | P2.B2.22.14.310 | PLMB | P2-5 | Harris | PLMB | JW | JW |  | 2 | O |  |
| P2.PH.S.1220 |  | OH - HVAC Piping (West) / L9 PH / South |  | 15d | 2025-08-12 A | 2026-01-26 | P2.PH.S.1030, FRG.P2.PH.S.1670 | 20% | 12d | 2025-12-19 | 2026-01-12 | 50d | 0d |  | 80 | P2.B2.23.20.410 | FIT | P2-5 | Harris | FIT-2 | JW | JW |  | 2 | O | unactualized Start per Harris schedule |
| P2.PH.S.1190 |  | OH - Electrical - 480/277v Distribution / L9 PH / South |  | 10d | 2025-08-13 A | 2025-09-18 A | P2.PH.S.1030, P2.PH.S.1150 | 100% |  | 2025-08-01 | 2025-08-14 |  |  |  | 80 | P2.B2.26.05.210 | ELEC | P2-5 |  | ELEC-2 | JW | JW |  | 1 | O |  |
| P2.PH.S.1110 |  | CMU - Point & Patch / L9 PH / South |  | 10d | 2025-08-18 A | 2025-08-21 A | P2.PH.S.1100, P2.PH.S.1070, P2.PH.S.1060 | 100% |  | 2025-08-15 | 2025-08-28 |  |  |  | 80 | P2.B2.04.20.310 | CMU | P2-5 |  | CMU | JW | JW |  |  |  |  |
| P2.PH.S.1230 |  | OH - Electrical - 208/120v Branch / L9 PH / South |  | 10d | 2025-08-18 A | 2025-12-02 | P2.PH.S.1190, P2.BIM.MRPH.40.140 | 80% | 2d | 2025-08-15 | 2025-08-28 | 85d | 8d |  | 80 | P2.B2.26.05.310 | ELEC | P2-5 |  | ELEC-2 | JW | JW |  | 2 | O |  |
| P2.PH.S.1680 |  | Pull Wire - Elevator Priority Conduit / L9 PH / South |  | 5d | 2025-08-25 A | 2025-08-29 A | P2.PH.S.1690 | 100% |  | 2025-08-07 | 2025-08-13 |  |  |  | 80 |  | ELEC | P2-5 |  | ELEC-2 | JW | JW |  | To Trim Devices & Term Panel |  |  |
| P2.PH.S.1210 |  | OH - Hang Duct - HP Mains / L9 PH / South |  | 20d | 2025-09-17 A | 2025-12-01 | P2.PH.S.1030 | 95% | 1d | 2025-10-01 | 2025-10-28 | 54d | 0d |  | 80 | P2.B2.23.30.210 | HVAC | P2-5 | Harris | HVAC | JW | JW |  | 1 | O |  |
| P2.PH.S.1120 |  | Paint Prime & 1st Coat - CMU / L9 PH / South |  | 10d | 2025-10-01 A | 2025-10-17 A | P2.PH.S.1110 SS | 100% |  | 2025-10-01 | 2025-10-14 |  |  |  | 80 | P2.B2.09.97.210 | PAINT | P2-5 |  | PAINT-1 | JW | JW |  |  |  |  |
| P2.PH.S.1400 |  | OH - Conduit - Low Volt - Security / L9 PH / South |  | 10d | 2025-10-01 A | 2025-12-10 | P2.PH.S.1200 | 20% | 8d | 2025-10-01 | 2025-10-14 | 89d | 35d |  | 80 |  | ELEC | P2-5 |  | ELEC-2 | JW | JW |  | 5 | O |  |
| P2.PH.S.1420 |  | Framing - Balance of Framing & Door Frames / L9 PH / South |  | 10d | 2025-10-01 A | 2025-10-31 A | P2.PH.S.1170, P2.PH.S.1280, P2.PH.S.1380, P2.PH.S.1390, P2.PH.S.1400, P2.PH.S.1370 | 100% |  | 2026-01-06 | 2026-01-19 |  |  |  | 80 | A1310 | GYP | P2-5 |  | GYP-1 |  | JW |  |  |  |  |
| P2.PH.S.1450 |  | In Wall - Backing/Blocking/Supports / L9 PH / South |  | 10d | 2025-10-01 A | 2025-10-31 A | P2.PH.S.1420 | 100% |  | 2026-01-20 | 2026-02-02 |  |  |  | 80 | P2.B2.09.21.510 | R/I.IW | P2-5 |  | R/I.IW |  | JW |  |  |  |  |
| P2.PH.S.1460 |  | AHJ Inspections - Wall Close In / L9 PH / South |  | 5d | 2025-10-01 A | 2025-10-21 A | P2.PH.S.1450 | 100% |  | 2026-02-03 | 2026-02-09 |  |  |  | 40 | P2.B2.01.43.110 | FM | P2-5 |  | FM |  | JW |  |  |  |  |
| P2.PH.S.1670 |  | Panelboards, Interconnect Wiring, and Remaining Room Buildout of All Systems (Elevator Group 1 & 3) / L9 PH / South |  | 5d | 2025-10-01 A | 2025-10-07 A | P2.PH.S.1680 | 100% |  |  |  |  |  |  | 80 |  | ELEC | P2-5 |  | ELEC-2 | JW | JW |  |  |  |  |
| P2.PH.S.1300 |  | OH - Hang Duct - LP Branch / L9 PH / South |  | 10d | 2025-10-06 A | 2026-01-02 | P2.PH.S.1260 | 30% | 7d | 2025-11-19 | 2025-12-04 | 54d | 0d |  | 80 | P2.B2.23.30.410 | HVAC | P2-5 | Harris | HVAC | JW | JW |  | 3 | O |  |
| P2.PH.S.1370 |  | OH - Conduit - Low Volt - BAS/Controls / L9 PH / South |  | 10d | 2025-10-06 A | 2025-11-18 A | P2.PH.S.1310 | 100% |  | 2025-10-01 | 2025-10-14 |  |  |  | 80 |  | BAS | P2-5 | Harris | BAS-1 | JW | JW |  | 5 | O |  |
| P2.PH.S.1470 |  | Hang-Tape-Finish / L9 PH / South |  | 10d | 2025-10-22 A | 2025-11-28 A | P2.PH.S.1460 | 100% |  | 2026-02-10 | 2026-02-23 |  |  |  | 80 | P2.B2.09.21.710 | GYP | P2-5 |  | GYP-1 |  | JW |  |  | O |  |
| FRG.P2.PH.S.1650 |  | HVAC Piping - Staging & Layout / L9 PH / South - FRAGNET |  | 15d | 2025-10-28 A | 2025-11-28 A | FRG.P2.PH.S.1640 | 100% |  | 2025-10-15 | 2025-11-04 |  |  |  | 80 | P2.B2.23.20.410 | Harris Fragnet | P2-5 | Harris | FIT-2 | TA | JW |  | 2 | O |  |
| FRG.P2.PH.S.1640 |  | HVAC Piping Delivery / L9 PH / South - FRAGNET | milestone | 0d | 2025-11-13 A | 2025-11-13 A | P2.PH.S.1180 FF | 100% |  | 2025-12-01 | 2025-12-01 |  |  | finish on or after 2025-10-14 | 80 | P2.B2.23.20.410 | Harris Fragnet | P2-5 | Harris | FIT-2 | TA | JW |  | 2 | O | Per Harris schedule |
| FRG.P2.PH.S.1660 |  | HVAC Piping - Hanging Steel Racks (West) / L9 PH / South - FRAGNET |  | 15d | 2025-11-24 A | 2025-12-16 | FRG.P2.PH.S.1650 | 20% | 12d | 2025-12-19 | 2026-01-12 | 50d | 0d |  | 80 | P2.B2.23.20.410 | Harris Fragnet | P2-5 | Harris | FIT-2 | TA | JW |  | 2 | O |  |
| P2.PH.S.1250 |  | Pull Wire - Electrical - 480/277v Distribution / L9 PH / South |  | 10d | 2025-12-01 | 2025-12-12 | P2.PH.S.1190 |  |  |  |  | 97d | 43d |  | 80 |  | ELEC | P2-5 |  | ELEC-2 | JW | JW |  | To Trim Devices & Term Panel | O |  |
| P2.PH.S.1320 |  | OH - Electrical - Equip Tie In / L9 PH / South |  | 10d | 2025-12-01 | 2025-12-12 | P2.PH.S.1310 |  |  |  |  | 77d | 0d |  | 80 | P2.B2.26.05.410 | ELEC | P2-5 |  | ELEC-2 |  | JW |  | 4 | O |  |
| P2.PH.S.1610 |  | Panels Ready to Energize - Lock Doors and Limit Access (Elevator Group 1 & 3) / L9 PH / South | milestone | 0d | 2025-12-01 | 2025-12-01 | BP1.262.3.100 FF, P2.PH.S.1670 FF, P2.PH.S.1680 FF |  |  |  |  | 256d | 0d |  | 0 |  | ELEC | P2-5 |  | ELEC-2 | JW | JW |  |  | O |  |
| P2.PH.S.1260 |  | OH - DALT - HP Mains / L9 PH / South |  | 15d | 2025-12-02 | 2025-12-22 | P2.PH.S.1210 |  |  |  |  | 54d | 0d |  | 80 | P2.B2.23.30.310 | TAB | P2-5 | Harris | TAB-1 | JW | JW |  | 2 | O |  |
| P2.PH.S.1360 |  | Pull Wire - Electrical - 208/120v Branch & Equip / L9 PH / South |  | 20d | 2025-12-15 | 2026-01-13 | P2.PH.S.1230, P2.PH.S.1320 |  |  |  |  | 77d | 23d |  | 80 |  | ELEC | P2-5 |  | ELEC-2 |  | JW |  | To Trim Devices & Term Panel | O |  |
| FRG.P2.PH.S.1670 |  | HVAC Piping - Hanging Steel Racks (East) / L9 PH / South - FRAGNET |  | 15d | 2025-12-17 | 2026-01-08 | FRG.P2.PH.S.1660 |  |  |  |  | 50d | 0d |  | 80 | P2.B2.23.20.410 | Harris Fragnet | P2-5 | Harris | FIT-2 | TA | JW |  | 2 |  |  |
| P2.PH.S.1290 |  | OH - Insulate HP Duct / L9 PH / South |  | 10d | 2025-12-23 | 2026-01-07 | P2.PH.S.1260 |  |  |  |  | 191d | 43d |  | 80 | P2.B2.23.07.310 | INSUL | P2-5 | Harris | INSUL-3 | JW | JW |  | 3 |  |  |
| P2.PH.S.1350 |  | OH - Insulate LP Duct / L9 PH / South |  | 10d | 2026-01-05 | 2026-01-16 | P2.PH.S.1300 |  |  |  |  | 54d | 0d |  | 80 | P2.B2.23.07.410 | INSUL | P2-5 | Harris | INSUL-3 | JW | JW |  | 4 |  |  |
| P2.PH.S.1380 |  | OH - Conduit - Low Volt - Fire Alarm / L9 PH / South |  | 10d | 2026-01-19 | 2026-01-30 | P2.PH.S.1310, P2.PH.S.1350 |  |  |  |  | 54d | 0d |  | 80 |  | FA | P2-5 |  | FA-1 | JW | JW |  | 5 |  |  |
| P2.PH.S.1390 |  | OH - Conduit - Low Volt - Telecom / L9 PH / South |  | 10d | 2026-01-19 | 2026-01-30 | P2.PH.S.1350 |  |  |  |  | 54d | 0d |  | 80 |  | ELEC | P2-5 |  | ELEC-2 | JW | JW |  | 5 |  |  |
| P2.PH.S.1560 |  | OH - HVAC Piping (East) / L9 PH / South |  | 15d | 2026-01-27 | 2026-02-16 | P2.PH.S.1220 |  |  |  |  | 50d | 0d |  | 80 | P2.B2.23.20.410 | FIT | P2-5 | Harris | FIT-2 | JW | JW |  | 2 |  | Per Harris Schedule 3/4/26 |
| P2.PH.S.1480 |  | Spray/Seal/Firestop - Head of Wall / L9 PH / South |  | 10d | 2026-02-02 | 2026-02-13 | P2.PH.S.1120, P2.PH.S.1470 |  |  |  |  | 54d | 0d |  | 80 | P2.B2.07.84.310 | FIRSAFE | P2-5 |  | FIRSAFE |  | JW | AT47 | To Finishes - Paint |  |  |
| P2.PH.S.1490 |  | Firestop - Thru Wall / L9 PH / South |  | 10d | 2026-02-02 | 2026-02-13 | P2.PH.S.1470 |  |  |  |  | 54d | 0d |  | 80 | P2.B2.07.84.210 | FIRESTO | P2-5 |  | FIRESTO |  | JW | AT48 | To Finishes - Paint |  |  |
| P2.PH.S.1500 |  | Pull Wire - Low Volt - BAS/Controls / L9 PH / South |  | 10d | 2026-02-02 | 2026-02-13 | P2.PH.S.1470, P2.SUM.175 |  |  |  |  | 54d | 0d |  | 80 |  | BAS | P2-5 | Harris | BAS-1 |  | JW |  | To Trim Finishes |  |  |
| P2.PH.S.1510 |  | Pull Wire - Low Volt - Fire Alarm / L9 PH / South |  | 10d | 2026-02-02 | 2026-02-13 | P2.PH.S.1470, P2.SUM.175 |  |  |  |  | 54d | 0d |  | 80 |  | FA | P2-5 |  | FA-1 |  | JW |  | To Trim Finishes |  |  |
| P2.PH.S.1520 |  | Pull Wire - Low Volt - Telecom / L9 PH / South |  | 10d | 2026-02-02 | 2026-02-13 | P2.PH.S.1470, P2.SUM.175 |  |  |  |  | 54d | 0d |  | 80 |  | CIT | P2-5 |  | CIT |  | JW |  | To Trim Finishes |  |  |
| P2.PH.S.1530 |  | Pull Wire - Low Volt - Security / L9 PH / South |  | 10d | 2026-02-02 | 2026-02-13 | P2.PH.S.1470, P2.SUM.175 |  |  |  |  | 54d | 0d |  | 80 |  | LOWVOLT | P2-5 |  | LOWVOLT-1 |  | JW |  | To Trim Finishes |  |  |
| P2.PH.S.1550 |  | Trades Inspect & Verify R/I Work Completed to Specs / L9 PH / South |  | 5d | 2026-02-16 | 2026-02-20 | P2.SUM.195, P2.PH.S.1360, P2.PH.S.1500, P2.PH.S.1510, P2.PH.S.1490, P2.PH.S.1480, P2.PH.S.1520, P2.PH.S.1530, P2.PH.S.1250, P2.PR.S.1150 |  |  |  |  | 54d | 0d |  | 40 |  | T | P2-5 |  | T |  | JW |  |  |  |  |
| P2.PH.S.1270 |  | OH - HVAC Piping - Test / L9 PH / South |  | 15d | 2026-02-17 | 2026-03-09 | P2.PH.S.1560 |  |  |  |  | 50d | 0d |  | 80 | P2.B2.23.20.510 | FIT | P2-5 | Harris | FIT-2 | JW | JW |  | 3 |  |  |
| P2.PH.S.1330 |  | OH - HVAC Piping - Equip Tie In / L9 PH / South |  | 20d | 2026-03-10 | 2026-04-06 | P2.PH.S.1310, P2.PH.S.1270, CX.B2.HYDR.1000 |  |  |  |  | 50d | 28d |  | 80 | P2.B2.23.20.610 | FIT | P2-5 | Harris | FIT-2 | JW | JW |  |  |  | Removed Tie to Framing |
| P2.PH.S.1340 |  | OH - Insulate HVAC Pipe / L9 PH / South |  | 10d | 2026-03-10 | 2026-03-23 | P2.PH.S.1290, P2.PH.S.1270 |  |  |  |  | 148d | 16d |  | 80 | P2.B2.22.07.610 | INSUL | P2-5 | Harris | INSUL-3 | JW | JW |  | 4 |  |  |
| P2.PH.S.1600 |  | Install - High Purity Water Equipment - Lab |  | 10d | 2026-05-11 | 2026-05-22 | BP1.226.2.150, P2.PH.S.1460 |  |  |  |  | 81d | 0d |  | 280 |  | NIH | P01 |  | NIH |  |  |  |  |  |  |

| ID | WBS | Activity | Type | Duration | Start | Finish | Predecessors | Complete | Remaining | Planned start | Planned finish | Total float | Free float | Constraint | Temp Orig Dur | Act ID Temp | Resp / SRLM | 744 | PHASE | RESP UPD | RESP / Trade | Z.RESP | Testing Type | Pick | Update Status | NOTES |
| --- | --- | --- | --- | --- | --- | --- | --- | --- | --- | --- | --- | --- | --- | --- | --- | --- | --- | --- | --- | --- | --- | --- | --- | --- | --- | --- |
|  | Z1121 | **North / Level 9 - Penthouse** |  |  | 2025-05-01 | 2026-04-27 |  |  |  |  |  |  |  |  |  |  |  |  |  |  |  |  |  |  |  |  |
| P2.PH.N.1010 |  | Framing - Top Track / L9 PH / North |  | 5d | 2025-05-01 A | 2025-05-08 A | P2.L8.N.1010, P2.PH.N.1000 | 100% |  | 2025-07-23 | 2025-07-29 |  |  |  | 80 | P2.B2.09.21.110 | GYP | JW | P2-5 | JW | GYP-1 |  |  |  |  |  |
| P2.PH.N.1090 |  | Framing - Priority Walls & Door Frames / L9 PH / North |  | 10d | 2025-05-08 A | 2025-05-22 A | P2.PH.S.1090, P2.PH.N.1010 | 100% |  | 2025-08-05 | 2025-08-18 |  |  |  | 80 | P2.B2.09.21.310 | GYP | ND | P2-5 | ND | GYP-1 |  |  |  |  |  |
| P2.PH.N.1130 |  | Framing - Priority Walls - AHJ Inspections / L9 PH / North |  | 5d | 2025-05-22 A | 2025-05-22 A | P2.PH.N.1090 | 100% |  | 2025-08-19 | 2025-08-25 |  |  |  | 80 | P2.B2.01.43.010 | FM | ND | P2-5 | ND | FM |  |  |  |  |  |
| P2.PH.N.1140 |  | Hang/Tape/Finish - Priority Walls / L9 PH / North |  | 10d | 2025-05-23 A | 2025-06-06 A | P2.PH.S.1140, P2.PH.N.1130 | 100% |  | 2025-08-26 | 2025-09-09 |  |  |  | 80 | P2.B2.09.21.210 | GYP | ND | P2-5 | ND | GYP-1 |  |  |  |  |  |
| P2.PH.N.1000 |  | Layout - All Trades / L9 PH / North |  | 5d | 2025-05-27 A | 2025-05-30 A | P2.PR.03.620, P2.BIM.MRPH.30.120, P2.MR/PS.03.630, P2.MR/PS.03.620 | 100% |  | 2025-06-02 | 2025-06-06 |  |  |  | 40 | P2.B2.01.010 | R/I.OH |  | P2-5 |  | R/I.OH | Harris |  |  |  |  |
| P2.PH.N.1020 |  | OH - Structural Supports (All Trades) / L9 PH / North |  | 5d | 2025-06-01 A | 2025-06-18 A | P2.PH.N.1000 | 100% |  | 2025-07-01 | 2025-07-08 |  |  |  | 80 | P2.B2.05.45.110 | R/I.OH | JW | P2-5 | JW | R/I.OH | Harris | AT24 |  |  |  |
| P2.PH.N.1160 |  | Spray/Seal/Firestop - Head of Wall - Priority Walls / L9 PH / North |  | 5d | 2025-06-06 A | 2025-06-13 A | P2.PH.N.1140 | 100% |  | 2025-09-10 | 2025-09-16 |  |  |  | 80 | P2.B2.07.84.410 | FIRESTO | ND | P2-5 | ND | FIRESTO |  | AT47 |  |  |  |
| P2.PH.N.1180 |  | OH - Plumbing Piping / L9 PH / North |  | 15d | 2025-06-09 A | 2025-08-11 A | P2.PH.S.1180, P2.PH.N.1030, P2.PH.N.1150 | 100% |  | 2025-09-02 | 2025-09-22 |  |  |  | 80 | P2.B2.22.14.210 | PLMB | JW | P2-5 | JW | PLMB | Harris |  | 1 |  |  |
| P2.PH.N.1150 |  | Paint Prime & 1st Coat - Priority Walls / L9 PH / North |  | 10d | 2025-06-13 A | 2025-06-20 A | P2.PH.N.1160 SS | 100% |  | 2025-09-10 | 2025-09-23 |  |  |  | 80 | P2.B2.09.91.110 | PAINT | JW | P2-5 | JW | PAINT-1 |  |  |  |  |  |
| P2.PH.N.1040 |  | CMU - Drill_Epoxy Masonry Dowels / L9 PH / North |  | 10d | 2025-06-18 A | 2025-06-25 A | P2.PH.S.1040, P2.PH.N.1000 | 100% |  | 2025-07-14 | 2025-07-25 |  |  |  | 80 | P2.B2.04.20.110 | CMU | JW | P2-5 | JW | CMU |  | AT4 |  |  |  |
| P2.PH.N.1060 |  | In Wall - Electrical - CMU / L9 PH / North |  | 10d | 2025-06-18 A | 2025-06-25 A | P2.PH.N.1050 SS | 100% |  | 2025-07-28 | 2025-08-08 |  |  |  | 80 | P2.B2.26.05.510 | ELEC | JW | P2-5 | JW | ELEC-2 |  |  |  |  |  |
| P2.PH.N.1070 |  | In Wall - Plumbing - CMU / L9 PH / North |  | 10d | 2025-06-18 A | 2025-06-25 A | P2.PH.N.1050 SS | 100% |  | 2025-07-28 | 2025-08-08 |  |  |  | 80 | P2.B2.22.05.310 | PLMB | JW | P2-5 | JW | PLMB | Harris |  |  |  |  |
| P2.PH.N.1200 |  | Firestop - Thru Wall - Priority Walls / L9 PH / North |  | 5d | 2025-06-20 A | 2025-06-30 A | P2.PH.N.1170, P2.PH.N.1180 | 100% |  | 2025-10-29 | 2025-11-04 |  |  |  | 80 | P2.B2.07.84.110 | FIRESTO | JW | P2-5 | JW | FIRESTO |  | AT48 |  |  |  |
| P2.PH.N.1050 |  | CMU - Lay Block / L9 PH / North |  | 10d | 2025-06-23 A | 2025-08-21 A | P2.PH.S.1050, P2.PH.N.1040 | 100% |  | 2025-07-28 | 2025-08-08 |  |  |  | 80 | P2.B2.04.20.210 | CMU | JW | P2-5 | JW | CMU |  | AT3 |  |  |  |
| P2.PH.N.1310 |  | OH - Set & Connect Mech Equipment / L9 PH / North |  | 20d | 2025-06-23 A | 2025-06-23 A | P2.PH.N.1020, P2.PH.N.1000 | 100% |  | 2025-07-09 | 2025-08-05 |  |  |  | 80 | P2.B2.23.82.110 | HVAC | JW | P2-5 | JW | HVAC | Harris |  | 3 |  |  |
| P2.PH.N.1170 |  | OH - Fire Suppression / L9 PH / North |  | 10d | 2025-06-30 A | 2025-07-25 A | P2.PH.N.1030 | 100% |  | 2025-10-09 | 2025-10-22 |  |  |  | 80 | P2.B2.21.13.210 | FP | JW | P2-5 | JW | FP-1 |  |  | 1 |  |  |
| P2.PH.N.1030 |  | OH - MEPF - Hangers & Supports / L9 PH / North |  | 10d | 2025-07-01 A | 2025-07-15 A | P2.PH.N.1000, P2.BIM.MRPH.30.120 | 100% |  | 2025-08-01 | 2025-08-14 |  |  |  | 80 | P2.B2.20.05.410 | MEP | JW | P2-5 | JW | MEP-2 | Harris |  |  |  |  |
| P2.PH.N.1280 |  | OH - Insulate Plumbing / L9 PH / North |  | 10d | 2025-08-04 A | 2025-09-18 A | P2.PH.N.1240 | 100% |  | 2025-09-08 | 2025-09-19 |  |  |  | 80 | P2.B2.22.07.510 | INSUL |  | P2-5 | JW | INSUL-3 | Harris |  | 3 | O |  |
| P2.PH.N.1240 |  | OH - Plumbing - Test / L9 PH / North |  | 10d | 2025-08-11 A | 2025-08-28 A | P2.PH.N.1180 | 100% |  | 2025-08-22 | 2025-09-05 |  |  |  | 80 | P2.B2.22.14.310 | PLMB | JW | P2-5 | JW | PLMB | Harris |  | 2 | O |  |
| P2.PH.N.1100 |  | Paint - CMU Block Fill / L9 PH / North |  | 10d | 2025-08-18 A | 2025-08-21 A | P2.PH.N.1050 | 100% |  | 2025-08-07 | 2025-08-20 |  |  |  | 80 | P2.B2.09.97.110 | PAINT | JW | P2-5 | JW | PAINT-1 |  |  |  |  |  |
| P2.PH.N.1190 |  | OH - Electrical - 480/277v Distribution / L9 PH / North |  | 10d | 2025-08-18 A | 2025-09-18 A | P2.PH.N.1030, P2.PH.N.1150 | 100% |  | 2025-08-01 | 2025-08-14 |  |  |  | 80 | P2.B2.26.05.210 | ELEC | JW | P2-5 | JW | ELEC-2 |  |  | 1 | O |  |
| P2.PH.N.1700 |  | OH - Elevator Priority Conduit / L9 PH / North |  | 5d | 2025-08-18 A | 2025-08-28 A | P2.PH.N.1030 | 100% |  | 2025-08-01 | 2025-08-07 |  |  |  | 80 | P2.B2.26.05.210 | ELEC | JW | P2-5 | JW | ELEC-2 |  |  | 1 |  |  |
| P2.PH.N.1110 |  | CMU - Point & Patch / L9 PH / North |  | 10d | 2025-08-25 A | 2025-08-28 A | P2.PH.N.1070, P2.PH.N.1060, P2.PH.N.1100 | 100% |  | 2025-08-21 | 2025-09-04 |  |  |  | 80 | P2.B2.04.20.310 | CMU | JW | P2-5 | JW | CMU |  |  |  |  |  |
| P2.PH.N.1230 |  | OH - Electrical - 208/120v Branch / L9 PH / North |  | 10d | 2025-08-25 A | 2025-12-03 | P2.PH.N.1190, P2.BIM.MRPH.40.140 | 70% | 3d | 2025-08-15 | 2025-08-28 | 76d | 0d |  | 80 | P2.B2.26.05.310 | ELEC | JW | P2-5 | JW | ELEC-2 |  |  | 2 | O |  |
| P2.PH.N.1120 |  | Paint Prime & 1st Coat - CMU / L9 PH / North |  | 10d | 2025-09-01 A | 2025-10-17 A | P2.PH.N.1110 SS | 100% |  | 2025-10-01 | 2025-10-14 |  |  |  | 80 | P2.B2.09.97.210 | PAINT | JW | P2-5 | JW | PAINT-1 |  |  |  |  |  |
| P2.PH.N.1710 |  | Pull Wire - Elevator Priority Conduit / L9 PH / North |  | 5d | 2025-09-08 A | 2025-09-11 A | P2.PH.N.1700 | 100% |  | 2025-10-01 | 2025-10-07 |  |  |  | 80 |  | ELEC | JW | P2-5 | JW | ELEC-2 |  |  | To Trim Devices & Term Panel | O |  |
| P2.PH.N.1370 |  | OH - Conduit - Low Volt - BAS/Controls / L9 PH / North |  | 10d | 2025-09-10 A | 2025-11-18 A | P2.PH.N.1310, P2.PH.N.1230 | 100% |  | 2025-10-23 | 2025-11-05 |  |  |  | 80 |  | BAS |  | P2-5 | JW | BAS-1 | Harris |  | 5 | O |  |
| P2.PH.N.1400 |  | OH - Conduit - Low Volt - Security / L9 PH / North |  | 10d | 2025-09-15 A | 2025-12-15 | P2.PH.N.1230 | 20% | 8d | 2025-10-23 | 2025-11-05 | 76d | 17d |  | 80 |  | ELEC |  | P2-5 | JW | ELEC-2 |  |  | 5 | O |  |
| P2.PH.N.1420 |  | Framing - Balance of Framing & Door Frames / L9 PH / North |  | 10d | 2025-10-01 A | 2025-10-31 A | P2.PH.N.1390, P2.PH.N.1400, P2.PH.N.1370, P2.PH.N.1380, P2.PH.N.1280 | 100% |  | 2026-01-06 | 2026-01-19 |  |  |  | 80 | A1310 | GYP |  | P2-5 | JW | GYP-1 |  |  |  |  |  |
| P2.PH.N.1430 |  | In Wall - Plumbing - Framing / L9 PH / North |  | 10d | 2025-10-01 A | 2025-10-31 A | P2.PH.N.1420 | 100% |  | 2026-01-20 | 2026-02-02 |  |  |  | 80 | P2.B2.22.05.410 | PLMB |  | P2-5 |  | PLMB | Harris |  |  |  |  |
| P2.PH.N.1440 |  | In Wall - Electrical - Framing / L9 PH / North |  | 10d | 2025-10-01 A | 2025-10-31 A | P2.PH.N.1230, P2.PH.N.1420 | 100% |  | 2026-01-20 | 2026-02-02 |  |  |  | 80 | P2.B2.26.05.610 | ELEC |  | P2-5 |  | ELEC-2 |  |  |  |  |  |
| P2.PH.N.1450 |  | In Wall - Backing/Blocking/Supports / L9 PH / North |  | 10d | 2025-10-01 A | 2025-10-31 A | P2.PH.N.1420 | 100% |  | 2026-01-20 | 2026-02-02 |  |  |  | 80 | P2.B2.09.21.510 | R/I.IW |  | P2-5 |  | R/I.IW |  |  |  |  |  |
| P2.PH.N.1300 |  | OH - Hang Duct - LP Branch / L9 PH / North |  | 15d | 2025-10-13 A | 2025-12-24 | P2.PH.N.1200, P2.PH.N.1260 SS | 53% | 7d | 2025-11-26 | 2025-12-18 | 59d | 0d |  | 80 | P2.B2.23.30.410 | HVAC |  | P2-5 | JW | HVAC | Harris |  | 3 | O |  |
| P2.PH.N.1210 |  | OH - Hang Duct - HP Mains / L9 PH / North |  | 20d | 2025-10-21 A | 2025-12-15 | P2.PH.S.1210, P2.PH.N.1030 | 50% | 10d | 2025-10-29 | 2025-11-25 | 59d | 0d |  | 80 | P2.B2.23.30.210 | HVAC | JW | P2-5 | JW | HVAC | Harris |  | 1 | O |  |
| P2.PH.N.1480 |  | Spray/Seal/Firestop - Head of Wall / L9 PH / North |  | 10d | 2025-11-01 A | 2025-11-17 A | P2.PH.N.1470, P2.PH.N.1120 | 100% |  | 2026-02-18 | 2026-03-03 |  |  |  | 80 | P2.B2.07.84.310 | FIRSAFE |  | P2-5 | JW | FIRSAFE |  | AT47 | To Finishes - Paint |  |  |
| FRG.P2.PH.N.1610 |  | HVAC Piping Delivery / L9 PH / North - FRAGNET | milestone | 0d | 2025-11-17 A | 2025-11-17 A | P2.PH.N.1030 FF | 100% |  | 2025-12-01 | 2025-12-01 |  |  | finish on or after 2025-10-14 | 80 | P2.B2.23.20.410 | Harris Fragnet | TA | P2-5 | JW | FIT-2 | Harris |  | 2 | O | Per Harris schedule |
| FRG.P2.PH.N.1620 |  | HVAC Piping - Staging & Layout / L9 PH / North - FRAGNET |  | 10d | 2025-12-01 | 2025-12-12 | FRG.P2.PH.N.1610 |  |  |  |  | 52d | 0d |  | 80 | P2.B2.23.20.410 | Harris Fragnet | TA | P2-5 | JW | FIT-2 | Harris |  | 2 | O |  |
| P2.PH.N.1250 |  | Pull Wire - Electrical - 480/277v Distribution / L9 PH / North |  | 10d | 2025-12-01 | 2025-12-12 | P2.PH.N.1190 |  |  |  |  | 141d | 0d |  | 80 |  | ELEC | JW | P2-5 | JW | ELEC-2 |  |  | To Trim Devices & Term Panel | O |  |
| P2.PH.N.1660 |  | Panelboards, Interconnect Wiring, and Remaining Room Buildout of All Systems (Elevator Group 2) / L9 PH / North |  | 5d | 2025-12-01 | 2025-12-05 | P2.PH.N.1710 |  |  |  |  | 211d | 5d |  | 80 |  | ELEC | JW | P2-5 | JW | ELEC-2 |  |  |  | O |  |
| P2.PH.N.1650 |  | Panels Ready to Energize - Lock Doors and Limit Access (Elevator Group 2) / L9 PH / North | milestone | 0d | 2025-12-12 | 2025-12-12 | BP1.262.3.100 FF, P2.PH.N.1660 FF, P2.PH.N.1250 FF, P2.PH.N.1710 FF |  |  |  |  | 206d | 0d |  | 0 |  | ELEC | JW | P2-5 | JW | ELEC-2 |  |  |  | O |  |
| FRG.P2.PH.N.1630 |  | HVAC Piping - Hanging Steel Racks (West) / L9 PH / North - FRAGNET |  | 12d | 2025-12-15 | 2025-12-31 | FRG.P2.PH.N.1620 |  |  |  |  | 52d | 0d |  | 80 | P2.B2.23.20.410 | Harris Fragnet | TA | P2-5 | JW | FIT-2 | Harris |  | 2 | O |  |
| P2.PH.N.1260 |  | OH - DALT - HP Mains / L9 PH / North |  | 5d | 2025-12-16 | 2025-12-22 | P2.PH.N.1210 |  |  |  |  | 59d | 0d |  | 80 | P2.B2.23.30.310 | TAB | JW | P2-5 | JW | TAB-1 | Harris |  | 2 |  |  |
| P2.PH.N.1290 |  | OH - Insulate HP Duct / L9 PH / North |  | 10d | 2025-12-23 | 2026-01-07 | P2.PH.N.1260 |  |  |  |  | 115d | 63d |  | 80 | P2.B2.23.07.310 | INSUL | JW | P2-5 | JW | INSUL-3 | Harris |  | 3 |  |  |
| P2.PH.N.1350 |  | OH - Insulate LP Duct / L9 PH / North |  | 10d | 2025-12-26 | 2026-01-09 | P2.PH.N.1300 |  |  |  |  | 123d | 71d |  | 80 | P2.B2.23.07.410 | INSUL |  | P2-5 | JW | INSUL-3 | Harris |  | 4 |  |  |
| P2.PH.N.1380 |  | OH - Conduit - Low Volt - Fire Alarm / L9 PH / North |  | 10d | 2025-12-26 | 2026-01-09 | P2.PH.N.1310, P2.PH.N.1300 |  |  |  |  | 59d | 0d |  | 80 |  | FA |  | P2-5 | JW | FA-1 |  |  | 5 |  |  |
| P2.PH.N.1390 |  | OH - Conduit - Low Volt - Telecom / L9 PH / North |  | 10d | 2025-12-26 | 2026-01-09 | P2.PH.N.1300 |  |  |  |  | 59d | 0d |  | 80 |  | ELEC |  | P2-5 | JW | ELEC-2 |  |  | 5 |  |  |
| FRG.P2.PH.N.1680 |  | HVAC Piping - Hanging Steel Racks (East) / L9 PH / North - FRAGNET |  | 12d | 2026-01-02 | 2026-01-19 | FRG.P2.PH.N.1630 |  |  |  |  | 52d | 0d |  | 80 | P2.B2.23.20.410 | Harris Fragnet | TA | P2-5 | JW | FIT-2 | Harris |  | 2 |  |  |
| P2.PH.N.1460 |  | AHJ Inspections - Wall Close In / L9 PH / North |  | 5d | 2026-01-12 | 2026-01-16 | P2.PH.N.1440, P2.PH.N.1450, P2.PH.N.1430 |  |  |  |  | 59d | 0d |  | 40 | P2.B2.01.43.110 | FM |  | P2-5 | JW | FM |  |  |  |  |  |
| P2.PH.N.1470 |  | Hang-Tape-Finish / L9 PH / North |  | 10d | 2026-01-19 | 2026-01-30 | P2.SUM.175, P2.PH.N.1460 |  |  |  |  | 59d | 0d |  | 80 | P2.B2.09.21.710 | GYP |  | P2-5 | JW | GYP-1 |  |  |  |  |  |
| P2.PH.N.1220 |  | OH - HVAC Piping (West) / L9 PH / North |  | 20d | 2026-01-20 | 2026-02-16 | P2.PH.N.1030, FRG.P2.PH.N.1680 |  |  |  |  | 52d | 0d |  | 80 | P2.B2.23.20.410 | FIT | JW | P2-5 | JW | FIT-2 | Harris |  | 2 |  | broke tie with the South PH |
| P2.PH.N.1330 |  | OH - HVAC Piping - Equip Tie In / L9 PH / North |  | 20d | 2026-01-28 | 2026-02-24 | P2.PH.N.1310, CX.B2.HYDR.1000 |  |  |  |  | 61d | 0d |  | 80 | P2.B2.23.20.610 | FIT | JW | P2-5 | JW | FIT-2 | Harris |  |  |  |  |
| P2.PH.N.1490 |  | Firestop - Thru Wall / L9 PH / North |  | 10d | 2026-02-02 | 2026-02-13 | P2.PH.N.1470 |  |  |  |  | 98d | 46d |  | 80 | P2.B2.07.84.210 | FIRESTO |  | P2-5 | JW | FIRESTO |  | AT48 | To Finishes - Paint |  |  |
| P2.PH.N.1500 |  | Pull Wire - Low Volt - BAS/Controls / L9 PH / North |  | 10d | 2026-02-02 | 2026-02-13 | P2.PH.N.1470 |  |  |  |  | 59d | 0d |  | 80 |  | BAS |  | P2-5 | JW | BAS-1 | Harris |  | To Trim Finishes |  |  |
| P2.PH.N.1510 |  | Pull Wire - Low Volt - Fire Alarm / L9 PH / North |  | 10d | 2026-02-02 | 2026-02-13 | P2.PH.N.1470 |  |  |  |  | 98d | 46d |  | 80 |  | FA |  | P2-5 | JW | FA-1 |  |  | To Trim Finishes |  |  |
| P2.PH.N.1520 |  | Pull Wire - Low Volt - Telecom / L9 PH / North |  | 10d | 2026-02-02 | 2026-02-13 | P2.PH.N.1470 |  |  |  |  | 98d | 46d |  | 80 |  | CIT |  | P2-5 | JW | CIT |  |  | To Trim Finishes |  |  |
| P2.PH.N.1530 |  | Pull Wire - Low Volt - Security / L9 PH / North |  | 10d | 2026-02-02 | 2026-02-13 | P2.PH.N.1470 |  |  |  |  | 98d | 46d |  | 80 |  | LOWVOLT |  | P2-5 | JW | LOWVOLT-1 |  |  | To Trim Finishes |  |  |
| P2.PH.N.1560 |  | OH - HVAC Piping (East) / L9 PH / North |  | 20d | 2026-02-17 | 2026-03-16 | P2.PH.N.1220 |  |  |  |  | 52d | 0d |  | 80 | P2.B2.23.20.410 | FIT | JW | P2-5 | JW | FIT-2 | Harris |  | 2 |  | Per Harris Schedule 3/4/26 |
| P2.PH.N.1320 |  | OH - Electrical - Equip Tie In / L9 PH / North |  | 10d | 2026-02-25 | 2026-03-10 | P2.PH.N.1310, P2.PH.N.1230, P2.PH.N.1330 |  |  |  |  | 61d | 0d |  | 80 | P2.B2.26.05.410 | ELEC |  | P2-5 | JW | ELEC-2 |  |  | 4 |  |  |
| P2.PH.N.1360 |  | Pull Wire - Electrical - 208/120v Branch & Equip / L9 PH / North |  | 20d | 2026-03-11 | 2026-04-07 | P2.PH.N.1230, P2.PH.N.1440, P2.PH.N.1320 |  |  |  |  | 61d | 9d |  | 80 |  | ELEC |  | P2-5 | JW | ELEC-2 |  |  | To Trim Devices & Term Panel |  |  |
| P2.PH.N.1270 |  | OH - HVAC Piping - Test / L9 PH / North |  | 15d | 2026-03-17 | 2026-04-06 | P2.PH.N.1560 |  |  |  |  | 52d | 0d |  | 80 | P2.B2.23.20.510 | FIT | JW | P2-5 | JW | FIT-2 | Harris |  | 3 |  |  |
| P2.PH.N.1340 |  | OH - Insulate HVAC Pipe / L9 PH / North |  | 10d | 2026-04-07 | 2026-04-20 | P2.PH.N.1290, P2.PH.N.1270 |  |  |  |  | 52d | 0d |  | 80 | P2.B2.22.07.610 | INSUL | JW | P2-5 | JW | INSUL-3 | Harris |  | 4 |  |  |
| P2.PH.N.1550 |  | Trades Inspect & Verify R/I Work Completed to Specs / L9 PH / North |  | 5d | 2026-04-21 | 2026-04-27 | P2.PH.N.1480, P2.PH.N.1490, P2.PH.N.1530, P2.PH.N.1250, P2.PH.N.1360, P2.PH.N.1500, P2.PH.N.1510, P2.PH.N.1520, P2.PR.N.1150, P2.PH.N.1340, P2.PH.N.1350 |  |  |  |  | 52d | 0d |  | 40 |  | T |  | P2-5 |  | T |  |  |  |  |  |

| ID | WBS | Activity | Duration | Start | Finish | Predecessors | Complete | Planned start | Planned finish | Total float | Free float | Temp Orig Dur | Resp / SRLM | 744 | PHASE | RESP UPD | RESP / Trade | Act ID Temp | Z.RESP | Pick | Update Status | Testing Type |
| --- | --- | --- | --- | --- | --- | --- | --- | --- | --- | --- | --- | --- | --- | --- | --- | --- | --- | --- | --- | --- | --- | --- |
|  | 1 | **ROUGH IN & FINISHES / Misc. Spaces 5959, 5930, 5940 (Elevator Group 1) / Level 9 - Penthouse** |  | 2025-06-09 | 2026-01-06 |  |  |  |  |  |  |  |  |  |  |  |  |  |  |  |  |  |
| P2.PH.EMR.1.1000 |  | CMU - Lay Block / L9 / EMR.1 | 3d | 2025-06-09 A | 2025-06-27 A | P2.10.EMR.1.1160 | 100% | 2025-07-17 | 2025-07-21 |  |  | 24 | GYP | JW | P2-5 | JW | GYP-1 |  |  |  |  |  |
| P2.10.EMR.1.1160 |  | CMU - Drill_Epoxy Masonry Dowels / L9 / EMR.1 | 3d | 2025-06-18 A | 2025-06-18 A | P2.10.EMR.1.1150, P2.PH.S.1040, P2.FAC.2.Z1.180 | 100% | 2025-07-14 | 2025-07-16 |  |  | 24 | GYP | JW | P2-5 | JW | GYP-1 |  |  |  |  |  |
| P2.10.EMR.1.1150 |  | Layout / L9 / EMR.1 | 5d | 2025-07-01 A | 2025-07-08 A | P2.PH.S.1000, P2.PH.S.1020, P2.PR.03.610, P2.FAC.2.Z1.180 | 100% | 2025-08-01 | 2025-08-07 |  |  | 24 | GYP | JW | P2-5 | JW | GYP-1 |  |  |  |  |  |
| P2.PH.EMR.1.1210 |  | OH - MEPF - Hangers & Supports / L9 / EMR.1 | 5d | 2025-08-18 A | 2025-08-22 A | P2.10.EMR.1.1150 | 100% | 2025-09-02 | 2025-09-08 |  |  | 80 | MEP | JW | P2-5 | JW | MEP-2 | P2.B2.20.05.410 | Harris |  |  |  |
| P2.PH.EMR.1.1220 |  | OH - Hang Duct / L9 / EMR.1 | 3d | 2025-09-01 A | 2025-09-03 A | P2.PH.EMR.1.1210, P2.PH.EMR.1.1290 | 100% | 2025-10-01 | 2025-10-03 |  |  | 80 | HVAC | JW | P2-5 | TCASP | HVAC | P2.B2.23.30.210 | Harris | 1 | O |  |
| P2.PH.EMR.1.1290 |  | OH - Fire Suppression / L9 / EMR.1 | 3d | 2025-09-02 A | 2025-09-05 A | P2.PH.EMR.1.1210 | 100% | 2025-10-01 | 2025-10-03 |  |  | 80 | FP | JW | P2-5 | TCASP | FP-1 | P2.B2.21.13.210 |  | 1 | O |  |
| P2.PH.EMR.1.1250 |  | OH - Insulate Duct / L9 / EMR.1 | 3d | 2025-09-10 A | 2025-09-12 A | P2.PH.EMR.1.1240, P2.L11.5-9.140 | 100% | 2025-10-17 | 2025-10-21 |  |  | 80 | INSUL | JW | P2-5 | TCASP | INSUL-3 | P2.B2.23.07.410 | Harris | 4 | O |  |
| P2.PH.EMR.1.1030 |  | CMU - Point & Patch / L9 / EMR.1 | 3d | 2025-09-22 A | 2025-09-25 A | P2.PH.EMR.1.1040 | 100% | 2025-12-17 | 2025-12-19 |  |  | 40 | GYP | JW | P2-5 | TCASP | GYP-1 |  |  |  | O |  |
| P2.PH.EMR.1.1060 |  | OH - Electrical Conduit / L9 / EMR.1 | 3d | 2025-10-01 A | 2025-10-03 A | P2.PH.EMR.1.1210, P2.PH.EMR.1.1220 | 100% |  |  |  |  | 40 | ELEC | JW | P2-5 | TCASP | ELEC-2 |  |  |  |  |  |
| P2.PH.EMR.1.1010 |  | In Wall - MEP Rough In / L9 / EMR.1 | 3d | 2025-11-03 A | 2025-11-04 A | P2.PH.EMR.1.1000, P2.PH.EMR.1.1250, P2.PH.EMR.1.1230, P2.PH.EMR.1.1220, P2.PH.EMR.1.1060, P2.PH.EMR.1.1240 | 100% | 2025-12-09 | 2025-12-11 |  |  | 16 | R/I.IW | JW | P2-5 | TCASP | R/I.IW |  |  |  | O |  |
| P2.PH.EMR.1.1230 |  | OH - HVAC Piping / L9 PH / North | 3d | 2025-11-03 A | 2025-11-05 A | P2.PH.EMR.1.1210, P2.PH.EMR.1.1060 | 100% | 2025-12-01 | 2025-12-03 |  |  | 80 | FIT | JW | P2-5 | TCASP | FIT-2 | P2.B2.23.20.410 | Harris | 2 | O |  |
| P2.PH.EMR.1.1240 |  | OH - HVAC Piping - Test / L9 / EMR.1 | 3d | 2025-11-06 A | 2025-11-10 A | P2.PH.EMR.1.1230 | 100% | 2025-12-04 | 2025-12-08 |  |  | 80 | FIT | JW | P2-5 | TCASP | FIT-2 | P2.B2.23.20.510 | Harris | 3 | O |  |
| P2.PH.EMR.1.1020 |  | Inspections - Wall / L9 / EMR.1 | 3d | 2025-11-10 A | 2025-11-14 A | P2.PH.EMR.1.1030 | 100% | 2025-12-22 | 2025-12-24 |  |  | 16 | AHJ | JW | P2-5 | TCASP | AHJ |  |  |  | O |  |
| P2.PH.EMR.1.1040 |  | Paint Prime & 1st Coat / L9 / EMR.1 | 3d | 2025-12-01 | 2025-12-03 | P2.PH.EMR.1.1010, P2.L11.5-9.140 |  |  |  | 196d | 0d | 16 | PAINT | JW | P2-5 | TCASP | PAINT-1 |  |  |  | O |  |
| P2.PH.EMR.1.1100 |  | Paint - Finish Coat / L9 / EMR.1 | 3d | 2025-12-04 | 2025-12-08 | P2.PH.EMR.1.1030, P2.PH.EMR.1.1020 |  |  |  | 196d | 0d | 16 | PAINT | JW | P2-5 | TCASP | PAINT-1 |  |  |  |  |  |
| P2.PH.EMR.1.1260 |  | OH - Insulate HVAC Pipe / L9 / EMR.1 | 3d | 2025-12-04 | 2025-12-08 | P2.PH.EMR.1.1040, P2.PH.EMR.1.1030, P2.L11.5-9.140 |  |  |  | 196d | 0d | 80 | INSUL | JW | P2-5 | TCASP | INSUL-3 | P2.B2.22.07.610 | Harris | 4 | O |  |
| P2.PH.EMR.1.1270 |  | Pull Wire - Electrical / L9 / EMR.1 | 3d | 2025-12-09 | 2025-12-11 | P2.PH.EMR.1.1060, P2.PH.EMR.1.1040, P2.PH.EMR.1.1260, P2.PH.EMR.1.1100 |  |  |  | 196d | 0d | 40 | ELEC | JW | P2-5 | TCASP | ELEC-2 |  |  |  |  |  |
| P2.PH.EMR.1.1110 |  | Trim All MEPF Finishes / L9 / EMR.1 | 5d | 2025-12-12 | 2025-12-18 | P2.PH.EMR.1.1100, P2.PH.EMR.1.1270 |  |  |  | 196d | 0d | 16 | MEP | JW | P2-5 | TCASP | MEP-2 |  | Harris |  |  |  |
| P2.PH.EMR.1.1120 |  | Flooring / L9 / EMR.1 | 3d | 2025-12-19 | 2025-12-23 | P2.PH.EMR.1.1110 |  |  |  | 196d | 0d | 16 | FLOOR | JW | P2-5 | TCASP | FLOOR |  |  |  |  |  |
| P2.PH.EMR.1.1130 |  | Doors & Hardware / L9 / EMR.1 | 3d | 2025-12-24 | 2025-12-29 | P2.PH.EMR.1.1120 |  |  |  | 196d | 0d | 16 | DFH | JW | P2-5 | TCASP | DFH |  |  |  |  | AT29 |
| P2.PH.EMR.1.1280 |  | Trades Inspect & Verify Work Completed to Specs / L9 / EMR.1 | 5d | 2025-12-30 | 2026-01-06 | P2.PH.EMR.1.1110, P2.PH.EMR.1.1130 |  |  |  | 196d | 159d | 40 | T | JW | P2-5 | TCASP | T |  |  |  |  |  |
|  | 3 | **ROUGH IN & FINISHES / Elevator Machine Room (Elevator Group 2) 2803 / Level 9 - Penthouse** |  | 2025-06-18 | 2026-01-09 |  |  |  |  |  |  |  |  |  |  |  |  |  |  |  |  |  |
| P2.PH.EMR.2.1030 |  | CMU - Drill_Epoxy Masonry Dowels / L9 / EMR.2 | 3d | 2025-06-18 A | 2025-06-18 A | P2.PH.EMR.2.1000, P2.PH.N.1040, P2.FAC.2.Z1.190 | 100% | 2025-07-28 | 2025-07-30 |  |  | 24 | GYP | JW | P2-5 | JW | GYP-1 |  |  |  |  |  |
| P2.PH.EMR.2.1000 |  | Layout / L9 / EMR.2 | 3d | 2025-07-01 A | 2025-07-03 A | P2.PR.03.620, P2.PH.N.1000, P2.PH.N.1020, P2.FAC.2.Z1.190 | 100% | 2025-08-01 | 2025-08-05 |  |  | 24 | GYP | JW | P2-5 | JW | GYP-1 |  |  |  |  |  |
| P2.PH.EMR.2.1050 |  | CMU - Lay Block / L9 / EMR.2 | 3d | 2025-07-17 A | 2025-07-31 A | P2.PH.EMR.2.1030 | 100% | 2025-08-06 | 2025-08-08 |  |  | 24 | GYP | JW | P2-5 | JW | GYP-1 |  |  |  |  |  |
| P2.PH.EMR.2.1040 |  | OH - Hang Duct / L9 / EMR.2 | 3d | 2025-09-01 A | 2025-09-03 A | P2.PH.EMR.2.1020 | 100% | 2025-10-13 | 2025-10-15 |  |  | 80 | HVAC | JW | P2-5 | TCASP | HVAC | P2.B2.23.30.210 | Harris | 1 | O |  |
| P2.PH.EMR.2.1120 |  | CMU - Point & Patch / L9 / EMR.2 | 3d | 2025-09-01 A | 2025-09-05 A | P2.PH.EMR.2.1110 | 100% | 2025-11-03 | 2025-11-05 |  |  | 40 | GYP | JW | P2-5 | TCASP | GYP-1 |  |  |  |  |  |
| P2.PH.EMR.2.1090 |  | OH - Insulate Duct / L9 / EMR.2 | 3d | 2025-09-04 A | 2025-09-05 A | P2.PH.EMR.2.1080, P2.MR.2-8.140 | 100% | 2025-10-29 | 2025-10-31 |  |  | 80 | INSUL | JW | P2-5 | TCASP | INSUL-3 | P2.B2.23.07.410 | Harris | 4 | O |  |
| P2.PH.EMR.2.1110 |  | Paint Prime & 1st Coat / L9 / EMR.2 | 3d | 2025-09-08 A | 2025-09-12 A | P2.PH.EMR.2.1100, P2.MR.2-8.140 | 100% | 2025-10-29 | 2025-10-31 |  |  | 16 | PAINT | JW | P2-5 | TCASP | PAINT-1 |  |  |  |  |  |
| P2.PH.EMR.2.1010 |  | OH - MEPF - Hangers & Supports / L9 / EMR.2 | 5d | 2025-10-01 A | 2025-10-07 A | P2.PH.EMR.2.1000 | 100% |  |  |  |  | 80 | MEP | JW | P2-5 | TCASP | MEP-2 | P2.B2.20.05.410 | Harris |  |  |  |
| P2.PH.EMR.2.1060 |  | OH - Electrical Conduit / L9 / EMR.2 | 3d | 2025-10-06 A | 2025-10-10 A | P2.PH.EMR.2.1010, P2.PH.EMR.2.1040 | 100% | 2025-10-13 | 2025-10-15 |  |  | 40 | ELEC | JW | P2-5 | TCASP | ELEC-2 |  |  |  |  |  |
| P2.PH.EMR.2.1020 |  | OH - Fire Suppression / L9 / EMR.2 | 3d | 2025-10-08 A | 2025-10-10 A | P2.PH.EMR.2.1010 | 100% |  |  |  |  | 80 | FP | JW | P2-5 | TCASP | FP-1 | P2.B2.21.13.210 |  | 1 |  |  |
| P2.PH.EMR.2.1100 |  | In Wall - MEP Rough In / L9 / EMR.2 | 3d | 2025-10-20 A | 2025-10-23 A | P2.PH.EMR.2.1090, P2.PH.EMR.2.1070, P2.PH.EMR.2.1040, P2.PH.EMR.2.1060, P2.PH.EMR.2.1080, P2.PH.EMR.2.1050, P2.MR.2-8.140 | 100% | 2025-10-24 | 2025-10-28 |  |  | 16 | R/I.IW | JW | P2-5 | TCASP | R/I.IW |  |  |  |  |  |
| P2.PH.EMR.2.1130 |  | Inspection - Wall / L9 / EMR.2 | 3d | 2025-11-11 A | 2025-11-13 A | P2.PH.EMR.2.1120 | 100% | 2025-12-09 | 2025-12-11 |  |  | 16 | AHJ | JW | P2-5 | TCASP | AHJ |  |  |  | O |  |
| P2.PH.EMR.2.1070 |  | OH - HVAC Piping / L9 / EMR.2 | 3d | 2025-12-01 | 2025-12-03 | P2.PH.EMR.2.1010, P2.PH.EMR.2.1060 |  |  |  | 193d | 0d | 80 | FIT | JW | P2-5 | TCASP | FIT-2 | P2.B2.23.20.410 | Harris | 2 | O |  |
| P2.PH.EMR.2.1080 |  | OH - HVAC Piping - Test / L9 / EMR.2 | 3d | 2025-12-04 | 2025-12-08 | P2.PH.EMR.2.1070 |  |  |  | 193d | 0d | 80 | FIT | JW | P2-5 | TCASP | FIT-2 | P2.B2.23.20.510 | Harris | 3 | O |  |
| P2.PH.EMR.2.1140 |  | OH - Insulate HVAC Pipe / L9 / EMR.2 | 3d | 2025-12-09 | 2025-12-11 | P2.PH.EMR.2.1110, P2.PH.EMR.2.1120, P2.MR.2-8.140 |  |  |  | 193d | 0d | 80 | INSUL | JW | P2-5 | TCASP | INSUL-3 | P2.B2.22.07.610 | Harris | 4 | O |  |
| P2.PH.EMR.2.1150 |  | Paint - Finish Coat / L9 / EMR.2 | 3d | 2025-12-09 | 2025-12-11 | P2.PH.EMR.2.1120, P2.PH.EMR.2.1130 |  |  |  | 193d | 0d | 16 | PAINT | JW | P2-5 | TCASP | PAINT-1 |  |  |  | O |  |
| P2.PH.EMR.2.1160 |  | Pull Wire - Electrical / L9 / EMR.2 | 3d | 2025-12-12 | 2025-12-16 | P2.PH.EMR.2.1060, P2.PH.EMR.2.1110, P2.PH.EMR.2.1140, P2.PH.EMR.2.1150 |  |  |  | 193d | 0d | 40 | ELEC | JW | P2-5 | TCASP | ELEC-2 |  |  |  | O |  |
| P2.PH.EMR.2.1170 |  | Trim All MEPF Finishes / L9 / EMR.2 | 5d | 2025-12-17 | 2025-12-23 | P2.PH.EMR.2.1150, P2.PH.EMR.2.1160 |  |  |  | 193d | 0d | 16 | MEP | JW | P2-5 | TCASP | MEP-2 |  | Harris |  | O |  |
| P2.PH.EMR.2.1180 |  | Flooring / L9 / EMR.2 | 3d | 2025-12-24 | 2025-12-29 | P2.PH.EMR.2.1170 |  |  |  | 193d | 0d | 16 | FLOOR | JW | P2-5 | TCASP | FLOOR |  |  |  |  |  |
| P2.PH.EMR.2.1190 |  | Doors & Hardware / L9 / EMR.2 | 3d | 2025-12-30 | 2026-01-02 | P2.PH.EMR.2.1180 |  |  |  | 193d | 0d | 16 | DFH | JW | P2-5 | TCASP | DFH |  |  |  |  | AT29 |
| P2.PH.EMR.2.1200 |  | Trades Inspect & Verify Work Completed to Specs / L9 / EMR.2 | 5d | 2026-01-05 | 2026-01-09 | P2.PH.EMR.2.1170, P2.PH.EMR.2.1190 |  |  |  | 193d | 156d | 40 | T | JW | P2-5 | TCASP | T |  |  |  |  |  |

| ID | WBS | Activity | Duration | Start | Finish | Predecessors | Complete | Planned start | Planned finish | Total float | Free float | Pick | Temp Orig Dur | Act ID Temp | Resp / SRLM | 744 | PHASE | RESP UPD | RESP / Trade | Z.RESP | Update Status | Testing Type |
| --- | --- | --- | --- | --- | --- | --- | --- | --- | --- | --- | --- | --- | --- | --- | --- | --- | --- | --- | --- | --- | --- | --- |
|  | 2 | **ROUGH IN & FINISHES / Elevator Lobby 3850 (Elevator Group 3) / Level 9 - Penthouse** |  | 2025-06-30 | 2026-01-30 |  |  |  |  |  |  |  |  |  |  |  |  |  |  |  |  |  |
| P2.PH.EL.3.1030 |  | OH - Fire Suppression / L9 / Elevator Lobby (Group 3) | 3d | 2025-06-30 A | 2025-07-16 A | P2.PH.EL.3.1010 | 100% | 2025-07-15 | 2025-07-17 |  |  | 1 | 80 | P2.B2.21.13.210 | FP | JW | P2-5 | JW | FP-1 |  |  |  |
| P2.PH.EL.3.1000 |  | Layout / L9 / Elevator Lobby (Group 3) | 3d | 2025-07-07 A | 2025-07-10 A | P2.PH.S.1000, P2.PH.S.1030, P2.PR.03.610 | 100% | 2025-08-04 | 2025-08-06 |  |  |  | 24 |  | GYP | JW | P2-5 | JW | GYP-1 |  |  |  |
| P2.PH.EL.3.1010 |  | OH - MEPF - Hangers & Supports / L9 / Elevator Lobby (Group 3) | 5d | 2025-07-08 A | 2025-07-14 A | P2.PH.EL.3.1000 | 100% | 2025-08-07 | 2025-08-13 |  |  |  | 80 | P2.B2.20.05.410 | MEP | JW | P2-5 | JW | MEP-2 | Harris |  |  |
| P2.PH.EL.3.1040 |  | OH - Hang Duct / L9 / Elevator Lobby (Group 3) | 3d | 2025-09-01 A | 2025-09-03 A | P2.PH.EL.3.1030, P2.PH.EL.3.1010 | 100% | 2025-10-01 | 2025-10-03 |  |  | 1 | 80 | P2.B2.23.30.210 | HVAC | JW | P2-5 | TCASP | HVAC | Harris | O |  |
| P2.PH.EL.3.1080 |  | OH - Insulate Duct / L9 / Elevator Lobby (Group 3) | 3d | 2025-09-03 A | 2025-09-05 A | P2.PH.EL.3.1070, P2.PH.EL.3.1010, P2.FAC.1.F.160, P2.L11.5-9.140 | 100% | 2025-10-17 | 2025-10-21 |  |  | 4 | 80 | P2.B2.23.07.410 | INSUL | JW | P2-5 | TCASP | INSUL-3 | Harris | O |  |
| P2.PH.EL.3.1020 |  | Framing Walls / L9 / Elevator Lobby (Group 3) | 3d | 2025-11-03 A | 2025-11-05 A | P2.PH.EL.3.1010 | 100% | 2025-12-01 | 2025-12-03 |  |  |  | 24 |  | GYP | JW | P2-5 | TCASP | GYP-1 |  | O |  |
| P2.PH.EL.3.1050 |  | OH - Electrical Conduit / L9 / Elevator Lobby (Group 3) | 3d | 2025-12-01 | 2025-12-03 | P2.PH.EL.3.1040, P2.PH.EL.3.1010 |  |  |  | 178d | 0d |  | 40 |  | ELEC | JW | P2-5 | TCASP | ELEC-2 |  | O |  |
| P2.PH.EL.3.1060 |  | OH - HVAC Piping / L9 / Elevator Lobby (Group 3) | 3d | 2025-12-04 | 2025-12-08 | P2.PH.EL.3.1050, P2.PH.EL.3.1010 |  |  |  | 178d | 0d | 2 | 80 | P2.B2.23.20.410 | FIT | JW | P2-5 | TCASP | FIT-2 | Harris | O |  |
| P2.PH.EL.3.1070 |  | OH - HVAC Piping - Test / L9 / Elevator Lobby (Group 3) | 3d | 2025-12-09 | 2025-12-11 | P2.PH.EL.3.1060, P2.PH.EL.3.1010 |  |  |  | 178d | 0d | 3 | 80 | P2.B2.23.20.510 | FIT | JW | P2-5 | TCASP | FIT-2 | Harris | O |  |
| P2.PH.EL.3.1090 |  | In Wall Rough In / L9 / Elevator Lobby (Group 3) | 3d | 2025-12-12 | 2025-12-16 | P2.PH.EL.3.1020, P2.PH.EL.3.1080, P2.PH.EL.3.1060, P2.PH.EL.3.1050, P2.PH.EL.3.1040, P2.PH.EL.3.1030 |  |  |  | 178d | 0d |  | 16 |  | R/I.IW | JW | P2-5 | TCASP | R/I.IW |  | O |  |
| P2.PH.EL.3.1100 |  | In Wall - Blocking / L9 / Elevator Lobby (Group 3) | 3d | 2025-12-17 | 2025-12-19 | P2.PH.EL.3.1090 |  |  |  | 178d | 0d |  | 24 |  | GYP | JW | P2-5 | TCASP | GYP-1 |  | O |  |
| P2.PH.EL.3.1110 |  | Inspections - Wall Close In / L9 / Elevator Lobby (Group 3) | 3d | 2025-12-22 | 2025-12-24 | P2.PH.EL.3.1090, P2.PH.EL.3.1100 |  |  |  | 178d | 0d |  | 16 |  | AHJ | JW | P2-5 | TCASP | AHJ |  | O |  |
| P2.PH.EL.3.1120 |  | Hang-Tape-Finish / L9 / Elevator Lobby (Group 3) | 5d | 2025-12-26 | 2026-01-02 | P2.PH.EL.3.1110, P2.FAC.1.F.160, P2.L11.5-9.140 |  |  |  | 178d | 0d |  | 40 |  | GYP | JW | P2-5 | TCASP | GYP-1 |  |  |  |
| P2.PH.EL.3.1130 |  | Paint Prime & 1st Coat / L9 / Elevator Lobby (Group 3) | 3d | 2026-01-05 | 2026-01-07 | P2.PH.EL.3.1120, P2.FAC.1.F.160, P2.L11.5-9.140 |  |  |  | 178d | 0d |  | 16 |  | PAINT | JW | P2-5 | TCASP | PAINT-1 |  |  |  |
| P2.PH.EL.3.1140 |  | Paint - Finish Coat / L9 / Elevator Lobby (Group 3) | 3d | 2026-01-08 | 2026-01-12 | P2.PH.EL.3.1130 |  |  |  | 178d | 0d |  | 16 |  | PAINT | JW | P2-5 | TCASP | PAINT-1 |  |  |  |
| P2.PH.EL.3.1150 |  | Trim All MEPF Finishes / L9 / Elevator Lobby (Group 3) | 3d | 2026-01-13 | 2026-01-15 | P2.PH.EL.3.1140 |  |  |  | 178d | 0d |  | 16 |  | MEP | JW | P2-5 | TCASP | MEP-2 | Harris |  |  |
| P2.PH.EL.3.1160 |  | Flooring / L9 / Elevator Lobby (Group 3) | 3d | 2026-01-16 | 2026-01-20 | P2.PH.EL.3.1150 |  |  |  | 178d | 0d |  | 16 |  | FLOOR | JW | P2-5 | TCASP | FLOOR |  |  |  |
| P2.PH.EL.3.1170 |  | Doors & Hardware / L9 / Elevator Lobby (Group 3) | 3d | 2026-01-21 | 2026-01-23 | P2.PH.EL.3.1160 |  |  |  | 178d | 0d |  | 16 |  | DFH | JW | P2-5 | TCASP | DFH |  |  | AT29 |
| P2.PH.EL.3.1180 |  | Trades Inspect & Verify Work Completed to Specs / L9 / EMR.2 | 5d | 2026-01-26 | 2026-01-30 | P2.PH.EL.3.1150, P2.PH.EL.3.1160, P2.PH.EL.3.1170 |  |  |  | 178d | 141d |  | 40 |  | T | JW | P2-5 | TCASP | T |  |  |  |
|  | PHF | **FINISHES - Penthouse / Level 9** |  | 2026-02-16 | 2026-08-21 |  |  |  |  |  |  |  |  |  |  |  |  |  |  |  |  |  |
|  | Z1 | **Mechanical 9-3925 / 9-2855 / Level 9 - Penthouse** |  | 2026-02-16 | 2026-08-21 |  |  |  |  |  |  |  |  |  |  |  |  |  |  |  |  |  |
| P2.L9.F.1200 |  | Floor Prep - Epoxy Floors / L9 PH | 7d | 2026-02-16 | 2026-02-24 | P2.L8.SMT.1250, P2.L8.EMT.1280, P2.PH.S.1310, P2.PH.N.1310 |  |  |  | 148d | 0d |  | 16 |  | EPOXYF |  | P2-5 | JW | EPOXYF |  |  |  |
| P2.L9.F.1210 |  | Flooring - Epoxy Floors / L9 PH | 3d | 2026-02-25 | 2026-02-27 | P2.L9.F.1200 |  |  |  | 148d | 0d |  | 48 |  | EPOXYF |  | P2-5 | JW | EPOXYF |  |  |  |
| P2.L9.F.1230 |  | Floor Base / L9 PH | 2d | 2026-03-02 | 2026-03-03 | P2.L9.F.1210 |  |  |  | 148d | 0d |  | 16 |  | FLOOR |  | P2-5 | JW | FLOOR |  |  |  |
| P2.L9.F.1250 |  | Remaining Equipment Post Flooring / L9 PH | 3d | 2026-03-04 | 2026-03-06 | P2.L9.F.1230 |  |  |  | 213d | 0d |  | 24 |  | EQUIP |  | P2-5 | JW | EQUIP |  |  |  |
| P2.L9.F.1260 |  | Remaining MEP Hook-Ups / L9 PH | 5d | 2026-03-09 | 2026-03-13 | P2.L9.F.1250 |  |  |  | 213d | 0d |  | 40 |  | MEP |  | P2-5 | JW | MEP | Harris |  |  |
| P2.L9.F.1280 |  | Rough Clean / L9 PH | 5d | 2026-03-16 | 2026-03-20 | P2.L9.F.1260 |  |  |  | 213d | 88d |  | 40 |  | FCLEAN |  | P2-5 | JW | FCLEAN |  |  |  |
| P2.L9.F.1000 |  | Paint Walls / L9 PH | 3d | 2026-04-28 | 2026-04-30 | P2.PH.S.1550, P2.PH.N.1550, P2.L9.F.1230 |  |  |  | 109d | 0d |  | 24 |  | PAINT |  | P2-5 |  | PAINT-1 |  |  |  |
| P2.L9.F.1010 |  | Waterproof Ceramic Tile / L9 PH | 5d | 2026-05-01 | 2026-05-07 | P2.L9.F.1000 |  |  |  | 157d | 0d |  | 40 |  | TILE |  | P2-5 |  | TILE |  |  |  |
| P2.L9.F.1020 |  | T-Grid / L9 PH | 10d | 2026-05-01 | 2026-05-14 | P2.L9.F.1000 |  |  |  | 110d | 0d |  | 80 |  | ACT |  | P2-5 |  | ACT |  |  |  |
| P2.L9.F.1030 |  | Ceramic Tile / L9 PH | 5d | 2026-05-08 | 2026-05-14 | P2.L9.F.1010 |  |  |  | 157d | 32d |  | 40 |  | TILE |  | P2-5 |  | TILE |  |  |  |
| P2.L9.F.1040 |  | Diffusers in T-Grid / L9 PH | 5d | 2026-05-15 | 2026-05-21 | P2.L9.F.1020 |  |  |  | 110d | 0d |  | 40 |  | HVAC |  | P2-5 |  | HVAC | Harris |  |  |
| P2.L9.F.1050 |  | Lights & Devices / L9 PH | 10d | 2026-05-22 | 2026-06-05 | P2.L9.F.1040 |  |  |  | 110d | 0d |  | 40 |  | ELEC |  | P2-5 |  | ELEC-2 |  |  |  |
| P2.L9.F.1060 |  | Sprinkler Heads / L9 PH | 4d | 2026-06-08 | 2026-06-11 | P2.L9.F.1050 |  |  |  | 118d | 8d |  | 32 |  | FP |  | P2-5 |  | FP-1 |  |  |  |
| P2.L9.F.1070 |  | Trim Fire Alarm / L9 PH | 2d | 2026-06-08 | 2026-06-09 | P2.L9.F.1050 |  |  |  | 110d | 0d |  | 16 |  | FA |  | P2-5 |  | FA-1 |  |  |  |
| P2.L9.F.1080 |  | Trim Security/ LV / L9 PH | 2d | 2026-06-10 | 2026-06-11 | P2.L9.F.1070 |  |  |  | 126d | 0d |  | 16 |  | LOWVOLT |  | P2-5 |  | LOWVOLT-1 |  |  |  |
| P2.L9.F.1090 |  | Doors & Hardware / L9 PH | 10d | 2026-06-10 | 2026-06-23 | P2.L9.F.1070 |  |  |  | 110d | 0d |  | 80 |  | DFH |  | P2-5 |  | DFH |  |  | AT29 |
| P2.L9.F.1110 |  | OH Ceiling Signoff / L9 PH | 14d | 2026-06-12 | 2026-07-01 | P2.L9.F.1080 |  |  |  | 126d | 0d |  | 112 |  | MEP |  | P2-5 |  | MEP | Harris |  |  |
| P2.L9.F.1100 |  | Casework/ Equipment / L9 PH | 5d | 2026-06-24 | 2026-06-30 | P2.L9.F.1090, P2.L9.F.1060 |  |  |  | 110d | 0d |  | 40 |  | LABCASE |  | P2-5 |  | LABCASE |  |  |  |
| P2.L9.F.1130 |  | Plumbing Fixtures & Drinking Fountains / L9 PH | 7d | 2026-07-01 | 2026-07-10 | P2.L9.F.1030, P2.L9.F.1100 |  |  |  | 125d | 0d |  | 56 |  | PLMB |  | P2-5 |  | PLMB | Harris |  |  |
| P2.L9.F.1140 |  | Trim T-Stats / L9 PH | 2d | 2026-07-01 | 2026-07-02 | P2.L9.F.1080, P2.L9.F.1100 |  |  |  | 136d | 0d |  | 16 |  | BAS |  | P2-5 |  | BAS-1 | Harris |  |  |
| P2.L9.F.1150 |  | Trim Electrical / L9 PH | 5d | 2026-07-01 | 2026-07-08 | P2.L9.F.1140 SS |  |  |  | 136d | 0d |  | 16 |  | ELEC |  | P2-5 |  | ELEC-2 |  |  |  |
| P2.L9.F.1160 |  | Trim Telephone/ Data / L9 PH | 3d | 2026-07-01 | 2026-07-06 | P2.L9.F.1150 SS |  |  |  | 136d | 0d |  | 24 |  | LOWVOLT |  | P2-5 |  | LOWVOLT-1 |  |  |  |
| P2.L9.F.1170 |  | Trim Med Gas / L9 PH | 5d | 2026-07-01 | 2026-07-08 | P2.L9.F.1100 |  |  |  | 110d | 2d |  | 40 |  | MECH |  | P2-5 |  | MECH-2 | Harris |  |  |
| P2.L9.F.1190 |  | Drop Ceiling Tile / L9 PH | 5d | 2026-07-02 | 2026-07-09 | P2.L9.F.1110 |  |  |  | 126d | 1d |  | 40 |  | ACT |  | P2-5 |  | ACT |  |  |  |
| P2.L9.F.1180 |  | Building Specialities / L9 PH | 3d | 2026-07-07 | 2026-07-09 | P2.L9.F.1160 |  |  |  | 136d | 11d |  | 24 |  | SPECIAL |  | P2-5 |  | SPECIAL |  |  |  |
| P2.L9.F.1220 |  | Work Completion List - Finishes / L9 PH | 7d | 2026-07-13 | 2026-07-21 | P2.L9.F.1170, P2.L9.F.1190, P2.L9.F.1130 |  |  |  | 125d | 0d |  | 56 |  | FINISH |  | P2-5 |  | FINISH |  |  |  |
| P2.L9.F.1240 |  | Interior Building Signage / L9 PH | 3d | 2026-07-22 | 2026-07-24 | P2.L9.F.1220 |  |  |  | 125d | 0d |  | 24 |  | SIGN |  | P2-5 |  | SIGN |  |  |  |
| P2.L9.F.1290 |  | Prepare Punchlist / L9 PH | 3d | 2026-07-27 | 2026-07-29 | P2.L9.F.1260 SS, P2.L9.F.1280, P2.L9.F.1220, P2.L9.F.1240, P2.L9.F.1180 |  |  |  | 125d | 0d |  | 24 |  | QC |  | P2-5 |  | QC |  |  |  |
| P2.L9.F.1300 |  | Correct Punchlist / L9 PH | 14d | 2026-07-30 | 2026-08-18 | P2.L9.F.1290, P2.L9.F.1260 SS |  |  |  | 125d | 0d |  | 112 |  | FINISH |  | P2-5 |  | FINISH |  |  |  |
| P2.L9.F.1310 |  | Final Clean / L9 PH | 3d | 2026-08-19 | 2026-08-21 | P2.SUM.215, P2.L9.F.1300 |  |  |  | 125d | 88d |  | 24 |  | QC |  | P2-5 |  | QC |  |  |  |

| ID | WBS | Activity | Duration | Start | Finish | Predecessors | Complete | Planned start | Planned finish | Total float | Free float | Pick | Temp Orig Dur | Act ID Temp | Resp / SRLM | 744 | PHASE | RESP UPD | RESP / Trade | Update Status | Z.RESP | Testing Type |
| --- | --- | --- | --- | --- | --- | --- | --- | --- | --- | --- | --- | --- | --- | --- | --- | --- | --- | --- | --- | --- | --- | --- |
|  | L10 | **L10 PENTHOUSE ROOF - ROUGH IN & FINISHES** |  | 2025-08-04 | 2026-01-27 |  |  |  |  |  |  |  |  |  |  |  |  |  |  |  |  |  |
|  | 1 | **ROUGH IN & FINISHES / Level 10 - Vestibule & Storage** |  | 2025-08-04 | 2026-01-27 |  |  |  |  |  |  |  |  |  |  |  |  |  |  |  |  |  |
| P2.10.VES.1.1030 |  | OH - Fire Suppression / L10 / Vestibule (Elevator Group 1) | 3d | 2025-08-04 A | 2025-08-07 A | P2.10.VES.1.1010 | 100% | 2025-08-13 | 2025-08-15 |  |  | 1 | 80 | P2.B2.21.13.210 | FP | KD | P2-5 | KD | FP-1 |  |  |  |
| P2.10.VES.1.1000 |  | Layout / L10 / Vestibule (Elevator Group 1) | 3d | 2025-08-11 A | 2025-08-14 A | P2.EMRR.03.610, P2.FAC.2.Z1.180, P2.10.EMR.1.1150 | 100% | 2025-08-01 | 2025-08-05 |  |  |  | 24 |  | GYP | KD | P2-5 | KD | GYP-1 |  |  |  |
| P2.10.VES.1.1010 |  | OH - MEPF - Hangers & Supports / L10 / Vestibule (Elevator Group 1) | 5d | 2025-09-01 A | 2025-09-04 A | P2.10.VES.1.1000 | 100% | 2025-10-01 | 2025-10-07 |  |  |  | 80 | P2.B2.20.05.410 | MEP | KD | P2-5 | TCASP | MEP-2 | O | Harris |  |
| P2.10.VES.1.1040 |  | OH - Hang Duct / L10 / Vestibule (Elevator Group 1) | 3d | 2025-09-05 A | 2025-09-09 A | P2.10.VES.1.1030, P2.10.VES.1.1010 | 100% | 2025-10-01 | 2025-10-03 |  |  | 1 | 80 | P2.B2.23.30.210 | HVAC | KD | P2-5 | TCASP | HVAC | O | Harris |  |
| P2.10.VES.1.1020 |  | Framing Walls / L9 / L10 / Vestibule (Elevator Group 1) | 3d | 2025-09-08 A | 2025-09-10 A | P2.10.VES.1.1010 | 100% | 2025-10-08 | 2025-10-10 |  |  |  | 24 |  | GYP | KD | P2-5 | TCASP | GYP-1 | O |  |  |
| P2.10.VES.1.1080 |  | OH - Insulate Duct / L10 / Vestibule (Elevator Group 1) | 3d | 2025-09-08 A | 2025-09-11 A | P2.10.VES.1.1010, P2.L11.5-9.140 | 100% | 2025-10-17 | 2025-10-21 |  |  | 4 | 80 | P2.B2.23.07.410 | INSUL | KD | P2-5 | TCASP | INSUL-3 | O | Harris |  |
| P2.10.VES.1.1050 |  | OH - Electrical Conduit / L10 / Vestibule (Elevator Group 1) | 3d | 2025-12-01 | 2025-12-03 | P2.10.VES.1.1040, P2.10.VES.1.1010 |  |  |  | 181d | 0d |  | 40 |  | ELEC | KD | P2-5 | TCASP | ELEC-2 | O |  |  |
| P2.10.VES.1.1060 |  | OH - HVAC Piping / L10 / Vestibule (Elevator Group 1) | 3d | 2025-12-04 | 2025-12-08 | P2.10.VES.1.1050, P2.10.VES.1.1010 |  |  |  | 181d | 0d | 2 | 80 | P2.B2.23.20.410 | FIT | KD | P2-5 | TCASP | FIT-2 | O | Harris |  |
| P2.10.VES.1.1070 |  | OH - HVAC Piping - Test / L10 / Vestibule (Elevator Group 1) | 3d | 2025-12-09 | 2025-12-11 | P2.10.VES.1.1060, P2.10.VES.1.1010 |  |  |  | 184d | 3d | 3 | 80 | P2.B2.23.20.510 | FIT | KD | P2-5 | TCASP | FIT-2 | O | Harris |  |
| P2.10.VES.1.1090 |  | In Wall Rough In / L10 / Vestibule (Elevator Group 1) | 3d | 2025-12-09 | 2025-12-11 | P2.10.VES.1.1020, P2.10.VES.1.1080, P2.10.VES.1.1060, P2.10.VES.1.1050, P2.10.VES.1.1040, P2.10.VES.1.1030, P2.L11.5-9.140 |  |  |  | 181d | 0d |  | 16 |  | R/I.IW | KD | P2-5 | TCASP | R/I.IW | O |  |  |
| P2.10.VES.1.1100 |  | In Wall - Blocking / L10 / Vestibule (Elevator Group 1) | 3d | 2025-12-12 | 2025-12-16 | P2.10.VES.1.1090 |  |  |  | 181d | 0d |  | 24 |  | GYP | KD | P2-5 | TCASP | GYP-1 | O |  |  |
| P2.10.VES.1.1110 |  | Inspections - Wall Close In / L10 / Vestibule (Elevator Group 1) | 3d | 2025-12-17 | 2025-12-19 | P2.10.VES.1.1090, P2.10.VES.1.1100, P2.10.VES.1.1070 |  |  |  | 181d | 0d |  | 16 |  | AHJ | KD | P2-5 | TCASP | AHJ | O |  |  |
| P2.10.VES.1.1120 |  | Hang-Tape-Finish / L10 / Vestibule (Elevator Group 1) | 5d | 2025-12-22 | 2025-12-29 | P2.10.VES.1.1110, P2.L11.5-9.140 |  |  |  | 181d | 0d |  | 40 |  | GYP | KD | P2-5 | TCASP | GYP-1 | O |  |  |
| P2.10.VES.1.1130 |  | Paint Prime & 1st Coat / L10 / Vestibule (Elevator Group 1) | 3d | 2025-12-30 | 2026-01-02 | P2.10.VES.1.1120 |  |  |  | 181d | 0d |  | 16 |  | PAINT | KD | P2-5 | TCASP | PAINT-1 |  |  |  |
| P2.10.VES.1.1140 |  | Paint - Finish Coat / L10 / Vestibule (Elevator Group 1) | 3d | 2026-01-05 | 2026-01-07 | P2.10.VES.1.1130 |  |  |  | 181d | 0d |  | 16 |  | PAINT | KD | P2-5 | TCASP | PAINT-1 |  |  |  |
| P2.10.VES.1.1150 |  | Trim All MEPF Finishes / L10 / Vestibule (Elevator Group 1) | 3d | 2026-01-08 | 2026-01-12 | P2.10.VES.1.1140 |  |  |  | 181d | 0d |  | 16 |  | MEP | KD | P2-5 | TCASP | MEP-2 |  | Harris |  |
| P2.10.VES.1.1160 |  | Flooring / L9 / L10 / Vestibule (Elevator Group 1) | 3d | 2026-01-13 | 2026-01-15 | P2.10.VES.1.1150 |  |  |  | 181d | 0d |  | 16 |  | FLOOR | KD | P2-5 | TCASP | FLOOR |  |  |  |
| P2.10.VES.1.1170 |  | Doors & Hardware / L10 / Vestibule (Elevator Group 1) | 3d | 2026-01-16 | 2026-01-20 | P2.10.VES.1.1160 |  |  |  | 181d | 0d |  | 16 |  | DFH | KD | P2-5 | TCASP | DFH |  |  | AT29 |
| P2.10.VES.1.1180 |  | Trades Inspect & Verify Work Completed to Specs / L10 / Vestibule (Elevator Group 1) | 5d | 2026-01-21 | 2026-01-27 | P2.10.VES.1.1150, P2.10.VES.1.1160, P2.10.VES.1.1170 |  |  |  | 181d | 144d |  | 40 |  | T | KD | P2-5 | TCASP | T |  |  |  |
|  | PHRF | **ROUGH IN & FINISHES / Level 10 - Group 3 - Elevator Lobby** |  | 2025-09-01 | 2026-01-27 |  |  |  |  |  |  |  |  |  |  |  |  |  |  |  |  |  |
| P2.10.EL.3.1000 |  | Layout / L10 / Elevator Lobby (Group 3) | 3d | 2025-09-01 A | 2025-09-02 A | P2.10.VES.1.1000 | 100% | 2025-10-01 | 2025-10-03 |  |  |  | 24 |  | GYP | KD | P2-5 | TCASP | GYP-1 | O |  |  |
| P2.10.EL.3.1010 |  | OH - MEPF - Hangers & Supports / L10 / Elevator Lobby (Group 3) | 5d | 2025-09-02 A | 2025-09-03 A | P2.10.EL.3.1000 | 100% | 2025-10-06 | 2025-10-10 |  |  |  | 80 | P2.B2.20.05.410 | MEP | KD | P2-5 | TCASP | MEP-2 | O | Harris |  |
| P2.10.EL.3.1040 |  | OH - Hang Duct / L10 / Elevator Lobby (Group 3) | 3d | 2025-09-03 A | 2025-09-05 A | P2.10.EL.3.1010 | 100% | 2025-10-16 | 2025-10-20 |  |  | 1 | 80 | P2.B2.23.30.210 | HVAC | KD | P2-5 | TCASP | HVAC | O | Harris |  |
| P2.10.EL.3.1080 |  | OH - Insulate Duct / L10 / Elevator Lobby (Group 3) | 3d | 2025-09-08 A | 2025-09-10 A | P2.10.EL.3.1040 | 100% | 2025-11-03 | 2025-11-05 |  |  | 4 | 80 | P2.B2.23.07.410 | INSUL | KD | P2-5 | TCASP | INSUL-3 |  | Harris |  |
| P2.10.EL.3.1020 |  | Framing Walls / L9 / L10 / Elevator Lobby (Group 3) | 3d | 2025-11-03 A | 2025-11-06 A | P2.10.EL.3.1010, P2.10.VES.1.1020 | 100% | 2025-12-01 | 2025-12-03 |  |  |  | 24 |  | GYP | KD | P2-5 | TCASP | GYP-1 | O |  |  |
| P2.10.EL.3.1030 |  | OH - Fire Suppression / L10 / Elevator Lobby (Group 3) | 3d | 2025-12-01 | 2025-12-03 | P2.10.EL.3.1010 |  |  |  | 184d | 3d | 1 | 80 | P2.B2.21.13.210 | FP | KD | P2-5 | TCASP | FP-1 | O |  |  |
| P2.10.EL.3.1050 |  | OH - Electrical Conduit / Elevator Lobby (Group 3) | 3d | 2025-12-01 | 2025-12-03 | P2.10.EL.3.1040, P2.10.EL.3.1010 |  |  |  | 181d | 0d |  | 40 |  | ELEC | KD | P2-5 | TCASP | ELEC-2 | O |  |  |
| P2.10.EL.3.1060 |  | OH - HVAC Piping / L10 / Elevator Lobby (Group 3) | 3d | 2025-12-04 | 2025-12-08 | P2.10.EL.3.1050, P2.10.EL.3.1010 |  |  |  | 181d | 0d | 2 | 80 | P2.B2.23.20.410 | FIT | KD | P2-5 | TCASP | FIT-2 | O | Harris |  |
| P2.10.EL.3.1070 |  | OH - HVAC Piping - Test / L10 / Elevator Lobby (Group 3) | 3d | 2025-12-09 | 2025-12-11 | P2.10.EL.3.1060, P2.10.EL.3.1010 |  |  |  | 184d | 3d | 3 | 80 | P2.B2.23.20.510 | FIT | KD | P2-5 | TCASP | FIT-2 | O | Harris |  |
| P2.10.EL.3.1090 |  | In Wall Rough In / L10 / Elevator Lobby (Group 3) | 3d | 2025-12-09 | 2025-12-11 | P2.10.EL.3.1020, P2.10.EL.3.1080, P2.10.EL.3.1060, P2.10.EL.3.1050, P2.10.EL.3.1040, P2.10.EL.3.1030, P2.FAC.1.F.160, P2.L11.EMMR.3.140 |  |  |  | 181d | 0d |  | 16 |  | R/I.IW | KD | P2-5 | TCASP | R/I.IW | O |  |  |
| P2.10.EL.3.1100 |  | In Wall - Blocking / L10 / Elevator Lobby (Group 3) | 3d | 2025-12-12 | 2025-12-16 | P2.10.EL.3.1090 |  |  |  | 181d | 0d |  | 24 |  | GYP | KD | P2-5 | TCASP | GYP-1 | O |  |  |
| P2.10.EL.3.1110 |  | Inspections - Wall Close In / L10 / Elevator Lobby (Group 3) | 3d | 2025-12-17 | 2025-12-19 | P2.10.EL.3.1090, P2.10.EL.3.1100, P2.10.EL.3.1070 |  |  |  | 181d | 0d |  | 16 |  | AHJ | KD | P2-5 | TCASP | AHJ | O |  |  |
| P2.10.EL.3.1120 |  | Hang-Tape-Finish / L10 / Elevator Lobby (Group 3) | 5d | 2025-12-22 | 2025-12-29 | P2.10.EL.3.1110, P2.FAC.1.F.160, P2.L11.EMMR.3.140 |  |  |  | 181d | 0d |  | 40 |  | GYP | KD | P2-5 | TCASP | GYP-1 | O |  |  |
| P2.10.EL.3.1130 |  | Paint Prime & 1st Coat / L10 / Elevator Lobby (Group 3) | 3d | 2025-12-30 | 2026-01-02 | P2.10.EL.3.1120, P2.FAC.1.F.160 |  |  |  | 181d | 0d |  | 16 |  | PAINT | KD | P2-5 | TCASP | PAINT-1 |  |  |  |
| P2.10.EL.3.1140 |  | Paint - Finish Coat / L10 / Elevator Lobby (Group 3) | 3d | 2026-01-05 | 2026-01-07 | P2.10.EL.3.1130 |  |  |  | 181d | 0d |  | 16 |  | PAINT | KD | P2-5 | TCASP | PAINT-1 |  |  |  |
| P2.10.EL.3.1150 |  | Trim All MEPF Finishes / L10 / Elevator Lobby (Group 3) | 3d | 2026-01-08 | 2026-01-12 | P2.10.EL.3.1140 |  |  |  | 181d | 0d |  | 16 |  | MEP | KD | P2-5 | TCASP | MEP-2 |  | Harris |  |
| P2.10.EL.3.1160 |  | Flooring / L9 / L10 / Elevator Lobby (Group 3) | 3d | 2026-01-13 | 2026-01-15 | P2.10.EL.3.1150 |  |  |  | 181d | 0d |  | 16 |  | FLOOR | KD | P2-5 | TCASP | FLOOR |  |  |  |
| P2.10.EL.3.1170 |  | Doors & Hardware / L10 / Elevator Lobby (Group 3) | 3d | 2026-01-16 | 2026-01-20 | P2.10.EL.3.1160 |  |  |  | 181d | 0d |  | 16 |  | DFH | KD | P2-5 | TCASP | DFH |  |  | AT29 |
| P2.10.EL.3.1180 |  | Trades Inspect & Verify Work Completed to Specs / L10 / Elevator Lobby (Group 3) | 5d | 2026-01-21 | 2026-01-27 | P2.10.EL.3.1150, P2.10.EL.3.1160, P2.10.EL.3.1170 |  |  |  | 181d | 144d |  | 40 |  | T | KD | P2-5 | TCASP | T |  |  |  |

| ID | WBS | Activity | Duration | Start | Finish | Predecessors | Total float | Free float | Resp / SRLM | RESP UPD | RESP / Trade | CalendarDays | Update Status | 744 |
| --- | --- | --- | --- | --- | --- | --- | --- | --- | --- | --- | --- | --- | --- | --- |
|  | L11 | **LEVEL 11 BUILDOUT - Group 3 EMR ***With Elevator WBS - Vertical Systems** |  |  |  |  |  |  |  |  |  |  |  |  |
|  | EMRF | **Elevator Machine Room** |  |  |  |  |  |  |  |  |  |  |  |  |
|  | 10 | **Start-up & Commissiong (Draft)** |  | 2025-12-01 | 2027-03-10 |  |  |  |  |  |  |  |  |  |
|  | 19 | **Generator** |  | 2026-02-11 | 2026-03-31 |  |  |  |  |  |  |  |  |  |
| CX.GEN.1000 |  | Startup - Generator | 10d | 2026-02-11 | 2026-02-24 | P2.UTL.120 | 189d | 0d | ELEC | SS | ELEC |  |  |  |
| CX.GEN.1010 |  | Test and PFPT Backup Power - Generator | 10d | 2026-02-25 | 2026-03-10 | CX.GEN.1000 SS, CX.GEN.1000 | 189d | 0d | ELEC | SS | ELEC | 0 |  |  |
| CX.GEN.1020 |  | FPT Backup Power - Generator | 15d | 2026-03-11 | 2026-03-31 | CX.GEN.1010 | 189d | 155d | ELEC | SS | ELEC | 0 |  |  |
|  | 12 | **Life Safety** |  | 2025-12-22 | 2026-12-24 |  |  |  |  |  |  |  |  |  |
|  | 1 | **Fire Alarm** |  | 2026-02-02 | 2026-10-27 |  |  |  |  |  |  |  |  |  |
| CX.FA.1000 |  | Program Fire Alarm System | 25d | 2026-02-02 | 2026-03-06 | CX.B2.SWGR.1010, CX.B2.MVEE.1010 | 193d | 0d | FA | SS | FA | 0 |  |  |
| CX.FA.1010 |  | FA Startup, Testing, Point to Point Checkout | 20d | 2026-03-09 | 2026-04-03 | CX.FA.1000 | 193d | 0d | FA | SS | FA | 0 |  |  |
| CX.FA.1020 |  | PFPT FA System | 15d | 2026-04-06 | 2026-04-24 | CX.FA.1010 | 193d | 0d | FA |  | FA | 0 |  |  |
| CX.FA.1030 |  | FPT FA System | 10d | 2026-04-27 | 2026-05-08 | CX.FA.1020 | 193d | 114d | FA |  | FA | 0 |  |  |
| CX.FA.1040 |  | Life Safety Acceptance Testing | 5d | 2026-10-21 | 2026-10-27 | CX.SCRTY.1040, CX.FA.1030, CX.CA.1050 | 79d | 42d | FA |  | FA | 0 |  |  |
|  | 2 | **Fire Sprinkler** |  | 2025-12-22 | 2026-10-13 |  |  |  |  |  |  |  |  |  |
| CX.FS.1000 |  | Fire Pump Startup and Program | 5d | 2025-12-22 | 2025-12-29 | P2.1.FP.6950.1060 | 242d | 122d | FP | SS | FP |  | O | SS |
| CX.FS.1010 |  | Fire Suppression System Leak - Level B1 & B2 | 5d | 2026-06-22 | 2026-06-26 | CX.FS.1000, CX.B2.SWGR.1010, CX.B2.MVEE.1010, CX.B2.MVEE.1020, CX.B2.SWGR.1040 | 144d | 55d | FP |  | FP |  |  |  |
| CX.FS.1020 |  | Fire Suppression System Leak - Level 1 - 8 | 5d | 2026-09-09 | 2026-09-15 | CX.FS.1000, CX.L2.SWGR.1010, CX.L1.SWGR.1010, CX.L3.SWGR.1010, CX.L5.SWGR.1010, CX.L4.SWGR.1010, CX.L6.SWGR.1010, CX.L7.SWGR.1010, CX.PH.AHU.1030, CX.L8.SWGR.1010 | 65d | 0d | FP |  | FP |  |  |  |
| CX.FS.1030 |  | Fire Suppression Tamper/Flow/Pre-Action | 5d | 2026-09-16 | 2026-09-22 | CX.FS.1010, CX.FS.1020 | 89d | 0d | FP |  | FP |  |  |  |
| CX.FS.1040 |  | Fire Suppression System Flush | 5d | 2026-09-23 | 2026-09-29 | CX.FS.1030 | 89d | 0d | FP |  | FP |  |  |  |
| CX.FS.1050 |  | NIH Acceptance Test | 5d | 2026-09-30 | 2026-10-06 | CX.FS.1040 | 89d | 0d | FP |  | FP |  |  |  |
| CX.FS.1060 |  | Fire Suppression AHJ Final | 5d | 2026-10-07 | 2026-10-13 | CX.FS.1050 | 89d | 52d | FP |  | FP |  |  |  |
|  | 3 | **Fire HVAC** |  | 2026-12-11 | 2026-12-24 |  |  |  |  |  |  |  |  |  |
| CX.FHVAC.1000 |  | Preliminary Inspection - FD | 5d | 2026-12-11 | 2026-12-17 | P2.PIA.110, CX.PH.GSE.1040, CX.PH.HRU.1040, CX.PH.EHF.1040, CX.PH.AHU.1040, CX.L8.GSE.1050, CX.L8.AHU.1040, CX.L8.SWGR.1020 | 52d | 0d | BAS |  | BAS |  |  |  |
| CX.FHVAC.1010 |  | Final Inspection - FD | 5d | 2026-12-18 | 2026-12-24 | CX.FHVAC.1000 | 52d |  | BAS |  | BAS |  |  |  |

| ID | WBS | Activity | Duration | Start | Finish | Predecessors | Total float | Free float | CalendarDays | Resp / SRLM | RESP UPD | RESP / Trade |
| --- | --- | --- | --- | --- | --- | --- | --- | --- | --- | --- | --- | --- |
|  | 14 | **Security System** |  | 2026-02-02 | 2026-05-08 |  |  |  |  |  |  |  |
| CX.SCRTY.1000 |  | Program Security System | 20d | 2026-02-02 | 2026-02-27 | CX.B2.SWGR.1010, CX.B2.MVEE.1010 | 193d | 0d | 0 | LOWVOLT | SS | LOWVOLT-1 |
| CX.SCRTY.1010 |  | Security Startup, Testing, Point to Point Checkout | 20d | 2026-03-02 | 2026-03-27 | CX.SCRTY.1000 | 193d | 0d | 0 | LOWVOLT | SS | LOWVOLT-1 |
| CX.SCRTY.1020 |  | PFPT Security System | 15d | 2026-03-30 | 2026-04-17 | CX.SCRTY.1010 | 193d | 0d | 0 | LOWVOLT |  | LOWVOLT-1 |
| CX.SCRTY.1030 |  | FPT Security System | 10d | 2026-04-20 | 2026-05-01 | CX.SCRTY.1020 | 193d | 0d | 0 | LOWVOLT |  | LOWVOLT-1 |
| CX.SCRTY.1040 |  | NIH Security Demonstrations | 5d | 2026-05-04 | 2026-05-08 | CX.SCRTY.1030 | 193d | 114d | 0 | NIH |  | NIH |
|  | 11 | **BAS System** |  | 2026-02-02 | 2026-06-29 |  |  |  |  |  |  |  |
| CX.BAS.1000 |  | Complete Onsite Programming BAS System | 15d | 2026-02-02 | 2026-02-20 | CX.B2.SWGR.1010, CX.B2.MVEE.1010 | 163d | 0d | 0 | BAS | SS | BAS-2 |
| CX.BAS.1010 |  | BAS Startup Testing and Point to Point Checkout | 30d | 2026-02-23 | 2026-04-03 | CX.BAS.1000 | 163d | 0d | 0 | BAS | SS | BAS-2 |
| CX.BAS.1020 |  | PFPT BAS System | 30d | 2026-04-06 | 2026-05-15 | CX.BAS.1010 | 163d | 0d | 0 | BAS |  | BAS-2 |
| CX.BAS.1030 |  | FPT BAS System | 30d | 2026-05-18 | 2026-06-29 | CX.BLOW.1020, CX.BAS.1020 | 163d | 126d | 0 | BAS |  | BAS-2 |
|  | 13 | **Communications / IT** |  | 2026-02-02 | 2026-04-17 |  |  |  |  |  |  |  |
| CX.COMM.1000 |  | Startup and Program Communications | 20d | 2026-02-02 | 2026-02-27 | CX.B2.SWGR.1010, CX.B2.MVEE.1010 | 226d | 0d | 0 | LOWVOLT | SS | LOWVOLT-1 |
| CX.COMM.1010 |  | Startup and Program PA & Nurse Call Systems | 20d | 2026-02-02 | 2026-02-27 | CX.COMM.1000 SS | 236d | 0d | 0 | LOWVOLT | SS | LOWVOLT-1 |
| CX.COMM.1020 |  | PFPT Communications | 20d | 2026-03-02 | 2026-03-27 | CX.COMM.1000 | 226d | 0d | 0 | LOWVOLT | SS | LOWVOLT-1 |
| CX.COMM.1030 |  | PFPT PA & Nurse Call Systems | 10d | 2026-03-02 | 2026-03-13 | CX.COMM.1010 | 236d | 0d | 0 | LOWVOLT | SS | LOWVOLT-1 |
| CX.COMM.1040 |  | FPT PA & Nurse Call Systems | 10d | 2026-03-16 | 2026-03-27 | CX.COMM.1030 | 236d | 10d | 0 | LOWVOLT | SS | LOWVOLT-1 |
| CX.COMM.1050 |  | FPT Communications | 10d | 2026-03-30 | 2026-04-10 | CX.COMM.1020 | 226d | 0d | 0 | LOWVOLT |  | LOWVOLT-1 |
| CX.COMM.1060 |  | NIH Testing and Communications Demonstration | 5d | 2026-04-13 | 2026-04-17 | CX.COMM.1040, CX.COMM.1050 | 226d |  | 0 | NIH |  | NIH |
|  | 20 | **Plumbing and Fixtures** |  | 2026-07-14 | 2026-09-22 |  |  |  |  |  |  |  |
| CX.PLUMB.1000 |  | Startup Domestic Plumbing Systems and Equipment | 15d | 2026-07-14 | 2026-08-03 | CX.B2.MPE.1000, CX.B2.MPE.1010 | 67d | 0d | 0 | PLMB |  | PLMB-1 |
| CX.PLUMB.1010 |  | PFPT Domestic Plumbing Systems and Equipment | 15d | 2026-08-04 | 2026-08-24 | CX.PLUMB.1000 | 67d | 0d | 0 | PLMB |  | PLMB-1 |
| CX.PLUMB.1020 |  | FPT Domestic Plumbing Systems and Equipment | 10d | 2026-08-25 | 2026-09-08 | CX.PLUMB.1010 | 67d | 0d | 0 | PLMB |  | PLMB-1 |
| CX.PLUMB.1030 |  | Test Plumbing Fixtures | 10d | 2026-09-09 | 2026-09-22 | CX.PLUMB.1020 | 67d | 33d | 0 | PLMB |  | PLMB-1 |

| ID | WBS | Activity | Duration | Start | Finish | Predecessors | Total float | Free float | CalendarDays | Resp / SRLM | RESP / Trade | RESP UPD |
| --- | --- | --- | --- | --- | --- | --- | --- | --- | --- | --- | --- | --- |
|  | 18 | **Sprinkler Systems** |  | 2026-09-16 | 2026-12-07 |  |  |  |  |  |  |  |
| CX.FS.2000 |  | Fire Suppression System Leak - Level 1 | 3d | 2026-09-16 | 2026-09-18 | CX.FS.1020 | 65d | 0d | 0 | FP | FP |  |
| CX.FS.2010 |  | Fire Suppression System Leak - Level 2 | 3d | 2026-09-21 | 2026-09-23 | CX.FS.2000 | 65d | 0d | 0 | FP | FP |  |
| CX.FS.2020 |  | Fire Suppression Leak Test - Level 2.5 | 3d | 2026-09-24 | 2026-09-28 | CX.FS.2010 | 65d | 0d | 0 | FP | FP |  |
| CX.FS.2030 |  | Fire Suppression Leak Test - Level 3 | 3d | 2026-09-29 | 2026-10-01 | CX.FS.2020 | 65d | 0d | 0 | FP | FP |  |
| CX.FS.2040 |  | Fire Pump Startup and Program | 10d | 2026-10-02 | 2026-10-15 | CX.FS.2030, DDD2180, DDD3560 | 65d | 0d | 0 | FP | FP |  |
| CX.FS.2050 |  | Fire Suppression System Flush | 10d | 2026-10-16 | 2026-10-29 | CX.FS.2040 | 65d | 0d | 0 | FP | FP |  |
| CX.FS.2060 |  | Fire Suppression PFPT | 10d | 2026-10-30 | 2026-11-12 | CX.FA.1010, CX.FS.2050 | 65d | 0d | 0 | FP | FP |  |
| CX.FS.2070 |  | Fire Suppression FPT | 10d | 2026-11-13 | 2026-11-30 | CX.FS.2060 | 65d | 0d | 0 | FP | FP |  |
| CX.FS.2080 |  | NIH Acceptance Test | 5d | 2026-12-01 | 2026-12-07 | CX.FS.2070 | 65d |  | 0 | FP | FP |  |
|  | 17 | **Compressed Air** |  | 2026-08-04 | 2026-10-20 |  |  |  |  |  |  |  |
| CX.CA.1000 |  | Commpressed Air System Startup | 10d | 2026-08-04 | 2026-08-17 | CX.PLUMB.1000 | 79d | 0d | 0 | PLMB | PLMB-1 |  |
| CX.CA.1010 |  | Compressed Air System Programming | 15d | 2026-08-18 | 2026-09-08 | CX.CA.1000 | 79d | 0d | 0 | PLMB | PLMB-1 |  |
| CX.CA.1020 |  | Commpressed Air System PFPT | 5d | 2026-08-18 | 2026-08-24 | CX.CA.1000 | 135d | 0d | 0 | PLMB | PLMB-1 |  |
| CX.CA.1030 |  | Commpressed Air System FPT | 2d | 2026-08-25 | 2026-08-26 | CX.CA.1020 | 135d |  | 0 | PLMB | PLMB-1 |  |
| CX.CA.1040 |  | Compressed Air System PFPT | 15d | 2026-09-09 | 2026-09-29 | CX.CA.1010 | 79d | 0d | 0 | PLMB | PLMB-1 |  |
| CX.CA.1050 |  | Compressed Air System FPT | 15d | 2026-09-30 | 2026-10-20 | CX.CA.1040 | 79d | 0d | 0 | PLMB | PLMB-1 |  |
|  | 1 | **Basement B2/B1** |  | 2025-12-01 | 2026-10-30 |  |  |  |  |  |  |  |
|  | 12 | **Glycol Hot water System** |  | 2026-02-13 | 2026-08-10 |  |  |  |  |  |  |  |
| CX.B2.GHWS.1000 |  | Startup - Glycol Hot Water System - B2 | 20d | 2026-02-13 | 2026-03-12 | P2.B2.M.5970.1330, P2.B2.WC.1560, P2.B2.LC.1240, CX.B2.MVEE.1010, P2.B2.S.1270, CX.B2.HYDR.1030, CX.B2.SWGR.1010, P2.B2.N.1270, DDD2430, DDD2680, DDD2880, DDD2330, FRG.P2.B2.M.5970.1110 | 22d | 3d |  | MECH | MECH-2 | SS |
| CX.B2.GHWS.1010 |  | P2P/BAS - Glycol Hot Water System - B2 | 20d | 2026-03-18 | 2026-04-14 | CX.B2.SP.1010, CX.B2.GHWS.1000 | 19d | 0d |  | BAS | BAS-1 | SS |
| CX.B2.GHWS.1020 |  | Test and Balanc - Glycol Hot Water System - B2 | 20d | 2026-04-15 | 2026-05-12 | CX.B2.GHWS.1010, P2.PH.S.1340 | 132d | 0d |  | TAB | TAB-1 |  |
| CX.B2.GHWS.1030 |  | PFPT - Glycol Hot Water System - B2 | 10d | 2026-05-13 | 2026-05-27 | CX.B2.GHWS.1020 | 132d | 47d |  | BAS | BAS-1 |  |
| CX.B2.GHWS.1040 |  | FPT - Glycol Hot Water System - B2 | 5d | 2026-08-04 | 2026-08-10 | P2.SUM.225, CX.B2.SS.1030 FF, CX.B2.GHWS.1030 | 85d | 20d |  | BAS | BAS-1 |  |

| ID | WBS | Activity | Duration | Start | Finish | Predecessors | Total float | Free float | Update Status | Resp / SRLM | 744 | RESP UPD | RESP / Trade | **NEAR CRITICAL** | CalendarDays |
| --- | --- | --- | --- | --- | --- | --- | --- | --- | --- | --- | --- | --- | --- | --- | --- |
|  | 1 | **MV Electrical Equipment XFMRs and Network Protectors** |  | 2025-12-01 | 2026-06-12 |  |  |  |  |  |  |  |  |  |  |
| CX.B2.MVEE.1000 |  | Startup Primary Electrical Utility Power - Electrical Equipment and Network Protector - B2 | 10d | 2025-12-01 | 2025-12-12 | P2.B2.EE.B.1240, P2.B2.EMS.B.1240, P2.B2.ES.A.1240, P2.B2.EMS.A.1240, P2.B2.EE.A.1240, P2.B2.EMVS.A.1240, P2.B2.EMVS.B.1240, P2.B2.ES.B.1240 | 254d | 107d | O | ELEC | SS | SS | ELEC-2 |  |  |
| CX.B2.MVEE.1010 |  | Start Up Normal Power - Electrical Equipment and Network Protector - B2 | 20d | 2026-01-05 | 2026-01-30 | P2.B2.EE.B.1240, P2.B2.EMS.B.1240, P2.2.HE.5959.1140, P2.2.HE.2949.1140, P2.2.HE.2803.1140, P2.2.HE.5966.1140, P2.8.HE.5959.1140, P2.4.HE.2948.1140, P2.4.HE.3959.1140, P2.6.HE.2947.1140, P2.4.HE.5966.1140, P2.8.HE.2803.1140, P2.6.HE.5966.1140, P2.4.HE.2803.1140, P2.6.HE.5959.1140, P2.6.HE.2803.1140, ENB.155, P2.1.HE.5959.1140, P2.1.HE.3911.1060, P2.1.HE.6940.1140, P2.1.HE.2803.1140, P2.1.HE.2950.1140, P2.3.HE.2803.1140, P2.3.HE.5959.1140, P2.5.HE.3989.1140, P2.3.HE.5968.1140, P2.3.HE.5966.1140, P2.5.HE.2803.1140, P2.5.HE.2949.1140, P2.7.HE.5959.1140, P2.7.HE.2803.1140, P2.5.HE.5966.1140, P2.7.HE.2941.1140, P2.B2.ES.A.1240, P2.B2.EMS.A.1240, P2.B2.EE.A.1240, P2.B2.EE.A.1250, P2.B2.EMVS.A.1240, P2.B2.EMVS.B.1240, P2.B2.EMVS.B.1250, P2.B2.ES.B.1250, P2.B2.ES.B.1240, P2.3.HE.2937.1140 | 26d | 0d |  | ELEC |  | SS | ELEC-2 |  |  |
| CX.B2.MVEE.1020 |  | Test and PFPT Main Power SWGR,XMFR,PNLS - Electrical Equipment and Network Protector - B2 | 10d | 2026-05-15 | 2026-05-29 | P2.B2.IT.2806.250, CX.B2.MVEE.1000, CX.B2.MVEE.1010, P2.L1.LC.1270, P2.B2.IT.2903.260 | 147d | 0d |  | ELEC |  |  | ELEC-2 |  |  |
| CX.B2.MVEE.1030 |  | FPT Main Power SWGR,XMFR,PNLS - Electrical Equipment and Network Protector - B2 | 10d | 2026-06-01 | 2026-06-12 | P2.B2.M.5970.1120, P2.UTT.370, CX.B2.MVEE.1020 | 187d |  |  | ELEC |  |  | ELEC-2 |  |  |
|  | 2 | **480V Switchgear and ATS** |  | 2025-12-30 | 2026-07-06 |  |  |  |  |  |  |  |  |  |  |
| CX.B2.SWGR.1010 |  | Start Up Normal Power - 480V Switgear and ATS - B2 | 20d | 2025-12-30 | 2026-01-27 | P2.B2.EE.B.1240, P2.B2.EMS.B.1240, ENB.155, P2.B2.ES.A.1240, P2.B2.EMS.A.1240, P2.B2.EE.A.1240, P2.B2.EE.A.1250, P2.B2.EMVS.A.1240, P2.B2.EMVS.B.1240, P2.B2.EMVS.B.1250, P2.B2.ES.B.1240, P2.B2.ES.B.1250 | 29d | 0d |  | ELEC |  | SS | ELEC-2 |  |  |
| CX.B2.SWGR.1000 |  | Startup Primary Electrical Utility Power - 480V Switgear and ATS - B2 | 15d | 2026-01-07 | 2026-01-27 | P2.B2.EE.B.1240, P2.B2.EMS.B.1240, ENB.170, ENB.155, P2.B2.ES.A.1240, P2.B2.EMS.A.1240, P2.B2.EE.A.1240, P2.B2.EMVS.A.1240, P2.B2.EMVS.B.1240, P2.B2.ES.B.1240 | 284d |  |  | ELEC |  | SS | ELEC-2 |  |  |
| CX.B2.SWGR.1020 |  | Start Up Emergency Power - 480V Switgear and ATS - B2 | 15d | 2026-01-28 | 2026-02-17 | P2.B2.EMS.B.1240, ENB.170, CX.B2.SWGR.1010, P2.B2.EMS.A.1240, P2.B2.EE.A.1240 | 194d | 62d |  | ELEC |  | SS | ELEC-2 |  |  |
| CX.B2.SWGR.1030 |  | Test and PFPT Main Power SWGR - 480V Switgear and ATS - B2 | 15d | 2026-05-15 | 2026-06-05 | P2.B2.IT.2806.250, CX.B2.SWGR.1020, P2.L1.LC.1270, P2.MR.W.190, P2.B2.IT.2903.260 | 132d | 0d |  | ELEC |  |  | ELEC-2 |  |  |
| CX.B2.SWGR.1040 |  | Test and PFPT Backup Power ATS,GEN - 480V Switgear and ATS - B2 | 10d | 2026-06-08 | 2026-06-19 | CX.B2.SWGR.1030 | 132d | 0d |  | ELEC |  |  | ELEC-2 |  |  |
| CX.B2.SWGR.1050 |  | FPT Main Power SWGR - 480V Switgear and ATS - B2 | 10d | 2026-06-08 | 2026-06-19 | P2.B2.M.5970.1120, P2.UTT.370, CX.B2.SWGR.1030 | 182d |  |  | ELEC |  |  | ELEC-2 |  |  |
| CX.B2.SWGR.1060 |  | FPT Backup Power ATS,GEN - 480V Switgear and ATS - B2 | 10d | 2026-06-22 | 2026-07-06 | P2.UTT.370, CX.B2.SWGR.1040 | 172d |  |  | ELEC |  |  | ELEC-2 |  |  |
|  | 3 | **Chilled hydronic systems (B1, B2 General Air)** |  | 2026-03-04 | 2026-06-24 |  |  |  |  |  |  |  |  |  |  |
| CX.B2.CHS.1000 |  | Startup - Chilled Hydronic System - B2 | 20d | 2026-03-04 | 2026-03-31 | P2.B2.M.5970.1330, P2.B2.WC.1520, P2.B2.LC.1240, CX.B2.SWGR.1010, CX.B2.MVEE.1010, CX.B2.HYDR.1040, DDD2480, FRG.P2.B2.M.5970.1170 | 4d | 0d |  | MECH |  | SS | MECH-2 | 3 |  |
| CX.B2.CHS.1010 |  | P2P/BAS - Chilled Hydronic System - B2 | 25d | 2026-04-01 | 2026-05-05 | P2.B2.S.1270, CX.B2.CHS.1000 | 4d | 0d |  | BAS |  | SS | BAS-1 | 3 |  |
| CX.B2.CHS.1020 |  | Test and Balance - Chilled Hydronic System - B2 | 20d | 2026-05-06 | 2026-06-03 | CX.B2.CHS.1010 | 44d | 0d |  | TAB |  |  | TAB-1 |  |  |
| CX.B2.CHS.1030 |  | PFPT - Chilled Hydronic System - B2 | 10d | 2026-06-04 | 2026-06-17 | CX.B2.CHS.1020 | 44d | 0d |  | BAS |  |  | BAS-1 |  |  |
| CX.B2.CHS.1040 |  | FPT - Chilled Hydronic System - B2 | 5d | 2026-06-18 | 2026-06-24 | P2.UTT.370, P2.SUM.225, CX.B2.CHS.1030 | 44d | 22d |  | BAS |  |  | BAS-1 |  |  |
|  | 11 | **Steam Piping** |  | 2026-03-04 | 2026-03-24 |  |  |  |  |  |  |  |  |  |  |
| CX.B2.SP.1000 |  | Steam Blow Off Piping - Steam Piping - B2 | 5d | 2026-03-04 | 2026-03-10 | P2.B2.WC.1560, P2.B2.WC.1520, P2.B3.1350 | 19d | 0d |  | PLMB |  | SS | PLMB-1 |  |  |
| CX.B2.SP.1010 |  | Startup Heat XChangers - Steam Piping - B2 | 5d | 2026-03-11 | 2026-03-17 | CX.B2.SP.1000 | 19d | 0d |  | PLMB |  | SS | PLMB-1 |  |  |
| CX.B2.SP.1020 |  | Flush Steam System Piping - Steam Piping - B2 | 5d | 2026-03-18 | 2026-03-24 | CX.B2.SP.1010, DDD2330, DDD2430, DDD2880 | 167d | 82d |  | PLMB |  | SS | PLMB-1 |  |  |
|  | 10 | **Hydronic Piping** |  | 2025-12-22 | 2026-03-03 |  |  |  |  |  |  |  |  |  |  |
| FRG.CX.B2.HYDR.1050 |  | Flush HVAC System Piping - Reheat Steam & Condensate - B2 - FRAGNET | 15d | 2025-12-22 | 2026-01-13 | FRG.P2.B2.M.5970.2100 | 24d | 0d | O | PLMB |  | SS | PLMB-1 |  | -5 |
| CX.B2.HYDR.1000 |  | Flush HVAC System Piping - Hydronic Piping - B2 | 15d | 2026-01-07 | 2026-01-27 | P2.B2.M.5970.1110, FRG.P2.B2.M.5970.1150, P2.B2.M.5985.1080 | 4d | 0d |  | PLMB |  | SS | PLMB-1 | 5 | -5 |
| CX.B2.HYDR.1020 |  | Startup Hot Water Pump Sets - Hydronic Piping - B2 | 5d | 2026-01-14 | 2026-01-20 | P2.B2.HE.5995.1100, FRG.CX.B2.HYDR.1050 | 24d | 0d |  | PLMB |  | SS | PLMB-1 |  | 0 |
| CX.B2.HYDR.1030 |  | Fill, Test, Balance HW S/R System - Hydronic Piping - B2 | 15d | 2026-01-21 | 2026-02-10 | CX.B2.HYDR.1020 | 24d | 2d |  | PLMB |  | SS | PLMB-1 |  | -5 |
| CX.B2.HYDR.1010 |  | Startup Cold Water Pumps - Hydronic Piping - B2 | 10d | 2026-01-28 | 2026-02-10 | CX.B2.HYDR.1000, P2.B2.HE.5995.1100 | 4d | 0d |  | PLMB |  | SS | PLMB-1 | 5 | 0 |
| CX.B2.HYDR.1040 |  | Fill, Test, Balance CHW S/R System - Hydronic Piping - B2 | 15d | 2026-02-11 | 2026-03-03 | CX.B2.HYDR.1010 | 4d | 0d |  | PLMB |  | SS | PLMB-1 | 5 | -5 |

| ID | WBS | Activity | Duration | Start | Finish | Predecessors | Total float | Free float | Resp / SRLM | RESP / Trade |
| --- | --- | --- | --- | --- | --- | --- | --- | --- | --- | --- |
|  | 5 | **AHU B2-3, B2-4, (Electrical Room Conditioning)** |  | 2026-04-22 | 2026-09-22 |  |  |  |  |  |
| CX.B2.AHU.1000 |  | Startup - AHU B2-3, B2-4 - B2 | 5d | 2026-04-22 | 2026-04-28 | P2.B2.EMS.B.1240, P2.B2.M.5970.1320, P2.B2.M.5970.1330, BP1.233.3.400, P2.B2.M.5970.1340, P2.B2.M.5970.1360, P2.B2.M.5970.1350, P2.B2.SC.1290, P2.UTT.140, P2.B2.WC.1280, P2.B2.WC.1640, P2.B3.1350, P2.B2.LC.1550, CX.B2.SWGR.1010, CX.B2.MVEE.1010, DDD3130, FRG.P2.B2.M.5970.2090, P2.B2.N.1570 | 129d | 0d | MECH | MECH-2 |
| CX.B2.AHU.1010 |  | P2P/BAS - AHU B2-3, B2-4 - B2 | 20d | 2026-05-06 | 2026-06-03 | BP1.250.3.100, CX.B2.AHU.1000, CX.B2.CHS.1010, CX.B2.GHWS.1010 | 124d | 0d | BAS | BAS-1 |
| CX.B2.AHU.1020 |  | Test and Balance - AHU B2-3, B2-4 - B2 | 10d | 2026-06-04 | 2026-06-17 | CX.B2.AHU.1010 | 124d | 52d | TAB | TAB-1 |
| CX.B2.AHU.1030 |  | PFPT - AHU B2-3, B2-4 - B2 | 10d | 2026-09-01 | 2026-09-15 | CX.B2.GHWS.1040 FF, P2.B2.IT.2806.250, CX.B2.AHU.1020, CX.B2.CHS.1040, CX.B2.CSH.1030, P2.L1.LC.1270, P2.B2.IT.2903.260 | 72d | 0d | BAS | BAS-1 |
| CX.B2.AHU.1040 |  | FPT - AHU B2-3, B2-4 - B2 | 5d | 2026-09-16 | 2026-09-22 | P2.UTT.370, P2.SUM.225, CX.B2.AHU.1030, CX.B2.CSH.1040 FF | 117d |  | BAS | BAS-1 |
|  | 6 | **AHU B2-1 , B2-2 , 1-1 (Cath Lab Animal & Human)** |  | 2026-04-22 | 2026-09-22 |  |  |  |  |  |
| CX.B2.AHU.2000 |  | Startup - AHU B2-1, B2-2, 1-1 - B2 | 5d | 2026-04-22 | 2026-04-28 | P2.B2.M.5970.1320, BP1.233.3.400, P2.B2.M.5970.1360, P2.B2.SC.1290, P2.UTT.140, P2.B2.WC.1280, P2.B2.WC.1640, P2.B2.LC.1550, CX.B2.SWGR.1010, CX.B2.MVEE.1010, P2.B2.N.1570 | 129d | 0d | MECH | MECH-2 |
| CX.B2.AHU.2010 |  | P2P/BAS - AHU B2-1, B2-2, 1-1 - B2 | 20d | 2026-05-06 | 2026-06-03 | BP1.250.3.100, CX.B2.AHU.2000, CX.B2.CHS.1010, CX.B2.GHWS.1010 | 124d | 0d | BAS | BAS-1 |
| CX.B2.AHU.2020 |  | Test and Balance - AHU B2-1, B2-2, 1-1 - B2 | 10d | 2026-06-04 | 2026-06-17 | CX.B2.AHU.2010 | 124d | 0d | TAB | TAB-1 |
| CX.B2.AHU.2030 |  | PFPT - AHU B2-1, B2-2, 1-1 - B2 | 10d | 2026-09-01 | 2026-09-15 | CX.B2.GHWS.1040 FF, P2.B2.IT.2806.250, CX.B2.AHU.2020, CX.B2.CHS.1040, CX.B2.CSH.1030, P2.L1.LC.1270, P2.B2.IT.2903.260 | 72d | 0d | BAS | BAS-1 |
| CX.B2.AHU.2040 |  | FPT - AHU B2-1, B2-2, 1-1 - B2 | 5d | 2026-09-16 | 2026-09-22 | P2.UTT.370, P2.SUM.225, CX.B2.AHU.2030, CX.B2.CSH.1040 FF | 112d | 0d | BAS | BAS-1 |
|  | 7 | **Sterile Processing Lab Testing (Fume Hoods, Dedicated Exhausts, Medical Equip)** |  | 2026-05-22 | 2026-09-08 |  |  |  |  |  |
| CX.B2.SPLT.1000 |  | Startup - Sterile Processing Lab Testing - B2 | 5d | 2026-05-22 | 2026-05-29 | P2.B2.EMS.B.1240, P2.UTT.140, CX.B2.SWGR.1010, CX.B2.MVEE.1010, P2.L5.LC.1500, CX.PH.EHF.1130 | 132d | 0d | MECH | MECH-2 |
| CX.B2.SPLT.1010 |  | P2P/BAS - Sterile Processing Lab Testing - B2 | 5d | 2026-06-01 | 2026-06-05 | BP1.250.3.100, CX.B2.SPLT.1000 | 132d | 0d | BAS | BAS-1 |
| CX.B2.SPLT.1020 |  | Test and Balance - Sterile Processing Lab Testing - B2 | 5d | 2026-06-08 | 2026-06-12 | CX.B2.SPLT.1010 | 132d | 40d | TAB | TAB-1 |
| CX.B2.SPLT.1030 |  | PFPT mechanical/electrical systems - Sterile Processing Lab Testing - B2 | 5d | 2026-08-11 | 2026-08-17 | CX.B2.SPLT.1020, CX.B2.CWS.1030 | 92d | 0d | BAS | BAS-1 |
| CX.B2.SPLT.1040 |  | Fume Hood Balancing and testing - Sterile Processing Lab Testing - B2 | 5d | 2026-08-18 | 2026-08-24 | CX.B2.SPLT.1030, CX.PH.EHF.1140 | 127d | 0d | TAB | TAB-1 |
| CX.B2.SPLT.1050 |  | Fume Hood certification - Sterile Processing Lab Testing - B2 | 5d | 2026-08-25 | 2026-08-31 | CX.B2.SPLT.1040 | 127d | 0d | BAS | BAS-1 |
| CX.B2.SPLT.1060 |  | NIH Acceptance test - Sterile Processing Lab Testing - B2 | 5d | 2026-09-01 | 2026-09-08 | CX.B2.SPLT.1050, CX.B2.CWS.1040 | 127d |  | NIH | NIH |
|  | 4 | **Cath-MRI Suite (Fume Hoods, Dedicated Exhausts, Medical Equip)** |  | 2026-05-22 | 2026-09-29 |  |  |  |  |  |
| CX.B2.MRIS.1000 |  | Startup - MRI Suite Testing - B2 | 5d | 2026-05-22 | 2026-05-29 | CX.PH.EHF.1130, P2.B2.HE.5920.1100, P2.B2.HE.5995.1100, P2.B2.LC.1430, OFOI.EQUIP.B2.1020, OFOI.EQUIP.B2.1030 | 167d | 0d | MECH | MECH-2 |
| CX.B2.MRIS.1010 |  | P2P/BAS - MRI Suite Testing - B2 | 5d | 2026-06-01 | 2026-06-05 | CX.B2.MRIS.1000 | 167d | 3d | BAS | BAS-1 |
| CX.B2.MRIS.1020 |  | Test and Balance - MRI Suite Testing - B2 | 5d | 2026-06-11 | 2026-06-17 | CX.B2.AHU.2020 FF, CX.L1.AHU.1020 FF, CX.B2.MRIS.1010 | 164d | 37d | TAB | TAB-1 |
| CX.B2.MRIS.1030 |  | PFPT mechanical/electrical systems - MRI Suite Testing - B2 | 5d | 2026-08-11 | 2026-08-17 | CX.B2.CWS.1030, CX.B2.MRIS.1020 | 127d | 0d | BAS | BAS-1 |
| CX.B2.MRIS.1040 |  | Fume Hood Balancing and testing - MRI Suite Testing - B2 | 5d | 2026-08-18 | 2026-08-24 | CX.PH.EHF.1140, P2.B2.F.LC.2440, CX.B2.MRIS.1030 | 127d | 0d | BAS | BAS-1 |
| CX.B2.MRIS.1050 |  | Fume Hood certification - MRI Suite Testing - B2 | 5d | 2026-08-25 | 2026-08-31 | CX.B2.MRIS.1040 | 127d | 15d | BAS | BAS-1 |
| CX.B2.MRIS.1060 |  | NIH Acceptance test - MRI Suite Testing - B2 | 5d | 2026-09-23 | 2026-09-29 | CX.B2.AHU.2040, CX.B2.CWS.1040, CX.L1.AHU.1040, CX.B2.MRIS.1050 | 112d |  | NIH | NIH |

| ID | WBS | Activity | Duration | Start | Finish | Predecessors | Total float | Free float | Resp / SRLM | RESP / Trade | **NEAR CRITICAL** |
| --- | --- | --- | --- | --- | --- | --- | --- | --- | --- | --- | --- |
|  | 9 | **General Supply & Exhaust Terminal Unit Testing** |  | 2026-06-04 | 2026-10-30 |  |  |  |  |  |  |
| CX.B2.GSE.1000 |  | Startup/Checkout Terminal Units - General Supply & Exhaust Testing - B2 | 20d | 2026-06-04 | 2026-07-01 | P2.B2.EMS.B.1240, P2.B2.M.5970.1340, P2.UTT.140, P2.B2.LC.1430, P2.B2.LC.1240, CX.B2.SWGR.1010, CX.B2.MVEE.1010, P2.B2.S.1270, P2.B2.S.1500, P2.B2.N.1270, P2.B2.N.1500, CX.L3.AHU.1010, CX.L2.AHU.1010, CX.L4.AHU.2010, CX.L4.AHU.1010, CX.L5.AHU.1010, CX.PH.EHF.1010 | 14d | 10d | BAS | BAS-1 |  |
| CX.B2.GSE.1010 |  | Start Up and set Supply/Exhaust Valves - General Supply & Exhaust Testing - B2 | 30d | 2026-06-04 | 2026-07-16 | P2.B2.EMS.B.1240, P2.B2.M.5970.1330, P2.B2.M.5970.1340, P2.B2.M.5970.1350, P2.UTT.140, P2.B2.LC.1430, P2.B2.LC.1420, P2.B2.LC.1550, CX.B2.MVEE.1010, CX.B2.SWGR.1010, P2.B2.S.1360, P2.B2.S.1500, P2.B2.N.1360, P2.B2.N.1500, CX.L3.AHU.1010, CX.L2.AHU.1010, CX.L4.AHU.2010, CX.L4.AHU.1010, CX.L5.AHU.1010, CX.PH.EHF.1010 | 4d | 0d | MECH | MECH-2 | 2 |
| CX.B2.GSE.1020 |  | P2P/BAS Terminal Units - General Supply & Exhaust Testing - B2 | 15d | 2026-07-17 | 2026-08-06 | BP1.250.3.100, CX.B2.GSE.1010, CX.B2.GSE.1000 | 4d | 0d | BAS | BAS-1 | 2 |
| CX.B2.GSE.1030 |  | PFPT Terminal Units - General Supply & Exhaust Testing - B2 | 20d | 2026-08-07 | 2026-09-03 | P2.B2.IT.2806.250, CX.B2.PCW.1030 FF, CX.B2.RWS.1030 FF, CX.B2.GSE.1020, P2.B2.IT.2903.260 | 4d | 0d | BAS | BAS-1 | 2 |
| CX.B2.GSE.1040 |  | Preliminary TAB Floor - General Supply & Exhaust Testing - B2 | 30d | 2026-09-04 | 2026-10-16 | P2.B2.BR.1250 FF+10d, P2.B2.BR.2160 FF+10d, P2.B2.F.LC.2260 FF+10d, P2.B2.F.LC.1260 FF+10d, P2.B2.LC.1410 FF+10d, P2.B2.ES.B.1200 FF+10d, P2.B2.EMVS.B.1200 FF+10d, P2.B2.EMVS.A.1200 FF+10d, CX.L5.AHU.1020 FF, P2.B2.EE.A.1200 FF+10d, CX.L4.AHU.2020 FF, P2.B2.EMS.A.1190 FF+10d, CX.L4.AHU.1020 FF, CX.L3.AHU.1020 FF, CX.L2.AHU.1020 FF, P2.B2.ES.A.1210 FF+10d, P2.B2.IT.2806.230 FF+10d, CX.B2.GSE.1030, P2.B2.HE.5920.1090 FF+10d, P2.B2.HE.5995.1090 FF+10d, P2.B2.EMS.B.1200 FF+10d, P2.B2.EE.B.1200 FF+10d, P2.B2.IT.2903.240 FF+10d | 4d | 0d | TAB | TAB-1 | 2 |
| CX.B2.GSE.1050 |  | FPT Terminal Units - General Supply & Exhaust Testing - B2 | 10d | 2026-10-19 | 2026-10-30 | P2.UTT.370, P2.SUM.225, CX.B2.PCW.1040 FF, CX.B2.RWS.1040 FF, CX.B2.GSE.1040, CX.L3.AHU.1040, CX.L2.AHU.1040, CX.L5.AHU.1040, CX.PH.EHF.1040 | 89d |  | BAS | BAS-1 |  |
|  | 13 | **Reheat Water systems** |  | 2026-04-21 | 2026-08-10 |  |  |  |  |  |  |
| CX.B2.RWS.1000 |  | Startup - Reheat Water System - B2 | 20d | 2026-04-21 | 2026-05-18 | P2.B2.M.5970.1320, P2.B2.WC.1560, P2.B2.LC.1430, P2.B2.LC.1240, CX.B2.MVEE.1010, P2.B2.S.1270, CX.B2.HYDR.1030, CX.B2.SWGR.1010, P2.B2.S.1500, P2.B2.N.1270, P2.B2.N.1500, DDD2430, DDD2530, FRG.P2.B2.M.5970.1020, FRG.P2.B2.M.5970.1080, FRG.P2.B2.M.5970.1050 | 40d | 0d | MECH | MECH-2 |  |
| CX.B2.RWS.1010 |  | P2P/BAS - Reheat Water System - B2 | 20d | 2026-05-19 | 2026-06-16 | BP1.250.3.100, CX.B2.SP.1010, CX.B2.RWS.1000 | 40d | 0d | BAS | BAS-1 |  |
| CX.B2.RWS.1020 |  | Test and Balance - Reheat Water System - B2 | 10d | 2026-06-17 | 2026-06-30 | CX.B2.RWS.1010 | 40d | 0d | TAB | TAB-1 |  |
| CX.B2.RWS.1030 |  | PFPT - Reheat Water System - B2 | 10d | 2026-07-01 | 2026-07-15 | CX.B2.RWS.1020 | 40d | 13d | BAS | BAS-1 |  |
| CX.B2.RWS.1040 |  | FPT - Reheat Water System - B2 | 5d | 2026-08-04 | 2026-08-10 | P2.UTT.370, P2.SUM.225, CX.B2.SS.1030 FF, CX.B2.RWS.1030 | 117d | 42d | BAS | BAS-1 |  |
|  | 14 | **Steam Station** |  | 2026-05-15 | 2026-08-10 |  |  |  |  |  |  |
| CX.B2.SS.1000 |  | Startup - Steam Station - B2 | 20d | 2026-05-15 | 2026-06-12 | P2.B2.EMS.B.1240, P2.B2.M.5970.1320, P2.B2.M.5970.1370, P2.B2.WC.1520, P2.B2.WC.1560, P2.B3.1350, P2.B2.LC.1430, P2.B2.LC.1240, P2.B2.S.1270, P2.B2.S.1500, P2.B2.N.1270, P2.B2.N.1500, P2.B2.M.5970.1120 | 65d | 0d | MECH | MECH-2 |  |
| CX.B2.SS.1010 |  | P2P/BAS - Steam Station - B2 | 15d | 2026-06-15 | 2026-07-06 | BP1.250.3.100, CX.B2.SS.1000 | 85d | 0d | BAS | BAS-1 |  |
| CX.B2.SS.1040 |  | Test and Balance - Steam Station - B2 | 10d | 2026-07-07 | 2026-07-20 | CX.B2.SS.1010 | 85d | 0d | TAB | TAB-1 |  |
| CX.B2.SS.1020 |  | PFPT - Steam Station - B2 | 10d | 2026-07-21 | 2026-08-03 | CX.B2.SP.1020, CX.B2.SS.1040, CX.B2.SS.1010 | 85d | 0d | BAS | BAS-1 |  |
| CX.B2.SS.1030 |  | FPT - Steam Station - B2 | 5d | 2026-08-04 | 2026-08-10 | P2.UTT.370, P2.SUM.225, CX.B2.SS.1020 | 85d | 0d | BAS | BAS-1 |  |
|  | 15 | **Clean Steam Humidification systems** |  | 2026-06-15 | 2026-09-08 |  |  |  |  |  |  |
| CX.B2.CSH.1000 |  | Startup - Clean Steam Humidification System - B2 | 20d | 2026-06-15 | 2026-07-13 | P2.B2.EMS.B.1240, P2.B2.M.5970.1320, P2.B2.WC.1560, P2.B3.1350, P2.B2.LC.1430, P2.B2.LC.1240, CX.B2.MVEE.1010, P2.B2.S.1270, CX.B2.SP.1010, CX.B2.SWGR.1010, CX.B2.SS.1000, P2.B2.S.1500, P2.B2.N.1270, P2.B2.N.1500, DDD2880, P2.B2.M.5970.2180, P2.B2.M.5970.2200 | 65d | 0d | MECH | MECH-2 |  |
| CX.B2.CSH.1010 |  | P2P/BAS - Clean Steam Humidification System - B2 | 15d | 2026-07-14 | 2026-08-03 | BP1.250.3.100, CX.B2.CSH.1000 | 65d | 0d | BAS | BAS-1 |  |
| CX.B2.CSH.1020 |  | Test and Balance - Clean Steam Humidification System - B2 | 10d | 2026-08-04 | 2026-08-17 | CX.B2.CSH.1010 | 65d | 0d | TAB | TAB-1 |  |
| CX.B2.CSH.1030 |  | PFPT - Clean Steam Humidification System - B2 | 10d | 2026-08-18 | 2026-08-31 | CX.B2.CSH.1020 | 65d | 0d | BAS | BAS-1 |  |
| CX.B2.CSH.1040 |  | FPT - Clean Steam Humidification System - B2 | 5d | 2026-09-01 | 2026-09-08 | P2.UTT.370, P2.SUM.225, CX.B2.SS.1030 FF, CX.B2.CSH.1030 | 97d | 5d | BAS | BAS-1 |  |

| ID | WBS | Activity | Duration | Start | Finish | Predecessors | Total float | Free float | Resp / SRLM | RESP / Trade |
| --- | --- | --- | --- | --- | --- | --- | --- | --- | --- | --- |
|  | 16 | **Water Heaters systems** |  | 2026-05-15 | 2026-08-17 |  |  |  |  |  |
| CX.B2.WHS.1000 |  | Startup - Water Heater System - B2 | 20d | 2026-05-15 | 2026-06-12 | P2.B2.M.5970.1320, P2.B2.M.5970.1330, P2.B2.M.5970.1370, P2.B2.LC.1430, P2.B2.LC.1240, CX.B2.MVEE.1010, P2.B2.S.1270, CX.B2.SP.1010, CX.B2.SWGR.1010, P2.B2.S.1500, P2.B2.N.1270, P2.B2.N.1500 | 67d | 0d | MECH | MECH-2 |
| CX.B2.WHS.1010 |  | P2P/BAS - Water Heater System - B2 | 20d | 2026-06-15 | 2026-07-13 | BP1.250.3.100, CX.B2.WHS.1000 | 97d | 0d | BAS | BAS-1 |
| CX.B2.WHS.1020 |  | Test and Balance - Water Heater System - B2 | 10d | 2026-07-14 | 2026-07-27 | CX.B2.WHS.1010 | 97d | 0d | TAB | TAB-1 |
| CX.B2.WHS.1030 |  | PFPT - Water Heater System - B2 | 10d | 2026-07-28 | 2026-08-10 | CX.B2.WHS.1020 | 97d | 0d | BAS | BAS-1 |
| CX.B2.WHS.1040 |  | FPT - Water Heater System - B2 | 5d | 2026-08-11 | 2026-08-17 | P2.UTT.370, P2.SUM.225, CX.B2.SS.1030 FF, CX.B2.WHS.1030 | 142d |  | BAS | BAS-1 |
|  | 17 | **Misc Plumbing Equipment** |  | 2026-05-15 | 2026-08-31 |  |  |  |  |  |
| CX.B2.MPE.1000 |  | Fill/Flush/Test Domestic Water - Misc. Plumbing Equipment - B2 | 20d | 2026-05-15 | 2026-06-12 | P2.B2.M.5970.1320, P2.B2.M.5970.1330, P2.B2.M.5970.1370, P2.B2.LC.1430, P2.B2.LC.1240, CX.B2.MVEE.1010, P2.B2.S.1270, CX.B2.HYDR.1040, CX.B2.SWGR.1010, P2.B2.S.1500, P2.B2.N.1270, P2.B2.N.1500 | 67d | 0d | MECH | MECH-2 |
| CX.B2.MPE.1010 |  | Startup - Misc. Plumbing Equipment - B2 | 20d | 2026-06-15 | 2026-07-13 | BP1.226.2.190, BP1.226.2.160, P2.PH.S.1600, CX.B2.WHS.1000, CX.B2.MPE.1000 | 67d | 0d | MECH | MECH-2 |
| CX.B2.MPE.1020 |  | P2P/BAS - Misc. Plumbing Equipment - B2 | 10d | 2026-07-14 | 2026-07-27 | BP1.250.3.100, CX.B2.MPE.1010 | 87d | 0d | BAS | BAS-1 |
| CX.B2.MPE.1030 |  | Test and Balance - Misc. Plumbing Equipment - B2 | 10d | 2026-07-28 | 2026-08-10 | CX.B2.MPE.1020 | 87d | 0d | TAB | TAB-1 |
| CX.B2.MPE.1040 |  | PFPT - Misc. Plumbing Equipment - B2 | 10d | 2026-08-11 | 2026-08-24 | CX.B2.MPE.1030 | 87d | 0d | BAS | BAS-1 |
| CX.B2.MPE.1050 |  | FPT - Misc. Plumbing Equipment - B2 | 5d | 2026-08-25 | 2026-08-31 | P2.UTT.370, P2.SUM.225, CX.B2.MPE.1040 | 132d |  | BAS | BAS-1 |
|  | 18 | **Med Gas Equipment** |  | 2026-04-15 | 2026-10-12 |  |  |  |  |  |
| CX.B2.MGE.1000 |  | Startup - Med Gas Equipment - B2 | 20d | 2026-04-15 | 2026-05-12 | P2.B2.M.5970.1350, P2.B2.LC.1430, P2.B2.LC.1240, P2.B2.S.1270, CX.B2.SWGR.1010, P2.B2.S.1500, P2.B2.N.1270, P2.B2.N.1500, DDD2430, DDD3230, DDD2730 | 119d | 0d | MECH | MECH-2 |
| CX.B2.MGE.1010 |  | P2P/BAS - Med Gas Equipment - B2 | 20d | 2026-05-13 | 2026-06-10 | BP1.250.3.100, CX.B2.MGE.1000 | 119d | 0d | BAS | BAS-1 |
| CX.B2.MGE.1020 |  | Test and Balance - Med Gas Equipment - B2 | 10d | 2026-06-11 | 2026-06-24 | CX.B2.MGE.1010 | 119d | 61d | TAB | TAB-1 |
| CX.B2.MGE.1030 |  | PFPT - Med Gas Equipment - B2 | 10d | 2026-09-22 | 2026-10-05 | P2.L5.F.LC.2270, P2.L3.F.LC.2270, P2.L3.F.LC.3270, P2.L7.F.LC.3270, P2.L7.F.LC.4270, P2.L5.F.LC.3270, P2.B2.F.LC.1270, P2.B2.F.LC.2270, P2.L9.F.1170, CX.B2.MGE.1020, P2.L1.F.LC.1270, P2.L1.F.LC.2270, P2.L7.F.LC.1270, P2.L7.F.LC.2270, P2.L5.F.LC.1270, P2.L3.F.LC.1270, P2.L1.F.LC.3270 | 58d | 0d | BAS | BAS-1 |
| CX.B2.MGE.1040 |  | FPT - Med Gas Equipment - B2 | 5d | 2026-10-06 | 2026-10-12 | P2.UTT.370, P2.SUM.225, CX.B2.MGE.1030 | 103d |  | BAS | BAS-1 |
|  | 19 | **Process Chilled Water systems** |  | 2026-05-15 | 2026-08-17 |  |  |  |  |  |
| CX.B2.PCW.1000 |  | Startup - Process Chilled Water System - B2 | 20d | 2026-05-15 | 2026-06-12 | P2.B2.M.5970.1330, P2.B2.M.5970.1370, P2.B2.LC.1430, P2.B2.LC.1240, CX.B2.MVEE.1010, P2.B2.S.1270, CX.B2.HYDR.1040, CX.B2.SWGR.1010, P2.B2.S.1500, P2.B2.N.1270, P2.B2.N.1500, DDD2130, DDD2680, DDD2530, DDD2480, P2.B2.M.5970.1360, FRG.P2.B2.M.2801.1190, FRG.P2.B2.M.5970.1080, P2.L8.S.1340, P2.PH.N.1330, P2.L2.INT.N.1290, P2.L4.S.1330, P2.L4.INT.S.1290, P2.L5.S.1330, P2.L5.N.1330, P2.L6.N.1330, P2.L6.INT.N.1290, P2.L8.N.1330, P2.PH.S.1330, P2.B2.M.5970.1320, P2.L8.N.1340, P2.L1.LC.1330, P2.L3.S.1330, P2.L3.N.1330, P2.L4.N.1330, P2.L5.LC.1330, P2.L6.S.1330, P2.L6.INT.S.1290, P2.L7.S.1330, P2.L7.N.1330, P2.L7.LC.1330, P2.L8.INT.S.1290, P2.L8.INT.N.1290, P2.L1.N.1330, P2.L1.EMT.1110, P2.L2.S.1330, P2.L2.N.1230, P2.L2.INT.S.1290, P2.L3.LC.1230, P2.L4.INT.N.1290, P2.L8.S.1330, P2.B2.S.1330, P2.B2.N.1330, P2.B2.LC.1230 | 22d | 0d | MECH | MECH-2 |
| CX.B2.PCW.1010 |  | P2P/BAS - Process Chilled Water System - B2 | 20d | 2026-06-15 | 2026-07-13 | BP1.250.3.100, CX.B2.CHS.1010, CX.B2.PCW.1000 | 22d | 0d | BAS | BAS-1 |
| CX.B2.PCW.1020 |  | Test and Balance - Process Chilled Water System - B2 | 10d | 2026-07-14 | 2026-07-27 | CX.B2.PCW.1010 | 22d | 0d | TAB | TAB-1 |
| CX.B2.PCW.1030 |  | PFPT - Process Chilled Water System - B2 | 10d | 2026-07-28 | 2026-08-10 | CX.B2.CHS.1040, CX.B2.PCW.1020 | 22d | 0d | BAS | BAS-1 |
| CX.B2.PCW.1040 |  | FPT - Process Chilled Water System - B2 | 5d | 2026-08-11 | 2026-08-17 | P2.UTT.370, P2.SUM.225, CX.B2.PCW.1030 | 129d | 40d | BAS | BAS-1 |

| ID | WBS | Activity | Duration | Start | Finish | Predecessors | Total float | Free float | Resp / SRLM | RESP / Trade | RESP UPD |
| --- | --- | --- | --- | --- | --- | --- | --- | --- | --- | --- | --- |
|  | 20 | **MRI Cooling Water systems** |  | 2026-05-15 | 2026-08-17 |  |  |  |  |  |  |
| CX.B2.CWS.1000 |  | Startup - MRI Cooling Water System - B2 | 20d | 2026-05-15 | 2026-06-12 | P2.B2.M.5970.1330, P2.B2.M.5970.1370, P2.B2.LC.1430, P2.B2.LC.1240, P2.B2.S.1270, CX.B2.HYDR.1040, CX.B2.SWGR.1010, P2.B2.S.1500, P2.B2.N.1270, P2.B2.N.1500, P2.B2.M.5970.1360 | 92d | 0d | MECH | MECH-2 |  |
| CX.B2.CWS.1010 |  | P2P/BAS - MRI Cooling Water System - B2 | 20d | 2026-06-15 | 2026-07-13 | BP1.250.3.100, CX.B2.CHS.1010, CX.B2.CWS.1000 | 92d | 0d | BAS | BAS-1 |  |
| CX.B2.CWS.1020 |  | Test and Balance - MRI Cooling Water System - B2 | 10d | 2026-07-14 | 2026-07-27 | CX.B2.CWS.1010 | 92d | 0d | TAB | TAB-1 |  |
| CX.B2.CWS.1030 |  | PFPT - MRI Cooling Water System - B2 | 10d | 2026-07-28 | 2026-08-10 | CX.B2.CHS.1040, CX.B2.CWS.1020 | 92d | 0d | BAS | BAS-1 |  |
| CX.B2.CWS.1040 |  | FPT - MRI Cooling Water System - B2 | 5d | 2026-08-11 | 2026-08-17 | P2.UTT.370, P2.SUM.225, CX.B2.CWS.1030 | 137d | 5d | BAS | BAS-1 |  |
|  | 21 | **GMP Glycol Water systems** |  | 2026-05-15 | 2026-08-17 |  |  |  |  |  |  |
| CX.B2.GMPGW.1000 |  | Startup - GMP Glycol Water System - B2 | 20d | 2026-05-15 | 2026-06-12 | P2.B2.M.5970.1370, P2.B2.LC.1430, P2.B2.LC.1240, P2.B2.S.1270, CX.B2.HYDR.1030, CX.B2.SWGR.1010, P2.B2.S.1500, P2.B2.N.1270, P2.B2.N.1500, DDD2430, DDD2780, DDD2330, DDD2680, P2.B2.M.5970.1360, FRG.P2.B2.M.5970.1080 | 42d | 0d | MECH | MECH-2 | SS |
| CX.B2.GMPGW.1010 |  | P2P/BAS - GMP Glycol Water System - B2 | 20d | 2026-06-15 | 2026-07-13 | BP1.250.3.100, CX.B2.SP.1010, CX.B2.GMPGW.1000 | 42d | 0d | BAS | BAS-1 |  |
| CX.B2.GMPGW.1020 |  | Test and Balance - GMP Glycol Water System - B2 | 10d | 2026-07-14 | 2026-07-27 | CX.B2.GMPGW.1010 | 97d | 0d | TAB | TAB-1 |  |
| CX.B2.GMPGW.1030 |  | PFPT - GMP Glycol Water System - B2 | 10d | 2026-07-28 | 2026-08-10 | CX.B2.GMPGW.1020 | 97d | 0d | BAS | BAS-1 |  |
| CX.B2.GMPGW.1040 |  | FPT - GMP Glycol Water System - B2 | 5d | 2026-08-11 | 2026-08-17 | P2.SUM.225, CX.B2.SS.1030 FF, CX.B2.GMPGW.1030 | 102d | 15d | BAS | BAS-1 |  |
|  | 22 | **GMP RH Water systems** |  | 2026-05-15 | 2026-08-17 |  |  |  |  |  |  |
| CX.B2.GMPRH.1000 |  | Startup - GMP RH Water System - B2 | 20d | 2026-05-15 | 2026-06-12 | P2.B2.M.5970.1370, P2.B2.WC.1560, P2.B2.LC.1430, P2.B2.LC.1240, P2.B2.S.1270, CX.B2.HYDR.1030, CX.B2.SWGR.1010, P2.B2.S.1500, P2.B2.N.1270, P2.B2.N.1500, DDD2430, DDD2880, P2.B2.M.5970.1360, FRG.P2.B2.M.2801.1180, FRG.P2.B2.M.5970.1080 | 92d | 0d | MECH | MECH-2 |  |
| CX.B2.GMPRH.1010 |  | P2P/BAS - GMP RH Water System - B2 | 20d | 2026-06-15 | 2026-07-13 | BP1.250.3.100, CX.B2.SP.1010, CX.B2.GMPRH.1000 | 92d | 0d | BAS | BAS-1 |  |
| CX.B2.GMPRH.1020 |  | Test and Balance - GMP RH Water System - B2 | 10d | 2026-07-14 | 2026-07-27 | CX.B2.GMPRH.1010 | 92d | 0d | TAB | TAB-1 |  |
| CX.B2.GMPRH.1030 |  | PFPT - GMP RH Water System - B2 | 10d | 2026-07-28 | 2026-08-10 | CX.B2.GMPRH.1020 | 92d | 0d | BAS | BAS-1 |  |
| CX.B2.GMPRH.1040 |  | FPT - GMP RH Water System - B2 | 5d | 2026-08-11 | 2026-08-17 | P2.SUM.225, CX.B2.SS.1030 FF, CX.B2.GMPRH.1030 | 142d | 40d | BAS | BAS-1 |  |
|  | 10 | **Level 1** |  | 2026-03-27 | 2027-02-04 |  |  |  |  |  |  |
|  | 1 | **480/120 Distribution Panels Dry XFMRs (5 Elec RMs)** |  | 2026-04-03 | 2026-05-29 |  |  |  |  |  |  |
| CX.L1.SWGR.1000 |  | Start Up - 480/120 Distribution Panels Bry XFMRs - L1 | 10d | 2026-04-03 | 2026-04-16 | P2.L1.S.1550, P2.L1.N.1550, CX.B2.SWGR.1010, P2.L1.LC.1550 | 145d | 0d | ELEC | ELEC-2 |  |
| CX.L1.SWGR.1010 |  | PFPT - 480/120 Distribution Panels Bry XFMRs - L1 | 20d | 2026-04-17 | 2026-05-14 | P2.1.HE.6940.1140, P2.1.HE.2950.1140, P2.1.HE.5959.1140, P2.1.HE.2803.1140, CX.L1.SWGR.1000, P2.L1.EMT.1230 | 145d | 0d | ELEC | ELEC-2 |  |
| CX.L1.SWGR.1020 |  | FPT - 480/120 Distribution Panels Bry XFMRs - L1 | 10d | 2026-05-15 | 2026-05-29 | P2.SUM.225, CX.L1.SWGR.1010 | 187d | 70d | ELEC | ELEC-2 |  |
|  | 2 | **AHU 1-1 (Cath Lab Animal & Human)** |  | 2026-04-22 | 2026-09-15 |  |  |  |  |  |  |
| CX.L1.AHU.1000 |  | Startup - AHU 1-1 - L1 | 5d | 2026-04-22 | 2026-04-28 | P2.L1.EMT.1240, P2.L1.EMT.1120, P2.B2.SC.1290, P2.B2.WC.1280, P2.B2.WC.1640, P2.1.HE.3911.1060, P2.B2.LC.1550, P2.1.HE.6940.1140, P2.1.HE.2950.1140, P2.1.HE.5959.1140, CX.B2.MVEE.1010, CX.B2.SWGR.1010, DDD2180, DDD2330, DDD2580, DDD2930, DDD3130, DDD3030, DDD3080, FRG.P2.L1.EMT.1000 | 139d | 0d | MECH | MECH-2 |  |
| CX.L1.AHU.1010 |  | P2P/BAS - AHU 1-1 - L1 | 20d | 2026-05-06 | 2026-06-03 | CX.B2.CHS.1010, CX.B2.GHWS.1010, CX.L1.AHU.1000 | 134d | 0d | BAS | BAS-1 |  |
| CX.L1.AHU.1020 |  | Test and Balance - AHU 1-1 - L1 | 5d | 2026-06-04 | 2026-06-10 | CX.L1.AHU.1010 | 134d | 5d | BAS | BAS-1 |  |
| CX.L1.AHU.1030 |  | PFPT - AHU 1-1 - L1 | 5d | 2026-09-01 | 2026-09-08 | CX.B2.GHWS.1040 FF, P2.1.HE.3911.1060, P2.1.HE.6940.1140, P2.1.HE.2950.1140, P2.1.HE.5959.1140, P2.1.HE.2803.1140, CX.B2.CHS.1040, CX.B2.CSH.1030, CX.L1.AHU.1020, P2.L1.EMT.1230 | 77d | 0d | BAS | BAS-1 |  |
| CX.L1.AHU.1040 |  | FPT - AHU 1-1 - L1 | 5d | 2026-09-09 | 2026-09-15 | P2.SUM.225, CX.B2.CSH.1040 FF, CX.L1.AHU.1030, CX.L1.SWGR.1020 | 117d | 0d | BAS | BAS-1 |  |

| ID | WBS | Activity | Duration | Start | Finish | Predecessors | Total float | Free float | Resp / SRLM | RESP / Trade | RESP UPD |
| --- | --- | --- | --- | --- | --- | --- | --- | --- | --- | --- | --- |
|  | 3 | **MRI Suite (Fume Hoods, Dedicated Exhausts, Medical Equip)** |  | 2026-03-27 | 2026-09-22 |  |  |  |  |  |  |
| CX.L1.MRIS.1000 |  | Startup - MRI Suite Testing - L1 | 5d | 2026-03-27 | 2026-04-02 | P2.L1.EMT.1240, P2.L1.EMT.1120, P2.L1.S.1500, P2.L1.N.1500, P2.1.HE.3911.1060, P2.1.HE.6940.1140, P2.1.HE.2950.1140, P2.1.HE.5959.1140, CX.B2.MVEE.1010, CX.B2.SWGR.1010, OFOI.EQUIP.L1.1030, OFOI.EQUIP.L1.1040, OFOI.EQUIP.L1.1050, OFOI.EQUIP.L1.1060, OFOI.EQUIP.L1.1000, OFOI.EQUIP.L1.1010, OFOI.EQUIP.L1.1020, P2.L1.LC.1500 | 177d | 0d | MECH | MECH-2 |  |
| CX.L1.MRIS.1010 |  | P2P/BAS - MRI Suite Testing - L1 | 5d | 2026-04-03 | 2026-04-09 | CX.L1.MRIS.1000 FF, CX.L1.MRIS.1000 | 177d | 0d | BAS | BAS-1 |  |
| CX.L1.MRIS.1020 |  | Test and Balance - MRI Suite Testing - L1 | 5d | 2026-04-10 | 2026-04-16 | CX.L1.MRIS.1010 FF, CX.L1.MRIS.1010 | 177d | 80d | TAB | TAB-1 |  |
| CX.L1.MRIS.1030 |  | PFPT mechanical/electrical systems - MRI Suite Testing - L1 | 5d | 2026-08-11 | 2026-08-17 | P2.1.HE.3911.1060, P2.1.HE.6940.1140, P2.1.HE.2950.1140, P2.1.HE.5959.1140, P2.1.HE.2803.1140, CX.L1.MRIS.1020 FF, CX.B2.CWS.1030, CX.L1.MRIS.1020 | 97d | 0d | BAS | BAS-1 |  |
| CX.L1.MRIS.1040 |  | Fume Hood Balancing and testing - MRI Suite Testing - L1 | 5d | 2026-08-18 | 2026-08-24 | CX.PH.EHF.1140, P2.L1.F.LC.2460, CX.L1.MRIS.1030 FF, CX.L1.MRIS.1030 | 127d | 0d | BAS | BAS-1 |  |
| CX.L1.MRIS.1050 |  | Fume Hood certification - MRI Suite Testing - L1 | 5d | 2026-08-25 | 2026-08-31 | CX.L1.MRIS.1040 | 127d | 10d | BAS | BAS-1 |  |
| CX.L1.MRIS.1060 |  | NIH Acceptance test - MRI Suite Testing - L1 | 5d | 2026-09-16 | 2026-09-22 | CX.B2.CWS.1040, CX.L1.MRIS.1050, CX.L1.AHU.1040 | 117d |  | NIH | NIH |  |
|  | 4 | **CT Suite ( Medical Equip & Systems)** |  | 2026-03-27 | 2026-08-31 |  |  |  |  |  |  |
| CX.L1.CTS.1000 |  | Startup - CT Suite Testing - L1 | 5d | 2026-03-27 | 2026-04-02 | P2.L1.EMT.1240, P2.L1.EMT.1120, P2.L1.S.1500, P2.L1.N.1500, P2.1.HE.3911.1060, P2.1.HE.6940.1140, P2.1.HE.2950.1140, P2.1.HE.5959.1140, CX.B2.MVEE.1010, CX.B2.SWGR.1010, OFOI.EQUIP.L1.1070, OFOI.EQUIP.L1.1080, OFOI.EQUIP.L1.1090, OFOI.EQUIP.L1.1100, P2.L1.LC.1500, DDD2530 | 172d | 0d | MECH | MECH-2 |  |
| CX.L1.CTS.1010 |  | P2P/BAS - CT Suite Testing - L1 | 5d | 2026-04-03 | 2026-04-09 | CX.L1.CTS.1000 | 172d | 0d | BAS | BAS-1 |  |
| CX.L1.CTS.1020 |  | Test and Balance - CT Suite Testing - L1 | 5d | 2026-04-10 | 2026-04-16 | CX.L1.CTS.1010 | 172d | 80d | BAS | BAS-1 |  |
| CX.L1.CTS.1030 |  | PFPT mechanical/electrical systems - CT Suite Testing - L1 | 5d | 2026-08-11 | 2026-08-17 | P2.1.HE.3911.1060, P2.1.HE.6940.1140, P2.1.HE.2950.1140, P2.1.HE.5959.1140, P2.1.HE.2803.1140, CX.B2.CWS.1030, CX.L1.CTS.1020 | 92d | 0d | BAS | BAS-1 |  |
| CX.L1.CTS.1040 |  | Room Balancing - CT Suite Testing - L1 | 5d | 2026-08-18 | 2026-08-24 | CX.L1.CTS.1030 | 152d | 0d | BAS | BAS-1 |  |
| CX.L1.CTS.1050 |  | NIH Acceptance test - CT Suite Testing - L1 | 5d | 2026-08-25 | 2026-08-31 | CX.B2.CWS.1040, CX.L1.CTS.1040 | 152d |  | NIH | NIH |  |
|  | 5 | **General Supply & Exhaust Terminal Unit Testing** |  | 2026-06-04 | 2027-02-04 |  |  |  |  |  |  |
| CX.L1.GSE.1000 |  | Startup/Checkout Terminal Units - General Supply & Exhaust Testing - L1 | 20d | 2026-06-04 | 2026-07-01 | P2.L1.EMT.1240, P2.L1.EMT.1120, P2.L1.S.1500, P2.L1.S.1550, P2.L1.N.1550, P2.L1.N.1500, P2.1.HE.3911.1060, P2.1.HE.6940.1140, P2.1.HE.2950.1140, P2.1.HE.5959.1140, CX.B2.MVEE.1010, CX.B2.SWGR.1010, CX.L3.AHU.1010, P2.L1.LC.1550, CX.L2.AHU.1010, P2.L1.LC.1500, CX.L4.AHU.2010, CX.L4.AHU.1010, CX.L5.AHU.1010, CX.PH.EHF.1010, RFP.014.1040, DDD2780 | 64d | 40d | BAS | BAS-1 |  |
| CX.L1.GSE.1010 |  | Start Up and set Supply/Exhaust Valves - General Supply & Exhaust Testing - L1 | 35d | 2026-07-10 | 2026-08-27 | P2.L1.S.1550, P2.L1.N.1550, CX.B2.MVEE.1010, CX.B2.SWGR.1010, CX.L3.AHU.1010, P2.L1.LC.1550, CX.L2.GSE.1010, CX.L2.AHU.1010, CX.L4.AHU.2010, CX.L4.AHU.1010, CX.L5.AHU.1010, CX.PH.EHF.1010 | 24d | 0d | MECH | MECH-2 |  |
| CX.L1.GSE.1020 |  | P2P/BAS Terminal Units - General Supply & Exhaust Testing - L1 | 20d | 2026-08-28 | 2026-09-25 | CX.L1.GSE.1000, CX.L1.GSE.1010 | 24d | 0d | BAS | BAS-1 |  |
| CX.L1.GSE.1030 |  | PFPT Terminal Units - General Supply & Exhaust Testing - L1 | 20d | 2026-09-28 | 2026-10-23 | P2.1.HE.3911.1060, P2.1.HE.6940.1140, P2.1.HE.2950.1140, P2.1.HE.5959.1140, P2.1.HE.2803.1140, CX.B2.PCW.1030 FF, CX.B2.RWS.1030 FF, CX.L1.GSE.1020, P2.L1.EMT.1230 | 24d | 0d | BAS | BAS-1 |  |
| CX.L1.GSE.1040 |  | Preliminary TAB Floor - General Supply & Exhaust Testing - L1 | 50d | 2026-10-26 | 2027-01-07 | P2.L1.S.1420 FF+15d, P2.L1.BR.4160 FF+15d, P2.L1.BR.3160 FF+15d, P2.L1.BR.2160 FF+15d, P2.L1.BR.1160 FF+15d, P2.L1.F.CS.2140 FF+15d, P2.L1.F.CS.1140 FF+15d, P2.1.HE.2803.1130 FF+15d, P2.1.HE.2950.1130 FF+15d, P2.1.HE.5959.1130 FF+15d, P2.1.HE.3911.1140 FF+15d, P2.1.HE.6940.1130 FF+15d, P2.L1.N.1420 FF+15d, P2.L1.F.LC.3260 FF+15d, P2.L1.F.LC.2260 FF+15d, CX.L5.AHU.1020 FF, CX.L4.AHU.2020 FF, P2.L1.F.LC.1260 FF+15d, CX.L4.AHU.1020 FF, CX.L3.AHU.1020 FF, P2.L1.LC.1420 FF+15d, CX.L2.AHU.1020 FF, P2.L1.BR.5160 FF+15d, CX.L1.GSE.1030, CX.L2.GSE.1040, P2.L1.EMT.1210 FF+15d | 24d | 0d | TAB | TAB-1 |  |
| CX.L1.GSE.1050 |  | FPT Terminal Units - General Supply & Exhaust Testing - L1 | 20d | 2027-01-08 | 2027-02-04 | CX.B2.PCW.1040 FF, CX.B2.RWS.1040 FF, CX.L3.AHU.1040, CX.L2.AHU.1040, CX.L1.GSE.1040, CX.L5.AHU.1040, CX.PH.EHF.1040 | 24d |  | BAS | BAS-1 |  |
|  | 6 | **Level 2** |  | 2026-03-18 | 2026-10-20 |  |  |  |  |  |  |
|  | 1 | **480/120 Distribution Panels Dry XFMRs (4 Elec RMs)** |  | 2026-03-18 | 2026-05-12 |  |  |  |  |  |  |
| CX.L2.SWGR.1000 |  | Start Up - 480/120 Distribution Panels Bry XFMRs - L2 | 10d | 2026-03-18 | 2026-03-31 | P2.L2.S.1550, P2.2.HE.5959.1140, P2.L2.N.1550, P2.2.HE.2949.1140, P2.2.HE.2803.1140, P2.2.HE.5966.1140, P2.L2.INT.S.1400, P2.L2.INT.N.1400, P2.L2.SMT.1240, P2.L2.EMT.1240, CX.B2.MVEE.1010, CX.B2.SWGR.1010 | 157d | 0d | ELEC | ELEC-2 | SS |
| CX.L2.SWGR.1010 |  | PFPT - 480/120 Distribution Panels Bry XFMRs - L2 | 20d | 2026-04-01 | 2026-04-28 | P2.2.IT.5957.250, P2.2.HE.5966.1140, P2.2.IT.3910.250, P2.2.IT.2818.250, P2.L2.SMT.1230, P2.L2.EMT.1230, CX.L2.SWGR.1000 | 157d | 0d | ELEC | ELEC-2 | SS |
| CX.L2.SWGR.1020 |  | FPT - 480/120 Distribution Panels Bry XFMRs - L2 | 10d | 2026-04-29 | 2026-05-12 | P2.SUM.225, CX.L2.SWGR.1010 | 184d | 82d | ELEC | ELEC-2 |  |

| ID | WBS | Activity | Duration | Start | Finish | Predecessors | Total float | Free float | Resp / SRLM | RESP / Trade | **NEAR CRITICAL** |
| --- | --- | --- | --- | --- | --- | --- | --- | --- | --- | --- | --- |
|  | 2 | **AHU 2-1** |  | 2026-04-16 | 2026-09-15 |  |  |  |  |  |  |
| CX.L2.AHU.1000 |  | Startup - AHU 2-1 - L2 | 5d | 2026-04-16 | 2026-04-22 | P2.L2.INT.N.1400 FF, P2.L2.S.1500, P2.L2.INT.S.1400 FF, P2.L2.S.1550, P2.2.HE.5959.1140, P2.L2.N.1550, P2.L2.N.1430, P2.2.HE.2949.1140, P2.2.HE.2803.1140, P2.L4.S.1550, P2.2.HE.5966.1140, P2.L4.N.1550, P2.B2.SC.1290, P2.B2.WC.1280, P2.B2.WC.1640, P2.L2.INT.S.1400, P2.L2.INT.S.1360, P2.L2.INT.N.1360, P2.L1.S.1550, P2.L1.N.1550, P2.L2.INT.N.1400, P2.L4.INT.S.1400, P2.L4.INT.N.1400, P2.L2.SMT.1240, P2.L2.SMT.1120, P2.L2.EMT.1240, P2.L2.EMT.1120, P2.L3.S.1550, P2.L3.N.1550, CX.B2.MVEE.1010, CX.B2.SWGR.1010, P2.B2.S.1550, P2.B2.N.1550, P2.L2.N.1550 FF, P2.L2.S.1550 FF, P2.L3.LC.1550, DDD2330, DDD2180, DDD2280, DDD2270, DDD3030, DDD2980, DDD3130, DDD2580, DDD2930, DDD3080, FRG.P2.L2.EMT.1010 | 23d | 9d | MECH | MECH-2 |  |
| CX.L2.AHU.1010 |  | P2P/BAS - AHU 2-1 - L2 | 10d | 2026-05-06 | 2026-05-19 | CX.B2.CHS.1010, CX.B2.GHWS.1010, CX.L2.AHU.1000 | 14d | 0d | BAS | BAS-1 |  |
| CX.L2.AHU.1020 |  | Test and Balance - AHU 2-1 - L2 | 15d | 2026-05-20 | 2026-06-10 | CX.L2.AHU.1010 | 94d | 57d | TAB | TAB-1 |  |
| CX.L2.AHU.1030 |  | PFPT - AHU 2-1 - L2 | 5d | 2026-09-01 | 2026-09-08 | P2.2.IT.5957.250, P2.2.HE.5966.1140, P2.2.IT.3910.250, P2.2.IT.2818.250, P2.L2.SMT.1230, P2.L2.EMT.1230, CX.B2.CHS.1040, CX.B2.GHWS.1040 FF, CX.B2.CSH.1030, CX.L2.AHU.1020 | 77d | 0d | BAS | BAS-1 |  |
| CX.L2.AHU.1040 |  | FPT - AHU 2-1 - L2 | 5d | 2026-09-09 | 2026-09-15 | P2.SUM.225, CX.B2.CSH.1040 FF, CX.L2.AHU.1030, CX.L2.SWGR.1020 | 102d | 15d | BAS | BAS-1 |  |
|  | 3 | **General Supply & Exhaust Terminal Unit Testing** |  | 2026-06-04 | 2026-10-20 |  |  |  |  |  |  |
| CX.L2.GSE.1000 |  | Startup/Checkout Terminal Units - General Supply & Exhaust Testing - L2 | 20d | 2026-06-04 | 2026-07-01 | P2.L2.S.1500, P2.2.HE.5959.1140, P2.L2.N.1430, P2.2.HE.2949.1140, P2.2.HE.2803.1140, P2.2.HE.5966.1140, P2.L2.INT.S.1360, P2.L2.INT.N.1360, P2.L2.SMT.1240, P2.L2.SMT.1120, P2.L2.EMT.1240, P2.L2.EMT.1120, CX.B2.MVEE.1010, CX.B2.SWGR.1010, CX.L3.AHU.1010, CX.L2.AHU.1010, CX.L4.AHU.2010, CX.L4.AHU.1010, CX.L5.AHU.1010, CX.PH.EHF.1010, DDD2780 | 59d | 5d | BAS | BAS-1 |  |
| CX.L2.GSE.1010 |  | Start Up and set Supply/Exhaust Valves - General Supply & Exhaust Testing - L2 | 25d | 2026-06-04 | 2026-07-09 | P2.L2.S.1500, P2.L2.N.1430, P2.L2.INT.S.1360, P2.L2.INT.N.1360, P2.L2.SMT.1240, P2.L2.SMT.1120, P2.L2.EMT.1240, P2.L2.EMT.1120, CX.B2.MVEE.1010, CX.B2.SWGR.1010, CX.L3.AHU.1010, CX.L2.AHU.1010, CX.L4.AHU.2010, CX.L4.AHU.1010, CX.L5.AHU.1010, CX.PH.EHF.1010 | 24d | 0d | MECH | MECH-2 |  |
| CX.L2.GSE.1020 |  | P2P/BAS Terminal Units - General Supply & Exhaust Testing - L2 | 10d | 2026-07-10 | 2026-07-23 | CX.L2.GSE.1000, CX.L2.GSE.1010 | 54d | 2d | BAS | BAS-1 |  |
| CX.L2.GSE.1030 |  | PFPT Terminal Units - General Supply & Exhaust Testing - L2 | 10d | 2026-07-28 | 2026-08-10 | P2.2.IT.5957.250, P2.2.HE.5966.1140, P2.2.IT.3910.250, P2.2.IT.2818.250, P2.L2.SMT.1230, P2.L2.EMT.1230, CX.B2.PCW.1030 FF, CX.B2.RWS.1030 FF, CX.L2.GSE.1020 | 52d | 0d | BAS | BAS-1 |  |
| CX.L2.GSE.1040 |  | Preliminary TAB Floor - General Supply & Exhaust Testing - L2 | 25d | 2026-08-11 | 2026-09-15 | P2.L2.S.1420, P2.L2.N.1410, P2.2.HE.2803.1130, P2.2.HE.5959.1130, P2.2.IT.5957.230, P2.2.HE.5966.1130, P2.2.HE.2949.1130, P2.2.IT.3910.230, P2.2.IT.2818.230, P2.L2.F.CS.1140, P2.L2.F.CS.2140, P2.L2.BR.1160, P2.L2.BR.3250, P2.L2.BR.2160, P2.L2.BR.4250, P2.L2.INT.S.2020, P2.L2.INT.N.2020, P2.L2.SMT.1210, P2.L2.EMT.1210, CX.L5.AHU.1020 FF, CX.L4.AHU.2020 FF, CX.L4.AHU.1020 FF, CX.L3.AHU.1020 FF, CX.L2.AHU.1020 FF, CX.L2.GSE.1030 | 52d | 15d | TAB | TAB-1 |  |
| CX.L2.GSE.1050 |  | FPT Terminal Units - General Supply & Exhaust Testing - L2 | 10d | 2026-10-07 | 2026-10-20 | P2.SUM.225, CX.B2.PCW.1040 FF, CX.B2.RWS.1040 FF, CX.L3.AHU.1040, CX.L2.GSE.1040, CX.L2.AHU.1040, CX.L5.AHU.1040, CX.PH.EHF.1040 | 97d |  | BAS | BAS-1 |  |
|  | 4 | **Level 3** |  | 2026-04-02 | 2027-02-04 |  |  |  |  |  |  |
|  | 1 | **480/120 Distribution Panels Dry XFMRs (5 Elec RMs)** |  | 2026-04-09 | 2026-06-04 |  |  |  |  |  |  |
| CX.L3.SWGR.1000 |  | Start Up - 480/120 Distribution Panels Bry XFMRs - L3 | 10d | 2026-04-09 | 2026-04-22 | P2.L3.EMT.1240, P2.L3.SMT.1240, P2.L3.S.1550, P2.3.HE.5959.1140, P2.L3.N.1550, P2.3.HE.5968.1140, CX.B2.MVEE.1010, P2.3.HE.5966.1140, P2.3.HE.2803.1140, CX.B2.SWGR.1010, P2.L3.LC.1550, P2.3.HE.2937.1140 | 141d | 0d | ELEC | ELEC-2 |  |
| CX.L3.SWGR.1010 |  | PFPT - 480/120 Distribution Panels Bry XFMRs - L3 | 20d | 2026-04-23 | 2026-05-20 | P2.L3.SMT.1230, P2.L3.EMT.1230, P2.3.HE.5959.1140, P2.3.HE.5968.1140, P2.3.HE.5966.1140, P2.3.HE.2803.1140, CX.L3.SWGR.1000, P2.3.HE.2937.1140 | 141d | 0d | ELEC | ELEC-2 |  |
| CX.L3.SWGR.1020 |  | FPT - 480/120 Distribution Panels Bry XFMRs - L3 | 10d | 2026-05-21 | 2026-06-04 | P2.SUM.225, CX.L3.SWGR.1010 | 163d | 0d | ELEC | ELEC-2 |  |
|  | 2 | **UPS** |  | 2026-04-09 | 2026-06-11 |  |  |  |  |  |  |
| CX.L3.UPS.1000 |  | Start Up - UPS - L3 | 5d | 2026-04-09 | 2026-04-15 | P2.L3.SMT.1120, P2.L3.EMT.1240, P2.L3.EMT.1120, P2.L3.SMT.1240, P2.L3.S.1550, P2.L3.S.1500, P2.3.HE.5959.1140, P2.L3.N.1550, P2.L3.N.1500, P2.3.HE.5968.1140, CX.B2.MVEE.1010, P2.3.HE.5966.1140, P2.3.HE.2803.1140, CX.B2.SWGR.1010, P2.L3.LC.1430, P2.L3.LC.1550, P2.3.HE.2937.1140 | 168d | 0d | ELEC | ELEC-2 |  |
| CX.L3.UPS.1010 |  | PFPT - UPS - L3 | 10d | 2026-04-16 | 2026-04-29 | P2.L3.SMT.1230, P2.L3.EMT.1230, P2.3.HE.5959.1140, P2.3.HE.5968.1140, P2.3.HE.5966.1140, P2.3.HE.2803.1140, CX.L3.UPS.1000, P2.3.HE.2937.1140 | 168d | 25d | ELEC | ELEC-2 |  |
| CX.L3.UPS.1020 |  | FPT - UPS - L3 | 5d | 2026-06-05 | 2026-06-11 | P2.SUM.225, CX.L3.UPS.1010, CX.L3.SWGR.1020 | 163d | 61d | ELEC | ELEC-2 |  |
|  | 3 | **AHU 3-1** |  | 2026-04-16 | 2026-09-15 |  |  |  |  |  |  |
| CX.L3.AHU.1000 |  | Startup - AHU 3-1 - L3 | 5d | 2026-04-16 | 2026-04-22 | P2.L3.SMT.1120, P2.L2.S.1550, P2.L3.EMT.1240, P2.L3.EMT.1120, P2.L2.N.1550, P2.L3.SMT.1240, P2.L4.S.1550, P2.L4.N.1550, P2.B2.SC.1290, P2.B2.WC.1280, P2.B2.WC.1640, P2.L2.INT.S.1400, P2.L1.S.1550, P2.L1.N.1550, P2.L2.INT.N.1400, P2.L4.INT.S.1400, P2.L4.INT.N.1400, P2.L3.S.1550, P2.L3.S.1500, P2.3.HE.5959.1140, P2.L3.N.1550, P2.L3.N.1500, P2.3.HE.5968.1140, CX.B2.MVEE.1010, P2.3.HE.5966.1140, P2.3.HE.2803.1140, CX.B2.SWGR.1010, P2.B2.S.1550, P2.B2.N.1550, P2.L1.LC.1550, P2.L3.LC.1430, P2.L3.LC.1550, P2.3.HE.2937.1140, DDD2330, DDD2180, DDD2280, DDD2580, DDD3030, DDD2980, DDD2930, DDD3080, DDD2270, DDD3130, FRG.P2.L3.EMT.1010 | 23d | 9d | MECH | MECH-2 | 4.1 |
| CX.L3.AHU.1010 |  | P2P/BAS - AHU 3-1 - L3 | 10d | 2026-05-06 | 2026-05-19 | CX.B2.CHS.1010, CX.B2.GHWS.1010, CX.L3.AHU.1000 | 14d | 0d | BAS | BAS-1 | 4.1 |
| CX.L3.AHU.1020 |  | Test and Balance - AHU 3-1 - L3 | 15d | 2026-05-20 | 2026-06-10 | CX.L3.AHU.1010 | 94d | 57d | TAB | TAB-1 |  |
| CX.L3.AHU.1030 |  | PFPT - AHU 3-1 - L3 | 5d | 2026-09-01 | 2026-09-08 | P2.L3.SMT.1230, P2.L3.EMT.1230, P2.3.HE.5959.1140, P2.3.HE.5968.1140, P2.3.HE.5966.1140, P2.3.HE.2803.1140, CX.B2.CHS.1040, CX.B2.GHWS.1040 FF, CX.B2.CSH.1030, CX.L3.AHU.1020, P2.3.HE.2937.1140 | 77d | 0d | BAS | BAS-1 |  |
| CX.L3.AHU.1040 |  | FPT - AHU 3-1 - L3 | 5d | 2026-09-09 | 2026-09-15 | P2.SUM.225, CX.B2.CSH.1040 FF, CX.L3.AHU.1030, CX.L3.UPS.1020 | 102d | 15d | BAS | BAS-1 |  |

| ID | WBS | Activity | Duration | Start | Finish | Predecessors | Total float | Free float | Resp / SRLM | RESP / Trade | **NEAR CRITICAL** |
| --- | --- | --- | --- | --- | --- | --- | --- | --- | --- | --- | --- |
|  | 5 | **MRI Suite (Fume Hoods, Dedicated Exhausts, Medical Equip)** |  | 2026-04-02 | 2026-09-08 |  |  |  |  |  |  |
| CX.L3.MRIS.1000 |  | Startup - MRI Suite Testing - L3 | 5d | 2026-04-02 | 2026-04-08 | P2.3.HE.5959.1140, P2.3.HE.5968.1140, P2.3.HE.5966.1140, P2.3.HE.2803.1140, OFOI.EQUIP.L3.1000, OFOI.EQUIP.L3.1010, P2.L3.LC.1430, P2.3.HE.2937.1140, DDD2530 | 223d | 0d | MECH | MECH-2 |  |
| CX.L3.MRIS.1010 |  | P2P/BAS - MRI Suite Testing - L3 | 5d | 2026-04-09 | 2026-04-15 | CX.L3.MRIS.1000 | 223d | 0d | BAS | BAS-1 |  |
| CX.L3.MRIS.1020 |  | Test and Balance - MRI Suite Testing - L3 | 5d | 2026-04-16 | 2026-04-22 | CX.L3.MRIS.1010 | 223d | 76d | TAB | TAB-1 |  |
| CX.L3.MRIS.1030 |  | PFPT mechanical/electrical systems - MRI Suite Testing - L3 | 5d | 2026-08-11 | 2026-08-17 | CX.B2.CWS.1030, CX.L3.MRIS.1020 | 147d | 0d | BAS | BAS-1 |  |
| CX.L3.MRIS.1040 |  | Fume Hood Balancing and testing - MRI Suite Testing - L3 | 5d | 2026-08-18 | 2026-08-24 | CX.PH.EHF.1140, P2.L3.F.CS.1310, CX.L3.MRIS.1030 | 147d | 0d | BAS | BAS-1 |  |
| CX.L3.MRIS.1050 |  | Fume Hood certification - MRI Suite Testing - L3 | 5d | 2026-08-25 | 2026-08-31 | CX.L3.MRIS.1040 | 147d | 0d | BAS | BAS-1 |  |
| CX.L3.MRIS.1060 |  | NIH Acceptance test - MRI Suite Testing - L3 | 5d | 2026-09-01 | 2026-09-08 | CX.B2.CWS.1040, CX.L3.MRIS.1050 | 147d |  | NIH | NIH |  |
|  | 4 | **General Supply & Exhaust Terminal Unit Testing** |  | 2026-06-04 | 2027-02-04 |  |  |  |  |  |  |
| CX.L3.GSE.1000 |  | Startup/Checkout Terminal Units - General Supply & Exhaust Testing - L3 | 10d | 2026-06-04 | 2026-06-17 | P2.L3.SMT.1120, P2.L3.EMT.1240, P2.L3.EMT.1120, P2.L3.SMT.1240, P2.L3.S.1500, P2.3.HE.5959.1140, P2.L3.N.1500, P2.3.HE.5968.1140, CX.B2.MVEE.1010, P2.3.HE.5966.1140, P2.3.HE.2803.1140, CX.B2.SWGR.1010, CX.L3.AHU.1010, CX.L2.AHU.1010, CX.L4.AHU.2010, CX.L4.AHU.1010, P2.L3.LC.1430, CX.L5.AHU.1010, CX.PH.EHF.1010, P2.3.HE.2937.1140, DDD2780 | 89d | 65d | BAS | BAS-1 |  |
| CX.L3.GSE.1010 |  | Start Up and set Supply/Exhaust Valves - General Supply & Exhaust Testing - L3 | 40d | 2026-07-24 | 2026-09-18 | P2.L3.SMT.1120, P2.L3.EMT.1120, P2.L3.S.1500, P2.L3.N.1500, CX.B2.MVEE.1010, CX.B2.SWGR.1010, CX.L3.AHU.1010, CX.L2.AHU.1010, CX.L4.GSE.1000, CX.L4.AHU.2010, CX.L4.AHU.1010, P2.L3.LC.1430, CX.L5.AHU.1010, CX.PH.EHF.1010 | 24d | 0d | MECH | MECH-2 |  |
| CX.L3.GSE.1020 |  | P2P/BAS Terminal Units - General Supply & Exhaust Testing - L3 | 20d | 2026-09-21 | 2026-10-16 | CX.L3.GSE.1000, CX.L3.GSE.1010 | 24d | 0d | BAS | BAS-1 |  |
| CX.L3.GSE.1030 |  | PFPT Terminal Units - General Supply & Exhaust Testing - L3 | 15d | 2026-10-19 | 2026-11-06 | P2.L3.SMT.1230, P2.L3.EMT.1230, P2.3.HE.5959.1140, P2.3.HE.5968.1140, P2.3.HE.5966.1140, CX.B2.PCW.1030 FF, P2.3.HE.2803.1140, CX.B2.RWS.1030 FF, CX.L3.GSE.1020, P2.3.HE.2937.1140 | 24d | 0d | BAS | BAS-1 |  |
| CX.L3.GSE.1040 |  | Preliminary TAB Floor - General Supply & Exhaust Testing - L3 | 40d | 2026-11-09 | 2027-01-07 | P2.L3.F.CS.1140 FF+10d, P2.3.HE.5968.1130 FF+10d, P2.3.HE.5966.1130 FF+10d, P2.3.HE.2803.1130 FF+10d, P2.3.HE.5959.1130 FF+10d, P2.L3.N.1420 FF+10d, P2.L3.S.1420 FF+10d, P2.L3.F.LC.2260 FF+10d, P2.L3.F.LC.1260 FF+10d, P2.L3.LC.1410 FF+10d, CX.L5.AHU.1020 FF, CX.L4.AHU.2020 FF, CX.L4.AHU.1020 FF, P2.L3.BR.4160 FF+10d, CX.L3.AHU.1020 FF, CX.L2.AHU.1020 FF, P2.L3.BR.3160 FF+10d, P2.L3.BR.2160 FF+10d, P2.L3.BR.1160 FF+10d, P2.L3.F.CS.2140 FF+10d, CX.L3.GSE.1030, CX.L4.GSE.1040, P2.L3.EMT.1210 FF+10d, P2.L3.SMT.1210 FF+10d, P2.L3.F.LC.3260 FF+10d, P2.3.HE.2937.1130 FF+10d | 24d | 0d | TAB | TAB-1 |  |
| CX.L3.GSE.1050 |  | FPT Terminal Units - General Supply & Exhaust Testing - L3 | 20d | 2027-01-08 | 2027-02-04 | P2.SUM.225, CX.L3.AHU.1040 FF, CX.B2.PCW.1040 FF, CX.B2.RWS.1040 FF, CX.L3.GSE.1040, CX.L3.AHU.1040, CX.L2.AHU.1040, CX.L5.AHU.1040, CX.PH.EHF.1040 | 24d |  | BAS | BAS-1 |  |
|  | 5 | **Level 4** |  | 2026-04-15 | 2026-10-20 |  |  |  |  |  |  |
|  | 1 | **480/120 Distribution Panels Dry XFMRs (5 Elec RMs)** |  | 2026-04-15 | 2026-06-10 |  |  |  |  |  |  |
| CX.L4.SWGR.1000 |  | Start Up - 480/120 Distribution Panels Bry XFMRs - L4 | 10d | 2026-04-15 | 2026-04-28 | P2.L4.S.1550, P2.4.HE.2948.1140, P2.4.HE.3959.1140, P2.L4.N.1550, P2.4.HE.5966.1140, P2.4.HE.2803.1140, P2.L4.INT.S.1400, P2.L4.INT.N.1400, P2.L4.EMT.1250, P2.L4.SMT.1240, P2.L5.S.1550, P2.L5.N.1550, CX.B2.SWGR.1010, CX.B2.MVEE.1010 | 137d | 0d | ELEC | ELEC-2 |  |
| CX.L4.SWGR.1010 |  | PFPT - 480/120 Distribution Panels Bry XFMRs - L4 | 20d | 2026-04-29 | 2026-05-27 | P2.4.HE.5966.1140, P2.4.IT.2818.250, P2.4.IT.3930.250, P2.4.IT.3875.250, P2.L4.SMT.1230, P2.L4.EMT.1240, CX.L4.SWGR.1000 | 137d | 0d | ELEC | ELEC-2 |  |
| CX.L4.SWGR.1020 |  | FPT - 480/120 Distribution Panels Bry XFMRs - L4 | 10d | 2026-05-28 | 2026-06-10 | P2.B2.M.5970.1120, P2.UTL.130, CX.L4.SWGR.1010 | 164d | 67d | ELEC | ELEC-2 |  |
|  | 2 | **AHU 4-2, 4-1** |  | 2026-04-16 | 2026-09-29 |  |  |  |  |  |  |
| CX.L4.AHU.1000 |  | Startup - AHU 4-1, 4-2 - L4 | 10d | 2026-04-16 | 2026-04-29 | P2.L2.S.1550, P2.L2.N.1550, P2.L4.S.1550, P2.L4.S.1500, P2.L4.N.1500, P2.4.HE.2948.1140, P2.4.HE.3959.1140, P2.L4.N.1550, P2.4.HE.5966.1140, P2.4.HE.2803.1140, P2.4.IT.2818.240, P2.4.IT.3930.240, P2.B2.WC.1280, P2.B2.SC.1290, P2.B2.WC.1640, P2.L2.INT.S.1400, P2.L1.S.1550, P2.L1.N.1550, P2.L4.INT.S.1400, P2.L2.INT.N.1400, P2.L4.INT.N.1400, P2.L4.INT.N.1360, P2.L4.SMT.1120, P2.L4.EMT.1250, P2.L3.S.1550, P2.L4.EMT.1230, P2.L4.EMT.1130, P2.L4.SMT.1240, P2.L3.N.1550, CX.B2.SWGR.1010, CX.B2.MVEE.1010, P2.B2.S.1550, P2.B2.N.1550, P2.L1.LC.1550, P2.L3.LC.1550, DDD2330, DDD2280, DDD2180, DDD3130, DDD3030, DDD2270, DDD2580, DDD2980, DDD3080, FRG.P2.L4.SMT.1030 | 8d | 4d | MECH | MECH-2 | 2 |
| CX.L4.AHU.1010 |  | P2P/BAS - AHU 4-1, 4-2 - L4 | 20d | 2026-05-06 | 2026-06-03 | CX.B2.CHS.1010, CX.B2.GHWS.1010, CX.L4.AHU.1000 | 4d | 0d | BAS | BAS-1 | 2 |
| CX.L4.AHU.1020 |  | Test and Balance - AHU 4-1, 4-2 - L4 | 20d | 2026-06-04 | 2026-07-01 | CX.L4.AHU.1010 | 79d | 42d | TAB | TAB-1 |  |
| CX.L4.AHU.1030 |  | PFPT - AHU 4-1, 4-2 - L4 | 10d | 2026-09-01 | 2026-09-15 | P2.4.HE.5966.1140, P2.4.IT.2818.250, P2.4.IT.3930.250, P2.4.IT.3875.250, P2.L4.SMT.1230, P2.L4.EMT.1240, CX.B2.CHS.1040, CX.B2.GHWS.1040 FF, CX.B2.CSH.1030, CX.L4.AHU.1020 | 97d | 0d | BAS | BAS-1 |  |
| CX.L4.AHU.1040 |  | FPT - AHU 4-1, 4-2 - L4 | 10d | 2026-09-16 | 2026-09-29 | P2.B2.M.5970.1120, P2.UTL.130, CX.B2.CSH.1040 FF, CX.L4.AHU.1030, CX.L4.SWGR.1020 | 97d | 0d | BAS | BAS-1 |  |

| ID | WBS | Activity | Duration | Start | Finish | Predecessors | Total float | Free float | Resp / SRLM | RESP / Trade | RESP UPD |
| --- | --- | --- | --- | --- | --- | --- | --- | --- | --- | --- | --- |
|  | 3 | **AHU 4-3** |  | 2026-04-16 | 2026-10-06 |  |  |  |  |  |  |
| CX.L4.AHU.2000 |  | Startup - AHU 4-3 - L4 | 5d | 2026-04-16 | 2026-04-22 | P2.L2.S.1550, P2.L2.N.1550, P2.L4.S.1550, P2.L4.S.1500, P2.L4.N.1500, P2.4.HE.2948.1140, P2.4.HE.3959.1140, P2.L4.N.1550, P2.4.HE.5966.1140, P2.4.HE.2803.1140, P2.4.IT.2818.240, P2.4.IT.3930.240, P2.B2.WC.1280, P2.B2.WC.1640, P2.L2.INT.S.1400, P2.L1.S.1550, P2.L1.N.1550, P2.L4.INT.S.1400, P2.L2.INT.N.1400, P2.L4.INT.N.1400, P2.L4.INT.N.1360, P2.L4.SMT.1120, P2.L4.EMT.1250, P2.L3.S.1550, P2.L4.EMT.1230, P2.L4.EMT.1130, P2.L4.SMT.1240, P2.L3.N.1550, CX.B2.SWGR.1010, CX.B2.MVEE.1010, P2.B2.S.1550, P2.B2.N.1550, P2.L1.LC.1550, P2.L3.LC.1550, DDD2130, DDD2930, FRG.P2.L4.EMT.1020 | 23d | 9d | MECH | MECH-2 |  |
| CX.L4.AHU.2010 |  | P2P/BAS - AHU 4-3 - L4 | 10d | 2026-05-06 | 2026-05-19 | CX.B2.CHS.1010, CX.B2.GHWS.1010, CX.L4.AHU.2000 | 14d | 0d | BAS | BAS-1 |  |
| CX.L4.AHU.2020 |  | Test and Balance - AHU 4-3 - L4 | 15d | 2026-05-20 | 2026-06-10 | CX.L4.AHU.2010 | 94d | 57d | TAB | TAB-1 |  |
| CX.L4.AHU.2030 |  | PFPT - AHU 4-3 - L4 | 5d | 2026-09-01 | 2026-09-08 | P2.4.HE.5966.1140, P2.4.IT.2818.250, P2.4.IT.3930.250, P2.4.IT.3875.250, P2.L4.SMT.1230, P2.L4.EMT.1240, CX.B2.CHS.1040, CX.B2.GHWS.1040 FF, CX.B2.CSH.1030, CX.L4.AHU.2020 | 112d | 15d | BAS | BAS-1 |  |
| CX.L4.AHU.2040 |  | FPT - AHU 4-3 - L4 | 5d | 2026-09-30 | 2026-10-06 | P2.B2.M.5970.1120, P2.UTL.130, CX.B2.CSH.1040 FF, CX.L4.AHU.2030, CX.L4.AHU.1040 | 97d | 0d | BAS | BAS-1 |  |
|  | 4 | **General Supply & Exhaust Terminal Unit Testing** |  | 2026-06-04 | 2026-10-20 |  |  |  |  |  |  |
| CX.L4.GSE.1000 |  | Start Up and set Supply/Exhaust Valves - General Supply & Exhaust Testing - L4 | 35d | 2026-06-04 | 2026-07-23 | P2.L4.S.1500, P2.L4.N.1500, P2.L4.INT.S.1400, P2.L4.INT.N.1360, P2.L4.SMT.1120, P2.L4.EMT.1130, P2.L4.EMT.1230, CX.B2.SWGR.1010, CX.B2.MVEE.1010, CX.L3.AHU.1010, CX.L2.AHU.1010, CX.L4.AHU.2010, CX.L4.AHU.1010, CX.L5.AHU.1010, CX.PH.EHF.1010 | 24d | 0d | MECH | MECH-2 |  |
| CX.L4.GSE.1010 |  | Startup/Checkout Terminal Units - General Supply & Exhaust Testing - L4 | 10d | 2026-06-04 | 2026-06-17 | P2.L4.S.1500, P2.L4.N.1500, P2.4.HE.2948.1140, P2.4.HE.3959.1140, P2.4.HE.5966.1140, P2.4.HE.2803.1140, P2.4.IT.2818.240, P2.4.IT.3930.240, P2.L4.INT.S.1400, P2.L4.INT.N.1360, P2.L4.SMT.1120, P2.L4.EMT.1250, P2.L4.EMT.1130, P2.L4.EMT.1230, P2.L4.SMT.1240, CX.B2.SWGR.1010, CX.B2.MVEE.1010, CX.L3.AHU.1010, CX.L2.AHU.1010, CX.L4.AHU.2010, CX.L4.AHU.1010, CX.L5.AHU.1010, CX.PH.EHF.1010, DDD2780 | 84d | 25d | BAS | BAS-1 |  |
| CX.L4.GSE.1020 |  | P2P/BAS Terminal Units - General Supply & Exhaust Testing - L4 | 10d | 2026-07-24 | 2026-08-06 | CX.L4.GSE.1010, CX.L4.GSE.1000 | 59d | 0d | BAS | BAS-1 |  |
| CX.L4.GSE.1030 |  | PFPT Terminal Units - General Supply & Exhaust Testing - L4 | 10d | 2026-08-07 | 2026-08-20 | P2.4.IT.2818.250, P2.4.IT.3930.250, P2.4.IT.3875.250, P2.L4.SMT.1230, P2.L4.EMT.1240, CX.B2.PCW.1030 FF, CX.B2.RWS.1030 FF, CX.L4.GSE.1020 | 59d | 0d | BAS | BAS-1 |  |
| CX.L4.GSE.1040 |  | Preliminary TAB Floor - General Supply & Exhaust Testing - L4 | 20d | 2026-08-21 | 2026-09-18 | P2.L4.INT.S.2020 FF+10d, P2.L4.BR.1160 FF+10d, P2.L4.F.CS.3140 FF+10d, P2.L4.F.CS.2140 FF+10d, P2.L4.F.CS.1140 FF+10d, P2.4.IT.3875.230 FF+10d, P2.4.IT.2818.230 FF+10d, P2.4.IT.3930.230 FF+10d, P2.4.HE.2803.1130 FF+10d, P2.4.HE.5966.1130 FF+10d, P2.L4.EMT.1220 FF+10d, P2.L4.SMT.1210 FF+10d, P2.L4.INT.N.2020 FF+10d, CX.L5.AHU.1020 FF, CX.L4.AHU.2020 FF, CX.L4.AHU.1020 FF, CX.L3.AHU.1020 FF, CX.L2.AHU.1020 FF, P2.4.HE.2948.1130 FF+10d, P2.4.HE.3959.1130 FF+10d, CX.L4.GSE.1030 | 59d | 12d | TAB | TAB-1 |  |
| CX.L4.GSE.1050 |  | FPT Terminal Units - General Supply & Exhaust Testing - L4 | 10d | 2026-10-07 | 2026-10-20 | P2.B2.M.5970.1120, P2.UTL.130, CX.B2.PCW.1040 FF, CX.B2.RWS.1040 FF, CX.L3.AHU.1040, CX.L2.AHU.1040, CX.L4.GSE.1040, CX.L4.AHU.2040, CX.L5.AHU.1040, CX.PH.EHF.1040 | 97d |  | BAS | BAS-1 |  |
|  | 2 | **Level 5** |  | 2026-04-01 | 2027-03-04 |  |  |  |  |  |  |
|  | 1 | **480/120 Distribution Panels Dry XFMRs (4 Elec RMs)** |  | 2026-04-01 | 2026-05-27 |  |  |  |  |  |  |
| CX.L5.SWGR.1000 |  | Start Up - 480/120 Distribution Panels Bry XFMRs - L5 | 10d | 2026-04-01 | 2026-04-14 | P2.L5.SMT.1240, P2.L5.EMT.1240, P2.5.HE.2949.1140, CX.B2.SWGR.1010, P2.5.HE.3989.1140, CX.B2.MVEE.1010, P2.5.HE.5966.1140, P2.5.HE.2803.1140 | 147d | 0d | ELEC | ELEC-2 | SS |
| CX.L5.SWGR.1010 |  | PFPT - 480/120 Distribution Panels Bry XFMRs - L5 | 20d | 2026-04-15 | 2026-05-12 | P2.L5.EMT.1230, P2.5.HE.2949.1140, P2.5.HE.3989.1140, P2.5.HE.5966.1140, P2.5.HE.2803.1140, CX.L5.SWGR.1000 | 147d | 0d | ELEC | ELEC-2 |  |
| CX.L5.SWGR.1020 |  | FPT - 480/120 Distribution Panels Bry XFMRs - L5 | 10d | 2026-05-13 | 2026-05-27 | CX.L5.SWGR.1010 | 169d | 77d | ELEC | ELEC-2 |  |
|  | 2 | **BSL/Sterility - 3 Lab ( Medical Equip & Systems)** |  | 2026-08-11 | 2026-11-10 |  |  |  |  |  |  |
| CX.L5.BSL.1000 |  | Startup - BSL3 & Sterility Lab Testing - L5 | 5d | 2026-08-11 | 2026-08-17 | CX.PH.EHF.1110, P2.L5.SMT.1240, P2.L5.SMT.1120, P2.L5.SMT.1230, P2.L5.F.LC.4050, P2.L5.EMT.1240, P2.L5.EMT.1120, P2.L5.S.1500, P2.L5.N.1500, P2.5.HE.2949.1140, CX.B2.SWGR.1010, P2.5.HE.3989.1140, CX.B2.MVEE.1010, P2.5.HE.5966.1140, P2.5.HE.2803.1140, CX.L6.AHU.2010, P2.L5.LC.1550, CX.L7.AHU.2010, P2.L5.LC.1500, DDD2530 | 77d | 0d | MECH | MECH-2 |  |
| CX.L5.BSL.1010 |  | P2P/BAS - BSL3 & Sterility Lab Testing - L5 | 5d | 2026-08-18 | 2026-08-24 | CX.L5.BSL.1000 | 77d | 0d | BAS | BAS-1 |  |
| CX.L5.BSL.1020 |  | Test and Balance - BSL3 & Sterility Lab Testing - L5 | 5d | 2026-08-25 | 2026-08-31 | CX.L5.BSL.1010 | 77d | 0d | TAB | TAB-1 |  |
| CX.L5.BSL.1030 |  | PFPT mechanical/electrical systems - BSL3 & Sterility Lab Testing - L5 | 5d | 2026-09-01 | 2026-09-08 | P2.5.HE.3989.1140, P2.5.HE.5966.1140, CX.B2.GMPRH.1030, CX.L5.BSL.1020 | 77d | 0d | BAS | BAS-1 |  |
| CX.L5.BSL.1040 |  | Room Balancing - BSL3 & Sterility Lab Testing - L5 | 5d | 2026-09-09 | 2026-09-15 | CX.L7.AHU.2020 FF, CX.L6.AHU.2020 FF, CX.L5.BSL.1030 | 77d | 0d | TAB | TAB-1 |  |
| CX.L5.BSL.1050 |  | Fume Hood Balancing and testing - BSL3 & Sterility Lab Testing - L5 | 5d | 2026-09-16 | 2026-09-22 | CX.PH.EHF.1140, P2.L5.F.LC.4160, P2.L5.F.LC.4230, P2.L5.F.LC.2410, P2.L5.F.LC.4090, P2.L5.F.LC.4130, CX.L5.BSL.1040 | 77d | 0d | BAS | BAS-1 |  |
| CX.L5.BSL.1060 |  | Fume Hood certification - BSL3 & Sterility Lab Testing - L5 | 5d | 2026-09-23 | 2026-09-29 | CX.L5.BSL.1050 | 77d | 0d | BAS | BAS-1 |  |
| CX.L5.BSL.1070 |  | Test Lab Equipment (Washer/Disinfector) - BSL3 & Sterility Lab Testing - L5 | 5d | 2026-09-30 | 2026-10-06 | CX.L5.BSL.1060 | 77d | 0d | BAS | BAS-1 |  |
| CX.L5.BSL.1080 |  | Install Carbon Filters - BSL3 & Sterility Lab Testing - L5 | 10d | 2026-10-07 | 2026-10-20 | CX.L5.BSL.1070 | 77d | 0d | BAS | BAS-1 |  |
| CX.L5.BSL.1090 |  | Certify Room - BSL3 & Sterility Lab Testing - L5 | 10d | 2026-10-21 | 2026-11-03 | CX.L5.BSL.1080 | 82d | 0d | BAS | BAS-1 |  |
| CX.L5.BSL.1100 |  | NIH Acceptance test - BSL3 & Sterility Lab Testing - L5 | 5d | 2026-11-04 | 2026-11-10 | CX.B2.GMPRH.1040 FF, CX.L5.BSL.1090, CX.L7.AHU.2040, CX.L6.AHU.2040 | 82d |  | NIH | NIH |  |

| ID | WBS | Activity | Duration | Start | Finish | Predecessors | Total float | Free float | **NEAR CRITICAL** | Resp / SRLM | RESP / Trade | RESP UPD |
| --- | --- | --- | --- | --- | --- | --- | --- | --- | --- | --- | --- | --- |
|  | 3 | **AHU 5-1, 5-2** |  | 2026-04-16 | 2026-09-29 |  |  |  |  |  |  |  |
| CX.L5.AHU.1000 |  | Startup - AHU 5-1, 5-2 - L5 | 10d | 2026-04-16 | 2026-04-29 | P2.L2.S.1550, P2.L5.SMT.1240, P2.L5.SMT.1230, P2.L2.N.1550, P2.L5.SMT.1120, P2.L5.F.LC.4050, P2.L5.EMT.1240, P2.L5.EMT.1120, P2.L4.S.1550, P2.L2.INT.N.2250, P2.L4.N.1550, P2.B2.WC.1280, P2.B2.SC.1290, P2.B2.WC.1640, P2.L2.INT.S.1400, P2.L1.S.1550, P2.L4.INT.S.1400, P2.L2.INT.N.1400, P2.L4.INT.N.1400, P2.L1.N.1550, P2.L3.S.1550, P2.L3.N.1550, P2.L5.S.1500, P2.L5.N.1500, P2.5.HE.2949.1140, CX.B2.SWGR.1010, P2.5.HE.3989.1140, CX.B2.MVEE.1010, P2.B2.S.1550, P2.5.HE.5966.1140, P2.5.HE.2803.1140, P2.B2.N.1550, P2.L1.LC.1550, P2.L5.LC.1500, P2.L3.LC.1550, DDD2180, DDD2130, DDD2980, DDD2930, DDD2330, DDD3130, DDD2580, DDD3030, DDD3080, FRG.P2.L5.SMT.1040 | 8d | 4d | 2 | MECH | MECH-2 |  |
| CX.L5.AHU.1010 |  | P2P/BAS - AHU 5-1, 5-2 - L5 | 20d | 2026-05-06 | 2026-06-03 | CX.B2.CHS.1010, CX.B2.GHWS.1010, CX.L5.AHU.1000 | 4d | 0d | 2 | BAS | BAS-1 |  |
| CX.L5.AHU.1020 |  | Test and Balance - AHU 5-1, 5-2 - L5 | 20d | 2026-06-04 | 2026-07-01 | CX.L5.AHU.1010 | 79d | 42d |  | TAB | TAB-1 |  |
| CX.L5.AHU.1030 |  | PFPT - AHU 5-1, 5-2 - L5 | 10d | 2026-09-01 | 2026-09-15 | P2.L5.EMT.1230, P2.5.HE.2949.1140, CX.B2.CHS.1040, CX.B2.GHWS.1040 FF, P2.5.HE.3989.1140, CX.B2.CSH.1030, P2.5.HE.5966.1140, P2.5.HE.2803.1140, CX.L5.AHU.1020 | 92d | 0d |  | BAS | BAS-1 |  |
| CX.L5.AHU.1040 |  | FPT - AHU 5-1, 5-2 - L5 | 10d | 2026-09-16 | 2026-09-29 | CX.B2.CSH.1040 FF, CX.L5.SWGR.1020, CX.L5.AHU.1030 | 92d | 5d |  | BAS | BAS-1 |  |
|  | 4 | **General Supply & Exhaust Terminal Unit Testing** |  | 2026-07-01 | 2027-03-04 |  |  |  |  |  |  |  |
| CX.L5.GSE.1000 |  | Startup/Checkout Terminal Units - General Supply & Exhaust Testing - L5 | 20d | 2026-07-01 | 2026-07-29 | CX.PH.EHF.1100, P2.L5.SMT.1240, P2.L5.SMT.1230, P2.L5.SMT.1120, P2.L5.F.LC.4050, P2.L5.EMT.1240, P2.L5.EMT.1120, P2.L2.INT.N.2250, P2.L5.S.1500, P2.L5.N.1500, P2.5.HE.2949.1140, CX.B2.SWGR.1010, P2.5.HE.3989.1140, CX.B2.MVEE.1010, P2.5.HE.5966.1140, P2.5.HE.2803.1140, CX.L6.AHU.1010, P2.L5.LC.1550, P2.L5.LC.1500, CX.L7.AHU.1010, DDD2780 | 40d | 36d |  | BAS | BAS-1 |  |
| CX.L5.GSE.1010 |  | Start Up and set Supply/Exhaust Valves - General Supply & Exhaust Testing - L5 | 35d | 2026-07-31 | 2026-09-18 | CX.PH.EHF.1100, P2.L5.SMT.1230, P2.L5.SMT.1120, P2.L5.F.LC.4050, P2.L5.EMT.1120, P2.L2.INT.N.2250, P2.L5.S.1500, P2.L5.N.1500, CX.B2.SWGR.1010, CX.B2.MVEE.1010, CX.L6.AHU.1010, P2.L5.LC.1550, P2.L5.LC.1500, CX.L7.AHU.1010, CX.L6.GSE.1000 | 4d | 0d | 2 | MECH | MECH-2 |  |
| CX.L5.GSE.1020 |  | P2P/BAS Terminal Units - General Supply & Exhaust Testing - L5 | 25d | 2026-09-21 | 2026-10-23 | CX.L5.GSE.1000, CX.L5.GSE.1010 | 4d | 0d | 2 | BAS | BAS-1 |  |
| CX.L5.GSE.1030 |  | PFPT Terminal Units - General Supply & Exhaust Testing - L5 | 20d | 2026-10-26 | 2026-11-20 | P2.L5.EMT.1230, CX.B2.PCW.1030 FF, P2.5.HE.2949.1140, CX.B2.RWS.1030 FF, P2.5.HE.3989.1140, P2.5.HE.5966.1140, P2.5.HE.2803.1140, CX.L5.GSE.1020 | 4d | 0d | 2 | BAS | BAS-1 |  |
| CX.L5.GSE.1040 |  | Preliminary TAB Floor - General Supply & Exhaust Testing - L5 | 60d | 2026-11-23 | 2027-02-18 | P2.5.HE.2803.1130 FF+20d, P2.5.HE.2949.1130 FF+20d, P2.5.HE.3989.1130 FF+20d, P2.L5.N.1420 FF+20d, P2.L5.S.1420 FF+20d, P2.L5.F.LC.1260 FF+20d, P2.L5.LC.1420 FF+20d, CX.L7.AHU.1020 FF, CX.L6.AHU.1020 FF, P2.L5.BR.2250 FF+20d, P2.L5.BR.1160 FF+20d, P2.L5.F.CS.1140 FF+20d, P2.L5.F.CS.2140 FF+20d, P2.5.HE.5966.1130 FF+20d, P2.L5.EMT.1210 FF+20d, P2.L5.SMT.1210 FF+20d, CX.L5.GSE.1030, P2.L5.F.LC.3260 FF+20d, CX.L6.GSE.1040, P2.L5.F.LC.2260 FF+20d | 4d | 0d | 2 | TAB | TAB-1 |  |
| CX.L5.GSE.1050 |  | FPT Terminal Units - General Supply & Exhaust Testing - L5 | 10d | 2027-02-19 | 2027-03-04 | CX.PH.EHF.1040, CX.B2.PCW.1040 FF, CX.B2.RWS.1040 FF, CX.L6.AHU.1040, CX.L5.GSE.1040, CX.L7.AHU.1040 | 4d |  | 2 | BAS | BAS-1 |  |
|  | 3 | **Level 6** |  | 2026-04-01 | 2026-12-01 |  |  |  |  |  |  |  |
|  | 1 | **480/120 Distribution Panels Dry XFMRs (5 Elec RMs)** |  | 2026-04-15 | 2026-06-10 |  |  |  |  |  |  |  |
| CX.L6.SWGR.1000 |  | Start Up - 480/120 Distribution Panels Bry XFMRs - L6 | 10d | 2026-04-15 | 2026-04-28 | P2.L6.S.1550, P2.6.HE.2947.1140, P2.6.HE.5966.1140, P2.L6.N.1550, P2.6.HE.5959.1140, P2.6.HE.2803.1140, P2.L6.EMT.1240, P2.L6.EMT.1230, P2.L6.SMT.1240, CX.B2.SWGR.1010, CX.B2.MVEE.1010 | 137d | 0d |  | ELEC | ELEC-2 |  |
| CX.L6.SWGR.1010 |  | PFPT - 480/120 Distribution Panels Bry XFMRs - L6 | 20d | 2026-04-29 | 2026-05-27 | P2.6.IT.2818.250, P2.6.IT.3929.250, P2.6.IT.2865.250, CX.L6.SWGR.1000 | 137d | 0d |  | ELEC | ELEC-2 |  |
| CX.L6.SWGR.1020 |  | FPT - 480/120 Distribution Panels Bry XFMRs - L6 | 10d | 2026-05-28 | 2026-06-10 | CX.L6.SWGR.1010 | 154d | 0d |  | ELEC | ELEC-2 |  |
|  | 5 | **UPS** |  | 2026-04-15 | 2026-06-17 |  |  |  |  |  |  |  |
| CX.L6.UPS.1000 |  | Start Up - UPS - L6 | 5d | 2026-04-15 | 2026-04-21 | P2.L6.S.1550, P2.L6.S.1500, P2.L6.N.1500, P2.6.HE.2947.1140, P2.6.HE.5966.1140, P2.L6.N.1550, P2.6.HE.5959.1140, P2.6.HE.2803.1140, P2.L6.INT.S.1400, P2.L6.INT.S.1360, P2.L6.INT.N.1360, P2.L6.SMT.1120, P2.L6.SMT.1230, P2.L6.INT.N.1400, P2.L6.EMT.1240, P2.L6.EMT.1230, P2.L6.EMT.1120, P2.L6.SMT.1240, CX.B2.SWGR.1010, CX.B2.MVEE.1010 | 179d | 0d |  | ELEC | ELEC-2 |  |
| CX.L6.UPS.1010 |  | PFPT - UPS - L6 | 10d | 2026-04-22 | 2026-05-05 | P2.6.IT.2818.250, P2.6.IT.3929.250, P2.6.IT.2865.250, CX.L6.UPS.1000 | 179d | 25d |  | ELEC | ELEC-2 |  |
| CX.L6.UPS.1020 |  | FPT - UPS - L6 | 5d | 2026-06-11 | 2026-06-17 | CX.L6.UPS.1010, CX.L6.SWGR.1020 | 154d | 62d |  | ELEC | ELEC-2 |  |
|  | 2 | **AHU 6-1, 6-2** |  | 2026-05-19 | 2026-09-29 |  |  |  |  |  |  |  |
| CX.L6.AHU.1000 |  | Startup - AHU 6-1, 6-2 - L6 | 10d | 2026-05-19 | 2026-06-02 | P2.L6.S.1550, P2.L6.S.1500, P2.L8.S.1550, P2.L8.N.1550, P2.L6.N.1500, P2.6.HE.2947.1140, P2.6.HE.5966.1140, P2.L6.N.1550, P2.6.HE.5959.1140, P2.6.HE.2803.1140, P2.L8.INT.S.1400, P2.L8.INT.N.1400, P2.L6.INT.S.1400, P2.L6.INT.S.1360, P2.L6.INT.N.1360, P2.L6.SMT.1230, P2.L6.SMT.1120, P2.L6.INT.N.1400, P2.L6.EMT.1240, P2.L6.EMT.1230, P2.L6.EMT.1120, P2.L6.SMT.1240, P2.L5.S.1550, P2.L5.N.1550, P2.L7.S.1550, CX.B2.SWGR.1010, CX.B2.MVEE.1010, P2.L7.N.1550, P2.L7.LC.1550, P2.L5.LC.1550, DDD2330, DDD2180, DDD3130, DDD2580, DDD3030, DDD3080, FRG.P2.L6.SMT.1040 | 0d |  | 1 | MECH | MECH-2 | TA |
| CX.L6.AHU.1010 |  | P2P/BAS - AHU 6-1, 6-2 - L6 | 20d | 2026-06-03 | 2026-06-30 | CX.B2.CHS.1010, CX.B2.GHWS.1010, CX.L6.AHU.1000 | 0d |  | 1 | BAS | BAS-1 | TA |
| CX.L6.AHU.1020 |  | Test and Balance - AHU 6-1, 6-2 - L6 | 20d | 2026-07-01 | 2026-07-29 | CX.L6.AHU.1010 | 75d | 23d |  | TAB | TAB-1 |  |
| CX.L6.AHU.1030 |  | PFPT - AHU 6-1, 6-2 - L6 | 10d | 2026-09-01 | 2026-09-15 | P2.6.IT.2818.250, P2.6.IT.3929.250, P2.6.IT.2865.250, CX.B2.CHS.1040, CX.B2.GHWS.1040 FF, CX.B2.CSH.1030, CX.L6.AHU.1020 | 92d | 0d |  | BAS | BAS-1 |  |
| CX.L6.AHU.1040 |  | FPT - AHU 6-1, 6-2 - L6 | 10d | 2026-09-16 | 2026-09-29 | CX.B2.CSH.1040 FF, CX.L6.AHU.1030, CX.L6.UPS.1020 | 92d | 0d |  | BAS | BAS-1 |  |

| ID | WBS | Activity | Duration | Start | Finish | Predecessors | Total float | Free float | Resp / SRLM | RESP / Trade | **NEAR CRITICAL** |
| --- | --- | --- | --- | --- | --- | --- | --- | --- | --- | --- | --- |
|  | 3 | **AHU 6-3, 6-4** |  | 2026-04-01 | 2026-10-13 |  |  |  |  |  |  |
| CX.L6.AHU.2000 |  | Startup - AHU 6-3, 6-4 - L6 | 10d | 2026-04-01 | 2026-04-14 | P2.L6.N.1500, P2.6.HE.2947.1140, P2.6.HE.5966.1140, P2.6.HE.5959.1140, P2.6.HE.2803.1140, P2.L6.INT.N.1360, P2.L6.EMT.1240, P2.L6.EMT.1230, P2.L6.EMT.1120, CX.B2.SWGR.1010, CX.B2.MVEE.1010, P2.L5.LC.1550, DDD2930, DDD2130, FRG.P2.L6.EMT.1040 | 139d | 62d | MECH | MECH-2 |  |
| CX.L6.AHU.2010 |  | P2P/BAS - AHU 6-3, 6-4 - L6 | 20d | 2026-07-14 | 2026-08-10 | CX.B2.CHS.1010, CX.B2.GHWS.1010, CX.B2.GMPGW.1010, CX.L6.AHU.2000 | 77d | 0d | BAS | BAS-1 |  |
| CX.L6.AHU.2020 |  | Test and Balance - AHU 6-3, 6-4 - L6 | 20d | 2026-08-11 | 2026-09-08 | CX.L6.AHU.2010 | 82d | 0d | TAB | TAB-1 |  |
| CX.L6.AHU.2030 |  | PFPT - AHU 6-3, 6-4 - L6 | 10d | 2026-09-09 | 2026-09-22 | P2.6.IT.3929.250, P2.6.IT.2865.250, CX.B2.CHS.1040, CX.B2.GHWS.1040 FF, CX.B2.CSH.1030, CX.B2.GMPGW.1040, CX.L6.AHU.2020 | 102d | 5d | BAS | BAS-1 |  |
| CX.L6.AHU.2040 |  | FPT - AHU 6-3, 6-4 - L6 | 10d | 2026-09-30 | 2026-10-13 | CX.B2.CSH.1040 FF, CX.L6.AHU.1040, CX.L6.AHU.2030 | 97d | 15d | BAS | BAS-1 |  |
|  | 4 | **General Supply & Exhaust Terminal Unit Testing** |  | 2026-07-01 | 2026-12-01 |  |  |  |  |  |  |
| CX.L6.GSE.1010 |  | Startup/Checkout Terminal Units - General Supply & Exhaust Testing - L6 | 20d | 2026-07-01 | 2026-07-29 | CX.PH.EHF.1100, P2.L6.S.1500, P2.L6.N.1500, P2.6.HE.2947.1140, P2.6.HE.5966.1140, P2.6.HE.5959.1140, P2.6.HE.2803.1140, P2.L6.INT.S.1360, P2.L6.INT.N.1360, P2.L6.SMT.1230, P2.L6.SMT.1120, P2.L6.EMT.1240, P2.L6.EMT.1230, P2.L6.EMT.1120, P2.L6.SMT.1240, CX.B2.SWGR.1010, CX.B2.MVEE.1010, CX.L6.AHU.1010, CX.L7.AHU.1010, DDD2780 | 40d | 1d | BAS | BAS-1 |  |
| CX.L6.GSE.1000 |  | Start Up and set Supply/Exhaust Valves - General Supply & Exhaust Testing - L6 | 10d | 2026-07-17 | 2026-07-30 | CX.PH.EHF.1100, CX.B2.SWGR.1010, CX.B2.MVEE.1010, CX.B2.GSE.1010, CX.L6.AHU.1010, CX.L7.AHU.1010 | 4d | 0d | TAB | TAB-1 | 2 |
| CX.L6.GSE.1020 |  | P2P/BAS Terminal Units - General Supply & Exhaust Testing - L6 | 10d | 2026-07-31 | 2026-08-13 | CX.L6.GSE.1010, CX.L6.GSE.1000 | 39d | 0d | BAS | BAS-1 |  |
| CX.L6.GSE.1030 |  | PFPT Terminal Units - General Supply & Exhaust Testing - L6 | 10d | 2026-08-14 | 2026-08-27 | P2.6.IT.2818.250, P2.6.IT.3929.250, P2.6.IT.2865.250, CX.B2.PCW.1030 FF, CX.B2.RWS.1030 FF, CX.L6.GSE.1020 | 39d | 35d | BAS | BAS-1 |  |
| CX.L6.GSE.1040 |  | Preliminary TAB Floor - General Supply & Exhaust Testing - L6 | 25d | 2026-10-19 | 2026-11-20 | P2.L6.BR.2160 FF+10d, P2.L6.BR.1250 FF+10d, P2.L6.F.CS.2140 FF+10d, P2.L6.F.CS.1140 FF+10d, P2.6.IT.3929.230 FF+10d, P2.6.IT.2865.230 FF+10d, P2.6.IT.2818.230 FF+10d, P2.6.HE.5959.1130 FF+10d, P2.6.HE.2803.1130 FF+10d, P2.6.HE.2947.1130 FF+10d, P2.6.HE.5966.1130 FF+10d, P2.L6.EMT.1210 FF+10d, P2.L6.SMT.1210 FF+10d, P2.L6.INT.N.2020 FF+10d, P2.L6.INT.S.2020 FF+10d, CX.L7.AHU.1020 FF, CX.L6.AHU.1020 FF, CX.B2.GSE.1040, P2.L6.N.1420 FF+10d, P2.L6.S.1420 FF+10d, CX.L6.GSE.1030 | 4d | 0d | TAB | TAB-1 | 2 |
| CX.L6.GSE.1050 |  | FPT Terminal Units - General Supply & Exhaust Testing - L6 | 5d | 2026-11-23 | 2026-12-01 | CX.PH.EHF.1040, CX.B2.PCW.1040 FF, CX.B2.RWS.1040 FF, CX.L6.AHU.1040, CX.L7.AHU.1040, CX.L6.GSE.1040, CX.L6.AHU.2040 | 69d |  | BAS | BAS-1 |  |
|  | 7 | **Level 7** |  | 2026-05-12 | 2027-03-10 |  |  |  |  |  |  |
|  | 1 | **480/120 Distribution Panels Dry XFMRs (5 Elec RMs)** |  | 2026-05-19 | 2026-07-15 |  |  |  |  |  |  |
| CX.L7.SWGR.1000 |  | Start Up - 480/120 Distribution Panels Bry XFMRs - L7 | 10d | 2026-05-19 | 2026-06-02 | P2.L7.SMT.1240, P2.L7.SMT.1230, P2.L7.EMT.1240, P2.L7.EMT.1230, P2.L7.S.1550, CX.B2.SWGR.1010, CX.B2.MVEE.1010, P2.7.HE.2803.1140, P2.7.HE.2941.1140, P2.L7.N.1550, P2.7.HE.5959.1140, P2.L7.LC.1550 | 113d | 0d | ELEC | ELEC-2 |  |
| CX.L7.SWGR.1010 |  | PFPT - 480/120 Distribution Panels Bry XFMRs - L7 | 20d | 2026-06-03 | 2026-06-30 | CX.L7.SWGR.1000 | 113d | 0d | ELEC | ELEC-2 |  |
| CX.L7.SWGR.1020 |  | FPT - 480/120 Distribution Panels Bry XFMRs - L7 | 10d | 2026-07-01 | 2026-07-15 | CX.L7.SWGR.1010 | 125d | 50d | ELEC | ELEC-2 |  |
|  | 5 | **AHU 7-1, 7-2** |  | 2026-05-19 | 2026-10-08 |  |  |  |  |  |  |
| CX.L7.AHU.1000 |  | Startup - AHU 7-1, 7-2 - L7 | 10d | 2026-05-19 | 2026-06-02 | P2.L7.SMT.1240, P2.L7.SMT.1120, P2.L7.SMT.1230, P2.L7.EMT.1240, P2.L7.EMT.1120, P2.L7.EMT.1230, P2.L6.S.1550, P2.L8.S.1550, P2.L8.N.1550, P2.L6.N.1550, P2.L8.INT.S.1400, P2.L8.INT.N.1400, P2.L6.INT.S.1400, P2.L6.INT.N.1400, P2.L5.S.1550, P2.L5.N.1550, P2.L7.S.1550, P2.L7.S.1500, P2.L7.N.1500, CX.B2.SWGR.1010, CX.B2.MVEE.1010, P2.7.HE.2803.1140, P2.7.HE.2941.1140, P2.L7.N.1550, P2.7.HE.5959.1140, P2.L7.LC.1550, P2.L7.LC.1500, P2.L5.LC.1550, DDD2180, DDD3030, DDD3080, DDD2330, DDD3130, FRG.P2.L7.SMT.1050 | 0d |  | MECH | MECH-2 | 1 |
| CX.L7.AHU.1010 |  | P2P/BAS - AHU 7-1, 7-2 - L7 | 20d | 2026-06-03 | 2026-06-30 | CX.B2.CHS.1010, CX.B2.GHWS.1010, CX.L7.AHU.1000 | 0d |  | BAS | BAS-1 | 1 |
| CX.L7.AHU.1020 |  | Test and Balance - AHU 7-1, 7-2 - L7 | 20d | 2026-07-01 | 2026-07-29 | CX.L7.AHU.1010 | 75d | 28d | TAB | TAB-1 |  |
| CX.L7.AHU.1030 |  | PFPT - AHU 7-1, 7-2 - L7 | 10d | 2026-09-11 | 2026-09-24 | P2.L7.F.LC.5050, CX.B2.CHS.1040, CX.B2.GHWS.1040 FF, CX.B2.CSH.1030, CX.L7.AHU.1020 | 75d | 0d | BAS | BAS-1 |  |
| CX.L7.AHU.1040 |  | FPT - AHU 7-1, 7-2 - L7 | 10d | 2026-09-25 | 2026-10-08 | CX.B2.CSH.1040 FF, CX.L7.AHU.1030, CX.L7.SWGR.1020 | 75d | 0d | BAS | BAS-1 |  |

| ID | WBS | Activity | Duration | Start | Finish | Predecessors | Total float | Free float | Resp / SRLM | RESP / Trade | **NEAR CRITICAL** | RESP UPD |
| --- | --- | --- | --- | --- | --- | --- | --- | --- | --- | --- | --- | --- |
|  | 2 | **AHU 7-3, 7-4** |  | 2026-05-12 | 2026-10-22 |  |  |  |  |  |  |  |
| CX.L7.AHU.2000 |  | Startup - AHU 7-3, 7-4 - L7 | 10d | 2026-05-12 | 2026-05-26 | P2.L7.SMT.1240, P2.L7.EMT.1240, P2.L7.EMT.1120, P2.L7.EMT.1230, P2.L7.N.1500, CX.B2.SWGR.1010, CX.B2.MVEE.1010, P2.7.HE.2803.1140, P2.7.HE.2941.1140, P2.7.HE.5959.1140, P2.L7.LC.1500, P2.L5.LC.1550, DDD2930, FRG.P2.L7.EMT.1050 | 100d | 33d | MECH | MECH-2 |  |  |
| CX.L7.AHU.2010 |  | P2P/BAS - AHU 7-3, 7-4 - L7 | 20d | 2026-07-14 | 2026-08-10 | CX.B2.CHS.1010, CX.B2.GHWS.1010, CX.B2.GMPGW.1010, CX.L7.AHU.2000 | 77d | 0d | BAS | BAS-1 |  |  |
| CX.L7.AHU.2020 |  | Test and Balance - AHU 7-3, 7-4 - L7 | 20d | 2026-08-11 | 2026-09-08 | CX.L7.AHU.2010 | 82d | 0d | TAB | TAB-1 |  |  |
| CX.L7.AHU.2030 |  | PFPT - AHU 7-3, 7-4 - L7 | 10d | 2026-09-11 | 2026-09-24 | P2.L7.F.LC.5050, CX.B2.CHS.1040, CX.B2.GHWS.1040 FF, CX.B2.GMPGW.1040, CX.B2.CSH.1030, CX.L7.AHU.2020 | 85d | 10d | BAS | BAS-1 |  |  |
| CX.L7.AHU.2040 |  | FPT - AHU 7-3, 7-4 - L7 | 10d | 2026-10-09 | 2026-10-22 | CX.B2.CSH.1040 FF, CX.B2.RWS.1040, CX.L7.AHU.2030, CX.L7.AHU.1040 | 75d | 8d | BAS | BAS-1 |  |  |
|  | 3 | **Sterility Lab Testing (Fume Hoods, Dedicated Exhausts, Medical Equip)** |  | 2026-08-11 | 2026-10-13 |  |  |  |  |  |  |  |
| CX.L7.SLT.1000 |  | Startup - Sterility Lab Testing - L7 | 5d | 2026-08-11 | 2026-08-17 | CX.PH.EHF.1120, P2.L7.SMT.1240, P2.L7.SMT.1120, P2.L7.SMT.1230, P2.L7.EMT.1240, P2.L7.EMT.1120, P2.L7.EMT.1230, P2.L7.S.1500, P2.L7.N.1500, CX.B2.SWGR.1010, CX.B2.MVEE.1010, P2.7.HE.2803.1140, P2.7.HE.2941.1140, P2.7.HE.5959.1140, P2.L7.LC.1500, CX.L8.AHU.1010 | 42d | 0d | MECH | MECH-2 |  |  |
| CX.L7.SLT.1010 |  | P2P/BAS - Sterility Lab Testing - L7 | 5d | 2026-08-18 | 2026-08-24 | CX.L7.SLT.1000 | 112d | 5d | BAS | BAS-1 |  |  |
| CX.L7.SLT.1020 |  | Test and Balance - Sterility Lab Testing - L7 | 5d | 2026-09-01 | 2026-09-08 | CX.L8.AHU.1020 FF, CX.L7.SLT.1010 | 107d | 2d | TAB | TAB-1 |  |  |
| CX.L7.SLT.1030 |  | PFPT mechanical/electrical systems - Sterility Lab Testing - L7 | 5d | 2026-09-11 | 2026-09-17 | P2.L7.F.LC.5050, CX.B2.GMPRH.1030, CX.L7.SLT.1020 | 105d | 0d | BAS | BAS-1 |  |  |
| CX.L7.SLT.1040 |  | Fume Hood Balancing and testing - Sterility Lab Testing - L7 | 5d | 2026-09-18 | 2026-09-24 | P2.L7.F.LC.2410, CX.PH.EHF.1140, P2.L7.F.LC.3410, P2.L6.F.CS.1310, CX.PH.EHF.1140 FF, CX.L7.SLT.1030 | 105d | 0d | BAS | BAS-1 |  |  |
| CX.L7.SLT.1050 |  | Fume Hood certification - Sterility Lab Testing - L7 | 5d | 2026-09-25 | 2026-10-01 | CX.L7.SLT.1040 | 105d | 3d | BAS | BAS-1 |  |  |
| CX.L7.SLT.1060 |  | NIH Acceptance test - Sterility Lab Testing - L7 | 5d | 2026-10-07 | 2026-10-13 | CX.B2.GMPRH.1040 FF, CX.L7.SLT.1050, CX.L8.AHU.1040 | 102d | 0d | NIH | NIH |  |  |
|  | 6 | **Freezer (Fume Hoods, Dedicated Exhausts, Medical Equip)** |  | 2026-05-12 | 2026-10-13 |  |  |  |  |  |  |  |
| CX.L7.FRZ.1000 |  | Startup - Freezer Testing - L7 | 5d | 2026-05-12 | 2026-05-18 | P2.L7.SMT.1240, P2.L7.SMT.1120, P2.L7.SMT.1230, P2.L7.EMT.1240, P2.L7.EMT.1120, P2.L7.EMT.1230, P2.L7.S.1500, P2.L7.N.1500, CX.B2.SWGR.1010, CX.B2.MVEE.1010, P2.7.HE.2803.1140, P2.7.HE.2941.1140, P2.7.HE.5959.1140, P2.L7.LC.1500 | 105d | 0d | MECH | MECH-2 |  |  |
| CX.L7.FRZ.1010 |  | P2P/BAS - Freezer Testing - L7 | 5d | 2026-05-19 | 2026-05-26 | CX.L7.FRZ.1000 | 175d | 0d | BAS | BAS-1 |  |  |
| CX.L7.FRZ.1020 |  | Test and Balance - Freezer Testing - L7 | 5d | 2026-05-27 | 2026-06-02 | CX.L7.FRZ.1010 | 175d | 70d | TAB | TAB-1 |  |  |
| CX.L7.FRZ.1030 |  | PFPT mechanical/electrical systems - Freezer Testing - L7 | 5d | 2026-09-11 | 2026-09-17 | P2.L7.F.LC.5050, CX.L7.FRZ.1020 | 105d | 0d | BAS | BAS-1 |  |  |
| CX.L7.FRZ.1040 |  | Fume Hood Balancing and testing - Freezer Testing - L7 | 5d | 2026-09-18 | 2026-09-24 | CX.PH.EHF.1140, CX.L7.FRZ.1030, P2.L7.F.LC.1410 | 105d | 0d | BAS | BAS-1 |  |  |
| CX.L7.FRZ.1050 |  | Fume Hood certification - Freezer Testing - L7 | 5d | 2026-09-25 | 2026-10-01 | CX.L7.FRZ.1040 | 105d | 3d | BAS | BAS-1 |  |  |
| CX.L7.FRZ.1060 |  | NIH Acceptance test - Freezer Testing - L7 | 5d | 2026-10-07 | 2026-10-13 | CX.L7.SLT.1060 FF, CX.L7.FRZ.1050 | 102d |  | NIH | NIH |  |  |
|  | 4 | **General Supply & Exhaust Terminal Unit Testing** |  | 2026-07-01 | 2027-03-10 |  |  |  |  |  |  |  |
| CX.L7.GSE.1000 |  | Startup/Checkout Terminal Units - General Supply & Exhaust Testing - L7 | 10d | 2026-07-01 | 2026-07-15 | CX.PH.EHF.1100, P2.L7.SMT.1240, P2.L7.SMT.1120, P2.L7.SMT.1230, P2.L7.EMT.1240, P2.L7.EMT.1120, P2.L7.EMT.1230, P2.L7.S.1550, P2.L7.S.1500, P2.L7.N.1500, CX.B2.SWGR.1010, CX.B2.MVEE.1010, P2.7.HE.2803.1140, P2.7.HE.2941.1140, P2.L7.N.1550, P2.7.HE.5959.1140, CX.L6.AHU.1010, P2.L7.LC.1500, CX.L7.AHU.1010, DDD2780, P2.L7.LC.1350 | 40d |  | MECH | MECH-2 |  |  |
| CX.L7.GSE.1010 |  | Start Up and set Supply/Exhaust Valves - General Supply & Exhaust Testing - L7 | 40d | 2026-07-16 | 2026-09-10 | CX.PH.EHF.1100, P2.L7.SMT.1120, P2.L7.EMT.1120, P2.L7.S.1550, P2.L7.S.1500, P2.L7.N.1500, CX.B2.SWGR.1010, CX.B2.MVEE.1010, P2.L7.N.1550, CX.L6.AHU.1010, P2.L7.LC.1500, CX.L7.AHU.1010, CX.L8.GSE.1010 | 0d |  | BAS | BAS-1 | 1 | TA |
| CX.L7.GSE.1020 |  | P2P/BAS Terminal Units - General Supply & Exhaust Testing - L7 | 25d | 2026-09-11 | 2026-10-15 | CX.L7.GSE.1000, CX.L7.GSE.1010 | 0d |  | BAS | BAS-1 | 1 | TA |
| CX.L7.GSE.1030 |  | PFPT Terminal Units - General Supply & Exhaust Testing - L7 | 20d | 2026-10-16 | 2026-11-12 | P2.L7.F.LC.5050, CX.B2.PCW.1030 FF, CX.B2.RWS.1030 FF, CX.L7.GSE.1020 | 0d |  | BAS | BAS-1 | 1 | TA |
| CX.L7.GSE.1040 |  | Preliminary TAB Floor - General Supply & Exhaust Testing - L7 | 60d | 2026-11-13 | 2027-02-10 | P2.L7.N.1090 FF+20d, P2.L7.S.1090 FF+20d, P2.L7.F.LC.2260 FF+20d, CX.L7.AHU.1020 FF, P2.L7.F.LC.1260 FF+20d, CX.L6.AHU.1020 FF, P2.L7.LC.1420 FF+20d, P2.L7.BR.2160 FF+20d, P2.L7.BR.1250 FF+20d, P2.7.HE.5959.1130 FF+20d, P2.7.HE.2803.1130 FF+20d, P2.7.HE.2941.1130 FF+20d, P2.L7.EMT.1210 FF+20d, P2.L7.SMT.1210 FF+20d, P2.L7.F.LC.4260 FF+20d, P2.L7.F.LC.3260 FF+20d, CX.L8.GSE.1040, CX.L7.GSE.1030 | 0d |  | TAB | TAB-1 | 1 | TA |
| CX.L7.GSE.1050 |  | FPT Terminal Units - General Supply & Exhaust Testing - L7 | 20d | 2027-02-11 | 2027-03-10 | CX.PH.EHF.1040, CX.B2.PCW.1040 FF, CX.B2.RWS.1040 FF, CX.L7.AHU.2040, CX.L7.AHU.1040, CX.L6.AHU.1040, CX.L7.GSE.1040 | 0d |  | BAS | BAS-1 | 1 | TA |

| ID | WBS | Activity | Duration | Start | Finish | Predecessors | Total float | Free float | Resp / SRLM | RESP / Trade | **NEAR CRITICAL** | RESP UPD |
| --- | --- | --- | --- | --- | --- | --- | --- | --- | --- | --- | --- | --- |
|  | 8 | **Level 8** |  | 2026-04-22 | 2026-10-15 |  |  |  |  |  |  |  |
|  | 1 | **480/120 Distribution Panels Dry XFMRs (2 Elec RMs)** |  | 2026-04-22 | 2026-05-29 |  |  |  |  |  |  |  |
| CX.L8.SWGR.1000 |  | Start Up - 480/120 Distribution Panels Bry XFMRs - L8 | 5d | 2026-04-22 | 2026-04-28 | P2.L8.S.1550, P2.L8.N.1550, P2.8.HE.2803.1140, P2.8.HE.5959.1140, P2.L8.SMT.1240, P2.L8.SMT.1230, P2.L8.EMT.1240, P2.L8.EMT.1230, CX.B2.SWGR.1010, CX.B2.MVEE.1010 | 152d | 12d | ELEC | ELEC-2 |  |  |
| CX.L8.SWGR.1010 |  | PFPT - 480/120 Distribution Panels Bry XFMRs - L8 | 5d | 2026-05-15 | 2026-05-21 | P2.8.IT.3903.250, P2.8.IT.2822.250, P2.8.IT.3948.250, CX.L8.SWGR.1000 | 140d | 0d | ELEC | ELEC-2 |  |  |
| CX.L8.SWGR.1020 |  | FPT - 480/120 Distribution Panels Bry XFMRs - L8 | 5d | 2026-05-22 | 2026-05-29 | CX.L8.SWGR.1010 | 172d | 80d | ELEC | ELEC-2 |  |  |
|  | 2 | **AHU 8-1, 8-2** |  | 2026-05-20 | 2026-10-06 |  |  |  |  |  |  |  |
| CX.L8.AHU.1000 |  | Startup - AHU 8-1, 8-2 - L8 | 10d | 2026-05-20 | 2026-06-03 | P2.L8.S.1500, P2.L8.N.1500, P2.8.HE.2803.1140, P2.8.HE.5959.1140, P2.L8.INT.S.1360, P2.L8.INT.N.1360, P2.L8.EMT.1240, P2.L8.EMT.1120, P2.L8.EMT.1230, CX.B2.SWGR.1010, CX.B2.MVEE.1010, P2.L7.LC.1550, DDD2330, DDD2930, DDD3080, DDD2180, DDD2130, DDD3130, DDD3030, FRG.P2.B2.M.5970.2090, FRG.P2.L8.EMT.1050, P2.L8.EMT.1270 | 69d | 27d | MECH | MECH-2 |  |  |
| CX.L8.AHU.1010 |  | P2P/BAS - AHU 8-1, 8-2 - L8 | 20d | 2026-07-14 | 2026-08-10 | CX.B2.CHS.1010, CX.B2.GHWS.1010, CX.B2.GMPGW.1010, CX.L8.AHU.1000 | 42d | 0d | BAS | BAS-1 |  |  |
| CX.L8.AHU.1020 |  | Test and Balance - AHU 8-1, 8-2 - L8 | 20d | 2026-08-11 | 2026-09-08 | CX.L8.AHU.1010 | 87d | 0d | TAB | TAB-1 |  |  |
| CX.L8.AHU.1030 |  | PFPT - AHU 8-1, 8-2 - L8 | 10d | 2026-09-09 | 2026-09-22 | P2.8.IT.3903.250, P2.8.IT.2822.250, P2.8.IT.3948.250, CX.B2.CHS.1040, CX.B2.GHWS.1040 FF, CX.B2.CSH.1030, CX.B2.GMPGW.1040, CX.L8.AHU.1020 | 92d | 0d | BAS | BAS-1 |  |  |
| CX.L8.AHU.1040 |  | FPT - AHU 8-1, 8-2 - L8 | 10d | 2026-09-23 | 2026-10-06 | CX.B2.CSH.1040 FF, CX.L8.AHU.1030, CX.L8.SWGR.1020 | 92d | 0d | BAS | BAS-1 |  |  |
|  | 3 | **General Supply & Exhaust Terminal Unit Testing** |  | 2026-07-01 | 2026-10-15 |  |  |  |  |  |  |  |
| CX.L8.GSE.1000 |  | Startup/Checkout Terminal Units - General Supply & Exhaust Testing - L8 | 20d | 2026-07-01 | 2026-07-29 | CX.PH.EHF.1100, P2.L8.S.1550, P2.L8.S.1500, P2.L8.N.1550, P2.L8.N.1500, P2.8.HE.2803.1140, P2.8.HE.5959.1140, P2.L8.INT.S.1360, P2.L8.INT.S.1400, P2.L8.INT.N.1400, P2.L8.INT.N.1360, P2.L8.SMT.1240, P2.L8.SMT.1120, P2.L8.SMT.1230, P2.L8.EMT.1240, P2.L8.EMT.1120, P2.L8.EMT.1230, CX.B2.SWGR.1010, CX.B2.MVEE.1010, CX.L6.AHU.1010, CX.L7.AHU.1010, DDD2780 | 30d | 0d | MECH | MECH-2 |  |  |
| CX.L8.GSE.1010 |  | Start Up and set Supply/Exhaust Valves - General Supply & Exhaust Testing - L8 | 10d | 2026-07-01 | 2026-07-15 | CX.PH.EHF.1100, P2.L8.S.1550, P2.L8.S.1500, P2.L8.N.1550, P2.L8.N.1500, P2.L8.INT.S.1360, P2.L8.INT.S.1400, P2.L8.INT.N.1400, P2.L8.INT.N.1360, P2.L8.SMT.1120, P2.L8.EMT.1120, CX.B2.SWGR.1010, CX.B2.MVEE.1010, CX.L6.AHU.1010, CX.L7.AHU.1010 | 0d |  | BAS | BAS-1 | 1 | TA |
| CX.L8.GSE.1020 |  | P2P/BAS Terminal Units - General Supply & Exhaust Testing - L8 | 10d | 2026-07-30 | 2026-08-12 | CX.L8.GSE.1010, CX.L8.GSE.1000 | 30d | 0d | BAS | BAS-1 |  |  |
| CX.L8.GSE.1030 |  | PFPT Terminal Units - General Supply & Exhaust Testing - L8 | 10d | 2026-08-13 | 2026-08-26 | P2.8.IT.3903.250, P2.8.IT.2822.250, P2.8.IT.3948.250, CX.B2.PCW.1030 FF, CX.B2.RWS.1030 FF, CX.L8.GSE.1020 | 30d | 0d | BAS | BAS-1 |  |  |
| CX.L8.GSE.1040 |  | Preliminary TAB Floor - General Supply & Exhaust Testing - L8 | 25d | 2026-08-27 | 2026-10-01 | P2.L8.INT.S.2020 FF+10d, P2.L8.BR.1250 FF+10d, P2.L8.F.CS.2140 FF+10d, P2.L8.F.CS.1140 FF+10d, P2.8.IT.3948.230 FF+10d, P2.8.IT.3903.230 FF+10d, P2.8.IT.2822.230 FF+10d, P2.8.HE.2803.1130 FF+10d, P2.L8.EMT.1210 FF+10d, P2.L8.SMT.1210 FF+10d, P2.L8.INT.N.2020 FF+10d, CX.L7.AHU.1020 FF, CX.L6.AHU.1020 FF, P2.8.HE.5959.1130 FF+10d, P2.L8.N.1420 FF+10d, P2.L8.S.1420 FF+10d, CX.L8.GSE.1030 | 30d | 5d | TAB | TAB-1 |  |  |
| CX.L8.GSE.1050 |  | FPT Terminal Units - General Supply & Exhaust Testing - L8 | 5d | 2026-10-09 | 2026-10-15 | CX.PH.EHF.1040, CX.B2.PCW.1040 FF, CX.B2.RWS.1040 FF, CX.L7.AHU.1040, CX.L6.AHU.1040, CX.L8.GSE.1040, CX.L8.AHU.1040 | 90d | 38d | BAS | BAS-1 |  |  |
|  | 9 | **Penthouse** |  | 2026-02-16 | 2026-12-17 |  |  |  |  |  |  |  |
|  | 5 | **AHU 9-1, 9-2** |  | 2026-04-28 | 2026-09-15 |  |  |  |  |  |  |  |
| CX.PH.AHU.1000 |  | Startup - AHU 9-1, 9-2 - PH | 5d | 2026-04-28 | 2026-05-04 | P2.PH.S.1550, P2.PH.N.1550, CX.B2.SWGR.1010, CX.B2.MVEE.1010, DDD3080, DDD2930 | 123d | 1d | MECH | MECH-2 |  |  |
| CX.PH.AHU.1010 |  | P2P/BAS - AHU 9-1, 9-2 - PH | 10d | 2026-05-06 | 2026-05-19 | CX.B2.CHS.1010, CX.B2.GHWS.1010, CX.PH.AHU.1000 | 122d | 0d | BAS | BAS-1 |  |  |
| CX.PH.AHU.1020 |  | Test and Balance - AHU 9-1, 9-2 - PH | 15d | 2026-05-20 | 2026-06-10 | CX.PH.AHU.1010 | 122d | 57d | TAB | TAB-1 |  |  |
| CX.PH.AHU.1030 |  | PFPT - AHU 9-1, 9-2 - PH | 5d | 2026-09-01 | 2026-09-08 | CX.B2.CHS.1040, CX.B2.GHWS.1040 FF, CX.B2.CSH.1030, CX.PH.AHU.1020 | 65d | 0d | BAS | BAS-1 |  |  |
| CX.PH.AHU.1040 |  | FPT - AHU 9-1, 9-2 - PH | 5d | 2026-09-09 | 2026-09-15 | CX.B2.CSH.1040 FF, CX.PH.AHU.1030 | 92d | 5d | BAS | BAS-1 |  |  |

| ID | WBS | Activity | Duration | Start | Finish | Predecessors | Total float | Free float | Resp / SRLM | RESP UPD | RESP / Trade |
| --- | --- | --- | --- | --- | --- | --- | --- | --- | --- | --- | --- |
|  | 2 | **Exhaust Fans** |  | 2026-02-23 | 2026-10-06 |  |  |  |  |  |  |
| CX.PH.EHF.1150 |  | Startup - Exhaust Fans - Lab - PH | 5d | 2026-02-23 | 2026-02-27 | P2.PH.S.1550, P2.PH.S.1500, P2.PH.N.1500, CX.B2.SWGR.1010, CX.B2.MVEE.1010 | 54d | 0d | MECH | SS | MECH-2 |
| CX.PH.EHF.1000 |  | Startup - Exhaust Fans - Clinical - PH | 7d | 2026-03-02 | 2026-03-10 | CX.PH.EHF.1150, P2.PH.S.1550, P2.PH.S.1500, P2.PH.N.1500, CX.B2.SWGR.1010, CX.B2.MVEE.1010 | 54d | 0d | MECH | SS | MECH-2 |
| CX.PH.EHF.1100 |  | P2P/BAS - Exhaust Fans - Lab - PH | 5d | 2026-03-02 | 2026-03-06 | CX.PH.EHF.1150 | 81d | 36d | BAS | SS | BAS-1 |
| CX.PH.EHF.1010 |  | P2P/BAS - Exhaust Fans - Clinical - PH | 10d | 2026-03-11 | 2026-03-24 | CX.PH.EHF.1000 | 54d | 50d | BAS | SS | BAS-1 |
| CX.PH.EHF.1160 |  | Startup - Exhaust Fans - Level 5 BSL Sterility - PH | 5d | 2026-04-28 | 2026-05-04 | P2.PH.S.1550, P2.PH.S.1500, P2.PH.N.1550, P2.PH.N.1500, CX.B2.SWGR.1010, CX.B2.MVEE.1010, CX.PH.EHF.1000 | 52d | 0d | MECH |  | MECH-2 |
| CX.PH.EHF.1110 |  | P2P/BAS - Exhaust Fans - Level 5 BSL Sterility - PH | 5d | 2026-05-05 | 2026-05-11 | CX.PH.EHF.1160 | 140d | 63d | BAS |  | BAS-1 |
| CX.PH.EHF.1170 |  | Startup - Exhaust Fans - Level 7 Sterility PH | 3d | 2026-05-05 | 2026-05-07 | CX.PH.EHF.1160, P2.PH.S.1550, P2.PH.S.1500, P2.PH.N.1550, P2.PH.N.1500, CX.B2.SWGR.1010, CX.B2.MVEE.1010 | 52d | 0d | MECH |  | MECH-2 |
| CX.PH.EHF.1120 |  | P2P/BAS - Exhaust Fans - Level 7 Sterility PH | 5d | 2026-05-08 | 2026-05-14 | CX.PH.EHF.1170 | 102d | 60d | BAS |  | BAS-1 |
| CX.PH.EHF.1180 |  | Startup - Exhaust Fans - Cath - Central Steril - PH | 5d | 2026-05-08 | 2026-05-14 | CX.PH.EHF.1170, P2.PH.S.1550, P2.PH.S.1500, P2.PH.N.1550, P2.PH.N.1500, CX.B2.SWGR.1010, CX.B2.MVEE.1010 | 52d | 0d | MECH |  | MECH-2 |
| CX.PH.EHF.1130 |  | P2P/BAS - Exhaust Fans - Cath - Central Steril - PH | 5d | 2026-05-15 | 2026-05-21 | CX.PH.EHF.1180 | 132d | 0d | BAS |  | BAS-1 |
| CX.PH.EHF.1190 |  | Startup - Exhaust Fans - ISO - BSC - ETO - PH | 10d | 2026-05-15 | 2026-05-29 | CX.PH.EHF.1180, P2.PH.S.1550, P2.PH.S.1500, P2.PH.N.1550, P2.PH.N.1500, CX.B2.SWGR.1010, CX.B2.MVEE.1010 | 52d | 0d | MECH |  | MECH-2 |
| CX.PH.EHF.1140 |  | P2P/BAS - Exhaust Fans - ISO - BSC - ETO - PH | 10d | 2026-06-01 | 2026-06-12 | CX.PH.EHF.1190 | 142d | 45d | BAS |  | BAS-1 |
| CX.PH.EHF.1020 |  | Test and Balance - Exhaust Fans - PH | 15d | 2026-08-18 | 2026-09-08 | CX.B2.AHU.2020 FF, CX.PH.EHF.1100 FF, CX.PH.EHF.1110 FF, CX.PH.EHF.1120 FF, CX.PH.EHF.1130 FF, CX.PH.EHF.1010 FF, CX.PH.EHF.1140 FF, CX.L8.AHU.1020 FF, CX.PH.AHU.1020 FF, CX.L7.AHU.2020 FF, CX.L7.AHU.1020 FF, CX.L6.AHU.2020 FF, CX.L6.AHU.1020 FF, CX.L5.AHU.1020 FF, CX.L4.AHU.2020 FF, CX.L4.AHU.1020 FF, CX.L3.AHU.1020 FF, CX.L2.AHU.1020 FF, CX.L1.AHU.1020 FF | 87d | 0d | TAB |  | TAB-1 |
| CX.PH.EHF.1030 |  | PFPT - Exhaust Fans - PH | 10d | 2026-09-09 | 2026-09-22 | CX.PH.EHF.1020 | 87d | 0d | BAS |  | BAS-1 |
| CX.PH.EHF.1040 |  | FPT - Exhaust Fans - PH | 10d | 2026-09-23 | 2026-10-06 | CX.PH.EHF.1030, CX.PH.AHU.1040 | 87d | 0d | BAS |  | BAS-1 |
|  | 3 | **Heat Recovery Units** |  | 2026-06-01 | 2026-12-10 |  |  |  |  |  |  |
| CX.PH.HRU.1000 |  | Startup - Heat Recovery Units - PH | 20d | 2026-06-01 | 2026-06-26 | CX.PH.EHF.1190, CX.PH.EHF.1150, CX.PH.EHF.1160, CX.PH.EHF.1170, CX.PH.EHF.1180, P2.PH.S.1550, P2.PH.S.1500, P2.PH.N.1550, P2.PH.N.1500, CX.B2.SWGR.1010, CX.B2.MVEE.1010, CX.PH.EHF.1000 | 52d | 0d | MECH |  | MECH-2 |
| CX.PH.HRU.1010 |  | P2P/BAS - Heat Recovery Units - PH | 60d | 2026-06-29 | 2026-09-22 | CX.PH.HRU.1000, CX.B2.GHWS.1010 | 52d | 0d | BAS |  | BAS-1 |
| CX.PH.HRU.1020 |  | Test and Balance - Heat Recovery Units - PH | 30d | 2026-09-23 | 2026-11-03 | CX.PH.HRU.1010, CX.PH.EHF.1020 FF | 52d | 0d | TAB |  | TAB-1 |
| CX.PH.HRU.1030 |  | PFPT - Heat Recovery Units - PH | 15d | 2026-11-04 | 2026-11-24 | CX.PH.HRU.1020, CX.B2.GHWS.1040 FF | 52d | 0d | BAS |  | BAS-1 |
| CX.PH.HRU.1040 |  | FPT - Heat Recovery Units - PH | 10d | 2026-11-25 | 2026-12-10 | CX.PH.HRU.1030, CX.PH.EHF.1040, CX.PH.EHF.1040 FF | 52d | 0d | BAS |  | BAS-1 |
|  | 1 | **General Supply & Exhaust Terminal Unit Testing** |  | 2026-04-28 | 2026-10-13 |  |  |  |  |  |  |
| CX.PH.GSE.1000 |  | Startup/Checkout Terminal Units - General Supply & Exhaust Testing - PH | 5d | 2026-04-28 | 2026-05-04 | CX.PH.EHF.1100, P2.PH.S.1550, P2.PH.S.1500, P2.PH.N.1550, P2.PH.N.1500, CX.B2.SWGR.1010, CX.B2.MVEE.1010, DDD2780 | 172d | 0d | MECH |  | MECH-2 |
| CX.PH.GSE.1010 |  | P2P/BAS Terminal Units - General Supply & Exhaust Testing - PH | 10d | 2026-05-05 | 2026-05-18 | CX.PH.GSE.1000 | 172d | 48d | BAS |  | BAS-1 |
| CX.PH.GSE.1020 |  | PFPT Terminal Units - General Supply & Exhaust Testing - PH | 10d | 2026-07-28 | 2026-08-10 | CX.PH.GSE.1010, CX.B2.PCW.1030 FF, CX.B2.RWS.1030 FF | 124d | 0d | TAB |  | TAB-1 |
| CX.PH.GSE.1030 |  | Preliminary TAB - General Supply & Exhaust Testing - PH | 5d | 2026-08-11 | 2026-08-17 | CX.PH.GSE.1020, P2.L9.F.1090 FF+2d, P2.PH.N.1420 FF+2d, P2.PH.S.1420 FF+2d | 124d | 35d | BAS |  | BAS-1 |
| CX.PH.GSE.1040 |  | FPT Terminal Units - General Supply & Exhaust Testing - PH | 5d | 2026-10-07 | 2026-10-13 | CX.PH.GSE.1030, CX.PH.EHF.1040, CX.B2.PCW.1040 FF, CX.B2.RWS.1040 FF | 89d | 40d | BAS |  | BAS-1 |

| ID | WBS | Activity | Duration | Start | Finish | Predecessors | Total float | Free float | Resp / SRLM | RESP UPD | RESP / Trade | CalendarDays | Update Status |
| --- | --- | --- | --- | --- | --- | --- | --- | --- | --- | --- | --- | --- | --- |
|  | 4 | **High Purity Water System** |  | 2026-02-16 | 2026-12-17 |  |  |  |  |  |  |  |  |
| CX.PH.HPRT.1000 |  | Startup - High Purity Water System - PH | 20d | 2026-02-16 | 2026-03-13 | P2.B2.M.5970.1510, P2.PH.S.1500, P2.PH.N.1500, CX.B2.SWGR.1010, CX.B2.MVEE.1010 | 216d | 0d | MECH | SS | MECH-2 |  |  |
| CX.PH.HPRT.1010 |  | P2P/BAS - High Purity Water System - PH | 20d | 2026-03-16 | 2026-04-10 | CX.PH.HPRT.1000 | 216d | 0d | BAS | SS | BAS-1 |  |  |
| CX.PH.HPRT.1020 |  | PFPT - High Purity Water System - PH | 10d | 2026-04-13 | 2026-04-24 | CX.PH.HPRT.1010 | 216d | 159d | BAS |  | BAS-1 |  |  |
| CX.PH.HPRT.1030 |  | FPT - High Purity Water System - PH | 5d | 2026-12-11 | 2026-12-17 | CX.PH.HPRT.1020, CX.PH.HRU.1040 | 57d |  | BAS |  | BAS-1 |  |  |
|  | 15 | **OHD Perimeter Blowers** |  | 2026-02-02 | 2026-03-20 |  |  |  |  |  |  |  |  |
| CX.BLOW.1000 |  | Startup Blower Systems at OH Doors | 15d | 2026-02-02 | 2026-02-20 | CX.B2.SWGR.1010, CX.B2.MVEE.1010 | 203d | 0d | MECH | SS | MECH-2 | 0 |  |
| CX.BLOW.1010 |  | PFPT Blower Systems at OH Doors | 15d | 2026-02-23 | 2026-03-13 | CX.BLOW.1000 | 203d | 0d | MECH | SS | MECH-2 | 0 |  |
| CX.BLOW.1020 |  | FPT Blower Systems at OH Doors | 5d | 2026-03-16 | 2026-03-20 | CX.BLOW.1010 | 203d | 40d | MECH | SS | MECH-2 | 0 |  |
|  | 16 | **Vacuum/Air/Oxygen Systems** |  | 2026-03-16 | 2026-04-10 |  |  |  |  |  |  |  |  |
| CX.VAO.1000 |  | System Startup | 5d | 2026-03-16 | 2026-03-20 | P2.B2.M.2930.1020, P2.FAC.3.Z1.140, P2.FAC.3.Z1.130, P2.FAC.3.Z3.180, P2.FAC.3.Z3.170, BP2.089.3.100, P2.B2.M.2930.1010, P2.L9.F.1260 | 231d | 0d | MECH | SS | MECH-2 |  |  |
| CX.VAO.1010 |  | QC Testing | 5d | 2026-03-23 | 2026-03-27 | CX.VAO.1000 | 231d | 0d | MECH | SS | MECH-2 |  |  |
| CX.VAO.1020 |  | System Monitoring Testing | 5d | 2026-03-30 | 2026-04-03 | CX.VAO.1010 | 231d | 0d | MECH | SS | MECH-2 |  |  |
| CX.VAO.1030 |  | Room Commissioning Verification | 5d | 2026-04-06 | 2026-04-10 | CX.VAO.1020 | 231d |  | MECH | SS | MECH-2 |  |  |
|  | 21 | **Purified Lab Water** |  | 2026-05-26 | 2026-06-22 |  |  |  |  |  |  |  |  |
| CX.PRLW.1000 |  | System Startup | 5d | 2026-05-26 | 2026-06-01 | P2.B2.M.5970.1510, P2.PH.S.1600, BP1.226.2.160 | 181d | 0d | PLMB | SS | PLMB-1 |  | O |
| CX.PRLW.1010 |  | QC Testing | 5d | 2026-06-02 | 2026-06-08 | CX.PRLW.1000 | 181d | 0d | PLMB | SS | PLMB-1 |  |  |
| CX.PRLW.1020 |  | System Monitoring Testing | 5d | 2026-06-09 | 2026-06-15 | CX.PRLW.1010 | 181d | 0d | PLMB | SS | PLMB-1 |  |  |
| CX.PRLW.1030 |  | Room Commissioning Verification | 5d | 2026-06-16 | 2026-06-22 | CX.PRLW.1020 | 181d |  | PLMB | SS | PLMB-1 |  |  |
|  | 22 | **Carbon Dioxide/Nitrous Oxide** |  | 2026-10-21 | 2026-11-17 |  |  |  |  |  |  |  |  |
| CX.CDNO.1000 |  | System Startup | 5d | 2026-10-21 | 2026-10-27 | CX.L5.BSL.1080 | 77d | 0d | MECH |  | MECH-2 |  |  |
| CX.CDNO.1010 |  | QC Testing | 5d | 2026-10-28 | 2026-11-03 | CX.CDNO.1000 | 77d | 0d | MECH |  | MECH-2 |  |  |
| CX.CDNO.1020 |  | System Monitoring Testing | 5d | 2026-11-04 | 2026-11-10 | CX.CDNO.1010 | 77d | 0d | MECH |  | MECH-2 |  |  |
| CX.CDNO.1030 |  | Room Commissioning Verification | 5d | 2026-11-11 | 2026-11-17 | CX.CDNO.1020 | 77d |  | MECH |  | MECH-2 |  |  |

| ID | WBS | Activity | Type | Duration | Start | Finish | Predecessors | Total float | Free float | Calendar | Temp Orig Dur | Resp / SRLM | PHASE | SCH DEV | RESP / Trade | Pick #2 | Z.RESP | **NEAR CRITICAL** | RESP UPD | DFW | Update Status | CATW |
| --- | --- | --- | --- | --- | --- | --- | --- | --- | --- | --- | --- | --- | --- | --- | --- | --- | --- | --- | --- | --- | --- | --- |
|  | 11 | **Punchlist/Life Safety Testing & Inspection/Acceptance (Draft)** |  |  | 2026-06-22 | 2027-04-21 |  |  |  |  |  |  |  |  |  |  |  |  |  |  |  |  |
| P2.PIA.110 |  | Pre-Testing Fire Alarm Systems |  | 20d | 2026-06-22 | 2026-07-20 | CX.B2.SWGR.1040, CX.B2.SWGR.1030, CX.B2.MVEE.1020 | 149d | 0d |  | 160 | ELEC | P2-5 | PRELIM | ELEC-2 |  |  |  |  |  |  |  |
| P2.PIA.100 |  | Contractor & A/E Punchlist & Punchlist Correction |  | 90d | 2026-08-20 | 2026-12-29 | P2.L6.CL.1310 FF, P2.B2.CL.1310 FF, P2.L8.INT.S.2080 FF, P2.L4.CL.1310 FF, P2.L2.INT.S.2080 FF, P2.L6.BR.2190 FF, P2.L6.BR.1300 FF, P2.B2.BR.1300 FF, P2.L4.BR.1190 FF, P2.L6.F.CS.2290 FF, P2.B3.2070 FF, P2.B2.BR.2190 FF, P2.B2.EXBR.1350 FF, P2.L8.BR.1300 FF, P2.L2.CL.1310 FF, P2.L4.F.CS.3290 FF, P2.L2.BR.4300 FF, P2.B2.EXBR.1280 FF, P2.L8.F.CS.2290 FF, P2.L6.F.CS.1290 FF, P2.L4.F.CS.2290 FF, P2.6.IT.3929.250 FF, P2.L2.BR.3300 FF, P2.L4.F.CS.1290 FF, P2.6.IT.2865.250 FF, P2.L8.F.CS.1290 FF, P2.6.IT.2818.250 FF, P2.L2.BR.2190 FF, P2.4.IT.3875.250 FF, P2.4.IT.2818.250 FF, P2.UTT.320 FF, P2.8.IT.3948.250 FF, P2.4.IT.3930.250 FF, P2.8.IT.3903.250 FF, P2.L2.BR.1190 FF, P2.L2.F.CS.2290 FF, P2.8.IT.2822.250 FF, P2.B2.IT.2806.250 FF, P2.L3.F.CS.1290 FF, P2.L1.BR.4190 FF, P2.L1.BR.3190 FF, P2.L1.BR.2190 FF, P2.FAC.Z2.9030 FF, P2.L9.F.1310 FF, P2.FAC.Z1.9030 FF, P2.L1.BR.1190 FF, P2.L1.F.CS.2290 FF, P2.L1.F.CS.1290 FF, P2.FAC.F.9030 FF, P2.L6.INT.N.2080 FF, P2.B2.F.LC.2390 FF, P2.L4.INT.N.2080 FF, P2.B2.F.LC.1390 FF, P2.B2.LC.1550 FF, P2.L6.INT.S.2080 FF, P2.L8.INT.N.2080 FF, P2.L2.INT.N.2080 FF, P2.L4.INT.S.2080 FF, P2.L7.F.LC.2390 FF, P2.PR.EMMR.2.9030 FF, P2.PR.S.9030 FF, P2.L5.F.LC.1390 FF, P2.PR.N.9030 FF, P2.L1.F.LC.3390 FF, P2.L3.F.LC.1390 FF, P2.L7.F.LC.1390 FF, P2.MR.2-8.9030 FF, P2.L1.F.LC.2390 FF, P2.MR.5-8.9030 FF, P2.L5.CL.1310 FF, P2.MR.EMT.9030 FF, P2.L1.F.LC.1390 FF, P2.L3.CL.1310 FF, P2.L7.CL.1310 FF, P2.L5.BR.2300 FF, P2.MR.E.9030 FF, P2.L3.BR.4190 FF, P2.MR.C.9030 FF, P2.L7.BR.2190 FF, P2.L5.BR.1190 FF, P2.MR.W.9030 FF, P2.L3.BR.3190 FF, P2.L3.BR.2190 FF, P2.L7.BR.1300 FF, P2.LR.L7.9030 FF, P2.L5.F.CS.1290 FF, P2.LR.L2.9030 FF, P2.L5.F.CS.2290 FF, P2.FAC.Z3.9030 FF, P2.L1.CL.1310 FF, P2.L3.BR.1190 FF, P2.L3.F.CS.2290 FF, P2.L1.BR.5190 FF, P2.L2.F.CS.1290 FF, P2.L5.F.LC.3390 FF, P2.L7.F.LC.4390 FF, P2.L3.F.LC.3390 FF, P2.L5.F.LC.2390 FF, P2.L7.F.LC.3390 FF, P2.L11.EMMR.3.9030 FF, P2.L11.5-9.9030 FF, P2.L3.F.LC.2390 FF, P2.PH.EMR.1.1280, P2.PH.EMR.2.1200, P2.PH.EL.3.1180, P2.10.VES.1.1180, P2.10.EL.3.1180, P2.B2.IT.2903.260 FF, P2.L8.CL.1310 FF, BP2.070.3.110 | 37d | 0d |  | 720 | HP | P2-5 | PRELIM | HP | FP |  |  |  |  |  |  |
| P2.PIA.120 |  | Final Life Safety Testing & Inspection |  | 15d | 2026-12-30 | 2027-01-20 | CX.PH.GSE.1040, CX.PH.HRU.1020, CX.PH.EHF.1020, P2.PIA.100, P2.PIA.110, P2.1.FP.6950.1060, CX.FS.1060, CX.FA.1040, CX.BAS.1030, CX.PH.AHU.1020, P2.GP1.14.1610, P2.GP3.14.1610, P2.GP4.14.1610, P2.2-9.9000, P2.5-9.9000, P2.2-8.9000, P2.2-10.9000, P2.3-9.9000, P2.3-10.9000, P2.5-8.9000, P2.5-10.9000, P2.6-9.9000 | 37d |  |  | 120 | MEP | P2-5 | PRELIM | MEP-2 | FP | Harris |  |  |  |  |  |
| P2.PIA.140 |  | Cleanroom Final Wipe Down & Lock Down |  | 20d | 2026-12-30 | 2027-01-27 | P2.PIA.100 | 45d |  |  | 160 | FCLEAN | P2-5 | PRELIM | FCLEAN |  |  |  |  |  |  |  |
| P2.PIA.150 |  | Final Intergrated System Testing |  | 20d | 2027-03-11 | 2027-04-07 | CX.PH.HPRT.1030, CX.PH.GSE.1040, P2.PIA.120 SS+13d, P2.PIA.140 SS+5d, P2.CLO.130, CX.CDNO.1030, CX.PRLW.1030, CX.VAO.1030, P2.PT.2010, P2.ETV.1140, P2.SUM.265 FF, P2.SUM.245, CX.FS.2080, CX.COMM.1060, CX.FHVAC.1010, CX.B2.AHU.1040, CX.B2.CHS.1040, CX.B2.SWGR.1050, CX.B2.GHWS.1040 FF, CX.B2.SWGR.1060, CX.B2.SWGR.1000, CX.B2.MVEE.1030, CX.CA.1030, CX.B2.SS.1030, CX.B2.RWS.1040, CX.B2.GSE.1050, CX.B2.SPLT.1060, CX.B2.AHU.2040, CX.B2.CWS.1040, CX.B2.PCW.1040, CX.B2.MGE.1040, CX.B2.MPE.1050, CX.B2.WHS.1040, CX.B2.CSH.1040, CX.L1.MRIS.1060, CX.B2.MRIS.1060, CX.B2.GMPRH.1040, CX.B2.GMPGW.1040, CX.L2.GSE.1050, CX.L1.GSE.1050, CX.L4.GSE.1050, CX.L3.GSE.1050, CX.L5.GSE.1050, CX.L5.BSL.1100, CX.L6.GSE.1050, P2.CLO.180 FF+5d, CX.L8.GSE.1050, CX.L7.GSE.1050, CX.L7.FRZ.1060 | 0d |  |  | 80 | AHJ | P2-5 | PRELIM | AHJ | FP |  | 1 | AM |  |  |  |
| P2.PIA.130 |  | Final Acceptance Inspections & Certifications |  | 10d | 2027-04-08 | 2027-04-21 | CX.PH.HPRT.1030, CX.PH.GSE.1040, P2.PIA.120 SS+13d, P2.PIA.140 SS+5d, P2.CLO.130, P2.PIA.150, CX.CDNO.1030, CX.PRLW.1030, CX.VAO.1030, P2.PT.2010, P2.ETV.1140, P2.SUM.265 FF, P2.SUM.245, CX.FS.2080, CX.COMM.1060, CX.FHVAC.1010, CX.B2.AHU.1040, CX.B2.CHS.1040, CX.B2.SWGR.1050, CX.B2.GHWS.1040 FF, CX.B2.SWGR.1060, CX.B2.SWGR.1000, CX.B2.MVEE.1030, CX.CA.1030, CX.B2.SS.1030, CX.B2.RWS.1040, CX.B2.GSE.1050, CX.B2.SPLT.1060, CX.B2.AHU.2040, CX.B2.CWS.1040, CX.B2.PCW.1040, CX.B2.MGE.1040, CX.B2.MPE.1050, CX.B2.WHS.1040, CX.B2.CSH.1040, CX.L1.MRIS.1060, CX.B2.MRIS.1060, CX.B2.GMPRH.1040, CX.B2.GMPGW.1040, CX.L2.GSE.1050, CX.L1.GSE.1050, CX.L1.CTS.1050, CX.L4.GSE.1050, CX.L3.MRIS.1060, CX.L3.GSE.1050, CX.L5.GSE.1050, CX.L5.BSL.1100, CX.L6.GSE.1050, P2.CLO.180 FF+5d, CX.L8.GSE.1050, CX.L7.GSE.1050, CX.L7.FRZ.1060 | 0d |  |  | 80 | AHJ | P2-5 | PRELIM | AHJ | FP |  | 1 | AM |  |  |  |
| EXS.131 |  | Substantial Completion - Phase 0,1,2 | milestone | 0d | 2027-04-21 | 2027-04-21 | EXS.105 FF, P2.SUM.235 FF, P1A.GARV.520 FF, PCO.185.146 FF, P2.GP1.14.1710 FF, P2.GP2.14.1710 FF, P2.GP3.14.1710 FF, P2.GP4.14.1710 FF, P2.2-9.9030 FF, P2.5-9.9030 FF, P2.2-8.9030 FF, P2.2-10.9030 FF, P2.3-9.9030 FF, P2.3-10.9030 FF, P2.5-8.9030 FF, P2.5-10.9030 FF, P2.6-9.9030 FF, P2.PIA.130 FF, P2.PIA.150, P2.PIA.150 FF, P2.DMSR.160 FF | 645d |  | 7D / SRLM | 0 | HP | P01 | PRELIM | HP | FP |  |  |  | 01 |  |  |
|  | 9 | **Phase 0,1,2 Close Out Records** |  |  | 2026-02-02 | 2027-02-11 |  |  |  |  |  |  |  |  |  |  |  |  |  |  |  |  |
| P2.CLO.140 |  | Prepare & Submit - O&M (Draft) |  | 90d | 2026-02-02 | 2026-06-08 | CX.B2.SWGR.1010, CX.B2.MVEE.1010 | 51d | 0d |  | 720 | MEP | P2-5 | PRELIM | MEP-2 |  | Harris |  | SS |  |  |  |
| P2.CLO.150 |  | Review & Approve - O&M (Draft) |  | 15d | 2026-06-09 | 2026-06-29 | P2.CLO.140 | 51d | 0d |  | 120 | NIH | P2-5 | PRELIM | NIH |  |  |  |  |  |  |  |
| P2.CLO.100 |  | Prepare & Submit - As-Built Records (Draft) |  | 60d | 2026-06-30 | 2026-09-23 | P2.CLO.150 | 51d | 0d |  | 480 | MEP | P2-5 | PRELIM | MEP-2 |  | Harris |  |  |  |  |  |
| P2.CLO.120 |  | Review & Approve - As-Built Records (Draft) |  | 20d | 2026-09-24 | 2026-10-21 | P2.CLO.100 | 51d | 12d |  | 160 | NIH | P2-5 | PRELIM | NIH |  |  |  |  |  |  |  |
| P2.CLO.110 |  | Prepare & Submit - As-Built Records (Final) |  | 30d | 2026-11-09 | 2026-12-22 | P2.CLO.120, CX.B2.MVEE.1020 FF, CX.B2.SWGR.1030 FF, CX.B2.SWGR.1040 FF, CX.B2.AHU.1030, CX.B2.SWGR.1040, CX.B2.SWGR.1030, CX.B2.MVEE.1020, CX.B2.SS.1020, CX.B2.RWS.1030, CX.B2.GSE.1030, CX.B2.AHU.2030, CX.B2.CWS.1030, CX.B2.PCW.1030, CX.B2.MGE.1030, CX.B2.MPE.1040, CX.B2.WHS.1030, CX.B2.CSH.1030, CX.L1.MRIS.1030, CX.L1.AHU.1030, CX.L1.SWGR.1010, CX.B2.GMPRH.1030, CX.B2.GMPGW.1030, CX.L3.AHU.1030, CX.L3.UPS.1010, CX.L3.SWGR.1010, CX.L2.GSE.1030, CX.L2.AHU.1030, CX.L2.SWGR.1010, CX.L1.GSE.1030, CX.L1.CTS.1030, CX.L3.GSE.1030 | 39d | 0d |  | 240 | MEP | P2-5 | PRELIM | MEP-2 |  | Harris |  |  |  |  |  |
| P2.CLO.160 |  | Prepare & Submit - O&M (Final) |  | 30d | 2026-11-09 | 2026-12-22 | P2.CLO.150, CX.GEN.1020, CX.PLUMB.1030, CX.B2.AHU.1030, CX.B2.CHS.1030, CX.B2.SWGR.1040, CX.B2.SWGR.1030, CX.B2.MVEE.1020, CX.B2.SS.1020, CX.B2.RWS.1030, CX.B2.GHWS.1030, CX.B2.GSE.1030, CX.B2.SPLT.1030, CX.B2.AHU.2030, CX.B2.CWS.1030, CX.B2.PCW.1030, CX.B2.MGE.1030, CX.B2.MPE.1040, CX.B2.WHS.1030, CX.B2.CSH.1030, CX.L1.AHU.1030, CX.L1.SWGR.1010, CX.B2.GMPRH.1030, CX.B2.GMPGW.1030, CX.L3.AHU.1030, CX.L3.UPS.1010, CX.L3.SWGR.1010, CX.L2.GSE.1030, CX.L2.AHU.1030, CX.L2.SWGR.1010, CX.L1.GSE.1030, CX.L1.CTS.1030, CX.L3.GSE.1030 | 34d | 0d |  | 240 | MEP | P2-5 | PRELIM | MEP-2 |  | Harris |  |  |  |  |  |
| P2.CLO.130 |  | Review & Approve - As-Built Records (Final) |  | 15d | 2026-12-23 | 2027-01-14 | P2.CLO.110 | 39d |  |  | 120 | NIH | P2-5 | PRELIM | NIH |  |  |  |  |  |  |  |
| P2.CLO.170 |  | Review & Approve - O&M (Final) |  | 15d | 2026-12-23 | 2027-01-14 | P2.CLO.160 | 34d | 0d |  | 120 | NIH | P2-5 | PRELIM | NIH |  |  |  |  |  |  |  |
| P2.CLO.180 |  | O&M Training and Instruction |  | 20d | 2027-01-15 | 2027-02-11 | P2.CLO.170 | 34d |  |  | 160 | MEP | P2-5 | PRELIM | MEP-2 |  | Harris |  |  |  |  |  |
|  | 15 | **Site Improvements** |  |  | 2025-12-01 | 2026-10-23 |  |  |  |  |  |  |  |  |  |  |  |  |  |  |  |  |
|  | 11 | **Generator Utility Yard** |  |  | 2025-12-01 | 2026-02-24 |  |  |  |  |  |  |  |  |  |  |  |  |  |  |  |  |
| P2.UTL.100 |  | Set/Assemble - ICU, Surgery Back-up Generators |  | 20d | 2025-12-01 | 2025-12-29 | P2.MDE.150, BP1.263.3.100 | 189d | 0d |  | 240 | ELEC | P2-5 | PRELIM | ELEC-2 |  |  |  | SS |  | O | CON |
| P2.UTL.110 |  | Final Controls, Power Feeders, Terminations - ICU, Surgery Back-up Generators |  | 20d | 2025-12-30 | 2026-01-27 | P2.UTL.100 | 189d | 0d |  | 240 | MEP | P2-5 | PRELIM | MEP-2 |  | Harris |  | SS |  |  | CON |
| P2.UTL.120 |  | Start up/Pre-check list - ICU, Surgery Back-up Generators |  | 10d | 2026-01-28 | 2026-02-10 | P2.UTL.110 | 189d | 0d |  | 80 | MEP | P2-5 | PRELIM | MEP-2 |  | Harris |  | SS |  |  | CON |
| P2.UTL.130 |  | Burn in Emergency Generators - ICU, Surgery Back-up Generators |  | 10d | 2026-02-11 | 2026-02-24 | P2.UTL.120 | 229d | 65d |  | 80 | ELEC | P2-5 | PRELIM | ELEC-2 |  |  |  | SS |  |  | CON |

| ID | WBS | Activity | Duration | Start | Finish | Predecessors | Total float | Free float | Temp Orig Dur | Update Status | Resp / SRLM | PHASE | RESP UPD | RESP / Trade | Z.RESP | Testing Type |
| --- | --- | --- | --- | --- | --- | --- | --- | --- | --- | --- | --- | --- | --- | --- | --- | --- |
|  | 3 | **O2 YARD** |  | 2025-12-01 | 2026-10-23 |  |  |  |  |  |  |  |  |  |  |  |
| P2.SITE.414 |  | NIH - Vendor Prep/Submit Shop Drawings to DB Team | 20d | 2025-12-01 | 2025-12-29 | P2C.DES.210 | 214d | 0d | 160 | O | NIH | P2-5 | ZK | NIH |  |  |
| P2.SITE.404 |  | DB Team - Coordinate Owner Furnished O2 Equipment | 40d | 2025-12-30 | 2026-02-24 | P2.SITE.414 | 214d | 0d | 320 |  | NIH | P2-5 | ZK | NIH |  |  |
| P2.SITE.2 |  | Rough in MEP to Pad | 20d | 2026-02-25 | 2026-03-24 | P2.UTL.100, P2.SITE.404 | 214d | 105d | 160 |  | MECH | P2-5 | SS | MECH-2 | Harris |  |
| P2.SITE.1 |  | Install Site Access, Curb, Pads & Roads | 20d | 2026-08-21 | 2026-09-18 | P1.BG.BF.170, P2.DES.VMU.680 FF, P2.SITE.2 | 109d | 0d | 160 |  | LAND | P2-5 |  | LAND |  | AT52 |
| P2.SITE.3 |  | Owner Install 02 Equipment | 5d | 2026-09-21 | 2026-09-25 | P2.SITE.404, P2.SITE.1, P2.UTT.330 | 109d | 0d | 320 |  | NIH | P2-5 |  | NIH |  |  |
| P2.SITE.4 |  | Install Yard Fence | 10d | 2026-09-28 | 2026-10-09 | P2.SITE.3 | 109d | 0d | 80 |  | LAND | P2-5 |  | LAND |  | AT51 |
| P2.SITE.5 |  | Final Topping Pavement & Markings | 10d | 2026-10-12 | 2026-10-23 | P2.SITE.4, BP8.320.3.110 | 109d | 0d | 80 |  | LAND | P2-5 |  | LAND |  | AT53 |
|  | 4 | **MICRO-BIO RETENTION PONDS** |  | 2026-01-20 | 2026-07-27 |  |  |  |  |  |  |  |  |  |  |  |
|  | 1 | **Pond 1** |  | 2026-01-20 | 2026-07-27 |  |  |  |  |  |  |  |  |  |  |  |
| P2.SITE.6 |  | FRP Basin Walls (Anti-Ram) - Pond 1 | 5d | 2026-01-20 | 2026-01-26 | P1.UTL.290, BP8.323.3.100, BP8.320.3.100, P2.HZ.E.141 | 134d | 0d | 40 |  | SITECON | P2-5 | TOAD | SITECON |  | AT52 |
| P2.SITE.7 |  | Concrete Cure - Pond 1 | 2d | 2026-01-27 | 2026-01-28 | P2.SITE.6 | 134d | 0d | 16 |  | SITECON | P2-5 | TOAD | SITECON |  |  |
| P2.SITE.11 |  | Install Stone Veneer - Pond 1 | 5d | 2026-01-29 | 2026-02-04 | P2.SITE.7, P2.FAD.ST.150 | 134d | 0d | 40 |  | EXTCLAD | P2-5 | TOAD | EXTCLAD |  | AT54 |
| P2.SITE.8 |  | East Walkway Storm Infrastructure Install & Back-fill - Pond 1 | 5d | 2026-01-29 | 2026-02-04 | P2.SITE.7 | 243d | 101d | 40 |  | LAND | P2-5 | TOAD | LAND |  | AT51 |
| P2.SITE.9 |  | Storm Infrastructure,Waterproofing & Base Layer - Pond 1 | 5d | 2026-01-29 | 2026-02-04 | P2.SITE.7 | 288d | 116d | 40 |  | LAND | P2-5 | TOAD | LAND |  | AT51 |
| P2.SITE.10 |  | Micro-Bio Plantings, Media, Mulch, and Final Cap Install - Pond 1 | 5d | 2026-07-21 | 2026-07-27 | P2.SITE.8, P2.SITE.9, P2.SITE.45 | 172d | 63d | 40 |  | LAND | P2-5 |  | LAND |  | AT51 |
|  | 2 | **Pond 2** |  | 2026-01-27 | 2026-07-27 |  |  |  |  |  |  |  |  |  |  |  |
| P2.SITE.64 |  | FRP Basin Walls (Anti-Ram) - Pond 2 | 5d | 2026-01-27 | 2026-02-02 | P2.SITE.6, P2.HZ.E.141 | 149d | 0d | 40 |  | SITECON | P2-5 | TOAD | SITECON |  | AT52 |
| P2.SITE.74 |  | Concrete Cure - Pond 2 | 2d | 2026-02-03 | 2026-02-04 | P2.SITE.64 | 149d | 0d | 16 |  | SITECON | P2-5 | TOAD | SITECON |  |  |
| P2.SITE.114 |  | Install Stone Veneer - Pond 2 | 5d | 2026-02-05 | 2026-02-11 | P2.SITE.74 | 149d | 15d | 40 |  | EXTCLAD | P2-5 | TOAD | EXTCLAD |  | AT54 |
| P2.SITE.94 |  | Storm Infrastructure,Waterproofing & Base Layer - Pond 2 | 5d | 2026-02-05 | 2026-02-11 | P2.SITE.74 | 283d | 111d | 40 |  | LAND | P2-5 | TOAD | LAND |  | AT51 |
| P2.SITE.104 |  | Micro-Bio Plantings, Media, Mulch, and Final Cap Install - Pond 2 | 5d | 2026-07-21 | 2026-07-27 | P2.SITE.94, P2.SITE.45 | 172d | 63d | 40 |  | LAND | P2-5 |  | LAND |  | AT51 |
|  | 3 | **Pond 3** |  | 2026-02-03 | 2026-07-27 |  |  |  |  |  |  |  |  |  |  |  |
| P2.SITE.124 |  | FRP Basin Walls (Anti-Ram) - Pond 3 | 5d | 2026-02-03 | 2026-02-09 | P2.HZ.E.141, P2.SITE.64 | 170d | 0d | 40 |  | SITECON | P2-5 | TOAD | SITECON |  | AT52 |
| P2.SITE.134 |  | Concrete Cure - Pond 3 | 2d | 2026-02-10 | 2026-02-11 | P2.SITE.124 | 238d | 0d | 16 |  | SITECON | P2-5 | TOAD | SITECON |  |  |
| P2.SITE.144 |  | Storm Infrastructure,Waterproofing & Base Layer - Pond 3 | 5d | 2026-02-12 | 2026-02-18 | P2.SITE.134 | 278d | 106d | 40 |  | LAND | P2-5 | TOAD | LAND |  | AT51 |
| P2.SITE.164 |  | Install Stone Veneer - Pond 3 | 5d | 2026-02-12 | 2026-02-18 | P2.SITE.134, P2.FAD.ST.150 | 238d | 96d | 40 |  | EXTCLAD | P2-5 | TOAD | EXTCLAD |  | AT54 |
| P2.SITE.154 |  | Micro-Bio Plantings, Media, Mulch, and Final Cap Install - Pond 3 | 5d | 2026-07-21 | 2026-07-27 | P2.SITE.144, P2.SITE.45 | 172d | 63d | 40 |  | LAND | P2-5 |  | LAND |  | AT51 |

| ID | WBS | Activity | Duration | Start | Finish | Predecessors | Total float | Free float | Temp Orig Dur | Testing Type | Resp / SRLM | PHASE | RESP UPD | RESP / Trade |
| --- | --- | --- | --- | --- | --- | --- | --- | --- | --- | --- | --- | --- | --- | --- |
|  | 4 | **Pond 4** |  | 2026-02-10 | 2026-07-27 |  |  |  |  |  |  |  |  |  |
| P2.SITE.174 |  | FRP Basin Walls (Anti-Ram) - Pond 4 | 5d | 2026-02-10 | 2026-02-16 | P2.SITE.124 | 170d | 0d | 40 | AT52 | SITECON | P2-5 | TOAD | SITECON |
| P2.SITE.184 |  | Concrete Cure - Pond 4 | 2d | 2026-02-17 | 2026-02-18 | P2.SITE.174 | 178d | 0d | 16 |  | SITECON | P2-5 | TOAD | SITECON |
| P2.SITE.194 |  | Storm Infrastructure,Waterproofing & Base Layer - Pond 4 | 5d | 2026-02-19 | 2026-02-25 | P2.SITE.184 | 273d | 101d | 40 | AT51 | LAND | P2-5 | TOAD | LAND |
| P2.SITE.214 |  | Install Stone Veneer - Pond 4 | 5d | 2026-02-19 | 2026-02-25 | P2.SITE.184, P2.FAD.ST.150 | 178d | 2d | 40 | AT54 | EXTCLAD | P2-5 | TOAD | EXTCLAD |
| P2.SITE.204 |  | Micro-Bio Plantings, Media, Mulch, and Final Cap Install - Pond 4 | 5d | 2026-07-21 | 2026-07-27 | P2.SITE.194, P2.SITE.45 | 172d | 63d | 40 | AT51 | LAND | P2-5 |  | LAND |
|  | 5 | **Pond 5** |  | 2026-03-19 | 2026-07-27 |  |  |  |  |  |  |  |  |  |
| P2.SITE.224 |  | FRP Basin Walls (Anti-Ram) - Pond 5 | 5d | 2026-03-19 | 2026-03-25 | P2.SITE.174, P2.SITE.37 | 148d | 0d | 40 | AT52 | SITECON | P2-5 | TOAD | SITECON |
| P2.SITE.234 |  | Concrete Cure - Pond 5 | 2d | 2026-03-26 | 2026-03-27 | P2.SITE.224 | 206d | 0d | 16 |  | SITECON | P2-5 | TOAD | SITECON |
| P2.SITE.244 |  | Storm Infrastructure,Waterproofing & Base Layer - Pond 5 | 5d | 2026-03-30 | 2026-04-03 | P2.SITE.234 | 246d | 74d | 40 | AT51 | LAND | P2-5 | TOAD | LAND |
| P2.SITE.264 |  | Install Stone Veneer - Pond 5 | 5d | 2026-03-30 | 2026-04-03 | P2.SITE.234, P2.FAD.ST.150 | 206d | 64d | 40 | AT54 | EXTCLAD | P2-5 | TOAD | EXTCLAD |
| P2.SITE.254 |  | Micro-Bio Plantings, Media, Mulch, and Final Cap Install - Pond 5 | 5d | 2026-07-21 | 2026-07-27 | P2.SITE.244, P2.SITE.45 | 172d | 63d | 40 | AT51 | LAND | P2-5 |  | LAND |
|  | 6 | **Pond 6** |  | 2026-05-13 | 2026-07-27 |  |  |  |  |  |  |  |  |  |
| P2.SITE.274 |  | FRP Basin Walls (Anti-Ram) - Pond 6 | 5d | 2026-05-13 | 2026-05-19 | P2.HZ.W.91, P2.SITE.224 | 114d | 0d | 40 | AT52 | SITECON | P2-5 |  | SITECON |
| P2.SITE.284 |  | Concrete Cure - Pond 6 | 2d | 2026-05-20 | 2026-05-21 | P2.SITE.274 | 207d | 0d | 16 |  | SITECON | P2-5 |  | SITECON |
| P2.SITE.314 |  | Install Stone Veneer - Pond 6 | 5d | 2026-05-22 | 2026-05-29 | P2.SITE.284, P2.FAD.ST.150 | 212d | 103d | 40 | AT54 | EXTCLAD | P2-5 |  | EXTCLAD |
| P2.SITE.294 |  | Storm Infrastructure,Waterproofing & Base Layer - Pond 6 | 5d | 2026-06-11 | 2026-06-17 | P2.SITE.284, P1.UTL.370 | 194d | 22d | 40 | AT51 | LAND | P2-5 |  | LAND |
| P2.SITE.304 |  | Micro-Bio Plantings, Media, Mulch, and Final Cap Install - Pond 6 | 5d | 2026-07-21 | 2026-07-27 | P2.SITE.294, P2.SITE.45 | 172d | 63d | 40 | AT51 | LAND | P2-5 |  | LAND |
|  | 5 | **SITE HARDSCAPES** |  | 2026-01-22 | 2026-07-27 |  |  |  |  |  |  |  |  |  |
|  | 1 | **Building Perimeter Walkway** |  | 2026-01-22 | 2026-07-27 |  |  |  |  |  |  |  |  |  |
|  | 1 | **North Walkways** |  | 2026-01-22 | 2026-03-11 |  |  |  |  |  |  |  |  |  |
| P2.SITE.12 |  | Rain Leader Installation to Micro-Bio Ponds (North) | 3d | 2026-01-22 | 2026-01-26 | P2.SITE.6 FF | 134d | 0d | 24 | AT52 | SITECON | P2-5 | TOAD | SITECON |
| P2.SITE.13 |  | FRP North Concrete Bases & Walks | 5d | 2026-01-27 | 2026-02-02 | P2.SITE.12, BP8.320.3.100, P2.FAC.5.Z3.180 | 134d | 0d | 40 | AT52 | SITECON | P2-5 | TOAD | SITECON |
| P2.SITE.14 |  | North Concrete Bases Cure | 2d | 2026-02-03 | 2026-02-04 | P2.SITE.13 | 134d | 0d | 16 | AT52 | SITECON | P2-5 | TOAD | SITECON |
| P2.SITE.15 |  | North Walkway Paver Base and Install | 20d | 2026-02-05 | 2026-03-04 | P2.SITE.11, P2.SITE.14, P2.SITE.114 FF | 134d | 0d | 40 | AT51 | LAND | P2-5 | TOAD | LAND |
| P2.SITE.16 |  | Stone & Plantings at Walkways | 5d | 2026-03-05 | 2026-03-11 | P2.SITE.15, P2.FAD.ST.150 | 148d | 0d | 40 | AT51 | LAND | P2-5 | TOAD | LAND |

| ID | WBS | Activity | Duration | Start | Finish | Predecessors | Total float | Free float | Temp Orig Dur | Testing Type | Resp / SRLM | PHASE | RESP UPD | RESP / Trade | CATW | SCH DEV | *NIH Resp Check* |
| --- | --- | --- | --- | --- | --- | --- | --- | --- | --- | --- | --- | --- | --- | --- | --- | --- | --- |
|  | 2 | **West Walkways** |  | 2026-02-17 | 2026-04-17 |  |  |  |  |  |  |  |  |  |  |  |  |
| P2.SITE.17 |  | Rain Leader Installation to Micro-Bio Ponds (West) | 2d | 2026-02-17 | 2026-02-18 | P2.SITE.174, P1.BGS.330 | 176d | 0d | 16 | AT52 | SITECON | P2-5 | TOAD | SITECON |  |  |  |
| P2.SITE.18 |  | FRP West Concrete Bases & Walks | 5d | 2026-02-19 | 2026-02-25 | P2.SITE.17, P1.BGS.330, P2.FAC.1.Z2.160, BP8.320.3.100 | 176d | 0d | 40 | AT52 | SITECON | P2-5 | TOAD | SITECON |  |  |  |
| P2.SITE.19 |  | West Concrete Bases Cure | 2d | 2026-02-26 | 2026-02-27 | P2.SITE.18 | 176d | 0d | 16 | AT52 | SITECON | P2-5 | TOAD | SITECON |  |  |  |
| P2.SITE.20 |  | West Walkway Paver Base and Install | 5d | 2026-03-02 | 2026-03-06 | P2.SITE.214, P2.SITE.19 | 176d | 0d | 40 | AT51 | LAND | P2-5 | TOAD | LAND |  |  |  |
| P2.SITE.21 |  | Stone & Plantings at Walkways | 20d | 2026-03-09 | 2026-04-03 | P2.SITE.20 | 241d | 0d | 40 | AT51 | LAND | P2-5 | TOAD | LAND |  |  |  |
| P2.SITE.22 |  | Pedestrian Bridge Installation | 10d | 2026-04-06 | 2026-04-17 | P2.SITE.21 | 241d | 132d | 80 | AT51 | LAND | P2-5 |  | LAND |  |  |  |
|  | 3 | **South Walkways** |  | 2026-05-20 | 2026-07-27 |  |  |  |  |  |  |  |  |  |  |  |  |
| P2.SITE.23 |  | FRP Anti-Ram Walls Foundations | 5d | 2026-05-20 | 2026-05-27 | P2.SITE.274 | 114d | 0d | 40 | AT52 | SITECON | P2-5 |  | SITECON |  |  |  |
| P2.SITE.24 |  | Rough in Site Lighting at Walls | 5d | 2026-05-28 | 2026-06-03 | P2.SITE.23 | 114d | 0d | 40 |  | ELEC | P2-5 |  | ELEC-2 |  |  |  |
| P2.SITE.25 |  | FRP South Concrete Bases & Walks | 5d | 2026-06-04 | 2026-06-10 | P2.SITE.24, P2.FAC.5.Z1.210, BP8.320.3.100 | 114d | 0d | 40 | AT52 | SITECON | P2-5 |  | SITECON |  |  |  |
| P2.SITE.26 |  | South Concrete Bases Cure | 2d | 2026-06-11 | 2026-06-12 | P2.SITE.25 | 142d | 0d | 16 | AT52 | SITECON | P2-5 |  | SITECON |  |  |  |
| P2.SITE.27 |  | Install Stone Veneer | 5d | 2026-06-15 | 2026-06-19 | P2.SITE.26 | 142d | 0d | 40 | AT54 | EXTCLAD | P2-5 |  | EXTCLAD |  |  |  |
| P2.SITE.28 |  | South Walkway Paver Base and Install | 20d | 2026-06-22 | 2026-07-20 | P2.SITE.27 | 172d | 0d | 40 | AT51 | LAND | P2-5 |  | LAND |  |  |  |
| P2.SITE.29 |  | Stone, Lights, & Plantings at Walkways | 5d | 2026-07-21 | 2026-07-27 | P2.SITE.28, P2.SITE.45 | 172d | 63d | 40 | AT51 | LAND | P2-5 |  | LAND |  |  |  |
|  | 2 | **Pesestrian Sidewalks** |  | 2026-06-22 | 2026-07-27 |  |  |  |  |  |  |  |  |  |  |  |  |
| P2.SITE.33 |  | FRP East Pedestrian Walkways | 5d | 2026-06-22 | 2026-06-26 | P2.SITE.27, P2.FAC.5.Z3.180 | 142d | 0d | 40 | AT52 | SITECON | P2-5 |  | SITECON |  |  |  |
| P2.SITE.30 |  | FRP North Curb & Gutter | 5d | 2026-06-29 | 2026-07-06 | P1.UTL.230, P2.SITE.8, P2.SITE.33 | 142d | 0d | 40 | AT52 | SITECON | P2-5 |  | SITECON |  |  |  |
| P2.SITE.31 |  | FRP West Curb & Gutter | 5d | 2026-07-07 | 2026-07-13 | P2.SITE.264, P2.SITE.164, P2.SITE.114, P2.SITE.30 | 142d | 0d | 40 | AT52 | SITECON | P2-5 |  | SITECON |  |  |  |
| P2.SITE.34 |  | FRP North Pedestrian Walkways | 5d | 2026-07-07 | 2026-07-13 | P2.SITE.30 | 162d | 0d | 40 | AT52 | SITECON | P2-5 |  | SITECON |  |  |  |
| P2.SITE.32 |  | FRP South Curb & Gutter | 5d | 2026-07-14 | 2026-07-20 | P2.SITE.31 | 142d | 0d | 40 | AT52 | SITECON | P2-5 |  | SITECON |  |  |  |
| P2.SITE.35 |  | FRP West Pedestrian Walkways | 5d | 2026-07-14 | 2026-07-20 | P2.SITE.31 | 177d | 68d | 40 | AT52 | SITECON | P2-5 |  | SITECON |  |  |  |
| P2.SITE.36 |  | FRP South Pedestrian Walkways | 5d | 2026-07-21 | 2026-07-27 | P2.SITE.32 | 142d | 0d | 40 | AT52 | SITECON | P2-5 |  | SITECON |  |  |  |
|  | 1 | **Building Area & Surrounding Roads** |  | 2026-03-05 | 2026-05-22 |  |  |  |  |  |  |  |  |  |  |  |  |
| P2.SIP.145 |  | Shift Construction Fence around Building | 5d | 2026-03-05 | 2026-03-11 | P2.SITE.15 | 148d | 0d | 40 |  | CRAFT | P2-5 | TOAD | CRAFT | CON | PRELIM |  |
| P2.SIP.140 |  | Remove/Restore Temporary Island In-fills | 20d | 2026-03-30 | 2026-04-24 | P2.SITE.39 | 186d | 0d | 160 |  | SITE | P2-5 | TOAD | SITE | CON | PRELIM | T.MEP.UTIL |
| P2.SIP.155 |  | Final Site Finishes/Furnishings/Boulders | 20d | 2026-04-27 | 2026-05-22 | P2.SITE.40, P2.SIP.140 | 186d | 0d | 240 |  | LAND | P2-5 |  | LAND | CON | PRELIM |  |

| ID | WBS | Activity | Duration | Start | Finish | Predecessors | Total float | Free float | Temp Orig Dur | Testing Type | Resp / SRLM | PHASE | RESP UPD | RESP / Trade |
| --- | --- | --- | --- | --- | --- | --- | --- | --- | --- | --- | --- | --- | --- | --- |
|  | 6 | **ROADWAYS / PAVING / MARKINGS / SIGNAGE** |  | 2026-03-12 | 2026-07-01 |  |  |  |  |  |  |  |  |  |
|  | 1 | **North Roadway Loop** |  | 2026-03-12 | 2026-04-01 |  |  |  |  |  |  |  |  |  |
| P2.SITE.37 |  | Road Base Course | 5d | 2026-03-12 | 2026-03-18 | P1.UTL.310, P2.SITE.16, P2.SIP.145 | 148d | 0d | 40 | AT53 | ASPHALT | P2-5 | TOAD | ASPHALT |
| P2.SITE.38 |  | Road Surface Layer | 5d | 2026-03-19 | 2026-03-25 | P2.SITE.37, BP8.320.3.110 | 186d | 0d | 40 | AT53 | ASPHALT | P2-5 | TOAD | ASPHALT |
| P2.SITE.39 |  | Road Pavement Markings | 2d | 2026-03-26 | 2026-03-27 | P2.SITE.38, BP8.320.3.110 | 186d | 0d | 16 |  | ASPHALT | P2-5 | TOAD | ASPHALT |
| P2.SITE.40 |  | Road Final Signage | 3d | 2026-03-30 | 2026-04-01 | P2.SITE.39 | 203d | 17d | 24 |  | SIGN | P2-5 | TOAD | SIGN |
|  | 2 | **West Building Roadway** |  | 2026-03-19 | 2026-04-08 |  |  |  |  |  |  |  |  |  |
| P2.SITE.324 |  | Road Base Course | 5d | 2026-03-19 | 2026-03-25 | P1.UTL.320, P1.UTL.330, P2.SITE.37 | 243d | 0d | 40 |  | ASPHALT | P2-5 | TOAD | ASPHALT |
| P2.SITE.334 |  | Road Surface Layer | 5d | 2026-03-26 | 2026-04-01 | P2.SITE.324, BP8.320.3.110 | 248d | 0d | 40 |  | ASPHALT | P2-5 | TOAD | ASPHALT |
| P2.SITE.344 |  | Road Pavement Markings | 2d | 2026-04-02 | 2026-04-03 | P2.SITE.334, BP8.320.3.110 | 248d | 0d | 16 |  | ASPHALT | P2-5 | TOAD | ASPHALT |
| P2.SITE.354 |  | Road Final Signage | 3d | 2026-04-06 | 2026-04-08 | P2.SITE.344 | 248d | 139d | 24 |  | SIGN | P2-5 |  | SIGN |
|  | 3 | **South Roadway & Access Drive** |  | 2026-06-11 | 2026-07-01 |  |  |  |  |  |  |  |  |  |
| P2.SITE.364 |  | Road Base Course | 5d | 2026-06-11 | 2026-06-17 | P1.UTL.340, P1.UTL.350, P1.UTL.370, P2.SITE.324 | 189d | 0d | 40 |  | ASPHALT | P2-5 |  | ASPHALT |
| P2.SITE.374 |  | Road Surface Layer | 5d | 2026-06-18 | 2026-06-24 | P2.SITE.364, BP8.320.3.110 | 189d | 0d | 40 |  | ASPHALT | P2-5 |  | ASPHALT |
| P2.SITE.384 |  | Road Pavement Markings | 2d | 2026-06-25 | 2026-06-26 | P2.SITE.374, BP8.320.3.110 | 189d | 0d | 16 |  | ASPHALT | P2-5 |  | ASPHALT |
| P2.SITE.394 |  | Road Final Signage | 3d | 2026-06-29 | 2026-07-01 | P2.SITE.384 | 189d | 80d | 24 |  | SIGN | P2-5 |  | SIGN |
|  | 7 | **SITE FURNISHINGS / SITE LIGHTING / PLANTINGS** |  | 2026-05-26 | 2026-09-08 |  |  |  |  |  |  |  |  |  |
| P2.SITE.46 |  | Install Building Exterior Signage | 5d | 2026-05-26 | 2026-06-01 | P2.SIP.155 | 211d | 102d | 40 |  | SIGN | P2-5 |  | SIGN |
| P2.SITE.47 |  | Rough in Site Light at Subgrade | 20d | 2026-06-04 | 2026-07-01 | P2.SITE.24 | 153d | 0d | 80 |  | ELEC | P2-5 |  | ELEC-2 |
| P2.SITE.44 |  | Install Walkway Handrails | 5d | 2026-06-29 | 2026-07-06 | P2.SITE.33 | 187d | 78d | 40 |  | SPECIAL | P2-5 |  | SPECIAL |
| P2.SITE.48 |  | FRP Light Foundatations | 20d | 2026-07-02 | 2026-07-30 | P2.SITE.47 | 153d | 0d | 80 |  | ELEC | P2-5 |  | ELEC-2 |
| P2.SITE.45 |  | Install Benches & Trashcans | 5d | 2026-07-14 | 2026-07-20 | P2.SITE.34, BP8.129.3.100, P2.SIP.155 FF | 162d | 0d | 40 |  | SPECIAL | P2-5 |  | SPECIAL |
| P2.SITE.50 |  | Install Plantings, Stones, and Greenery at East Walkway | 10d | 2026-07-21 | 2026-08-03 | P2.SITE.33, P2.SITE.45 | 167d | 58d | 80 |  | LAND | P2-5 |  | LAND |
| P2.SITE.41 |  | Install Plaground Surface | 10d | 2026-07-28 | 2026-08-10 | P2.SITE.36, P2.SIP.155 | 142d | 0d | 80 |  | SPECIAL | P2-5 |  | SPECIAL |
| P2.SITE.49 |  | Install Site Lights (Pole, Wall, and Canopy) | 15d | 2026-07-31 | 2026-08-20 | P2.SITE.48, BP1.265.3.120, BP1.265.3.110 | 154d | 45d | 120 |  | ELEC | P2-5 |  | ELEC-2 |
| P2.SITE.54 |  | Stabilize Site | 1d | 2026-07-31 | 2026-07-31 | P2.SITE.48 | 153d | 0d | 8 |  | LAND | P2-5 |  | LAND |
| P2.SITE.42 |  | Install Playground Equipment | 10d | 2026-08-11 | 2026-08-24 | P2.SITE.41, BP8.116.3.100 | 142d | 0d | 80 |  | SPECIAL | P2-5 |  | SPECIAL |
| P2.SITE.51 |  | Install Plantings, Stones, and Greenery at Ring Road | 5d | 2026-08-11 | 2026-08-17 | P2.SITE.41, P2.SITE.45 | 147d | 0d | 40 |  | LAND | P2-5 |  | LAND |
| P2.SITE.52 |  | Install Plantings & Stone at South Entrances | 5d | 2026-08-18 | 2026-08-24 | P2.SITE.51, P2.SITE.45 | 147d | 0d | 40 | AT51 | LAND | P2-5 |  | LAND |
| P2.SITE.43 |  | Install Playground & Other Decorative Fence/Gates | 10d | 2026-08-25 | 2026-09-08 | P2.SITE.42, BP8.323.3.200 | 142d | 33d | 80 |  | SPECIAL | P2-5 |  | SPECIAL |
| P2.SITE.53 |  | Install Plantings and Greenery at Island | 5d | 2026-08-25 | 2026-08-31 | P2.SITE.52, P2.SITE.45, BP2.070.3.110 | 147d | 38d | 40 | AT51 | LAND | P2-5 |  | LAND |

| ID | WBS | Activity | Type | Duration | Start | Finish | Predecessors | Total float | Free float | Calendar | Temp Orig Dur | Resp / SRLM | PHASE | SCH DEV | RESP / Trade | Pick #2 | **NEAR CRITICAL** | RESP UPD | DFW | CATW | Z.RESP |
| --- | --- | --- | --- | --- | --- | --- | --- | --- | --- | --- | --- | --- | --- | --- | --- | --- | --- | --- | --- | --- | --- |
|  | 9 | **Phase 1 & 2 - Demobilization & Site Restoration** |  |  | 2026-08-03 | 2026-11-13 |  |  |  |  |  |  |  |  |  |  |  |  |  |  |  |
| P2.DMSR.120 |  | Remove Overhead Pedestrian Pathways/Protection |  | 15d | 2026-08-03 | 2026-08-21 | P2.SITE.54 | 153d | 44d |  | 120 | CRAFT | P2-5 | PRELIM | CRAFT |  |  |  |  |  |  |
| P2.DMSR.160 |  | Site Punchlist - Phase 1 and 2 |  | 15d | 2026-10-26 | 2026-11-13 | P2.SITE.264, P2.SITE.254, P2.SITE.204, P2.SITE.214, P2.SITE.154, P2.SITE.164, P2.SITE.104, P2.SITE.114, P2.SITE.11, P2.SITE.10, P2.SITE.5, P2.SITE.40, P2.SITE.35, P2.SITE.29, P2.SITE.22, P2.SITE.304, P2.SITE.314, P2.SITE.53, P2.SITE.54, P2.SITE.49, P2.SITE.50, P2.SITE.44, P2.SITE.45, P2.SITE.46, P2.SITE.394, P2.SITE.43, P2.SITE.354, P2.DMSR.120, P2.FAD.FM.250 | 109d |  |  | 120 | T | P2-5 | PRELIM | T |  |  |  |  |  |  |
|  | 11 | **PHASE 3 - NIH MOVES (Draft)** |  |  | 2027-04-22 | 2027-08-24 |  |  |  |  |  |  |  |  |  |  |  |  |  |  |  |
| P3.NIH.100 |  | NIH Department Moves |  | 125d | 2027-04-22 | 2027-08-24 | EXS.130 | 0d |  | 7D / SRLM | 1000 | NIH | P2-5 | PRELIM | NIH | FP | 1 | AM |  |  |  |
|  | 6 | **PHASE 4 - NIH DECOMMISSION CRC F WING (Draft)** |  |  | 2027-08-02 | 2027-10-18 |  |  |  |  |  |  |  |  |  |  |  |  |  |  |  |
| P4.NIH.100 |  | DcX Existing CRC Labs for Turnover to Contractor |  | 78d | 2027-08-02 | 2027-10-18 | P3.NIH.100 SS+102d | 0d |  | 7D / SRLM | 624 | NIH | P2-5 | PRELIM | NIH | FP | 1 | AM |  |  |  |
| EXS.151 |  | Phase 3 & 4 - NIH Complete | milestone | 0d | 2027-10-18 | 2027-10-18 | EXS.120 FF, P3.NIH.100, P4.NIH.100 | 465d |  | 7D / SRLM | 0 | HP | P01 | PRELIM | HP | FP |  |  | 01 |  |  |
|  | 12 | **PHASE 5 - PRECONSTRUCTION (Draft)** |  |  | 2027-04-22 | 2027-10-25 |  |  |  |  |  |  |  |  |  |  |  |  |  |  |  |
| P5.PREC.100 |  | Phase 5 Preconstruction Planning - Logistics, Barrier Walls, Material Handling |  | 40d | 2027-04-22 | 2027-06-17 | MOD.P5.XXX.160, P3.NIH.100 SS | 40d | 0d |  | 320 | HP | P2-5 | PRELIM | HP |  |  |  |  |  |  |
| P5.PREC.120 |  | Phase 5 Preconstruction Planning - Selective Investigations Existing Condtions |  | 30d | 2027-05-06 | 2027-06-17 | P5.PREC.100 SS+10d | 40d | 0d |  | 240 | HP | P2-5 | PRELIM | HP |  |  |  |  |  |  |
| P5.PREC.110 |  | Phase 5 Prefabrication |  | 90d | 2027-06-18 | 2027-10-25 | P5.PREC.100, P5.DES.340 | 86d |  |  | 720 | T | P2-5 | PRELIM | T |  |  |  |  |  |  |
| P5.PWS.290 |  | Prepare & Submit - Site Specific Phase 5 Logistics Plan |  | 20d | 2027-06-18 | 2027-07-16 | P5.PREC.100, P5.PREC.120 | 50d | 0d |  | 160 | HP | P2-5 | PRELIM | HP |  |  |  |  | SUB |  |
| P5.PWS.300 |  | Review & Approve - Site Specific Phase 5 Logistics Plan |  | 15d | 2027-07-19 | 2027-08-06 | P5.PWS.290 | 50d |  |  | 120 | NIH | P2-5 | PRELIM | NIH |  |  |  |  | RAP |  |
|  | 7 | **PHASE 5 - CONSTRUCTION - CRC RENOVATION (Draft)** |  |  | 2027-10-19 | 2029-01-25 |  |  |  |  |  |  |  |  |  |  |  |  |  |  |  |
| P5.CRC.110 |  | Mobilization/Set up Barrier Walls/ICRA Measures (Floors B2- L4) |  | 35d | 2027-10-19 | 2027-11-22 | P5.DEMO.2.100, P5.PWS.300, EXS.150, EXS.170 | 0d |  | 7D / SRLM | 280 | CRAFT | P2-5 | PRELIM | CRAFT | FP | 1 | AM |  |  |  |
| P5.CRC.100 |  | Decommission MEP Systems/Cut/Cap/Make Safe for Demo (Floors B2- L4) |  | 56d | 2027-11-23 | 2028-01-17 | P5.CRC.110 | 0d |  | 7D / SRLM | 448 | MEP | P2-5 | PRELIM | MEP-2 | FP | 1 | AM |  |  | Harris |
| P5.CRC.120 |  | Interior Demolition (Floors L1- L7) |  | 100d | 2028-01-04 | 2028-04-12 | P5.SUM.255 FF, P5.CRC.100 SS+42d | 0d |  | 7D / SRLM | 800 | HP | P2-5 | PRELIM | HP | FP | 1 | AM |  |  |  |
| P5.CRC.180 |  | Levels 5-6 Demo & Finish Work to support SRLM to CRC connections (FLS req) |  | 60d | 2028-01-04 | 2028-03-03 | P5.CRC.100 SS+42d | 37d | 0d | 7D / SRLM | 800 | DEMO.1 | P2-5 | PRELIM | DEMO.1 | FP |  |  |  |  |  |
| P5.CRC.160 |  | MEP Rough in & Partitions (Floors L1- L7) |  | 125d | 2028-02-29 | 2028-07-02 | P5.PREC.110, P5.BIM.L3.50.100, P5.BIM.L2.50.100, P5.BIM.L1.50.100, P5.CRC.120 SS+56d, P5.BIM.L6.50.100, P5.BIM.L5.50.100, P5.BIM.L4.50.100 | 0d |  | 7D / SRLM | 1000 | T | P2-5 | PRELIM | T | FP | 1 | AM |  |  |  |
| P5.CRC.190 |  | Levels 5-6 SRLM to CRC Connection for FLS & Egress |  | 20d | 2028-03-04 | 2028-03-23 | P5.CRC.180 | 37d | 0d | 7D / SRLM | 800 | HP | P2-5 | PRELIM | HP | FP |  |  |  |  |  |
| P5.CRC.200 |  | FM Inspections, Approval, & Shut down of Stair 3-9 |  | 20d | 2028-03-24 | 2028-04-12 | P5.CRC.190 | 37d |  | 7D / SRLM | 800 | HP | P2-5 | PRELIM | HP | FP |  |  |  |  |  |
| P5.CRC.130 |  | Renovation & Interior Fit Out (Floors L1- L7) |  | 170d | 2028-05-20 | 2028-11-05 | P5.CRC.200, P5.CRC.100, P5.SUM.265 FF, P5.3-9.1050 FF, P5.CRC.120 SS+56d, P5.CRC.160 SS+81d | 0d |  | 7D / SRLM | 1360 | T | P2-5 | PRELIM | T | FP | 1 | AM |  |  |  |
| P5.CRC.170 |  | Demobilize Field Offices at MLP-14 Garage |  | 84d | 2028-08-15 | 2028-11-06 | P5.CRC.160, P5.CRC.120, P5.CRC.130 SS+87d | 55d |  | 7D / SRLM | 672 | CRAFT | P2-5 | PRELIM | CRAFT |  |  |  |  |  |  |
| P5.CRC.140 |  | Commissioning/Punchlist |  | 56d | 2028-11-06 | 2028-12-31 | P5.CRC.130, P5.CRC.170 FF, P5.PT.1040 FF | 0d |  | 7D / SRLM | 448 | T | P2-5 | PRELIM | T | FP | 1 | AM |  |  |  |
| P5.CRC.150 |  | Acceptance Inspections & Certifications |  | 25d | 2029-01-01 | 2029-01-25 | P5.CRC.140, P5.CLO.213, P5.DMSR.200, P5.SUM.275 FF, P5.CLO.170 FF+10d | 0d |  | 7D / SRLM | 168 | NIH | P2-5 | PRELIM | NIH | FP | 1 | AM |  |  |  |

| ID | WBS | Activity | Duration | Start | Finish | Predecessors | Total float | Free float | Temp Orig Dur | Testing Type | *NIH Resp Check* | Resp / SRLM | PHASE | RESP / Trade | Z.RESP | SCH DEV |
| --- | --- | --- | --- | --- | --- | --- | --- | --- | --- | --- | --- | --- | --- | --- | --- | --- |
|  | 1 | **Stair 3-9 Connection from SRLM to CRC** |  | 2027-10-19 | 2028-09-26 |  |  |  |  |  |  |  |  |  |  |  |
| P5.3-9.1000 |  | Work-Plan Investigation of Lab Office 6F512 for Reinforcing of Roof Beam (Stair 3-9) | 20d | 2027-10-19 | 2027-11-15 | P4.NIH.100, P2A.DES.555 | 77d | 0d | 40 | AT45 | ! | HP | P2-5 | HP |  |  |
| P5.3-9.1080 |  | Work-Plan Development for Reinforcing of Roof Beam (Stair 3-9) | 20d | 2027-11-16 | 2027-12-15 | P5.3-9.1000 | 77d | 0d | 40 | AT45 | ! | HP | P2-5 | HP |  |  |
| P5.3-9.1010 |  | NIH Notification - Review and Approval of Roof Beam Reinforcing Work Plan (Stair 3-9) | 20d | 2027-12-16 | 2028-01-14 | P5.3-9.1080 | 77d | 49d | 40 | AT45 | ! | NIH | P2-5 | NIH |  |  |
| P5.3-9.1060 |  | NIH Notification - Confirmation and Approval of Roof Beam Reinforcing Work Plan (Stair 3-9) | 20d | 2028-03-24 | 2028-04-20 | P5.3-9.1010, P5.CRC.190 | 28d | 0d | 40 | AT45 | ! | NIH | P2-5 | NIH |  |  |
| P5.3-9.1070 |  | NIH Vacate Lab Office 6F512 | 20d | 2028-04-21 | 2028-05-18 | P5.3-9.1060 | 28d | 0d | 40 | AT45 | ! | NIH | P2-5 | NIH |  |  |
| P5.3-9.1020 |  | Utilty Shut down Survey & Notification | 30d | 2028-05-19 | 2028-06-30 | P5.3-9.1070 | 28d | 0d | 40 | AT45 | ! | NIH | P2-5 | NIH |  |  |
| P5.3-9.1030 |  | Pull back Grid, Reroute Utilities, and Clear Lab Office for Structural Work | 20d | 2028-07-03 | 2028-07-31 | P5.3-9.1020, P5.3-9.1070 | 28d | 0d | 40 | AT45 | ! | MEP | P2-5 | MEP-2 | Harris |  |
| P5.3-9.1040 |  | Cut & Reinforce Existing Down-Turned Beam in CRC - Lab Office 6F512 | 20d | 2028-08-01 | 2028-08-28 | P5.3-9.1030 | 28d | 0d | 40 | AT45 | ! | MISCMTL | P2-5 | MISCMTL |  |  |
| P5.3-9.1050 |  | Complete Stair 3-9 final conditions and door connection, and Comissioning | 20d | 2028-08-29 | 2028-09-26 | P5.3-9.1040 | 28d |  | 40 | AT45 | ! | MISCMTL | P2-5 | MISCMTL |  |  |
|  | 5 | **Phase 5 - Demobilization & Site Restoration** |  | 2028-10-09 | 2028-12-27 |  |  |  |  |  |  |  |  |  |  |  |
| P5.DMSR.160 |  | Remove Vehicle Inspection Station | 20d | 2028-10-09 | 2028-11-06 | P5.CRC.130 FF | 2d | 0d | 160 |  |  | CRAFT | P2-5 | CRAFT |  | PRELIM |
| P5.DMSR.180 |  | Restore Site Lighting Along Center Drive/Cloister Ct | 20d | 2028-10-16 | 2028-11-10 | P5.DMSR.160 SS+5d | 7d | 5d | 200 |  |  | ELEC | P2-5 | ELEC-2 |  | PRELIM |
| P5.DMSR.170 |  | Restore Center Drive & Complete Site Finishes along Center Drive | 20d | 2028-11-06 | 2028-12-05 | P5.DMSR.160, P2.SUM.275, P5.DMSR.180 FF+10d | 2d | 0d | 320 | AT51 |  | LAND | P2-5 | LAND |  | PRELIM |
| P5.DMSR.190 |  | Restore Shoulder & Complete Site Finishes at Cloister Ct | 20d | 2028-11-06 | 2028-12-05 | P5.DMSR.160, P5.DMSR.180 FF+10d, P5.DMSR.160 SS | 2d | 0d | 240 | AT51 |  | LAND | P2-5 | LAND |  | PRELIM |
| P5.DMSR.200 |  | Site Punchlist Phase 5 | 15d | 2028-12-06 | 2028-12-27 | P5.DMSR.190, P5.DMSR.170 | 2d |  | 120 |  |  | T | P2-5 | T |  | PRELIM |
|  | 8 | **PHASE 5 - CLOSE OUT (Draft)** |  | 2028-07-03 | 2028-12-27 |  |  |  |  |  |  |  |  |  |  |  |
| P5.CLO.140 |  | Prepare & Submit - As-Built Records (Draft) | 45d | 2028-07-03 | 2028-09-05 | P5.CRC.160 | 20d | 0d | 360 |  |  | MEP | P2-5 | MEP-2 | Harris | PRELIM |
| P5.CLO.150 |  | Review & Approve - As-Built Records (Draft) | 15d | 2028-09-06 | 2028-09-26 | P5.CLO.140 | 38d | 28d | 120 |  |  | NIH | P2-5 | NIH |  | PRELIM |
| P5.CLO.193 |  | Prepare & Submit - O&M (Final) | 30d | 2028-09-25 | 2028-11-06 | P5.CLO.140, P5.CRC.130 FF | 7d | 0d | 240 |  |  | MEP | P2-5 | MEP-2 | Harris | PRELIM |
| P5.CLO.160 |  | Prepare & Submit - As-Built Records (Final) | 20d | 2028-11-06 | 2028-12-05 | P5.CRC.130, P5.CLO.150 | 10d | 0d | 160 |  |  | MEP | P2-5 | MEP-2 | Harris | PRELIM |
| P5.CLO.203 |  | Review & Approve - O&M (Final) | 15d | 2028-11-06 | 2028-11-28 | P5.CLO.193 | 7d | 0d | 120 |  |  | NIH | P2-5 | NIH |  | PRELIM |
| P5.CLO.213 |  | O&M Training and Instruction | 15d | 2028-11-29 | 2028-12-19 | P5.CLO.203 | 7d |  | 120 |  |  | MEP | P2-5 | MEP-2 | Harris | PRELIM |
| P5.CLO.170 |  | Review & Approve - As-Built Records (Final) | 15d | 2028-12-06 | 2028-12-27 | P5.CLO.160 | 10d |  | 120 |  |  | NIH | P2-5 | NIH |  | PRELIM |

| WBS | Activity |
| --- | --- |
| 14 | **Shut Down Consideration** |

## Activity codes

| Code | Value | Meaning |
| --- | --- | --- |
| 744 | AC | Criswell |
| 744 | DL | Logue |
| 744 | EJ | Johnson |
| 744 | FM | Metzger |
| 744 | JH | Havranek |
| 744 | JO | Ortiz |
| 744 | JP | Jordon P |
| 744 | JT | J. Tucker |
| 744 | JW | Weiss |
| 744 | JWHIT | Whitby |
| 744 | KD | Dougherty |
| 744 | MLF | Lissette |
| 744 | ND | Dejean |
| 744 | RA | Rohin |
| 744 | RAL | R Allison |
| 744 | SM | Morrisette |
| 744 | SS | Shalhout |
| 744 | TA | T Allaire |
| 744 | TC | Curtin |
| 744 | TCASP | T. Casper |
| 744 | TG | Gazaway |
| 744 | TOAD | Darell Cook |
| 744 | TS | Schomer |
| 744 | ZK | Z. Kaminski |
| CATW | CON | Construction Activity |
| CATW | DES | Design |
| CATW | DSR | NIH Design Review |
| CATW | FAB | Fabrication |
| CATW | GEN | General Data |
| CATW | PM | Permitting |
| CATW | RAP | Submittal Review |
| CATW | SUB | Construction Submittal |
| DFW | 01 | General Conditions |
| PHASE | P01 | Phases 0 & 1 |
| PHASE | P2-5 | Phases 2-5 |
| RESP UPD | AM | Andy M |
| RESP UPD | AW | Akia W |
| RESP UPD | BA | Brian A |
| RESP UPD | BO | Bodie I |
| RESP UPD | FM | Faith M |
| RESP UPD | JB | Jad B |
| RESP UPD | JH | John H |
| RESP UPD | JP | Jordon P |
| RESP UPD | JT | Jamar T |
| RESP UPD | JW | John W |
| RESP UPD | KD | Kyle D |
| RESP UPD | MLF | Lissette F |
| RESP UPD | ND | Nicole D |
| RESP UPD | RA | Rohin A |
| RESP UPD | RAL | Riley A |
| RESP UPD | SM | Scott M |
| RESP UPD | SS | Shareef S |
| RESP UPD | TA | Tyrel A |
| RESP UPD | TC | Tyler Cur |
| RESP UPD | TCASP | Tyler Casp |
| RESP UPD | TG | Tyler Gaz |
| RESP UPD | TOAD | Darrel C |
| RESP UPD | TS | Tommy S |
| RESP UPD | WLN | Willhem L |
| RESP UPD | ZK | Zach K |
| RESP / Trade | ACP | Goettle / ACP - Structure |
| RESP / Trade | ACT | ACT Ceilings / CJ Coakley - Finishes |
| RESP / Trade | AHJ | Authorities Having Jurisdiction |
| RESP / Trade | ARCH | ZGF / Architect |
| RESP / Trade | ASPHALT | Asphalt / TBD - Site |
| RESP / Trade | AVB | AndieMac / Air Vapor Barrier - Facade |
| RESP / Trade | BAS | Harris / BAS - OH Mech.HAVC |
| RESP / Trade | BAS-1 | Harris / BAS - T Mech |
| RESP / Trade | BAS-2 | Harris / BAS - IW MECH |
| RESP / Trade | BIM | BIM Team |
| RESP / Trade | CIT | NIH / CIT |
| RESP / Trade | CIVIL | Strittmatter / Earthwork - Mass Ex |
| RESP / Trade | CLEAN-1 | Cleanrooms - LSP - Finishes |
| RESP / Trade | CMU | Masonry / Moehrle |
| RESP / Trade | COLD | Cold Rooms / BioCold - Finishes |
| RESP / Trade | CONC | HP / Concrete |
| RESP / Trade | CRAFT | HP / Craft |
| RESP / Trade | CURE | Cure Time |
| RESP / Trade | DEMO.1 | North Star / Demo |
| RESP / Trade | DEMO.1A | ACM / Demo PH1A |
| RESP / Trade | DES | SRLM / Design Team |
| RESP / Trade | DFH | Doors, Frames & Hardware / EA Doors - Finishes |
| RESP / Trade | DPART | Demountable Partitions / Price Mod. - Finishes |
| RESP / Trade | EJ | Andie Mac / Expansion Joints - Facade |
| RESP / Trade | ELEC | Helix / Electrical - IW |
| RESP / Trade | ELEC-2 | Helix / Electrical - T |
| RESP / Trade | ELEC-3 | Helix / Electrical - OH |
| RESP / Trade | ELEV | Delaware / Elevator - T |
| RESP / Trade | EPOXYF | Epoxy-Flooring / Stone Hard - Finishes |
| RESP / Trade | EQUIP | Finish Equipment / TBD - Finishes |
| RESP / Trade | ETV | Elec Track Veh / Teledynamics - R.I. OH |
| RESP / Trade | EXMAINT | Summit / Facade Maintenance - Facade |
| RESP / Trade | EXTCLAD | Rugo / Exterior Stone - Site |
| RESP / Trade | FA | Helix / Fire Alarm - IW |
| RESP / Trade | FA-1 | Helix / Fire Alarm - T |
| RESP / Trade | FCLEAN | Final Cleaning / TBD |
| RESP / Trade | FINISH | Finish Trades |
| RESP / Trade | FIRESTO | Firestopping / MEP Trades - T |
| RESP / Trade | FIRSAFE | Firesafing / Royals - Finishes |
| RESP / Trade | FIRSTOP | Firestopping / TBD - OH |
| RESP / Trade | FIT-2 | Harris / Fitters - T Mech |
| RESP / Trade | FLOOR | Flooring / Source One - Finishes |
| RESP / Trade | FM | Force Majeure |
| RESP / Trade | FORS | Integrated Ceilings / FORS - R.I. OH |
| RESP / Trade | FORS-1 | Integrated Ceilings / FORS - Finishes |
| RESP / Trade | FP | Fire Protection / Reliance - OH |
| RESP / Trade | FP-1 | Fire Protection / Reliance - T |
| RESP / Trade | FP.1A | Fire Protection / ADT PH1A - T |
| RESP / Trade | FURN | FF&E Trades / TBD - Finishes |
| RESP / Trade | GEO | Langan / Geotech |
| RESP / Trade | GLASS | Interior Glass / GPR - Finishes |
| RESP / Trade | GLAZ | GPR / Glass/Glazing - Facade |
| RESP / Trade | GYP | Gyp Assemblies / C. J. Coakley |
| RESP / Trade | GYP-1 | Gyp Assemblies / C.J. Coakley - Finishes |
| RESP / Trade | HOIST | Material Hoist - CJ Coakley |
| RESP / Trade | HP | Hensel Phelps |
| RESP / Trade | HP.CONC | MILLER & LONG / Concrete |
| RESP / Trade | HP.STRC | KPFF / Structural Engineer |
| RESP / Trade | HVAC | Harris / HVAC - T Mech |
| RESP / Trade | INSUL-1 | Exterior Wall Insulation / Auzmet - IW |
| RESP / Trade | INSUL-3 | Harris / Insulator - T Mech |
| RESP / Trade | LABCASE | Lab Casework / ISEC - Finishes |
| RESP / Trade | LAND | Landscaper / TBD - Site |
| RESP / Trade | LOWVOLT-1 | HP Services / LV Systems - T |
| RESP / Trade | MASON | Moehrle / Masonry - R.I. OH |
| RESP / Trade | MASS EX | Mass Ex Trades |
| RESP / Trade | MDE | Maryland Dept of the Environment |
| RESP / Trade | MECH-2 | Harris / Mechanical - T Mech |
| RESP / Trade | MEP | OH MEPF & LV Trades - OH |
| RESP / Trade | MEP-2 | MEP Trades |
| RESP / Trade | MILL | MIllwork / Potomac - Finishes |
| RESP / Trade | MISC | Berlin / Misc Metal |
| RESP / Trade | MISCMTL | Misc Metal / Berlin - Structure |
| RESP / Trade | MPANEL | Eastern / Metal Panels - Facade |
| RESP / Trade | OHDOOR | TBD / OH Coiling Doors - Facade |
| RESP / Trade | PAINT-1 | Painter / NLP - Finishes |
| RESP / Trade | PLAYGR. | Playground - Younger Services - Site |
| RESP / Trade | PLMB | Harris / Plumbing - T Mech |
| RESP / Trade | PLMB-1 | Harris / Plumbing - IW MECH |
| RESP / Trade | PRECAST | ACD / Precast Facade - Facade |
| RESP / Trade | PTUBE | Pneumatic Tube / Swisslog - T |
| RESP / Trade | QC | QC / Trades and HP - Finishes |
| RESP / Trade | R/I.IW | R/I - In Wall / All Trades |
| RESP / Trade | R/I.OH | R/I - All Trades |
| RESP / Trade | ROOF | Elite / Roofing - Facade |
| RESP / Trade | SHIELD | Shielding - Rapid RF |
| RESP / Trade | SIGN | Signage / Art Dis. - Finishes |
| RESP / Trade | SITE | Site Trades |
| RESP / Trade | SITECON | Site Concrete / Holcim - Site |
| RESP / Trade | SOE | Goettle / SOE - Mass Ex |
| RESP / Trade | SPECIAL | Building Specialties / Division 10 - Finishes |
| RESP / Trade | SPRAY | Spray Fireproofing / Roll. Plains - R.I. OH |
| RESP / Trade | STAFF | HP / Staff |
| RESP / Trade | STEEL | Steel / Berlin - Structure |
| RESP / Trade | STRCONC | M&L / Struct Conc - Structure |
| RESP / Trade | Sealant | Facade Sealant - Forsythe - Facade |
| RESP / Trade | T | Trade Partners |
| RESP / Trade | TAB-1 | Harris / TAB / DALT - T Mech |
| RESP / Trade | TILE | Tile / TBD - Finishes |
| RESP / Trade | TOWER | Tower Crane / HP |
| RESP / Trade | UTIL | DXI / Site Util - T |
| RESP / Trade | UTIL-1 | BIM / DXI / Site Utilities |
| RESP / Trade | WALLPRO | Wall Protection / Diviosn 10 - Finishes |
| RESP / Trade | WTPF | Waterproofing / Andie Mac - Structure |
| Resp / SRLM | ACP | Goettle / ACP |
| Resp / SRLM | ACT | ACT Ceilings / TBD |
| Resp / SRLM | AHJ | Authorities Having Jurisdiction |
| Resp / SRLM | ARCH | ZGF / Architect |
| Resp / SRLM | ASPHALT | Asphalt / TBD |
| Resp / SRLM | AVB | AndieMac / Air Vapor Barrier |
| Resp / SRLM | BAS | Harris / BAS |
| Resp / SRLM | BIM | BIM Team |
| Resp / SRLM | CIT | NIH / CIT |
| Resp / SRLM | CIVIL | Strittmatter / Earthwork |
| Resp / SRLM | CLEAN-1 | Cleanrooms - LSP |
| Resp / SRLM | CMU | Masonry / Moehrle |
| Resp / SRLM | COLD | Cold Rooms / BioCold |
| Resp / SRLM | CONC | HP / Concrete |
| Resp / SRLM | CRAFT | HP / Craft |
| Resp / SRLM | CURE | Cure Time |
| Resp / SRLM | DEMO.1 | North Star / Demo |
| Resp / SRLM | DEMO.1A | ACM / Demo PH1A |
| Resp / SRLM | DES | SRLM / Design Team |
| Resp / SRLM | DFH | Doors, Frames & Hardware / TBD |
| Resp / SRLM | DPART | Demountable Partitions / TBD |
| Resp / SRLM | EJ | Andie Mac / Expansion Joints |
| Resp / SRLM | ELEC | Helix / Electrical |
| Resp / SRLM | ELEV | Delaware / Elevator |
| Resp / SRLM | EPOXYF | Epoxy-Flooring / Stone Hard |
| Resp / SRLM | EQUIP | Finish Equipment / TBD |
| Resp / SRLM | ETV | Elec Track Veh / Teledynamics |
| Resp / SRLM | EXMAINT | Summit / Facade Maintenance |
| Resp / SRLM | EXTCLAD | Rugo / Exterior Stone |
| Resp / SRLM | FA | Helix / Fire Alarm |
| Resp / SRLM | FCLEAN | Final Cleaning / TBD |
| Resp / SRLM | FINISH | Finish Trades |
| Resp / SRLM | FIRESTO | Firestopping / MEP Trades |
| Resp / SRLM | FIRSAFE | Firesafing / Royals |
| Resp / SRLM | FIRSTOP | Firestopping / TBD |
| Resp / SRLM | FIT | Harris / Fitters |
| Resp / SRLM | FLOOR | Flooring / Source One |
| Resp / SRLM | FM | NIH / Fire Marshall |
| Resp / SRLM | FORS | Integrated Ceilings / FORS |
| Resp / SRLM | FP | Fire Protection / TBD |
| Resp / SRLM | FP.1A | Fire Protection / ADT PH1A |
| Resp / SRLM | FURN | FF&E Trades / TBD |
| Resp / SRLM | GEO | Langan / Geotech |
| Resp / SRLM | GLASS | Interior Glass / TBD |
| Resp / SRLM | GLAZ | GPR / Glass/Glazing |
| Resp / SRLM | GYP | Gyp Assemblies / C. J. Coakley |
| Resp / SRLM | HOIST | Material Hoist - CJ Coakley |
| Resp / SRLM | HP | Hensel Phelps |
| Resp / SRLM | HP.CONC | MILLER & LONG / Concrete |
| Resp / SRLM | HP.STRC | KPFF / Structural Engineer |
| Resp / SRLM | HVAC | Harris / HVAC |
| Resp / SRLM | Harris Fragnet | FRG.MECH |
| Resp / SRLM | INSUL | Harris / Insulator |
| Resp / SRLM | LABCASE | Lab Casework / ISEC |
| Resp / SRLM | LAND | Landscaper / TBD |
| Resp / SRLM | LOWVOLT | HP Services / LV Systems |
| Resp / SRLM | MASON | Moehrle / Masonry |
| Resp / SRLM | MASS EX | Mass Ex Trades |
| Resp / SRLM | MDE | Maryland Dept of the Environment |
| Resp / SRLM | MECH | Harris / Mechanical |
| Resp / SRLM | MEP | OH MEPF & LV Trades |
| Resp / SRLM | MILL | MIllwork / Potomac |
| Resp / SRLM | MISC | Berlin / Misc Metal |
| Resp / SRLM | MISCMTL | Misc Metal / TBD |
| Resp / SRLM | MPANEL | Eastern / Metal Panels |
| Resp / SRLM | OHDOOR | TBD / OH Coiling Doors |
| Resp / SRLM | PAINT | Painter / NLP |
| Resp / SRLM | PLAYGR. | Playground - Younger Services |
| Resp / SRLM | PLMB | Harris / Plumbing |
| Resp / SRLM | PRECAST | ACD / Precast Facade |
| Resp / SRLM | PTUBE | Pneumatic Tube / Swisslog |
| Resp / SRLM | QC | QC / Trades and HP |
| Resp / SRLM | R/I.IW | R/I - In Wall / All Trades |
| Resp / SRLM | R/I.OH | R/I - All Trades |
| Resp / SRLM | ROOF | Elite / Roofing |
| Resp / SRLM | SHIELD | Shielding - TBD |
| Resp / SRLM | SIGN | Signage / TBD |
| Resp / SRLM | SITE | Site Trades |
| Resp / SRLM | SITECON | Site Concrete / TBD |
| Resp / SRLM | SOE | Goettle / SOE |
| Resp / SRLM | SPECIAL | Building Specialties / TBD |
| Resp / SRLM | SPRAY | Spray Fireproofing / TBD |
| Resp / SRLM | STAFF | HP / Staff |
| Resp / SRLM | STEEL | Steel / Berlin |
| Resp / SRLM | STRCONC | M&L / Struct Conc |
| Resp / SRLM | Sealant | Facade Sealant - Forsythe |
| Resp / SRLM | T | Trade Partners |
| Resp / SRLM | TAB | Harris / TAB / DALT |
| Resp / SRLM | TILE | Tile / TBD |
| Resp / SRLM | TOWER | Tower Crane / HP |
| Resp / SRLM | UTIL | DXI / Site Util |
| Resp / SRLM | WALLPRO | Wall Protection / TBD |
| Resp / SRLM | WTPF | Waterproofing / TBD |
| SCH DEV | PH1BASE | PHZ 1 DD Activities |
| SCH DEV | PRELIM | BM Activities |
| Z.RESP | Harris | Harris Mechanical |
