# NIH / Surgery, Radiology and Laboratory Medicine (SRLM) Building - UP44

Schedule from Primavera P6, 2015-08-11 to 2029-02-23, data date 2026-04-01, A marks actual dates.
Must finish by 2029-01-25

## Calendars

- 5D w/ Holidays / SRLM: Mon-Fri 8:00-12:00, 13:00-17:00; Sat-Sun off. Exceptions (off unless hours are given): 2020-11-26 to 2020-11-27, 2020-12-25, 2021-01-01, 2021-01-18, 2021-02-15, 2021-05-31, 2021-07-05, 2021-09-06, 2021-10-08, 2021-11-12, 2021-11-25 to 2021-11-26, 2021-12-24, 2021-12-31, 2022-02-14, 2022-05-30, 2022-07-04, 2022-09-05, 2022-10-14, 2022-11-24 to 2022-11-25, 2022-12-26, 2023-01-02, 2023-01-16 8:00-12:00, 13:00-17:00, 2023-02-13 8:00-12:00, 13:00-17:00, 2023-05-29, 2023-07-03 8:00-12:00, 13:00-17:00, 2023-07-04, 2023-09-04, 2023-10-13 8:00-12:00, 13:00-17:00, 2023-11-10 8:00-12:00, 13:00-17:00, 2023-11-23 to 2023-11-24, 2023-12-25, 2024-01-01, 2024-02-19 8:00-12:00, 13:00-17:00, 2024-05-27, 2024-07-04, 2024-07-05 8:00-12:00, 13:00-17:00, 2024-09-02, 2024-10-11 8:00-12:00, 13:00-17:00, 2024-11-15 8:00-12:00, 13:00-17:00, 2024-11-28 to 2024-11-29, 2024-12-24 8:00-12:00, 13:00-17:00, 2024-12-25, 2024-12-31 8:00-12:00, 13:00-17:00, 2025-01-01, 2025-01-20 8:00-12:00, 13:00-17:00, 2025-02-17 8:00-12:00, 13:00-17:00, 2025-05-26, 2025-07-04, 2025-09-01, 2025-10-10 8:00-12:00, 13:00-17:00, 2025-11-14 8:00-12:00, 13:00-17:00, 2025-11-27 to 2025-11-28, 2025-12-25, 2025-12-26 8:00-12:00, 13:00-17:00, 2026-01-01, 2026-01-19 8:00-12:00, 13:00-17:00, 2026-02-16 8:00-12:00, 13:00-17:00, 2026-05-25, 2026-07-03, 2026-09-07, 2026-10-09 8:00-12:00, 13:00-17:00, 2026-11-13 8:00-12:00, 13:00-17:00, 2026-11-26 to 2026-11-27, 2026-12-24 8:00-12:00, 13:00-17:00, 2026-12-25, 2027-01-01, 2027-01-18 8:00-12:00, 13:00-17:00, 2027-02-15 8:00-12:00, 13:00-17:00, 2027-05-31, 2027-07-02, 2027-09-06, 2027-11-25 to 2027-11-26, 2027-12-24, 2028-01-03, 2028-05-29, 2028-07-03 8:00-12:00, 13:00-17:00, 2028-07-04, 2028-09-04, 2028-11-23 to 2028-11-24, 2028-12-25, 2029-01-01.
- 7D / SRLM: Mon-Sun 8:00-12:00, 13:00-17:00.

## Schedule

| ID | WBS | Activity | Type | Duration | Start | Finish | Predecessors | Complete | Remaining | Planned start | Planned finish | Total float | Free float | Constraint | Expected finish | Calendar | Temp Orig Dur | Resp / SRLM | PHASE | SCH DEV | RESP / Trade | CATW | DFW | RESP UPD | Pick #2 | **NEAR CRITICAL** | Pick #1 | Progress Filters | *NIH Resp Check* | Update Status | 744 |
| --- | --- | --- | --- | --- | --- | --- | --- | --- | --- | --- | --- | --- | --- | --- | --- | --- | --- | --- | --- | --- | --- | --- | --- | --- | --- | --- | --- | --- | --- | --- | --- |
|  | 1 | **EXECUTIVE SUMMARY** |  |  | 2022-03-22 | 2029-02-23 |  |  |  |  |  |  |  |  |  |  |  |  |  |  |  |  |  |  |  |  |  |  |  |  |  |
| EXS.160 |  | NIH Issue Notice of Award |  | 5d | 2022-03-22 A | 2022-03-29 A |  | 100% |  | 2022-03-22 | 2022-03-26 |  |  |  |  | 7D / SRLM | 40 | NIH | P01 | PRELIM | NIH |  |  |  |  |  |  |  |  |  |  |
| EXS.100 |  | NIH Issue Notice to Proceed | milestone | 0d | 2022-04-26 A | 2022-04-26 A | EXS.160 | 100% |  |  |  |  |  |  |  | 7D / SRLM | 0 | NIH | P01 | PRELIM | NIH | GEN | 01 |  |  |  |  |  |  |  |  |
| EXS.105 |  | Phase 0,1 & 2 | level of effort | 1717d | 2022-04-26 A | 2027-05-20 | EXS.100 | 76% | 415d | 2022-04-26 | 2027-01-06 | 616d | 0d |  |  | 7D / SRLM | 13160 | HP | P01 | PRELIM | HP | GEN | 01 | AM |  |  |  |  |  |  |  |
| EXS.110 |  | 18,000 NSF May be available in T Wing Building 10 (2nd QTR 2024) |  | 1d | 2024-09-02 A | 2024-09-02 A | EXS.160 | 100% |  | 2024-10-01 | 2024-10-01 |  |  | start on or after 2024-07-15 |  | 7D / SRLM | 8 | NIH | P01 | PRELIM | NIH | GEN | 01 |  |  |  |  |  |  |  |  |
| EXS.130 |  | Substantial Completion - Phase 0,1,2 | milestone | 0d | 2027-05-20 | 2027-05-20 | P2.SUM.235 FF, P1A.GARV.520 FF, P2.5-10.9030 FF, P2.6-9.9030 FF, P2.5-8.9030 FF, P2.3-9.9030 FF, P2.3-10.9030 FF, P2.DMSR.160 FF, P2.2-8.9030 FF, P2.2-10.9030 FF, P2.5-9.9030 FF, P2.2-9.9030 FF, PCO.185.146 FF, P2.GP4.14.1710 FF, P2.GP3.14.1710 FF, P2.GP2.14.1710 FF, P2.GP1.14.1710 FF, P2.PIA.130, P2.PIA.150, P2.PIA.130 FF, P2.PIA.150 FF |  |  |  |  | -29d | 0d |  |  | 7D / SRLM | 0 | HP | P01 | PRELIM | HP |  | 01 | AM | FP | 1 |  |  |  |  |  |
| EXS.120 |  | Phase 3 & 4 - NCI Lab Move & DcX | level of effort | 180d | 2027-05-21 | 2027-11-16 | EXS.130 |  |  |  |  | 436d | 0d |  |  | 7D / SRLM | 1440 | HP | P01 | PRELIM | HP | GEN | 01 | AM |  |  |  |  |  |  |  |
| EXS.170 |  | Phase 2.1 - Construction |  | 180d | 2027-05-21 | 2027-11-16 | PCO.0818.1100, PCO.0819.1300, PCO.0820.1300, PCO.0821.1120, EXS.130, PCO.0816.1120, PCO.0817.1210, PCO.0822.1120, PCO.0815.1100 |  |  |  |  | -29d | 0d |  |  | 7D / SRLM | 1440 | HP | P01 | PRELIM | HP | GEN | 01 | AM |  | 1 |  |  |  |  |  |
| EXS.150 |  | Phase 3 & 4 - NIH Complete | milestone | 0d | 2027-11-16 | 2027-11-16 | P4.NIH.100, P3.NIH.100 |  |  |  |  | -29d | 0d |  |  | 7D / SRLM | 0 | HP | P01 | PRELIM | HP |  | 01 | AM | FP | 1 |  |  |  |  |  |
| EXS.125 |  | Phase 5 - Demo, Renovation, Commissioning - West Wing Labs | level of effort | 465d | 2027-11-17 | 2029-02-23 | P5.CRC.110 SS, EXS.170 |  |  |  |  | -29d | 0d |  |  | 7D / SRLM | 3720 | HP | P01 | PRELIM | HP | GEN | 01 | AM |  |  |  |  |  |  |  |
| EXS.140 |  | Phase 5 Complete | milestone | 0d | 2029-02-23 | 2029-02-23 | EXS.125 FF, EXS.110 FF, P5.CRC.150, P5.CRC.150 FF, EXS.131, EXS.151, ENB.160 FF |  |  |  |  | -29d | 0d | finish on or before 2029-01-25 |  | 7D / SRLM | 0 | HP | P01 | PRELIM | HP | GEN | 01 | AM | FP | 1 | No Succ | Succ! |  |  |  |
|  | 2 | **Contract Modifications** |  |  | 2022-09-30 | 2026-12-17 |  |  |  |  |  |  |  |  |  |  |  |  |  |  |  |  |  |  |  |  |  |  |  |  |  |
|  | 1 | **P00002 - ESSEG** |  |  | 2022-09-30 | 2026-12-17 |  |  |  |  |  |  |  |  |  |  |  |  |  |  |  |  |  |  |  |  |  |  |  |  |  |
| ENB.150 |  | ESSEG - P00002 - ESSEG Period of Performance (Including feeder changeover) (ESUM.420 - ESSEG CPM) | level of effort | 1168d | 2022-09-30 A | 2026-12-17 | ENB.155 SS, ENB.170 FF | 78% | 261d | 2022-09-30 | 2025-12-10 | 0d |  |  |  | 7D / SRLM | 9344 | ELEC | P01 |  | ELEC-2 |  |  | AM |  |  |  |  | ! |  |  |
| ENB.155 |  | ESSEG - Deliver Normal Power from ESSEG Ready to Support SRLM (ESUM.220 - ESSEG CPM) |  | 826d | 2022-09-30 A | 2025-09-01 A | EXS.100 SS | 100% |  | 2022-09-30 | 2025-01-02 |  |  |  |  | 7D / SRLM | 6608 | HP | P01 |  | HP |  |  | AM |  |  |  |  | ! | O | JO |
| ENB.160 |  | ESSEG - Substantial Completion - Phase 2-5 Feeder Transistions (ESUM.120 - ESSEG CPM) |  | 438d | 2025-09-03 A | 2026-12-17 | ENB.155, ENB.150 FF | 40% | 261d | 2025-10-03 | 2026-12-14 | 0d |  | finish on or before 2026-12-17 | 2026-12-17 | 7D / SRLM | 5600 | ELEC | P01 |  | ELEC-2 |  |  | AM |  |  |  |  | ! |  | JO |
| ENB.170 |  | ESSEG - Emergency Power Energized/Fully Commissioned (ESUM.550 - ESSEG CPM) |  | 126d | 2025-09-03 A | 2026-04-01 | ENB.155 | 100% | 0d | 2025-10-03 | 2026-02-05 | 212d | 0d |  | 2026-01-06 | 7D / SRLM | 5600 | ELEC | P01 |  | ELEC-2 |  |  | AM |  |  |  |  | ! |  | JO |
|  | 2 | **Phase 5 - Demo & Build Option** |  |  | 2025-05-21 | 2026-11-20 |  |  |  |  |  |  |  |  |  |  |  |  |  |  |  |  |  |  |  |  |  |  |  |  |  |
| MOD.P5.XXX.100 |  | Phase 5 Scope Defined by Approval of Phase 5 Design | milestone | 0d | 2025-05-21 A | 2025-05-21 A | P5.DES.430 | 100% |  |  |  |  |  |  |  |  | 0 | NIH | P01 |  | NIH |  |  |  |  |  |  |  | ! |  |  |
| MOD.P5.XXX.110 |  | HP / Trade Partners - Develop Proposal - Phase 5 (Finish date 1465 Cal Days from NTP per contract) |  | 80d | 2026-04-01 | 2026-07-23 | MOD.P5.XXX.100, EXS.100 SS |  |  |  |  | 144d | 0d |  |  |  | 640 | HP | P01 |  | HP |  |  | TC |  |  |  |  | ! |  | JO |
| MOD.P5.XXX.120 |  | NIH - Review Proposal - Phase 5 |  | 20d | 2026-07-24 | 2026-08-20 | MOD.P5.XXX.110 |  |  |  |  | 144d | 0d |  |  |  | 160 | NIH | P01 |  | NIH |  |  | TC |  |  |  |  | ! |  |  |
| MOD.P5.XXX.130 |  | HP / NIH - Negotiate Proposal - Phase 5 |  | 20d | 2026-08-21 | 2026-09-18 | MOD.P5.XXX.120 |  |  |  |  | 144d | 0d |  |  |  | 160 | NIH | P01 |  | NIH |  |  | TC |  |  |  |  | ! |  |  |
| MOD.P5.XXX.140 |  | HP / Trade Partners - Submit Final Proposal - Phase 5 |  | 20d | 2026-09-21 | 2026-10-16 | MOD.P5.XXX.130 |  |  |  |  | 144d | 0d |  |  |  | 160 | HP | P01 |  | HP |  |  | TC |  |  |  |  | ! |  |  |
| MOD.P5.XXX.150 |  | NIH - Approve Final Proposal - Phase 5 |  | 20d | 2026-10-19 | 2026-11-13 | MOD.P5.XXX.140 |  |  |  |  | 144d | 0d |  |  |  | 160 | NIH | P01 |  | NIH |  |  | TC |  |  |  |  | ! |  |  |
| MOD.P5.XXX.160 |  | NIH - Issue Contract Mod - Phase 5 |  | 5d | 2026-11-16 | 2026-11-20 | MOD.P5.XXX.150 |  |  |  |  | 144d | 0d |  |  |  | 40 | NIH | P01 |  | NIH |  |  | TC |  |  |  |  | ! |  |  |

| ID | WBS | Activity | Duration | Start | Finish | Predecessors | Complete | Planned start | Planned finish | Resp / SRLM | RESP / Trade | 744 | RESP UPD | Update Status | **NEAR CRITICAL** |
| --- | --- | --- | --- | --- | --- | --- | --- | --- | --- | --- | --- | --- | --- | --- | --- |
|  | 6 | **RFP 014 - Added Clinical Isolation Rooms** |  | 2025-01-27 | 2025-10-01 |  |  |  |  |  |  |  |  |  |  |
| RFP.014.1000 |  | Initial Design Review with NIH - RFP 014 | 15d | 2025-01-27 A | 2025-03-14 A | P2C.DES.205 | 100% | 2025-02-03 | 2025-02-21 | ARCH | ARCH |  |  |  |  |
| RFP.014.1130 |  | All trades Coordinate - RFP 014 | 10d | 2025-03-17 A | 2025-03-28 A | RFP.014.1000 | 100% |  |  | ARCH | ARCH |  |  |  |  |
| RFP.014.1010 |  | Additional Coordination With NIH - RFP 014 | 5d | 2025-03-31 A | 2025-04-04 A | RFP.014.1130 | 100% |  |  | ARCH | ARCH |  |  |  |  |
| RFP.014.1020 |  | Finallization of Design - RFP 014 | 10d | 2025-04-07 A | 2025-04-18 A | RFP.014.1010 | 100% | 2025-05-07 | 2025-05-20 | NIH | NIH |  |  |  |  |
| RFP.014.1140 |  | Submit to NIH for Review - Issue Bulletin - RFP 014 | 10d | 2025-04-21 A | 2025-06-27 A | RFP.014.1020 | 100% | 2025-05-21 | 2025-06-04 | NIH | NIH | JO | AM |  |  |
| RFP.014.1030 |  | Construction Cost RFP Review/ Approve - RFP 014 | 30d | 2025-06-30 A | 2025-09-30 A | RFP.014.1140 | 100% | 2025-07-10 | 2025-08-20 | NIH | NIH | JO | TC | O |  |
| RFP.014.1040 |  | NTP Issued - RFP 014 Construction | 1d | 2025-10-01 A | 2025-10-01 A | RFP.014.1030 | 100% | 2025-10-15 | 2025-10-15 | NIH | NIH | JO | TC |  |  |
|  | 3 | **RFP 015 - B2 Sterile Proccessing** |  | 2024-11-15 | 2026-01-12 |  |  |  |  |  |  |  |  |  |  |
| RFP.015.1090 |  | Initial Design Review with NIH - RFP 015 | 30d | 2024-11-15 A | 2024-12-13 A | P2C.DES.235 SS | 100% | 2024-12-03 | 2025-01-15 | ARCH | ARCH |  |  |  |  |
| RFP.015.1080 |  | All Trades Coordination of Changes- RFP 015 | 10d | 2024-12-16 A | 2024-12-30 A | RFP.015.1090 | 100% | 2025-01-08 | 2025-01-21 | ARCH | ARCH |  |  |  |  |
| RFP.015.1030 |  | Additional Coordination with NIH and Internal - RFP 015 | 13d | 2024-12-31 A | 2025-01-14 A | RFP.015.1080 | 100% | 2025-01-22 | 2025-02-07 | NIH | NIH |  |  |  |  |
| RFP.015.1140 |  | Finalizing Design - RFP 015 | 5d | 2025-01-14 A | 2025-01-31 A | RFP.015.1030 | 100% | 2025-02-19 | 2025-02-25 | NIH | NIH |  |  |  |  |
| RFP.015.1150 |  | Submit for NIH Review - RFP 015 | 10d | 2025-02-11 A | 2025-02-28 A | RFP.015.1140 | 100% | 2025-03-03 | 2025-03-14 | NIH | NIH |  |  |  |  |
| RFP.015.1130 |  | Partial NTE Award - Demo & Underground Review/ Approve - RFP 015 | 29d | 2025-06-04 A | 2025-08-06 A | RFP.015.1150 | 100% | 2025-07-01 | 2025-08-11 | NIH | NIH | JO | AM |  |  |
| RFP.015.1160 |  | HP Buyout - Demo Trades - RFP 015 Construction | 5d | 2025-08-06 A | 2025-08-06 A | RFP.015.1130 | 100% | 2025-09-16 | 2025-09-22 |  |  |  |  |  |  |
| RFP.015.1300 |  | Remaining Balance - Construction Cost RFP Review/ Approve - RFP 015 | 15d | 2025-08-11 A | 2025-08-22 A | RFP.015.1150 | 100% | 2025-09-02 | 2025-09-22 | NIH | NIH | JO | AM |  |  |
| RFP.015.1000 |  | Remaining Balance - NTP Issued - RFP 015 Construction | 1d | 2025-08-22 A | 2025-08-22 A | RFP.015.1030, RFP.015.1300 | 100% | 2025-09-23 | 2025-09-23 | NIH | NIH | JO | AM |  |  |
| RFP.015.1170 |  | Demo - Concrete Slab - RFP 015 Construction | 12d | 2025-08-26 A | 2025-09-11 A | RFP.015.1160, RFP.015.1130 | 100% | 2025-09-02 | 2025-09-17 |  |  |  | SS | O |  |
| RFP.015.1190 |  | Excavate Underground Plumbing - RFP 015 Construction | 5d | 2025-08-27 A | 2025-09-12 A | RFP.015.1170 | 100% | 2025-10-13 | 2025-10-17 |  |  |  | SS | O |  |
| RFP.015.1200 |  | Demo Underground Plumbing - RFP 015 Construction | 2d | 2025-08-27 A | 2025-09-12 A | RFP.015.1190, RFP.015.1180 SS | 100% | 2025-10-20 | 2025-10-21 |  |  |  | SS | O |  |
| RFP.015.1210 |  | Reinstate - Underground Plumbing - RFP 015 Construction | 5d | 2025-08-27 A | 2025-09-16 A | RFP.015.1200 | 100% | 2025-10-22 | 2025-10-28 |  |  |  | SS | O |  |
| RFP.015.1180 |  | Issue RFI and BIM Re-Coordination for Underground - RFP 015 Construction | 20d | 2025-08-28 A | 2025-09-25 A | RFP.015.1130 | 100% | 2025-09-02 | 2025-09-29 |  |  |  | BO | O |  |
| RFP.015.1310 |  | Incorporate Architectural Backgrounds - RFP 015 Construction | 15d | 2025-09-02 A | 2025-09-22 A | RFP.015.1000 | 100% | 2025-10-01 | 2025-10-21 |  |  |  | BO | O |  |
| RFP.015.1220 |  | Test - Underground Plumbing - RFP 015 Construction | 3d | 2025-09-16 A | 2025-09-16 A | RFP.015.1210 | 100% | 2025-10-29 | 2025-10-31 |  |  |  | SS | O |  |
| RFP.015.1230 |  | Backfill Underground - RFP 015 Construction | 3d | 2025-09-22 A | 2025-09-25 A | RFP.015.1220 | 100% | 2025-10-01 | 2025-10-03 |  |  |  | SS |  |  |
| RFP.015.1320 |  | BIM Re-Coordination for Overhead RFP 015 Construction | 15d | 2025-09-23 A | 2025-10-31 A | RFP.015.1310 | 100% | 2025-10-22 | 2025-11-11 |  |  |  | BO |  |  |
| RFP.015.1240 |  | FRP - Concrete Slab - RFP 015 Construction | 8d | 2025-09-29 A | 2025-10-02 A | RFP.015.1230 | 100% | 2025-10-06 | 2025-10-15 |  |  |  | SS |  |  |
| RFP.015.1250 |  | CMU Wall Construction - RFP 015 Construction | 8d | 2025-10-31 A | 2025-11-11 A | RFP.015.1240 | 100% | 2025-10-16 | 2025-10-27 |  |  |  | SS | O |  |
| RFP.015.1330 |  | Issue Revised Shop Drawings - RFP 015 Construction | 10d | 2025-11-03 A | 2025-11-14 A | RFP.015.1320 | 100% | 2026-02-02 | 2026-02-13 |  |  |  | WLN | O | 8.2 |
| RFP.015.1340 |  | Demo Existing Overhead - RFP 015 Construction | 5d | 2025-11-17 A | 2025-11-21 A | RFP.015.1330 | 100% | 2026-02-16 | 2026-02-20 |  |  |  | SS | O | 8.2 |
| RFP.015.1350 |  | Install Revised MEP Overhead - RFP 015 Construction | 15d | 2025-11-24 A | 2025-12-16 A | RFP.015.1340 | 100% | 2026-02-23 | 2026-03-13 |  |  |  | SS | O | 8.2 |
| RFP.015.1270 |  | Insulate OH Plumbing - RFP 015 Construction | 5d | 2025-12-17 A | 2025-12-23 A | RFP.015.1260, RFP.015.1350 | 100% | 2026-03-16 | 2026-03-20 |  |  |  | SS |  | 8.2 |
| RFP.015.1290 |  | Hang Tape Finish - RFP 015 Construction | 5d | 2025-12-24 A | 2025-12-31 A | RFP.015.1270, RFP.015.1280 | 100% | 2026-03-23 | 2026-03-27 |  |  |  | SS |  | 8.2 |
| RFP.015.1260 |  | Complete Framing on Top of CMU Wall - RFP 015 Construction | 2d | 2026-01-01 A | 2026-01-05 A | RFP.015.1250 | 100% | 2026-02-05 | 2026-02-06 |  |  |  | SS | O |  |
| RFP.015.1280 |  | AHJ Wall inspection - RFP 015 Construction | 5d | 2026-01-06 A | 2026-01-12 A | RFP.015.1260 | 100% | 2026-02-09 | 2026-02-13 |  |  |  | SS | O |  |

| ID | WBS | Activity | Duration | Start | Finish | Predecessors | Complete | Remaining | Planned start | Planned finish | Total float | Free float | Calendar | Resp / SRLM | RESP / Trade | Update Status | 744 | RESP UPD | **NEAR CRITICAL** |
| --- | --- | --- | --- | --- | --- | --- | --- | --- | --- | --- | --- | --- | --- | --- | --- | --- | --- | --- | --- |
|  | 4 | **PCO 225 - RF & Magnetic Shielding** |  | 2024-09-19 | 2026-06-11 |  |  |  |  |  |  |  |  |  |  |  |  |  |  |
| PCO.225.1000 |  | NTP Issued - RF & Magnetic Shielding | 1d | 2024-09-19 A | 2024-09-19 A | BP5.134.1.100 | 100% |  | 2024-11-01 | 2024-11-01 |  |  |  | NIH | NIH |  |  |  |  |
| PCO.225.1120 |  | Contract MOD - RF & Magnetic Shielding | 60d | 2024-09-20 A | 2025-04-18 A | PCO.225.1000, PCO.225.1290 FF+10d | 100% |  | 2024-11-01 | 2025-01-29 |  |  |  | NIH | NIH |  |  |  |  |
| PCO.225.1010 |  | Buyout - Magnetic Shielding | 8d | 2024-09-25 A | 2024-11-29 A | PCO.225.1000 | 100% |  | 2024-11-01 | 2024-11-12 |  |  |  | HP | HP |  |  |  |  |
| PCO.225.1040 |  | BIM Coordination - Magnetic Shielding | 30d | 2024-12-23 A | 2025-02-19 A | PCO.225.1010 | 100% |  | 2025-01-02 | 2025-02-12 |  |  |  | SHIELD | SHIELD |  |  |  |  |
| PCO.225.1100 |  | Final Design - Magnetic Shielding | 5d | 2024-12-23 A | 2024-12-30 A | PCO.225.1010, PCO.225.1040 | 100% |  | 2025-01-02 | 2025-01-08 |  |  |  | SHIELD | SHIELD |  |  |  |  |
| PCO.225.1020 |  | Prep/Submit - Magnetic Shielding | 20d | 2024-12-31 A | 2025-02-21 A | PCO.225.1100 | 100% |  | 2025-01-09 | 2025-02-05 |  |  |  | HP | HP |  |  |  |  |
| PCO.225.1290 |  | NIH - HHS Acquisition Alert 2025-02 | 90d | 2025-01-24 A | 2025-04-08 A | PCO.225.1000 | 100% |  | 2025-02-10 | 2025-05-10 |  |  | 7D / SRLM | NIH | NIH |  |  |  |  |
| PCO.225.1310 |  | B2 Parent Wall Framing - Magnetic Shielding | 5d | 2025-01-26 A | 2026-02-27 A | PCO.225.1370 | 100% |  | 2026-01-02 | 2026-01-08 |  |  |  | GYP | GYP | O | SS | SS |  |
| PCO.225.1030 |  | Review/ Approve - Magnetic Shielding | 35d | 2025-02-24 A | 2025-05-23 A | PCO.225.1020, PCO.225.1120 FF+15d | 100% |  | 2025-03-17 | 2025-05-02 |  |  |  | NIH | NIH |  |  |  |  |
| PCO.225.1300 |  | NIH - MOD for Balance of PCO 225 | 5d | 2025-04-08 A | 2025-10-01 A | PCO.225.1290 | 100% |  | 2025-02-10 | 2025-02-14 |  |  |  | NIH | NIH |  | DL | AW |  |
| PCO.225.1110 |  | Buyout - RF (Copper shielding) | 30d | 2025-04-09 A | 2025-04-21 A | PCO.225.1120 | 100% |  | 2025-05-19 | 2025-06-30 |  |  |  | HP | HP |  |  |  |  |
| PCO.225.1150 |  | Procurement - Magnetic Shielding | 10d | 2025-05-23 A | 2025-06-16 A | PCO.225.1000, PCO.225.1030, PCO.225.1120 | 100% |  | 2025-06-11 | 2025-06-24 |  |  |  | SHIELD | SHIELD |  | DL | WLN |  |
| PCO.225.1070 |  | B2 OH Magnetic Shielding Assembly Install | 20d | 2025-06-16 A | 2025-08-05 A | PCO.225.1150, PCO.225.1030 | 100% |  | 2025-07-02 | 2025-07-30 |  |  |  | SHIELD | SHIELD |  | SS | SS |  |
| PCO.225.1130 |  | Prep/Submit - RF (Copper Shielding) | 20d | 2025-06-16 A | 2025-08-26 A | PCO.225.1110 | 100% |  | 2025-07-01 | 2025-07-29 |  |  |  | HP | HP |  | DL | WLN |  |
| PCO.225.1080 |  | Inspection of Magnetic Shielding - B2 | 1d | 2025-08-04 A | 2025-08-04 A | PCO.225.1070 | 100% |  |  |  |  |  |  | NIH | NIH |  | SS | SS |  |
| PCO.225.1090 |  | Release B2 MEPF OH Installation - Below Magnetic Shielding | 1d | 2025-08-05 A | 2025-08-05 A | PCO.225.1080 | 100% |  |  |  |  |  |  | MEP | MEP |  | SS | SS |  |
| PCO.225.1330 |  | B2 OH MEP Supports - Magnetic Shielding | 15d | 2025-08-06 A | 2025-08-29 A | PCO.225.1090 | 100% |  | 2025-08-06 | 2025-08-26 |  |  |  | MEP | MEP |  | SS | SS |  |
| PCO.225.1160.1 |  | BIM Coordination - RF (Copper Shielding) - Pre submital | 20d | 2025-08-18 A | 2025-09-08 A | PCO.225.1130 SS | 100% |  | 2025-09-15 | 2025-10-10 |  |  |  | SHIELD | SHIELD | O | JWHIT | BO |  |
| PCO.225.1340 |  | B2 OH Mechanical - Magnetic Shielding | 15d | 2025-08-27 A | 2025-09-17 A | PCO.225.1330 | 100% |  |  |  |  |  |  | MEP | MEP | O | SS | SS |  |
| PCO.225.1050 |  | Procurement - RF (Copper Shielding) | 30d | 2025-09-02 A | 2025-09-23 A | PCO.225.1120 | 100% |  | 2025-10-01 | 2025-11-11 |  |  |  | SHIELD | SHIELD | O | DL | AW |  |
| PCO.225.1350 |  | B2 OH Electrical - Magnetic Shielding | 10d | 2025-09-08 A | 2025-09-19 A | PCO.225.1340 SS, PCO.225.1340 FF+2d | 100% |  | 2025-10-07 | 2025-10-20 |  |  |  | MEP | MEP | O | SS | SS |  |
| PCO.225.1360 |  | B2 OH Mechaniacl Insulation - Magnetic Shielding | 10d | 2025-09-22 A | 2025-10-31 A | PCO.225.1350 | 100% |  | 2025-10-21 | 2025-11-03 |  |  |  | MEP | MEP |  | SS | SS |  |
| PCO.225.1140 |  | Review/ Approve - RF (Copper Shielding) | 35d | 2025-09-23 A | 2025-12-01 A | PCO.225.1130 | 100% |  | 2025-09-15 | 2025-10-31 |  |  |  | NIH | NIH | O | DL | AW |  |
| PCO.225.1370 |  | B2 OH Fire Suppresion - Magnetic Shielding | 10d | 2025-10-06 A | 2025-10-17 A | PCO.225.1360 | 100% |  |  |  |  |  |  | MEP | MEP |  | SS | SS |  |
| PCO.225.1160 |  | BIM Coordination - RF (Copper Shielding) - Post submital | 10d | 2025-11-04 A | 2025-11-17 A | PCO.225.1110, PCO.225.1300, PCO.225.1140, PCO.225.1160.1 | 100% |  | 2025-12-02 | 2025-12-15 |  |  |  | SHIELD | SHIELD |  | DL | BO |  |
| PCO.225.1180 |  | RF Shielding Assembly Install (Floor, Walls & Ceiling) - L1 | 50d | 2026-01-02 A | 2026-05-11 | PCO.225.1050, P2.L1.LC.1090 FF, PCO.225.1160, PCO.225.1140 | 42% | 29d | 2026-01-02 | 2026-03-12 | 136d | 0d |  | SHIELD | SHIELD | O | SS | JH | 5 |
| PCO.225.1380 |  | B2 In -Wall MEP Install - Magnetic Shielding | 10d | 2026-04-01 | 2026-04-14 | PCO.225.1310 |  |  |  |  | 52d | 0d |  | GYP | GYP | O | SS | DG |  |
| PCO.225.1320 |  | B2 Ceiling Joist Framing - Magnetic Shielding | 5d | 2026-04-15 | 2026-04-21 | PCO.225.1380 |  |  |  |  | 52d | 0d |  | GYP | GYP | O |  | DG |  |
| PCO.225.1230 |  | B2 RF Shielding Assembly Install (Floor, Walls & Ceiling) | 15d | 2026-04-22 | 2026-05-12 | P2.B2.LC.1100 FF, PCO.225.1050, PCO.225.1160, PCO.225.1320 |  |  |  |  | 52d | 0d |  | SHIELD | SHIELD | O | SS | DG |  |
| PCO.225.1190 |  | Inspection of RF Shielding - L1 | 1d | 2026-05-12 | 2026-05-12 | PCO.225.1180 |  |  |  |  | 136d | 0d |  | NIH | NIH |  |  | JH | 5 |
| PCO.225.1220 |  | L1 RF Shielding Slab Infill | 5d | 2026-05-13 | 2026-05-19 | PCO.225.1190 |  |  |  |  | 136d | 60d |  | HP.CONC | HP.CONC |  |  | JH | 5 |
| PCO.225.1240 |  | L1 RF Shielding Assembly Install (Floor, Walls & Ceiling) | 15d | 2026-05-13 | 2026-06-03 | P2.L3.LC.1100 FF, PCO.225.1050, PCO.225.1230 |  |  |  |  | 52d | 0d |  | SHIELD | SHIELD |  |  | JH |  |
| PCO.225.1250 |  | Inspection of RF Shielding - B2 | 1d | 2026-05-13 | 2026-05-13 | PCO.225.1230 |  |  |  |  | 125d | 0d |  | NIH | NIH |  |  | DG |  |
| PCO.225.1270 |  | B2 RF Shielding Slab Infill | 5d | 2026-05-14 | 2026-05-20 | PCO.225.1250 |  |  |  |  | 125d | 32d |  | HP.CONC | HP.CONC |  |  | JH |  |
| PCO.225.1260 |  | Inspection of RF Shielding - L1 | 1d | 2026-06-04 | 2026-06-04 | PCO.225.1240 |  |  |  |  | 52d | 0d |  | NIH | NIH |  |  | JH |  |
| PCO.225.1280 |  | L1 RF Shielding Slab Infill | 5d | 2026-06-05 | 2026-06-11 | PCO.225.1260 |  |  |  |  | 52d | 0d |  | HP.CONC | HP.CONC |  |  | JH |  |

| ID | WBS | Activity | Duration | Start | Finish | Predecessors | Complete | Planned start | Planned finish | Resp / SRLM | RESP UPD | RESP / Trade | Update Status |
| --- | --- | --- | --- | --- | --- | --- | --- | --- | --- | --- | --- | --- | --- |
|  | 8 | **PCO 0815 - Phase 2 - (DLM_01) Levels 5 & 6 Modifications - RFP 72 Package** |  | 2025-04-16 | 2025-11-14 |  |  |  |  |  |  |  |  |
| PCO.0815.1000 |  | RFP Received from NIH (4/16 - 4/21) - PCO 0815 (DLM_01) | 15d | 2025-04-16 A | 2025-04-21 A | P2C.DES.210 | 100% | 2025-08-04 | 2025-08-22 | NIH | AM | NIH |  |
| PCO.0815.1010 |  | Trade Review & Price RFP -PCO 0815 (DLM_01) | 11d | 2025-08-15 A | 2025-08-29 A | PCO.0815.1000 | 100% | 2025-08-12 | 2025-08-27 | T | AM | T |  |
| PCO.0815.1020 |  | HP - Review & Submits to NIH - PCO 0815 (DLM_01) | 3d | 2025-09-02 A | 2025-09-03 A | PCO.0815.1010 | 100% | 2025-08-27 | 2025-09-02 | HP | AM | HP |  |
| PCO.0815.1030 |  | NIH - Review RFP - PCO 0815 (DLM_01) | 15d | 2025-09-04 A | 2025-09-24 A | PCO.0815.1020 | 100% | 2025-09-02 | 2025-09-23 | NIH | AM | NIH |  |
| PCO.0815.1040 |  | NIH - MOD Approval - PCO 0815 (DLM_01) | 5d | 2025-09-25 A | 2025-10-02 A | PCO.0815.1030 | 100% | 2025-09-23 | 2025-09-30 | NIH | AM | NIH |  |
| PCO.0815.1050 |  | HP Issues MOD to TP - PCO 0815 (DLM_01) | 5d | 2025-10-02 A | 2025-10-09 A | PCO.0815.1040 | 100% | 2025-09-30 | 2025-10-07 | HP | AM | HP |  |
| PCO.0815.1060 |  | Architectural Model Update - PCO 0815 (DLM_01) | 10d | 2025-10-06 A | 2025-10-17 A | PCO.0815.1050 | 100% | 2025-10-07 | 2025-10-21 | ARCH | AM | ARCH |  |
| PCO.0815.1070 |  | Engineering Coordination - PCO 0815 (DLM_01) | 10d | 2025-10-20 A | 2025-10-31 A | PCO.0815.1060 | 100% | 2025-10-20 | 2025-11-03 | ARCH | AM | ARCH |  |
| PCO.0815.1080 |  | Internal Review - PCO 0815 (DLM_01) | 5d | 2025-11-04 A | 2025-11-04 A | PCO.0815.1070 | 100% | 2025-12-01 | 2025-12-05 | ARCH | AM | ARCH |  |
| PCO.0815.1110 |  | Design Review Meeting - PCO 0815 (DLM_01) | 1d | 2025-11-07 A | 2025-11-07 A | PCO.0815.1080 | 100% | 2025-12-08 | 2025-12-08 | ARCH | AM | ARCH |  |
| PCO.0815.1090 |  | Compile Design Submittal - PCO 0815 (DLM_01) | 5d | 2025-11-10 A | 2025-11-13 A | PCO.0815.1080, PCO.0815.1110 | 100% | 2025-12-09 | 2025-12-15 | ARCH | AM | ARCH |  |
| PCO.0815.1100 |  | Submit To NIH - PCO 0815 (DLM_01) | 1d | 2025-11-14 A | 2025-11-14 A | PCO.0815.1090 | 100% | 2025-12-16 | 2025-12-16 | NIH | AM | NIH |  |
|  | 15 | **PCO 0816 - Phase 2 - (DLM_02) Level 5 Lab Modifications - RFP 073 Package** |  | 2025-04-16 | 2025-12-12 |  |  |  |  |  |  |  |  |
| PCO.0816.1000 |  | RFP Received from NIH (4/16 - 4/21) - PCO 0816 (DLM_02) | 15d | 2025-04-16 A | 2025-04-21 A | P2C.DES.210 | 100% | 2025-08-04 | 2025-08-22 | NIH | AM | NIH |  |
| PCO.0816.1010 |  | Trade - Review & Price RFP - PCO 0816 (DLM_02) | 10d | 2025-08-15 A | 2025-08-29 A | PCO.0816.1000 | 100% | 2025-08-12 | 2025-08-26 | T | AM | T |  |
| PCO.0816.1020 |  | HP - Review & Submits to NIH - PCO 0816 (DLM_02) | 3d | 2025-09-02 A | 2025-09-03 A | PCO.0816.1010 | 100% | 2025-08-27 | 2025-09-02 | HP | AM | HP |  |
| PCO.0816.1030 |  | NIH - Review RFP - PCO 0816 (DLM_02) | 15d | 2025-09-04 A | 2025-09-24 A | PCO.0816.1020 | 100% | 2025-09-02 | 2025-09-23 | NIH | AM | NIH |  |
| PCO.0816.1040 |  | NIH - MOD Approval - PCO 0816 (DLM_02) | 5d | 2025-09-25 A | 2025-10-02 A | PCO.0816.1030 | 100% | 2025-09-23 | 2025-09-30 | NIH | AM | NIH |  |
| PCO.0816.1050 |  | HP Issues MOD to TP - PCO 0816 (DLM_02) | 5d | 2025-10-02 A | 2025-10-09 A | PCO.0816.1040 | 100% | 2025-09-30 | 2025-10-07 | HP | AM | HP |  |
| PCO.0816.1060 |  | ZGF develop sketches for NIH review - PCO 0816 (DLM_02) | 15d | 2025-10-06 A | 2025-10-24 A | PCO.0816.1050 | 100% | 2025-10-07 | 2025-10-28 | ARCH | AM | ARCH |  |
| PCO.0816.1070 |  | NIH Review + ZGF Refinements - PCO 0816 (DLM_02) | 10d | 2025-10-27 A | 2025-11-07 A | PCO.0816.1060 | 100% |  |  | NIH | AM | NIH |  |
| PCO.0816.1080 |  | Architectural Model Update - PCO 0816 (DLM_02) | 5d | 2025-11-10 A | 2025-11-14 A | PCO.0816.1070 | 100% | 2025-12-08 | 2025-12-12 | ARCH | AM | ARCH |  |
| PCO.0816.1090 |  | Enginering Coordination - PCO 0816 (DLM_02) | 15d | 2025-11-17 A | 2025-12-02 A | PCO.0816.1080 | 100% | 2025-12-15 | 2026-01-06 | ARCH | AM | ARCH | O |
| PCO.0816.1100 |  | Internal Review- PCO 0816 (DLM_02) | 5d | 2025-12-03 A | 2025-12-03 A | PCO.0816.1090 | 100% | 2026-01-13 | 2026-01-19 | ARCH | AM | ARCH | O |
| PCO.0816.1110 |  | Compile Design Submittal - PCO 0816 (DLM_02) | 5d | 2025-12-04 A | 2025-12-11 A | PCO.0816.1100 | 100% | 2026-01-20 | 2026-01-26 | ARCH | AM | ARCH | O |
| PCO.0816.1120 |  | Submit To NIH - PCO 0816 (DLM_02) | 1d | 2025-12-12 A | 2025-12-12 A | PCO.0816.1110 | 100% | 2026-01-27 | 2026-01-27 | NIH | AM | NIH | O |

| ID | WBS | Activity | Duration | Start | Finish | Predecessors | Complete | Remaining | Planned start | Planned finish | Total float | Free float | Resp / SRLM | RESP UPD | RESP / Trade | Update Status |
| --- | --- | --- | --- | --- | --- | --- | --- | --- | --- | --- | --- | --- | --- | --- | --- | --- |
|  | 14 | **PCO 0817 - Phase 2C - DLM_3 Level 6 Design - RFP 074 Package** |  | 2025-04-16 | 2026-08-18 |  |  |  |  |  |  |  |  |  |  |  |
| PCO.0817.1000 |  | RFP Received from NIH (4/16 - 4/21) - PCO 0817 (DLM_03) | 15d | 2025-04-16 A | 2025-04-21 A | P2C.DES.210 | 100% |  | 2025-08-04 | 2025-08-22 |  |  | NIH | AM | NIH |  |
| PCO.0817.1010 |  | Trade - Review & Price RFP - PCO 0817 (DLM_03) | 10d | 2025-08-15 A | 2025-08-29 A | PCO.0817.1000 | 100% |  | 2025-08-12 | 2025-08-26 |  |  | T | AM | T |  |
| PCO.0817.1020 |  | HP - Review & Submits to NIH - PCO 0817 (DLM_03) | 3d | 2025-09-02 A | 2025-09-03 A | PCO.0817.1010 | 100% |  | 2025-08-27 | 2025-09-02 |  |  | HP | AM | HP |  |
| PCO.0817.1030 |  | NIH - Review RFP - PCO 0817 (DLM_03) | 15d | 2025-09-04 A | 2025-09-24 A | PCO.0817.1020 | 100% |  | 2025-09-02 | 2025-09-23 |  |  | NIH | AM | NIH |  |
| PCO.0817.1040 |  | NIH - MOD Approval - PCO 0817 (DLM_03) | 5d | 2025-09-25 A | 2025-10-02 A | PCO.0817.1030 | 100% |  | 2025-09-23 | 2025-09-30 |  |  | NIH | AM | NIH |  |
| PCO.0817.1220 |  | Goverment Shut-Down - PCO 0817 (DLM_03) | 20d | 2025-10-01 A | 2025-11-13 A | PCO.0817.1040 | 100% |  | 2025-10-07 | 2025-11-04 |  |  | NIH | AM | NIH | O |
| PCO.0817.1050 |  | HP Issues MOD to TP - PCO 0817 (DLM_03) | 5d | 2025-10-02 A | 2025-10-09 A | PCO.0817.1040 | 100% |  | 2025-09-30 | 2025-10-07 |  |  | HP | AM | HP |  |
| PCO.0817.1060 |  | Meeting #1 - ZGF + NIH - Information Gathering - PCO 0817 (DLM_03) | 1d | 2026-02-25 A | 2026-02-25 A | PCO.0817.1050, PCO.0817.1220 | 100% |  | 2026-04-01 | 2026-04-01 |  |  | NIH | TC | NIH | O |
| PCO.0817.1070 |  | ZGF Draft Design Development - PCO 0817 (DLM_03) | 15d | 2026-02-26 A | 2026-04-21 | PCO.0817.1060 |  | 15d | 2026-04-02 | 2026-04-22 | 171d | 0d | ARCH | TC | ARCH | O |
| PCO.0817.1080 |  | Meeting #2 - ZGF + NIH - Preliminary Design - PCO 0817 (DLM_03) | 1d | 2026-04-22 | 2026-04-22 | PCO.0817.1070 |  |  |  |  | 171d | 0d | NIH | TC | NIH | O |
| PCO.0817.1090 |  | NIH Draft Review + Aproval - PCO 0817 (DLM_03) | 5d | 2026-04-23 | 2026-04-29 | PCO.0817.1080 |  |  |  |  | 171d | 0d | NIH | TC | NIH | O |
| PCO.0817.1100 |  | ZGF Interim Design Development - PCO 0817 (DLM_03) | 15d | 2026-04-30 | 2026-05-20 | PCO.0817.1090 |  |  |  |  | 171d | 0d | ARCH | TC | ARCH |  |
| PCO.0817.1110 |  | Meeting #3 - ZGF + NIH - Preliminary Design - PCO 0817 (DLM_03) | 1d | 2026-05-21 | 2026-05-21 | PCO.0817.1100 |  |  |  |  | 171d | 0d | NIH | TC | NIH |  |
| PCO.0817.1120 |  | NIH Interim Review + Aproval - PCO 0817 (DLM_03) | 5d | 2026-05-22 | 2026-05-29 | PCO.0817.1110 |  |  |  |  | 171d | 0d | NIH | TC | NIH |  |
| PCO.0817.1130 |  | ZGF Final Design Development - PCO 0817 (DLM_03) | 15d | 2026-06-01 | 2026-06-19 | PCO.0817.1120 |  |  |  |  | 171d | 0d | ARCH | TC | ARCH |  |
| PCO.0817.1140 |  | Meeting #4 - ZGF + NIH - Final Design Review - PCO 0817 (DLM_03) | 1d | 2026-06-22 | 2026-06-22 | PCO.0817.1130 |  |  |  |  | 171d | 0d | NIH | TC | NIH |  |
| PCO.0817.1150 |  | Meeting #5 - ZGF + NIH - NIH Leadership - PCO 0817 (DLM_03) | 5d | 2026-06-23 | 2026-06-29 | PCO.0817.1140 |  |  |  |  | 171d | 0d | NIH | TC | NIH |  |
| PCO.0817.1160 |  | Meeting #6 - ZGF + NIH - NIH Leadership - PCO 0817 (DLM_03) | 5d | 2026-06-30 | 2026-07-07 | PCO.0817.1150 |  |  |  |  | 171d | 0d | NIH | TC | NIH |  |
| PCO.0817.1170 |  | Meeting #7 - ZGF + NIH - NIH Leadership - PCO 0817 (DLM_03) | 5d | 2026-07-08 | 2026-07-14 | PCO.0817.1160 |  |  |  |  | 171d | 0d | NIH | TC | NIH |  |
| PCO.0817.1180 |  | Concept Design Development + Enginering Coordination - PCO 0817 (DLM_03) | 10d | 2026-07-15 | 2026-07-28 | PCO.0817.1170 |  |  |  |  | 171d | 0d | ARCH | TC | ARCH |  |
| PCO.0817.1190 |  | Internal Review - PCO 0817 (DLM_03) | 5d | 2026-07-29 | 2026-08-04 | PCO.0817.1180 |  |  |  |  | 171d | 0d | ARCH | TC | ARCH |  |
| PCO.0817.1200 |  | Compile Design Submittal - PCO 0817 (DLM_03) | 5d | 2026-08-05 | 2026-08-11 | PCO.0817.1190 |  |  |  |  | 171d | 0d | ARCH | TC | ARCH |  |
| PCO.0817.1210 |  | Submit To NIH - PCO 0817 (DLM_03) | 5d | 2026-08-12 | 2026-08-18 | PCO.0817.1200 |  |  |  |  | 171d | 192d | NIH | TC | NIH |  |

| ID | WBS | Activity | Duration | Start | Finish | Predecessors | Complete | Planned start | Planned finish | Total float | Free float | Resp / SRLM | RESP UPD | RESP / Trade | Update Status |
| --- | --- | --- | --- | --- | --- | --- | --- | --- | --- | --- | --- | --- | --- | --- | --- |
|  | 13 | **PCO 0818 - Phase 2 - (DPM_01) Levels 2 & 3 Modifications - RFP 075** |  | 2025-04-16 | 2025-11-14 |  |  |  |  |  |  |  |  |  |  |
| PCO.0818.1000 |  | RFP Received from NIH (4/16 - 4/21) - PCO 0818 (DPM_01) | 15d | 2025-04-16 A | 2025-04-21 A | P2C.DES.210 | 100% | 2025-08-04 | 2025-08-22 |  |  | NIH | AM | NIH |  |
| PCO.0818.1010 |  | Trade Review & Price RFP - PCO 0818 (DPM_01) | 11d | 2025-08-15 A | 2025-08-29 A | PCO.0818.1000 | 100% | 2025-08-12 | 2025-08-27 |  |  | T | AM | T |  |
| PCO.0818.1020 |  | HP - Review & Submits to NIH - PCO 0818 (DPM_01) | 3d | 2025-09-02 A | 2025-09-03 A | PCO.0818.1010 | 100% | 2025-08-27 | 2025-09-02 |  |  | HP | AM | HP |  |
| PCO.0818.1030 |  | NIH - Review RFP - PCO 0818 (DPM_01) | 15d | 2025-09-04 A | 2025-09-24 A | PCO.0818.1020 | 100% | 2025-09-02 | 2025-09-23 |  |  | NIH | AM | NIH |  |
| PCO.0818.1040 |  | NIH - MOD Approval - PCO 0818 (DPM_01) | 5d | 2025-09-25 A | 2025-10-02 A | PCO.0818.1030 | 100% | 2025-09-23 | 2025-09-30 |  |  | NIH | AM | NIH |  |
| PCO.0818.1050 |  | HP Issues MOD to TP - PCO 0818 (DPM_01) | 5d | 2025-10-02 A | 2025-10-09 A | PCO.0818.1040 | 100% | 2025-09-30 | 2025-10-07 |  |  | HP | AM | HP |  |
| PCO.0818.1060 |  | Architectural Model Update - PCO 0818 (DPM_01) | 10d | 2025-10-06 A | 2025-10-17 A | PCO.0818.1050 | 100% | 2025-10-07 | 2025-10-21 |  |  | ARCH | AM | ARCH |  |
| PCO.0818.1070 |  | Engineering Coordination - PCO 0818 (DPM_01) | 10d | 2025-10-20 A | 2025-10-31 A | PCO.0818.1060 | 100% | 2025-10-20 | 2025-11-03 |  |  | ARCH | AM | ARCH |  |
| PCO.0818.1080 |  | Internal Review - PCO 0818 (DPM_01) | 5d | 2025-11-04 A | 2025-11-06 A | PCO.0818.1070 | 100% | 2025-12-01 | 2025-12-05 |  |  | ARCH | AM | ARCH |  |
| PCO.0818.1090 |  | Compile Design Submittal - PCO 0818 (DPM_01) | 5d | 2025-11-07 A | 2025-11-13 A | PCO.0818.1080, PCO.0818.1110 | 100% | 2025-12-09 | 2025-12-15 |  |  | ARCH | AM | ARCH |  |
| PCO.0818.1110 |  | Design Review Meeting - PCO 0818 (DPM_01) | 1d | 2025-11-12 A | 2025-11-12 A | PCO.0818.1080 | 100% | 2025-12-08 | 2025-12-08 |  |  | ARCH | AM | ARCH |  |
| PCO.0818.1100 |  | Sumit To NIH - PCO 0818 (DPM_01) | 1d | 2025-11-14 A | 2025-11-14 A | PCO.0818.1090 | 100% | 2025-12-16 | 2025-12-16 |  |  | NIH | AM | NIH |  |
|  | 12 | **PCO 0819 - Phase 2C & 5 - DPM_2_3_4 IR_1 Levels 2 & 3 Design - RFP 76** |  | 2025-04-16 | 2026-11-17 |  |  |  |  |  |  |  |  |  |  |
| PCO.0819.1000 |  | RFP Received from NIH (4/16 - 4/21) - PCO 0819 (DPM_2_3_4 IR_1) | 15d | 2025-04-16 A | 2025-04-21 A | EXS.100 SS | 100% | 2025-08-04 | 2025-08-22 |  |  | NIH | AM | NIH |  |
| PCO.0819.1010 |  | Trade - Review & Price RFP - PCO 0819 (DPM_2_3_4 IR_1) | 10d | 2025-08-15 A | 2025-08-29 A | PCO.0819.1000 | 100% | 2025-08-12 | 2025-08-26 |  |  | T | AM | T |  |
| PCO.0819.1020 |  | HP - Review & Submits to NIH - PCO 0819 (DPM_2_3_4 IR_1) | 3d | 2025-09-02 A | 2025-09-03 A | PCO.0819.1010 | 100% | 2025-08-27 | 2025-09-02 |  |  | HP | AM | HP |  |
| PCO.0819.1030 |  | NIH - Review RFP - PCO 0819 (DPM_2_3_4 IR_1) | 15d | 2025-09-04 A | 2025-09-24 A | PCO.0819.1020 | 100% | 2025-09-02 | 2025-09-23 |  |  | NIH | AM | NIH |  |
| PCO.0819.1040 |  | NIH - MOD Approval - PCO 0819 (DPM_2_3_4 IR_1) | 5d | 2025-09-25 A | 2025-10-02 A | PCO.0819.1030 | 100% | 2025-09-23 | 2025-09-30 |  |  | NIH | AM | NIH |  |
| PCO.0819.1050 |  | Goverment Shut-Down - PCO 0819 (DPM_2_3_4 IR_1) | 20d | 2025-10-01 A | 2025-11-13 A | PCO.0819.1040 | 100% | 2025-10-07 | 2025-11-04 |  |  | NIH | AM | NIH | O |
| PCO.0819.1060 |  | HP Issues MOD to TP - PCO 0819 (DPM_2_3_4 IR_1) | 5d | 2025-10-02 A | 2025-10-09 A | PCO.0819.1040 | 100% | 2025-09-30 | 2025-10-07 |  |  | HP | AM | HP |  |
| PCO.0819.1070 |  | Meeting #1 - ZGF + NIH - Information Gathering - PCO 0819 (DPM_2_3_4 IR_1) | 1d | 2026-04-01 | 2026-04-01 | PCO.0819.1060, PCO.0819.1050 |  |  |  | 107d | 0d | NIH | TC | NIH | O |
| PCO.0819.1080 |  | ZGF Meeting Prep + Coordination with NIH - PCO 0819 (DPM_2_3_4 IR_1) | 15d | 2026-04-02 | 2026-04-22 | PCO.0819.1070 |  |  |  | 107d | 0d | ARCH | TC | ARCH | O |
| PCO.0819.1090 |  | Meeting #2 - ZGF + NIH - Information Gathering - PCO 0819 (DPM_2_3_4 IR_1) | 1d | 2026-04-23 | 2026-04-23 | PCO.0819.1080 |  |  |  | 107d | 0d | NIH | TC | NIH | O |
| PCO.0819.1100 |  | ZGF Draft Design Development - PCO 0819 (DPM_2_3_4 IR_1) | 10d | 2026-04-24 | 2026-05-07 | PCO.0819.1090 |  |  |  | 107d | 0d | ARCH | TC | ARCH | O |
| PCO.0819.1110 |  | Meeting #3 - ZGF + NIH - Preliminary Design - PCO 0819 (DPM_2_3_4 IR_1) | 1d | 2026-05-08 | 2026-05-08 | PCO.0819.1100 |  |  |  | 107d | 0d | NIH | TC | NIH |  |
| PCO.0819.1120 |  | NIH Draft Review + Approval - PCO 0819 (DPM_2_3_4 IR_1) | 5d | 2026-05-11 | 2026-05-15 | PCO.0819.1110 |  |  |  | 107d | 0d | NIH | TC | NIH |  |
| PCO.0819.1130 |  | ZGF Interim Design Development - PCO 0819 (DPM_2_3_4 IR_1) | 10d | 2026-05-18 | 2026-06-01 | PCO.0819.1120 |  |  |  | 107d | 0d | ARCH | TC | ARCH |  |
| PCO.0819.1140 |  | Meeting #4 - Preliminary Design Review - PCO 0819 (DPM_2_3_4 IR_1) | 1d | 2026-06-02 | 2026-06-02 | PCO.0819.1130 |  |  |  | 107d | 0d | NIH | TC | NIH |  |
| PCO.0819.1150 |  | NIH Interim Review + Comment - PCO 0819 (DPM_2_3_4 IR_1) | 5d | 2026-06-03 | 2026-06-09 | PCO.0819.1140 |  |  |  | 107d | 0d | NIH | TC | NIH |  |
| PCO.0819.1160 |  | ZGF Interim Design Development - PCO 0819 (DPM_2_3_4 IR_1) | 10d | 2026-06-10 | 2026-06-23 | PCO.0819.1150 |  |  |  | 107d | 0d | ARCH | TC | ARCH |  |
| PCO.0819.1170 |  | Meeting #5 - Preliminary Design Review - PCO 0819 (DPM_2_3_4 IR_1) | 1d | 2026-06-24 | 2026-06-24 | PCO.0819.1160 |  |  |  | 107d | 0d | NIH | TC | NIH |  |
| PCO.0819.1180 |  | NIH Interim Review + Aproval - PCO 0819 (DPM_2_3_4 IR_1) | 5d | 2026-06-25 | 2026-07-01 | PCO.0819.1170 |  |  |  | 107d | 0d | NIH | TC | NIH |  |
| PCO.0819.1190 |  | ZGF Final Design Development - PCO 0819 (DPM_2_3_4 IR_1) | 10d | 2026-07-02 | 2026-07-16 | PCO.0819.1180 |  |  |  | 107d | 0d | ARCH | TC | ARCH |  |
| PCO.0819.1200 |  | Meeting #6 - Concept Design Progress - PCO 0819 (DPM_2_3_4 IR_1) | 1d | 2026-07-17 | 2026-07-17 | PCO.0819.1190 |  |  |  | 107d | 0d | NIH | TC | NIH |  |
| PCO.0819.1210 |  | NIH Final Review + Comment - PCO 0819 (DPM_2_3_4 IR_1) | 5d | 2026-07-20 | 2026-07-24 | PCO.0819.1200 |  |  |  | 107d | 0d | NIH | TC | NIH |  |
| PCO.0819.1220 |  | ZGF Final Design Development - PCO 0819 (DPM_2_3_4 IR_1) | 15d | 2026-07-27 | 2026-08-14 | PCO.0819.1210 |  |  |  | 107d | 0d | ARCH | TC | ARCH |  |
| PCO.0819.1230 |  | Meeting #7 - Concept Design - PCO 0819 (DPM_2_3_4 IR_1) | 5d | 2026-08-17 | 2026-08-21 | PCO.0819.1220 |  |  |  | 107d | 0d | NIH | TC | NIH |  |
| PCO.0819.1240 |  | Meeting #8 - NIH Leadership - PCO 0819 (DPM_2_3_4 IR_1) | 5d | 2026-08-24 | 2026-08-28 | PCO.0819.1230 |  |  |  | 107d | 0d | NIH | TC | NIH |  |
| PCO.0819.1250 |  | Meeting #9 - NIH Leadership - PCO 0819 (DPM_2_3_4 IR_1) | 5d | 2026-08-31 | 2026-09-04 | PCO.0819.1240 |  |  |  | 107d | 0d | NIH | TC | NIH |  |
| PCO.0819.1260 |  | Meeting #10 - NIH Leadership - PCO 0819 (DPM_2_3_4 IR_1) | 5d | 2026-09-08 | 2026-09-14 | PCO.0819.1250 |  |  |  | 107d | 0d | NIH | TC | NIH |  |
| PCO.0819.1270 |  | Engineering Coordination - PCO 0819 (DPM_2_3_4 IR_1) | 20d | 2026-09-15 | 2026-10-12 | PCO.0819.1260 |  |  |  | 107d | 0d | ARCH | TC | ARCH |  |
| PCO.0819.1280 |  | Internal Review - PCO 0819 (DPM_2_3_4 IR_1) | 10d | 2026-10-13 | 2026-10-26 | PCO.0819.1270 |  |  |  | 107d | 0d | ARCH | TC | ARCH |  |
| PCO.0819.1290 |  | Compile Design Submittal - PCO 0819 (DPM_2_3_4 IR_1) | 15d | 2026-10-27 | 2026-11-16 | PCO.0819.1280 |  |  |  | 107d | 0d | ARCH | TC | ARCH |  |
| PCO.0819.1300 |  | Submit To NIH - PCO 0819 (DPM_2_3_4 IR_1) | 1d | 2026-11-17 | 2026-11-17 | PCO.0819.1290 |  |  |  | 107d | 128d | NIH | TC | NIH |  |

| ID | WBS | Activity | Duration | Start | Finish | Predecessors | Complete | Remaining | Planned start | Planned finish | Total float | Free float | Resp / SRLM | RESP UPD | RESP / Trade | Update Status |
| --- | --- | --- | --- | --- | --- | --- | --- | --- | --- | --- | --- | --- | --- | --- | --- | --- |
|  | 11 | **PCO 0820 - Phase 2C & 5 - RAD_1_3_5 RADIS Level 01 Design - RFP 077** |  | 2025-04-16 | 2026-10-30 |  |  |  |  |  |  |  |  |  |  |  |
| PCO.0820.1000 |  | RFP Received from NIH (4/16 - 4/21) - PCO 0820 (RAD_1_3_5) | 15d | 2025-04-16 A | 2025-04-21 A | EXS.100 SS | 100% |  | 2025-08-04 | 2025-08-22 |  |  | NIH | AM | NIH |  |
| PCO.0820.1010 |  | Trade - Review & Price RFP - PCO 0820 (RAD_1_3_5) | 10d | 2025-08-15 A | 2025-08-29 A | PCO.0820.1000 | 100% |  | 2025-08-12 | 2025-08-26 |  |  | T | AM | T |  |
| PCO.0820.1020 |  | HP - Review & Submits to NIH - PCO 0820 (RAD_1_3_5) | 3d | 2025-09-02 A | 2025-09-03 A | PCO.0820.1010 | 100% |  | 2025-08-27 | 2025-09-02 |  |  | HP | AM | HP |  |
| PCO.0820.1030 |  | NIH - Review RFP - PCO 0819 PCO 0820 (RAD_1_3_5) | 15d | 2025-09-04 A | 2025-09-24 A | PCO.0820.1020 | 100% |  | 2025-09-02 | 2025-09-23 |  |  | NIH | AM | NIH |  |
| PCO.0820.1040 |  | NIH - MOD Approval - PCO 0820 (RAD_1_3_5) | 5d | 2025-09-25 A | 2025-10-02 A | PCO.0820.1030 | 100% |  | 2025-09-23 | 2025-09-30 |  |  | NIH | AM | NIH |  |
| PCO.0820.1050 |  | Goverment Shut-Down - PCO 0820 (RAD_1_3_5) | 20d | 2025-10-01 A | 2025-11-13 A | PCO.0820.1040 | 100% |  | 2025-10-07 | 2025-11-04 |  |  | NIH | AM | NIH | O |
| PCO.0820.1060 |  | HP Issues MOD to TP - PCO 0820 (RAD_1_3_5) | 5d | 2025-10-02 A | 2025-10-09 A | PCO.0820.1040 | 100% |  | 2025-09-30 | 2025-10-07 |  |  | HP | AM | HP |  |
| PCO.0820.1070 |  | Meeting #1 - ZGF + NIH - Information Gathering - PCO 0820 (RAD_1_3_5) | 1d | 2026-01-29 A | 2026-01-29 A | PCO.0820.1060, PCO.0820.1050 | 100% |  | 2026-04-01 | 2026-04-01 |  |  | NIH | TC | NIH | O |
| PCO.0820.1080 |  | ZGF Meeting Prep + Coordination with NIH - PCO 0820 (RAD_1_3_5) | 15d | 2026-01-30 A | 2026-02-26 A | PCO.0820.1070 | 100% |  | 2026-04-02 | 2026-04-22 |  |  | ARCH | TC | ARCH | O |
| PCO.0820.1090 |  | Meeting #2 - ZGF + NIH - Information Gathering - PCO 0820 (RAD_1_3_5) | 1d | 2026-02-27 A | 2026-03-04 A | PCO.0820.1080 | 100% |  | 2026-04-23 | 2026-04-23 |  |  | NIH | TC | NIH | O |
| PCO.0820.1100 |  | ZGF Draft Design Development - PCO 0820 (RAD_1_3_5) | 10d | 2026-03-05 A | 2026-04-14 | PCO.0820.1090 |  | 10d | 2026-04-24 | 2026-05-07 | 119d | 0d | ARCH | TC | ARCH | O |
| PCO.0820.1110 |  | Meeting #3 - ZGF + NIH - Preliminary Design - PCO 0820 (RAD_1_3_5) | 1d | 2026-04-15 | 2026-04-15 | PCO.0820.1100 |  |  |  |  | 119d | 0d | NIH | TC | NIH |  |
| PCO.0820.1120 |  | NIH Draft Review + Approval - PCO 0820 (RAD_1_3_5) | 5d | 2026-04-16 | 2026-04-22 | PCO.0820.1110 |  |  |  |  | 119d | 0d | NIH | TC | NIH |  |
| PCO.0820.1130 |  | ZGF Interim Design Development - PCO 0820 (RAD_1_3_5) | 10d | 2026-04-23 | 2026-05-06 | PCO.0820.1120 |  |  |  |  | 119d | 0d | ARCH | TC | ARCH |  |
| PCO.0820.1140 |  | Meeting #4 - Preliminary Design Review - PCO 0820 (RAD_1_3_5) | 1d | 2026-05-07 | 2026-05-07 | PCO.0820.1130 |  |  |  |  | 119d | 0d | NIH | TC | NIH |  |
| PCO.0820.1150 |  | NIH Interim Review + Comment - PCO 0820 (RAD_1_3_5) | 5d | 2026-05-08 | 2026-05-14 | PCO.0820.1140 |  |  |  |  | 119d | 0d | NIH | TC | NIH |  |
| PCO.0820.1160 |  | ZGF Interim Design Development - PCO 0820 (RAD_1_3_5) | 10d | 2026-05-15 | 2026-05-29 | PCO.0820.1150 |  |  |  |  | 119d | 0d | ARCH | TC | ARCH |  |
| PCO.0820.1170 |  | Meeting #5 - Preliminary Design Review - PCO 0820 (RAD_1_3_5) | 1d | 2026-06-01 | 2026-06-01 | PCO.0820.1160 |  |  |  |  | 119d | 0d | NIH | TC | NIH |  |
| PCO.0820.1180 |  | NIH Interim Review + Aproval - PCO 0820 (RAD_1_3_5) | 5d | 2026-06-02 | 2026-06-08 | PCO.0820.1170 |  |  |  |  | 119d | 0d | NIH | TC | NIH |  |
| PCO.0820.1190 |  | ZGF Final Design Development - PCO 0820 (RAD_1_3_5) | 10d | 2026-06-09 | 2026-06-22 | PCO.0820.1180 |  |  |  |  | 119d | 0d | ARCH | TC | ARCH |  |
| PCO.0820.1200 |  | Meeting #6 - Concept Design Progress - PCO 0820 (RAD_1_3_5) | 1d | 2026-06-23 | 2026-06-23 | PCO.0820.1190 |  |  |  |  | 119d | 0d | NIH | TC | NIH |  |
| PCO.0820.1210 |  | NIH Final Review + Comment - PCO 0820 (RAD_1_3_5) | 5d | 2026-06-24 | 2026-06-30 | PCO.0820.1200 |  |  |  |  | 119d | 0d | NIH | TC | NIH |  |
| PCO.0820.1220 |  | ZGF Final Design Development - PCO 0820 (RAD_1_3_5) | 15d | 2026-07-01 | 2026-07-22 | PCO.0820.1210 |  |  |  |  | 119d | 0d | ARCH | TC | ARCH |  |
| PCO.0820.1230 |  | Meeting #7 - Concept Design - PCO 0820 (RAD_1_3_5) | 5d | 2026-07-23 | 2026-07-29 | PCO.0820.1220 |  |  |  |  | 119d | 0d | NIH | TC | NIH |  |
| PCO.0820.1240 |  | Meeting #8 - NIH Leadership - PCO 0820 (RAD_1_3_5) | 5d | 2026-07-30 | 2026-08-05 | PCO.0820.1230 |  |  |  |  | 119d | 0d | NIH | TC | NIH |  |
| PCO.0820.1250 |  | Meeting #9 - NIH Leadership - PCO 0820 (RAD_1_3_5) | 5d | 2026-08-06 | 2026-08-12 | PCO.0820.1240 |  |  |  |  | 119d | 0d | NIH | TC | NIH |  |
| PCO.0820.1260 |  | Meeting #10 - NIH Leadership - PCO 0820 (RAD_1_3_5) | 5d | 2026-08-13 | 2026-08-19 | PCO.0820.1250 |  |  |  |  | 119d | 0d | NIH | TC | NIH |  |
| PCO.0820.1270 |  | Engineering Coordination - PCO 0820 (RAD_1_3_5) | 20d | 2026-08-20 | 2026-09-17 | PCO.0820.1260 |  |  |  |  | 119d | 0d | ARCH | TC | ARCH |  |
| PCO.0820.1280 |  | Internal Review - PCO 0820 (RAD_1_3_5) | 15d | 2026-09-18 | 2026-10-08 | PCO.0820.1270 |  |  |  |  | 119d | 0d | ARCH | TC | ARCH |  |
| PCO.0820.1290 |  | Compile Design Submittal - PCO 0820 (RAD_1_3_5) | 15d | 2026-10-09 | 2026-10-29 | PCO.0820.1280 |  |  |  |  | 119d | 0d | ARCH | TC | ARCH |  |
| PCO.0820.1300 |  | Submit To NIH - PCO 0820 (RAD_1_3_5) | 1d | 2026-10-30 | 2026-10-30 | PCO.0820.1290 |  |  |  |  | 119d | 140d | NIH | TC | NIH |  |

| ID | WBS | Activity | Duration | Start | Finish | Predecessors | Complete | Planned start | Planned finish | Resp / SRLM | RESP UPD | RESP / Trade | Update Status |
| --- | --- | --- | --- | --- | --- | --- | --- | --- | --- | --- | --- | --- | --- |
|  | 9 | **PCO 0821 - Phase 2 - (RAD_02) Level 01 Central Prep Modifications - RFP 078** |  | 2025-04-16 | 2025-12-12 |  |  |  |  |  |  |  |  |
| PCO.0821.1000 |  | RFP Received from NIH (4/16 - 4/21) - PCO 0821 (RAD_02) | 15d | 2025-04-16 A | 2025-04-21 A | P2C.DES.210 | 100% | 2025-08-04 | 2025-08-22 | NIH | AM | NIH |  |
| PCO.0821.1010 |  | Trade Review & Price RFP - PCO 0821 (RAD_02) | 11d | 2025-08-15 A | 2025-08-29 A | PCO.0821.1000 | 100% | 2025-08-12 | 2025-08-27 | T | AM | T |  |
| PCO.0821.1020 |  | HP - Review & Submits to NIH - PCO 0821 (RAD_02) | 3d | 2025-09-02 A | 2025-09-03 A | PCO.0821.1010 | 100% | 2025-08-27 | 2025-09-02 | HP | AM | HP |  |
| PCO.0821.1030 |  | NIH - Review RFP - PCO 0821 (RAD_02) | 15d | 2025-09-04 A | 2025-09-24 A | PCO.0821.1020 | 100% | 2025-09-02 | 2025-09-23 | NIH | AM | NIH |  |
| PCO.0821.1040 |  | NIH - MOD Approval - PCO 0821 (RAD_02) | 5d | 2025-09-25 A | 2025-10-02 A | PCO.0821.1030 | 100% | 2025-09-23 | 2025-09-30 | NIH | AM | NIH |  |
| PCO.0821.1050 |  | HP Issues MOD to TP - PCO 0821 (RAD_02) | 5d | 2025-10-02 A | 2025-10-09 A | PCO.0821.1040 | 100% | 2025-09-30 | 2025-10-07 | HP | AM | HP |  |
| PCO.0821.1060 |  | Develop Sketch - PCO 0821 (RAD_02) | 5d | 2025-10-13 A | 2025-10-17 A | PCO.0821.1050 | 100% | 2025-10-07 | 2025-10-14 | ARCH | AM | ARCH |  |
| PCO.0821.1070 |  | NIH Review + ZGF Refinements - PCO 0821 (RAD_02) | 10d | 2025-10-20 A | 2025-10-31 A | PCO.0821.1060 | 100% | 2025-10-14 | 2025-10-28 | NIH | AM | NIH |  |
| PCO.0821.1080 |  | Architectural Model Update - PCO 0821 (RAD_02) | 5d | 2025-11-03 A | 2025-11-07 A | PCO.0821.1070 | 100% | 2025-12-01 | 2025-12-05 | ARCH | AM | ARCH |  |
| PCO.0821.1090 |  | Engineering Coordination - PCO 0821 (RAD_02) | 10d | 2025-11-10 A | 2025-11-21 A | PCO.0821.1080 | 100% | 2025-12-08 | 2025-12-19 | ARCH | AM | ARCH |  |
| PCO.0821.1100 |  | Internal Review - PCO 0821 (RAD_02) | 5d | 2025-11-24 A | 2025-12-01 A | PCO.0821.1090 | 100% | 2025-12-22 | 2025-12-29 | ARCH | AM | ARCH | O |
| PCO.0821.1110 |  | Compile Design Submittal - PCO 0821 (RAD_02) | 5d | 2025-12-03 A | 2025-12-11 A | PCO.0821.1100 | 100% | 2026-01-02 | 2026-01-08 | ARCH | AM | ARCH | O |
| PCO.0821.1120 |  | Submit To NIH - PCO 0821 (RAD_02) | 1d | 2025-12-12 A | 2025-12-12 A | PCO.0821.1110 | 100% | 2026-01-09 | 2026-01-09 | NIH | AM | NIH | O |
|  | 10 | **PCO 0822 - Phase 2 - (RAD_04) Conference Room 1-2810 Modifications - RFP 079** |  | 2025-04-16 | 2025-11-14 |  |  |  |  |  |  |  |  |
| PCO.0822.1000 |  | RFP Received from NIH (4/16 - 4/21) - PCO 0822 (RAD_04) | 15d | 2025-04-16 A | 2025-04-21 A | P2C.DES.210 | 100% | 2025-08-04 | 2025-08-22 | NIH | AM | NIH |  |
| PCO.0822.1010 |  | Trade Review & Price RFP - PCO 0822 (RAD_04) | 11d | 2025-08-15 A | 2025-08-29 A | PCO.0822.1000 | 100% | 2025-08-12 | 2025-08-27 | T | AM | T |  |
| PCO.0822.1020 |  | HP - Review & Submits to NIH - PCO 0822 (RAD_04) | 3d | 2025-09-02 A | 2025-09-03 A | PCO.0822.1010 | 100% | 2025-08-27 | 2025-09-02 | HP | AM | HP |  |
| PCO.0822.1030 |  | NIH - Review RFP - PCO 0822 (RAD_04) | 15d | 2025-09-04 A | 2025-09-24 A | PCO.0822.1020 | 100% | 2025-09-02 | 2025-09-23 | NIH | AM | NIH |  |
| PCO.0822.1040 |  | NIH - MOD Approval - PCO 0822 (RAD_04) | 5d | 2025-09-25 A | 2025-10-02 A | PCO.0822.1030 | 100% | 2025-09-23 | 2025-09-30 | NIH | AM | NIH |  |
| PCO.0822.1050 |  | HP Issues MOD to TP - PCO 0822 (RAD_04) | 5d | 2025-10-02 A | 2025-10-09 A | PCO.0822.1040 | 100% | 2025-09-30 | 2025-10-07 | HP | AM | HP |  |
| PCO.0822.1060 |  | Develop Sketch - PCO 0822 (RAD_04) | 5d | 2025-10-06 A | 2025-10-10 A | PCO.0822.1050 | 100% | 2025-10-07 | 2025-10-14 | ARCH | AM | ARCH |  |
| PCO.0822.1070 |  | NIH Review + ZGF Refinements - PCO 0822 (RAD_04) | 5d | 2025-10-13 A | 2025-10-17 A | PCO.0822.1060 | 100% | 2025-10-13 | 2025-10-20 | NIH | AM | NIH |  |
| PCO.0822.1080 |  | Architectural Model Update - PCO 0822 (RAD_04) | 5d | 2025-10-20 A | 2025-10-24 A | PCO.0822.1070 | 100% | 2025-10-20 | 2025-10-27 | ARCH | AM | ARCH |  |
| PCO.0822.1090 |  | Engineering Coordination - PCO 0822 (RAD_04) | 5d | 2025-10-27 A | 2025-10-31 A | PCO.0822.1080 | 100% |  |  | ARCH | AM | ARCH |  |
| PCO.0822.1100 |  | Internal Review - PCO 0822 (RAD_04) | 5d | 2025-11-03 A | 2025-11-04 A | PCO.0822.1090 | 100% | 2025-12-01 | 2025-12-05 | ARCH | AM | ARCH |  |
| PCO.0822.1130 |  | Design Review Meeting - PCO 0822 (RAD_04) | 1d | 2025-11-07 A | 2025-11-07 A | PCO.0822.1100 | 100% | 2025-12-08 | 2025-12-08 | ARCH | AM | ARCH |  |
| PCO.0822.1110 |  | Compile Design Submittal - PCO 0822 (RAD_04) | 5d | 2025-11-10 A | 2025-11-14 A | PCO.0822.1100, PCO.0822.1130 | 100% | 2025-12-09 | 2025-12-15 | ARCH | AM | ARCH |  |
| PCO.0822.1120 |  | Submit To NIH - PCO 0822 (RAD_04) | 1d | 2025-11-14 A | 2025-11-14 A | PCO.0822.1110 | 100% | 2025-12-16 | 2025-12-16 | NIH | AM | NIH |  |

| ID | WBS | Activity | Duration | Start | Finish | Predecessors | Complete | Planned start | Planned finish | Total float | Free float | Update Status | Resp / SRLM | RESP UPD | RESP / Trade |
| --- | --- | --- | --- | --- | --- | --- | --- | --- | --- | --- | --- | --- | --- | --- | --- |
|  | 5 | **PCO 0823 - Phase 2 - (RAD_06) Flooring in MRI Zone II and Zone III Spaces - RFP 080** |  | 2025-04-16 | 2026-05-06 |  |  |  |  |  |  |  |  |  |  |
| PCO.823.1000 |  | RFP Received from NIH (4/16 - 4/21) - PC0 0823 (RAD_06) | 15d | 2025-04-16 A | 2025-04-21 A | P2C.DES.210 | 100% | 2025-08-04 | 2025-08-22 |  |  | O | NIH | AM | NIH |
| PCO.823.1010 |  | Trade Review & Price RFP - PC0 0823 (RAD_06) | 11d | 2025-08-15 A | 2025-08-29 A | PCO.823.1000 | 100% | 2025-08-12 | 2025-08-27 |  |  |  | T | AM | T |
| PCO.823.1020 |  | HP - Review & Submits to NIH - PC0 0823 (RAD_06) | 3d | 2025-09-02 A | 2025-09-03 A | PCO.823.1010 | 100% | 2025-08-27 | 2025-09-02 |  |  |  | HP | AM | HP |
| PCO.823.1030 |  | NIH - Review RFP - PC0 0823 (RAD_06) | 15d | 2025-09-04 A | 2025-09-24 A | PCO.823.1020 | 100% | 2025-09-02 | 2025-09-23 |  |  |  | NIH | AM | NIH |
| PCO.823.1040 |  | NIH - MOD Approval - PC0 0823 (RAD_06) | 5d | 2025-09-25 A | 2025-10-02 A | PCO.823.1030 | 100% | 2025-09-23 | 2025-09-30 |  |  |  | NIH | AM | NIH |
| PCO.823.1050 |  | HP Issues MOD to TP - PC0 0823 (RAD_06) | 5d | 2025-10-02 A | 2025-10-09 A | PCO.823.1040 | 100% |  |  |  |  |  | HP | AM | HP |
| PCO.823.1060 |  | Architectural Model Update - PC0 0823 (RAD_06) | 5d | 2025-10-09 A | 2025-10-16 A | PCO.823.1050 | 100% |  |  |  |  |  | ARCH | AM | ARCH |
| PCO.823.1070 |  | Engineering Coordination - PC0 0823 (RAD_06) | 5d | 2025-10-16 A | 2025-10-23 A | PCO.823.1060 | 100% |  |  |  |  |  | ARCH | AM | ARCH |
| PCO.823.1080 |  | Incorporate via RFI Response and Bulletin - PC0 0823 (RAD_06) | 10d | 2025-10-23 A | 2025-11-06 A | PCO.823.1070, PCO.823.1040 | 100% |  |  |  |  |  | ARCH | AM | ARCH |
| PCO.823.1160 |  | Design Review Meeting - PC0 0823 (RAD_06) | 1d | 2025-11-05 A | 2025-11-05 A | PCO.823.1080 | 100% | 2025-12-15 | 2025-12-15 |  |  |  | ARCH | AM | ARCH |
| PCO.823.1090 |  | Issue - Bulletin - PC0 0823 (RAD_06) | 1d | 2025-11-07 A | 2025-11-07 A | PCO.823.1080, PCO.823.1160 | 100% | 2025-12-16 | 2025-12-16 |  |  |  | ARCH | AM | ARCH |
| PCO.823.1100 |  | BIM Coordination - PC0 0823 (RAD_06) | 5d | 2026-03-02 A | 2026-03-06 A | PCO.823.1090 | 100% | 2026-04-01 | 2026-04-07 |  |  | O | MEP | TC | MEP-2 |
| PCO.823.1110 |  | Review Impact to Installed Work - PC0 0823 (RAD_06) | 5d | 2026-04-01 | 2026-04-07 | PCO.823.1100 |  |  |  | 119d | 0d | O | MEP | TC | MEP-2 |
| PCO.823.1120 |  | Shop Drawing Revision and Submit per BIM Coordination - PC0 0823 (RAD_06) | 5d | 2026-04-08 | 2026-04-14 | PCO.823.1110 |  |  |  | 119d | 0d | O | MEP | TC | MEP-2 |
| PCO.823.1130 |  | NIH Review and Approve - PC0 0823 (RAD_06) | 10d | 2026-04-15 | 2026-04-28 | PCO.823.1120 |  |  |  | 119d | 0d | O | NIH | TC | NIH |
| PCO.823.1140 |  | Incorporate Changes in the Field (Demo/Rework) - PC0 0823 (RAD_06) | 5d | 2026-04-29 | 2026-05-05 | PCO.823.1130 |  |  |  | 119d | 0d |  | HP | TC | HP |
| PCO.823.1150 |  | Trades - Construction Starts - PC0 0823 (RAD_06) | 1d | 2026-05-06 | 2026-05-06 | PCO.823.1090, PCO.823.1140, PCO.823.1040 |  |  |  | 119d | 69d |  | T | TC | T |
|  | 7 | **PCO 0824 - Phase 2 - (SINKS_01) Clinical Scrub Sink Equipment Modifications - RFP 081** |  | 2025-04-16 | 2026-05-27 |  |  |  |  |  |  |  |  |  |  |
| PCO.824.1000 |  | RFP Received from NIH (4/16 - 4/21) - PC0 0824 (SINK_01) | 15d | 2025-04-16 A | 2025-04-21 A | P2C.DES.210 | 100% | 2025-08-04 | 2025-08-22 |  |  | O | NIH | AM | NIH |
| PCO.824.1010 |  | Trade Review & Price RFP - PC0 0824 (SINK_01) | 11d | 2025-08-15 A | 2025-08-29 A | PCO.824.1000 | 100% | 2025-08-12 | 2025-08-27 |  |  |  | T | AM | T |
| PCO.824.1020 |  | HP - Review & Submits to NIH - PC0 0824 (SINK_01) | 3d | 2025-09-02 A | 2025-09-03 A | PCO.824.1010 | 100% | 2025-08-27 | 2025-09-02 |  |  |  | HP | AM | HP |
| PCO.824.1030 |  | NIH - Review RFP - PC0 0824 (SINK_01) | 15d | 2025-09-04 A | 2025-09-24 A | PCO.824.1020 | 100% | 2025-09-02 | 2025-09-23 |  |  |  | NIH | AM | NIH |
| PCO.824.1040 |  | NIH - MOD Approval - PC0 0824 (SINK_01) | 5d | 2025-09-25 A | 2025-10-02 A | PCO.824.1030 | 100% | 2025-09-23 | 2025-09-30 |  |  |  | NIH | AM | NIH |
| PCO.824.1050 |  | HP Issues MOD to TP - PC0 0824 (SINK_01) | 5d | 2025-10-02 A | 2025-10-09 A | PCO.824.1040 | 100% |  |  |  |  |  | HP | AM | HP |
| PCO.824.1060 |  | Architectural Model Update - PC0 0824 (SINK_01) | 5d | 2025-10-09 A | 2025-10-16 A | PCO.824.1050 | 100% |  |  |  |  |  | ARCH | AM | ARCH |
| PCO.824.1070 |  | Engineering Coordination - PC0 0824 (SINK_01) | 5d | 2025-10-16 A | 2025-10-23 A | PCO.824.1060 | 100% |  |  |  |  |  | ARCH | AM | ARCH |
| PCO.824.1080 |  | Incorporate via RFI Response and Bulletin - PC0 0824 (SINK_01) | 10d | 2025-10-23 A | 2025-11-06 A | PCO.824.1070 | 100% |  |  |  |  |  | ARCH | AM | ARCH |
| PCO.824.1180 |  | Design Review Meeting - PC0 0824 (SINK_01) | 1d | 2025-11-05 A | 2025-11-05 A | PCO.824.1080 | 100% | 2025-12-05 | 2025-12-05 |  |  |  | ARCH | AM | ARCH |
| PCO.824.1130 |  | NIH Review and Approve - PC0 0824 (SINK_01) | 10d | 2025-11-06 A | 2025-11-13 A | PCO.824.1120 | 100% | 2026-04-01 | 2026-04-14 |  |  | O | NIH | TC | NIH |
| PCO.824.1090 |  | Issue - Bulletin - PC0 0824 (SINK_01) | 1d | 2025-11-07 A | 2025-11-07 A | PCO.824.1080, PCO.824.1180 | 100% | 2025-12-08 | 2025-12-08 |  |  |  | ARCH | AM | ARCH |
| PCO.824.1160 |  | Spool/Fab/Deliver MEP - PC0 0824 (SINK_01) | 15d | 2025-12-01 A | 2025-12-19 A | PCO.824.1130 | 100% | 2026-04-15 | 2026-05-05 |  |  |  | MEP | TC | MEP-2 |
| PCO.824.1100 |  | BIM Coordination - PC0 0824 (SINK_01) | 5d | 2025-12-01 A | 2025-12-05 A | PCO.824.1090 | 100% | 2026-01-02 | 2026-01-08 |  |  | O | MEP | AM | MEP-2 |
| PCO.824.1110 |  | Review Impact to Installed Work - PC0 0824 (SINK_01) | 5d | 2025-12-08 A | 2025-12-12 A | PCO.824.1100 | 100% | 2026-01-09 | 2026-01-15 |  |  | O | MEP | AM | MEP-2 |
| PCO.824.1120 |  | Shop Drawing Revision and Submit per BIM Coordination - PC0 0824 (SINK_01) | 5d | 2025-12-15 A | 2025-12-19 A | PCO.824.1110 | 100% | 2026-01-16 | 2026-01-22 |  |  | O | MEP | AM | MEP-2 |
| PCO.824.1170 |  | Trades - Construction Starts - PC0 0824 (SINK_01) | 1d | 2025-12-22 A | 2025-12-22 A | PCO.824.1040, PCO.824.1090, PCO.824.1160 | 100% | 2026-05-06 | 2026-05-06 |  |  |  | T | TC | T |
| PCO.824.1140 |  | Incorporate Changes in the Field (Demo/Rework) - PC0 0824 (SINK_01) | 5d | 2026-04-01 | 2026-04-07 | PCO.824.1120 |  |  |  | 146d | 112d | O | MEP | TC | MEP-2 |
| PCO.824.1150 |  | Long Lead Equip./ Material - Lead/Fab/Deliver - PC0 0824 (SINK_01) | 40d | 2026-04-01 | 2026-05-27 | PCO.824.1130 |  |  |  | 86d | 34d |  | EQUIP | TC | EQUIP |

| ID | WBS | Activity | Duration | Start | Finish | Predecessors | Complete | Planned start | Planned finish | Total float | Free float | Update Status | Resp / SRLM | RESP UPD | RESP / Trade | **NEAR CRITICAL** |
| --- | --- | --- | --- | --- | --- | --- | --- | --- | --- | --- | --- | --- | --- | --- | --- | --- |
|  | 17 | **PCO 0830 - Phase 2C - (SINKS_05) Lab Fixtures Modifications - RFP 085** |  | 2025-04-16 | 2026-07-09 |  |  |  |  |  |  |  |  |  |  |  |
| PCO.830.1000 |  | RFP Received from NIH (4/16 - 4/21) - PC0 0830 (SINK_05) | 15d | 2025-04-16 A | 2025-04-21 A | P2C.DES.210 | 100% | 2025-08-04 | 2025-08-22 |  |  | O | NIH | AM | NIH |  |
| PCO.830.1010 |  | Trade Review & Price RFP - PC0 0830 (SINK_05) | 11d | 2025-08-15 A | 2025-08-29 A | PCO.830.1000 | 100% | 2025-08-12 | 2025-08-27 |  |  |  | T | AM | T |  |
| PCO.830.1020 |  | HP - Review & Submits to NIH - PC0 0830 (SINK_05) | 3d | 2025-09-02 A | 2025-09-03 A | PCO.830.1010 | 100% | 2025-08-27 | 2025-09-02 |  |  |  | HP | AM | HP |  |
| PCO.830.1030 |  | NIH - Review RFP - PC0 0830 (SINK_05) | 15d | 2025-09-04 A | 2025-09-24 A | PCO.830.1020 | 100% | 2025-09-02 | 2025-09-23 |  |  |  | NIH | AM | NIH |  |
| PCO.830.1040 |  | NIH - MOD Approval - PC0 0830 (SINK_05) | 5d | 2025-09-25 A | 2025-10-02 A | PCO.830.1030 | 100% | 2025-09-23 | 2025-09-30 |  |  |  | NIH | AM | NIH |  |
| PCO.830.1050 |  | HP Issues MOD to TP - PC0 0830 (SINK_05) | 5d | 2025-10-02 A | 2025-10-09 A | PCO.830.1040 | 100% |  |  |  |  |  | HP | AM | HP |  |
| PCO.830.1060 |  | Engineering Coordination - PC0 0830 (SINK_05) | 10d | 2025-10-06 A | 2025-10-28 A | PCO.830.1050, PCO.823.1070, PCO.824.1070 | 100% | 2025-10-23 | 2025-11-06 |  |  | O | ARCH | AM | ARCH |  |
| PCO.830.1120 |  | NIH Review and Approve - PC0 0830 (SINK_05) | 10d | 2025-11-03 A | 2026-01-13 A | PCO.830.1110 | 100% | 2026-03-02 | 2026-03-13 |  |  | O | NIH | AM | NIH |  |
| PCO.830.1070 |  | Incorporate via RFI Response and Bulletin - PC0 0830 (SINK_05) | 9d | 2025-11-06 A | 2025-11-20 A | PCO.830.1040, PCO.830.1050, PCO.830.1060, PCO.830.1170 | 100% | 2025-12-16 | 2025-12-29 |  |  |  | ARCH | AM | ARCH |  |
| PCO.830.1170 |  | Design Review Meeting - PC0 0830 (SINK_05) | 1d | 2025-11-12 A | 2025-11-12 A | PCO.830.1060 | 100% | 2025-12-15 | 2025-12-15 |  |  |  | ARCH | AM | ARCH |  |
| PCO.830.1080 |  | Issue - Bulletin - PC0 0830 (SINK_05) | 1d | 2025-11-21 A | 2025-11-21 A | PCO.830.1070 | 100% | 2025-12-30 | 2025-12-30 |  |  |  | ARCH | AM | ARCH |  |
| PCO.830.1090 |  | BIM Coordination - PC0 0830 (SINK_05) | 5d | 2025-12-01 A | 2025-12-05 A | PCO.830.1080 | 100% | 2026-01-02 | 2026-01-08 |  |  | O | MEP | AM | MEP-2 |  |
| PCO.830.1100 |  | Review Impact to Installed Work - PC0 0830 (SINK_05) | 5d | 2025-12-08 A | 2025-12-12 A | PCO.830.1090 | 100% | 2026-01-09 | 2026-01-15 |  |  | O | MEP | AM | MEP-2 |  |
| PCO.830.1110 |  | Shop Drawing Revision and Submit per BIM Coordination - PC0 0830 (SINK_05) | 10d | 2025-12-15 A | 2025-12-19 A | PCO.830.1100 | 100% | 2026-01-16 | 2026-01-29 |  |  | O | MEP | AM | MEP-2 |  |
| PCO.830.1150 |  | Spool/Fab/Deliver MEP - PC0 0830 (SINK_05) | 15d | 2026-01-14 A | 2026-02-03 A | PCO.830.1120 | 100% | 2026-03-16 | 2026-04-03 |  |  |  | MEP | AM | MEP-2 |  |
| PCO.830.1160 |  | Trades - Construction Starts - PC0 0830 (SINK_05) | 1d | 2026-02-04 A | 2026-02-04 A | PCO.830.1150, PCO.830.1080 | 100% | 2026-04-06 | 2026-04-06 |  |  |  | T | AM | T |  |
| PCO.830.1130 |  | Incorporate Changes in the Field (Demo/Rework) - PC0 0830 (SINK_05) | 5d | 2026-04-01 | 2026-04-07 | PCO.830.1110 |  |  |  | 61d | 0d | O | MEP | TC | MEP-2 |  |
| PCO.830.1140 |  | Long Lead Equip./ Material - Lead/Fab/Deliver - PC0 0830 (SINK_05) | 65d | 2026-04-08 | 2026-07-09 | PCO.830.1120, PCO.830.1130 |  |  |  | 61d | 0d |  | EQUIP | TC | EQUIP |  |
|  | 18 | **PCO 0831 - Phase 2C - (NCI_01_02) NCI Lab Modifications - RFP 086** |  | 2025-04-16 | 2026-07-01 |  |  |  |  |  |  |  |  |  |  |  |
| PCO.831.1000 |  | RFP Received from NIH (4/16 - 4/21) - PC0 0831 (NCI_01_02) | 15d | 2025-04-16 A | 2025-04-21 A | P2C.DES.210 | 100% | 2025-08-04 | 2025-08-22 |  |  | O | NIH |  | NIH |  |
| PCO.831.1010 |  | Trade Review & Price RFP - PC0 0831 (NCI_01_02) | 11d | 2025-08-15 A | 2025-08-29 A | PCO.831.1000 | 100% | 2025-09-02 | 2025-09-16 |  |  |  | T |  | T |  |
| PCO.831.1020 |  | HP - Review & Submits to NIH - PC0 0831 (NCI_01_02) | 2d | 2025-09-02 A | 2025-09-03 A | PCO.831.1010 | 100% |  |  |  |  |  | HP |  | HP |  |
| PCO.831.1030 |  | NIH - Review RFP - PC0 0831 (NCI_01_02) | 15d | 2025-09-04 A | 2025-09-24 A | PCO.831.1020 | 100% |  |  |  |  |  | NIH |  | NIH |  |
| PCO.831.1040 |  | NIH - MOD Approval - PC0 0831 (NCI_01_02) | 5d | 2025-09-25 A | 2025-10-01 A | PCO.831.1030 | 100% |  |  |  |  |  | NIH | TC | NIH |  |
| PCO.831.1050 |  | HP Issues MOD to TP - PC0 0831 (NCI_01_02) | 5d | 2025-10-02 A | 2025-10-08 A | PCO.831.1040 | 100% |  |  |  |  |  | HP | TC | HP |  |
| PCO.831.1060 |  | Develop Sketch - PC0 0831 (NCI_01_02) | 9d | 2025-10-06 A | 2025-10-21 A | PCO.831.1040, PCO.831.1050 | 100% | 2025-10-09 | 2025-10-21 |  |  |  | ARCH | AM | ARCH |  |
| PCO.831.1070 |  | Review with NIH - PC0 0831(NCI_01_02) | 3d | 2025-10-22 A | 2025-10-24 A | PCO.831.1060 | 100% |  |  |  |  |  | NIH | AM | NIH |  |
| PCO.831.1080 |  | Architectural Model Update - PC0 0831 (NCI_01_02) | 5d | 2025-10-27 A | 2025-10-31 A | PCO.831.1070 | 100% |  |  |  |  |  | ARCH | AM | ARCH |  |
| PCO.831.1090 |  | Engineering Coordination - PC0 0831 (NCI_01_02) | 10d | 2025-10-29 A | 2025-11-11 A | PCO.831.1080 | 100% | 2025-12-01 | 2025-12-12 |  |  |  | ARCH | AM | ARCH |  |
| PCO.831.1100 |  | Compile Draft Bulletin- PC0 0831 (NCI_01_02) | 5d | 2025-11-12 A | 2025-11-14 A | PCO.831.1090 | 100% | 2025-12-15 | 2025-12-19 |  |  |  | ARCH | RAL | ARCH |  |
| PCO.831.1200 |  | D-B Review and Approve - PC0 0831 (NCI_01_02) | 10d | 2025-11-14 A | 2025-12-05 A | PCO.831.1190 | 100% | 2026-03-12 | 2026-03-25 |  |  |  | ARCH | TC | ARCH | 4.1 |
| PCO.831.1110 |  | NIH Review - PC0 0831 (NCI_01_02) | 1d | 2025-11-17 A | 2025-11-19 A | PCO.831.1100 | 100% | 2025-12-22 | 2025-12-22 |  |  |  | NIH | RAL | NIH |  |
| PCO.831.1120 |  | Engineering Coordination - PC0 0831 (NCI_01_02) | 5d | 2025-11-24 A | 2025-11-26 A | PCO.831.1110 | 100% | 2025-12-01 | 2025-12-05 |  |  | O | ARCH | RAL | ARCH |  |
| PCO.831.1130 |  | Compile Final Bulletin Submission - PC0 0831 (NCI_01_02) | 4d | 2025-11-28 A | 2025-12-03 A | PCO.831.1120 | 100% | 2026-01-08 | 2026-01-13 |  |  | O | ARCH | RAL | ARCH |  |
| PCO.831.1220 |  | NIH Review and Approve - PC0 0831 (NCI_01_02) | 2d | 2025-12-03 A | 2025-12-10 A | PCO.831.1200 | 100% | 2026-04-15 | 2026-04-16 |  |  |  | NIH | TC | NIH | 4.1 |
| PCO.831.1140 |  | NIH Review - PC0 0831 (NCI_01_02) | 2d | 2025-12-04 A | 2025-12-10 A | PCO.831.1130 | 100% | 2026-01-14 | 2026-01-15 |  |  | O | NIH | RAL | NIH |  |
| PCO.831.1150 |  | Finalize Coordination & Print - Bulletin - PC0 0831 (NCI_01_02) | 5d | 2025-12-11 A | 2025-12-18 A | PCO.831.1140 | 100% | 2026-01-16 | 2026-01-22 |  |  | O | ARCH | RAL | ARCH |  |
| PCO.831.1160 |  | Issue - Bulletin - PC0 0831 (NCI_01_02) | 1d | 2025-12-19 A | 2025-12-19 A | PCO.831.1150 | 100% | 2026-01-23 | 2026-01-23 |  |  | O | ARCH | RAL | ARCH |  |
| PCO.831.1170 |  | BIM Coordination - PC0 0831 (NCI_01_02) | 20d | 2026-01-02 A | 2026-01-23 A | PCO.831.1160 | 100% | 2026-01-02 | 2026-01-29 |  |  | O | MEP | BO | MEP-2 | 4.1 |
| PCO.831.1180 |  | Review Impact to Installed Work - PC0 0831 (NCI_01_02) | 5d | 2026-01-26 A | 2026-01-30 A | PCO.831.1170 | 100% | 2026-01-23 | 2026-01-29 |  |  |  | MEP | BO | MEP-2 | 4.1 |
| PCO.831.1190 |  | Shop Drawing Revision and Submit per BIM Coordination - PC0 0831 (NCI_01_02) | 10d | 2026-01-29 A | 2026-02-10 A | PCO.831.1180 | 100% | 2026-02-09 | 2026-02-20 |  |  |  | MEP | RAL | MEP-2 | 4.1 |
| PCO.831.1210 |  | Incorporate Changes in the Field (Demo/Rework) - PC0 0831 (NCI_01_02) | 5d | 2026-02-11 A | 2026-02-17 A | PCO.831.1190 | 100% | 2026-04-01 | 2026-04-07 |  |  |  | MEP | JPC | MEP-2 |  |
| PCO.831.1240 |  | Spool/Fab/Deliver MEP - PC0 0831 (NCI_01_02) | 15d | 2026-03-09 A | 2026-03-28 A | PCO.831.1220 | 100% | 2026-04-01 | 2026-04-21 |  |  |  | MEP | TC | MEP-2 | 4.1 |
| PCO.831.1250 |  | Trades - Construction Starts - PC0 0831 (NCI_01_02) | 1d | 2026-03-30 A | 2026-03-30 A | PCO.831.1210, PCO.831.1240, PCO.831.1040, PCO.831.1160 | 100% | 2026-04-22 | 2026-04-22 |  |  |  | T | JPC | T | 4.1 |
| PCO.831.1230 |  | Long Lead Equip./ Material - Lead/Fab/Deliver - PC0 0831 (NCI_01_02) | 65d | 2026-04-01 | 2026-07-01 | PCO.831.1220 |  |  |  | 106d | 0d |  | EQUIP | TC | EQUIP |  |

| ID | WBS | Activity | Type | Duration | Start | Finish | Predecessors | Complete | Planned start | Planned finish | Temp Orig Dur | Resp / SRLM | PHASE | CATW | DFW | SCH DEV | RESP / Trade |
| --- | --- | --- | --- | --- | --- | --- | --- | --- | --- | --- | --- | --- | --- | --- | --- | --- | --- |
|  | 1 | **Design Summary** |  |  | 2022-04-26 | 2025-05-21 |  |  |  |  |  |  |  |  |  |  |  |
|  | 1 | **Phase 0 - Pre-work Mobilization** |  |  | 2022-05-26 | 2022-10-28 |  |  |  |  |  |  |  |  |  |  |  |
| P0.DSUM.100 |  | Phase 0 - Design Work Plan Summary | level of effort | 0d | 2022-05-26 A | 2022-10-28 A | P0.DES.100 SS | 100% | 2022-05-26 | 2022-05-26 | 0 | ARCH | P01 | DES | 01 | PRELIM | ARCH |
|  | 5 | **Phase 0A - Temporary Emergency Egress** |  |  | 2022-09-09 | 2023-05-01 |  |  |  |  |  |  |  |  |  |  |  |
| P0A.DSUM.100 |  | Phase 0A - Design Work Plan Summary | level of effort | 69d | 2022-09-09 A | 2023-05-01 A | P0A.DES.100 SS | 100% | 2022-09-09 | 2022-12-19 | 552 | ARCH | P01 | DES | 01 | PRELIM | ARCH |
|  | 8 | **Phase 0B - Interior Window Infills & Temporary Air Intake** |  |  | 2023-02-23 | 2023-04-27 |  |  |  |  |  |  |  |  |  |  |  |
| P0A.DSUM.110 |  | Phase 0B - Design Work Plan Summary | level of effort | 69d | 2023-02-23 A | 2023-04-27 A | P0B.DES.100 SS | 100% | 2023-02-23 | 2023-05-31 | 552 | ARCH | P01 | DES | 01 | PRELIM | ARCH |
|  | 9 | **Phase 0C - Facade Removal** |  |  | 2023-02-23 | 2023-07-13 |  |  |  |  |  |  |  |  |  |  |  |
| P0A.DSUM.120 |  | Phase 0C - Design Work Plan Summary | level of effort | 69d | 2023-02-23 A | 2023-07-13 A | P0C.DES.100 SS | 100% | 2023-02-23 | 2023-05-31 | 552 | ARCH | P01 | DES | 01 | PRELIM | ARCH |
|  | 6 | **Phase 1A - P1 Garage Ventilation and Egress** |  |  | 2022-10-07 | 2023-04-07 |  |  |  |  |  |  |  |  |  |  |  |
| P1A.DSUM.100 |  | Phase 1A - Design Work Plan Summary | level of effort | 69d | 2022-10-07 A | 2023-04-07 A | P1A.DES.570 SS | 100% | 2022-10-07 | 2023-01-18 | 552 | ARCH | P01 | DES | 01 | PRELIM | ARCH |
|  | 2 | **Phase 1 - Site Prep, SOE, Utilities, Below Grade Structure** |  |  | 2022-05-25 | 2023-08-08 |  |  |  |  |  |  |  |  |  |  |  |
| P1.DSUM.140 |  | Phase 1 - 65% Design Summary | level of effort | 45d | 2022-05-25 A | 2022-11-02 A | P1.DES.115 SS | 100% | 2022-05-25 | 2022-07-28 | 360 | ARCH | P01 | DES | 01 | PRELIM | ARCH |
| P1.DSUM.150 |  | Phase 1 - 95% Design Summary | level of effort | 111d | 2022-11-01 A | 2023-03-02 A | P1.DES.270 SS | 100% | 2022-11-01 | 2023-04-10 | 888 | ARCH | P01 | DES | 01 | PRELIM | ARCH |
| P1.DSUM.160 |  | Phase 1 - 100% IFC Design Summary | level of effort | 74d | 2023-03-02 A | 2023-08-08 A | P1.DES.350 SS | 100% | 2023-03-02 | 2023-06-14 | 592 | ARCH | P01 | DES | 01 | PRELIM | ARCH |
|  | 7 | **Phase 2A - Above Grade Structure, Core & Shell** |  |  | 2023-04-06 | 2024-03-28 |  |  |  |  |  |  |  |  |  |  |  |
| P2.DSUM.230 |  | Phase 2 - 95% Design - Summary | level of effort | 119d | 2023-04-06 A | 2023-11-30 A | P2A.DES.375 SS | 100% | 2023-04-06 | 2023-09-22 | 952 | ARCH | P01 | DES | 01 | PRELIM | ARCH |
| P2.DSUM.240 |  | Phase 2 - 100% IFC Design - Summary | level of effort | 113d | 2023-09-25 A | 2024-03-28 A | P2A.DES.495 SS | 100% | 2023-10-02 | 2024-03-12 | 1160 | ARCH | P01 | DES | 01 | PRELIM | ARCH |
|  | 10 | **Phase 2B - Electrical One-Line** |  |  | 2023-04-06 | 2025-02-07 |  |  |  |  |  |  |  |  |  |  |  |
| P2.DSUM.270 |  | Phase 2 - 95% Design - Summary | level of effort | 119d | 2023-04-06 A | 2023-11-30 A | P2B.DES.605 SS | 100% | 2023-04-06 | 2023-09-22 | 952 | ARCH | P01 | DES | 01 | PRELIM | ARCH |
| P2.DSUM.280 |  | Phase 2 - 100% IFC Design - Summary | level of effort | 146d | 2023-10-02 A | 2025-02-07 A | P2B.DES.725 SS | 100% | 2023-10-02 | 2024-04-26 | 1160 | ARCH | P01 | DES | 01 | PRELIM | ARCH |
|  | 3 | **Phase 2C - SRLM Interiors** |  |  | 2022-04-26 | 2025-03-03 |  |  |  |  |  |  |  |  |  |  |  |
| P2.DSUM.210 |  | Phase 2 - 65% TORFP Bridge Documents Validation & Report - Summary | level of effort | 141d | 2022-04-26 A | 2023-01-13 A | P2.DES.100 SS | 100% | 2022-04-26 | 2022-11-14 | 1128 | ARCH | P01 | DES | 01 | PRELIM | ARCH |
| P2.DSUM.180 |  | Phase 2 - 65% Design - Summary | level of effort | 102d | 2022-10-24 A | 2023-07-14 A | P2.DES.110 SS | 100% | 2022-10-24 | 2023-03-20 | 816 | ARCH | P01 | DES | 01 | PRELIM | ARCH |
| P2.DSUM.190 |  | Phase 2 - 95% Design - Summary | level of effort | 119d | 2023-04-06 A | 2024-07-17 A | P2C.DES.145 SS | 100% | 2023-04-06 | 2023-09-22 | 952 | ARCH | P01 | DES | 01 | PRELIM | ARCH |
| P2.DSUM.200 |  | Phase 2 - 100% IFC Design - Summary | level of effort | 170d | 2023-11-01 A | 2025-03-03 A | P2C.DES.180 SS | 100% | 2023-11-01 | 2024-07-02 | 1160 | ARCH | P01 | DES | 01 | PRELIM | ARCH |

| ID | WBS | Activity | Type | Duration | Start | Finish | Predecessors | Complete | Planned start | Planned finish | Temp Orig Dur | Resp / SRLM | PHASE | CATW | DFW | SCH DEV | RESP / Trade | Pick #1 | Progress Filters | No Succ |
| --- | --- | --- | --- | --- | --- | --- | --- | --- | --- | --- | --- | --- | --- | --- | --- | --- | --- | --- | --- | --- |
|  | 4 | **Phase 5 - West Wing Renovations** |  |  | 2022-06-09 | 2025-05-21 |  |  |  |  |  |  |  |  |  |  |  |  |  |  |
| P5.DSUM.230 |  | Phase 5 - 65% Design - Summary | level of effort | 214d | 2022-06-09 A | 2024-01-03 A | P5.DES.140 SS | 100% | 2022-06-09 | 2023-04-13 | 1712 | ARCH | P01 | DES | 01 | PRELIM | ARCH |  |  |  |
| P5.DSUM.240 |  | Phase 5 - 95% Design - Summary | level of effort | 145d | 2023-11-01 A | 2024-10-30 A | P5.DES.210 SS | 100% | 2023-11-01 | 2024-05-28 | 920 | ARCH | P01 | DES | 01 | PRELIM | ARCH |  |  |  |
| P5.DSUM.250 |  | Phase 5 - 100% IFC Design - Summary | level of effort | 157d | 2024-06-24 A | 2025-05-21 A | P5.DES.280 SS | 100% | 2024-06-24 | 2025-02-05 | 1104 | ARCH | P01 | DES | 01 | PRELIM | ARCH |  |  |  |
|  | 5 | **Construction Phase Summary** |  |  | 2022-10-24 | 2029-02-23 |  |  |  |  |  |  |  |  |  |  |  |  |  |  |
|  | 1 | **Phase 0 - Enabling Work Plans** |  |  | 2022-10-24 | 2024-04-12 |  |  |  |  |  |  |  |  |  |  |  |  |  |  |
| P0.SUM.110 |  | Phase 0 - Site Prep Logistics & Mobilization - Summary | level of effort | 110d | 2022-10-24 A | 2023-07-24 A | P0.SPM.100 SS | 100% | 2022-10-24 | 2023-03-30 | 880 | HP | P01 | CON | 01 |  | HP |  |  |  |
| P0.SUM.100 |  | Phase 0 - TVIF - Summary | level of effort | 75d | 2023-01-30 A | 2023-07-25 A | P1.TVIF.100 SS | 100% | 2023-01-30 | 2023-05-12 | 600 | HP | P01 | CON | 01 | PRELIM | HP |  |  |  |
| P0.SUM.130 |  | Phase 0B - Interior Window Infills (Interior Work) - Summary | level of effort | 35d | 2023-04-17 A | 2023-06-30 A | P0.B.CRC.120 SS | 100% | 2023-04-17 | 2023-06-05 | 280 | HP | P01 | CON | 01 |  | HP |  |  |  |
| P0.SUM.120 |  | Phase 0A - Temporary Emergency Egress - Summary | level of effort | 110.25d | 2023-05-22 A | 2023-09-28 A | P0.CRC.110 SS, P0.A.CRC.210 SS | 100% | 2023-05-22 | 2023-10-26 | 882 | HP | P01 | CON | 01 |  | HP |  |  |  |
| P0.SUM.150 |  | Phase 0B - Temporary Air Intake (Exterior Work) - Summary | level of effort | 6d | 2023-07-03 A | 2023-07-11 A | P0.B.CRC.100 SS | 100% |  |  | 48 | HP | P01 | CON | 01 |  | HP |  |  |  |
| P0.SUM.140 |  | Phase 0C - Facade Removal - Summary | level of effort | 41d | 2023-07-17 A | 2024-04-12 A | P0.C.CRC.100 SS | 100% | 2023-07-17 | 2023-09-12 | 328 | HP | P01 | CON | 01 |  | HP |  |  |  |
|  | 2 | **Phase 1 Below Grade Structure** |  |  | 2023-01-09 | 2025-06-18 |  |  |  |  |  |  |  |  |  |  |  |  |  |  |
| P1.SUM.100 |  | Phase 1 - Garage Ventilation & Plumbing Reconfiguation Summary | level of effort | 191d | 2023-01-09 A | 2023-10-31 A | P1A.GARV.110 SS | 100% | 2023-01-09 | 2023-10-05 | 1528 | HP | P01 | CON | 01 | PRELIM | HP |  |  |  |
| P1.SUM.120 |  | Phase 1 - Site Prep, Support of Excavation & Excavation Summary | level of effort | 150d | 2023-06-19 A | 2024-03-06 A | P1.CIV.290 SS | 100% | 2023-07-07 | 2024-02-08 | 1200 | HP | P01 | CON | 01 | PRELIM | HP |  |  |  |
| P1.SUM.140 |  | Phase 1 - Main Storm Drain Relocation Summary | level of effort | 111d | 2023-07-12 A | 2024-02-14 A | P1.UTL.100 SS | 100% | 2023-07-28 | 2024-01-05 | 888 | HP | P01 | CON | 01 | PRELIM | HP |  |  |  |
| P1.SUM.105 |  | Phase 1 - Deep Foundations Summary | level of effort | 65d | 2024-01-05 A | 2024-06-11 A | P1.B3.03.430 SS | 100% | 2024-03-01 | 2024-05-31 | 320 | HP | P01 | CON | 01 | PRELIM | HP |  |  |  |
| P1.SUM.135 |  | Phase 1 - Level B3/B2 Structure Summary (includes Slab on Grade) | level of effort | 55d | 2024-01-05 A | 2024-07-09 A | P1.B3.03.430 SS | 100% | 2024-03-01 | 2024-05-16 | 688 | HP | P01 | CON | 01 | PRELIM | HP |  |  |  |
| P1.SUM.145 |  | Phase 1 - Level B1/L1 Structure Summary | level of effort | 61d | 2024-04-22 A | 2024-06-20 A | P1.1.03.110 SS | 100% | 2024-05-01 | 2024-07-26 | 200 | HP | P01 | CON | 01 | PRELIM | HP |  |  |  |
| P1.SUM.175 |  | Phase 1 - Utility Tunnel Summary (includes MEP Install Pre-Fab Piping) | level of effort | 151d | 2024-06-20 A | 2024-10-22 A | P1.B2.03.340 SS, P1.B2.03.440 SS | 100% | 2024-06-20 | 2025-01-24 | 888 | HP | P01 | CON | 01 | PRELIM | HP | No Succ | Succ! |  |
| P1.SUM.185 |  | Phase 1 - Utility Tunnel Summary - MEP Install/Fit/Weld Pre-Fab Piping | level of effort | 41d | 2024-09-04 A | 2025-06-18 A | P1.UT.Z1.100 SS | 100% | 2024-10-02 | 2024-11-27 | 696 | HP | P01 | CON | 01 | PRELIM | HP | No Succ | Succ! |  |
| P1.SUM.115 |  | Phase 1 - Sequence A - Pedestrian Tunnel Structure Summary | level of effort | 62d | 2024-09-09 A | 2025-05-30 A | P1.PED.160 SS, P1.SUM.155 SS | 100% | 2025-01-02 | 2025-03-28 | 568 | HP | P01 | CON | 01 | PRELIM | HP |  |  |  |
| P1.SUM.155 |  | Phase 1 - Pedestrian Tunnel Structure - East Summary | level of effort | 0d | 2024-09-09 A | 2025-05-30 A | P1.PED.310 SS | 100% | 2024-10-01 | 2024-10-01 | 480 | HP | P01 | CON | 01 | PRELIM | HP |  |  |  |
| P1SUM.198 |  | Phase 1- Structure Complete to Grade (Level 1 Slab Complete) | milestone | 0d | 2024-09-12 A | 2024-09-12 A | P1.1.03.690 FF | 100% |  |  | 0 | HP | P01 | CON | 01 | PRELIM | HP |  |  | NS |

| ID | WBS | Activity | Type | Duration | Start | Finish | Predecessors | Complete | Remaining | Planned start | Planned finish | Total float | Free float | Temp Orig Dur | No Succ | No Pred | Resp / SRLM | PHASE | CATW | DFW | SCH DEV | RESP / Trade | 744 | RESP UPD | Update Status |
| --- | --- | --- | --- | --- | --- | --- | --- | --- | --- | --- | --- | --- | --- | --- | --- | --- | --- | --- | --- | --- | --- | --- | --- | --- | --- |
|  | 3 | **Phase 2 Above Grade Structure** |  |  | 2024-07-24 | 2028-12-04 |  |  |  |  |  |  |  |  |  |  |  |  |  |  |  |  |  |  |  |
| P2.SUM.155 |  | Phase 2 - Above Grade Structure Summary (L2 - Penthouse) | level of effort | 159d | 2024-07-24 A | 2025-04-01 A | P2.2.03.110 SS, P1SUM.198 FF | 100% |  | 2024-08-01 | 2025-03-18 |  |  | 0 | NS | NP | HP | P01 | CON | 01 | PRELIM | HP |  |  |  |
| P2SUM.208 |  | Phase 2- MEP Rough in & Partitions Summary (B3,B2,B1 Levels) | level of effort | 292d | 2024-09-02 A | 2026-06-22 | P2.B3.1000 SS | 80% | 58d | 2024-10-01 | 2025-11-21 | -4d | 0d | 0 | NS | NP | HP | P01 | CON | 01 | PRELIM | HP |  |  |  |
| P2SUM.218 |  | Phase 2- MEP Utility Tunnel Build Out Summary (Below L1) | level of effort | 170d | 2024-09-04 A | 2026-05-12 | P1.UT.Z2.120 SS, P1.UT.Z1.120 SS, P1.UT.Z3.120 SS | 82% | 30d | 2024-10-01 | 2025-06-02 | 9d | 0d | 2200 |  |  | HP | P01 | CON | 01 | PRELIM | HP |  |  |  |
| P2.SUM.195 |  | Phase 2 - MEP Rough in & Partitions Summary (L1 - Penthouse) | level of effort | 240d | 2024-09-12 A | 2026-05-12 | P2.L1.S.1000 SS, P1SUM.198 | 88% | 30d | 2024-12-02 | 2025-11-07 | -3d | 0d | 0 | NS | NP | HP | P01 | CON | 01 | PRELIM | HP |  |  |  |
| P2.SUM.165 |  | Phase 2 - Exterior Enclosure & Roofing Summary (L2 - Penthouse) | level of effort | 345d | 2025-03-03 A | 2026-10-29 | P2.FAC.1.F.120 SS | 57% | 149d | 2025-03-03 | 2026-07-09 | 55d | 0d | 0 | NS | NP | HP | P01 | CON | 01 | PRELIM | HP |  |  |  |
| P2.SUM.185 |  | Phase 2- Structure Topping Out | milestone | 0d | 2025-04-04 A | 2025-04-04 A | P2.PR.03.520 FF | 100% |  |  |  |  |  | 0 | NS | NP | HP | P01 | CON | 01 | PRELIM | HP | JO | AM |  |
| P2.SUM.255 |  | Phase 2 - Vertical Transportation Summary | level of effort | 123d | 2025-07-28 A | 2026-08-07 | P2.6-9.1000 SS, P2.2-10.1000 SS, P2.5-8.1000 SS, P2.3-10.1000 SS, P2.5-10.1000 SS, P2.G3.14.0010 SS, P2.2-9.1000 SS, P2.G4.14.0070 SS, P2.5-9.1000 SS, P2.2-8.1000 SS, P2.GP1.14.130 SS, P2.G2.14.0010 SS | 26% | 91d | 2025-08-01 | 2026-01-27 | 178d | 0d | 0 | NS | NP | HP | P01 | CON | 01 | PRELIM | HP |  |  |  |
| P2.SUM.175 |  | Phase 2 - SRLM Weather Tight | milestone | 0d | 2025-12-01 A | 2025-12-01 A | P2.FAC.1.Z3.120 FF, P2.FAC.1.Z1.190 FF, P2.FAC.1.F.160 FF, P2.SUM.185 FF, P2.PR.N.1080 FF, P2.MR.5-8.140 FF, P2.MR.EMT.1080 FF, P2.LR.L7.170 FF, P2.FAC.1.Z2.120 FF | 100% |  |  |  |  |  | 0 | NS | NP | HP | P01 | CON | 01 | PRELIM | HP | JO | AM | O |
| P2.SUM.205 |  | Phase 2 - Interior Finishes-Fit Out Summary (Below L1) | level of effort | 196d | 2026-01-21 A | 2026-12-28 | P2.B3.2000 SS | 4% | 188d | 2026-03-27 | 2027-01-05 | 38d | 0d | 0 | NS | NP | HP | P01 | CON | 01 | PRELIM | HP |  |  |  |
| P2.SUM.235 |  | Phase 2 - Permanent Power Active | milestone | 0d | 2026-04-13 | 2026-04-13 | CX.B2.SWGR.1010 FF, CX.B2.MVEE.1010 FF |  |  |  |  | 260d | 281d | 0 | NS |  | HP | P01 | CON | 01 | PRELIM | HP | JO | AM |  |
| P2.SUM.215 |  | Phase 2 - Interior Finishes-Fit Out Summary (L1 - Penthouse) | level of effort | 167d | 2026-04-20 | 2026-12-15 | P2.L1.F.CS.1000 SS |  |  |  |  | 43d | 0d | 0 | NS | NP | HP | P01 | CON | 01 | PRELIM | HP |  |  |  |
| P2.SUM.225 |  | Phase 2 - Pre-functional & Functional Commissioning Summary | level of effort | 196d | 2026-04-21 | 2027-01-28 | CX.B2.SWGR.1030, CX.B2.SWGR.1040, CX.B2.MVEE.1020, CX.B2.GSE.1030, CX.B2.SPLT.1030, CX.B2.AHU.2030, CX.B2.AHU.1030, CX.B2.PCW.1030, CX.B2.MGE.1030, CX.B2.MPE.1040, CX.B2.WHS.1030, CX.B2.CSH.1030, CX.B2.SS.1020, CX.B2.RWS.1030, CX.L1.AHU.1030, CX.L1.SWGR.1010, CX.B2.GMPRH.1030, CX.B2.GMPGW.1030, CX.B2.CWS.1030, CX.L3.SWGR.1010, CX.L2.GSE.1030, CX.L2.AHU.1030, CX.L1.GSE.1030, CX.L1.CTS.1030, CX.L1.MRIS.1030, CX.L3.GSE.1030, CX.L3.AHU.1030, CX.L3.UPS.1010 |  |  |  |  | 24d | 0d | 1280 |  |  | HP | P01 | CON | 01 | PRELIM | HP |  |  |  |
| P2.SUM.245 |  | Phase 2 - Start up HVAC Systems to Support Commissioning | milestone | 0d | 2026-06-15 | 2026-06-15 | CX.B2.AHU.1000 FF, CX.B2.AHU.2000 FF, CX.L1.AHU.1000 FF |  |  |  |  | 186d | 207d | 0 |  |  | HP | P01 | CON | 01 | PRELIM | HP |  |  |  |
| P2.SUM.275 |  | Phase 2 - Removal & Restoration of Center Drive (Post Phase 2 Completion) | level of effort | 540d | 2026-10-19 | 2028-12-04 | P2.DMSR.120 SS |  |  |  |  | -17d | 0d | 760 |  |  | HP | P01 | CON | 01 | PRELIM | HP |  |  |  |
| P2.SUM.265 |  | Phase 2 - Level 5 Commissioning, Life Safety Testing & Acceptance Inspections | level of effort | 101d | 2026-12-30 | 2027-05-20 | CX.FHVAC.1000, CX.FS.1060, CX.FA.1040 |  |  |  |  | -21d | 0d | 328 |  |  | HP | P01 | CON | 01 | PRELIM | HP |  |  |  |
|  | 4 | **Phase 5 - CRC F Wing Renovation (Draft)** |  |  | 2027-11-17 | 2029-02-23 |  |  |  |  |  |  |  |  |  |  |  |  |  |  |  |  |  |  |  |
| P5.SUM.255 |  | Phase 5 - Mobilization/DcX MEP Systems/Interior Demo Summary | level of effort | 123d | 2027-11-17 | 2028-05-11 | P5.CRC.110 SS |  |  |  |  | -21d | 0d | 984 |  |  | HP | P01 | CON | 01 | PRELIM | HP |  |  |  |
| P5.SUM.265 |  | Phase 5 - MEP Systems Rough in & Interior Fit Out Summary | level of effort | 174d | 2028-03-29 | 2028-12-04 | P5.CRC.160 SS |  |  |  |  | -19d | 0d | 1400 |  |  | HP | P01 | CON | 01 | PRELIM | HP |  |  |  |
| P5.SUM.275 |  | Phase 5 - Commissioning/Punchlist/Acceptance Summary | level of effort | 57d | 2028-12-05 | 2029-02-23 | P5.CRC.140 SS |  |  |  |  | -21d | 0d | 424 |  |  | HP | P01 | CON | 01 | PRELIM | HP |  |  |  |
|  | 5 | **Weather Impact** |  |  |  |  |  |  |  |  |  |  |  |  |  |  |  |  |  |  |  |  |  |  |  |
|  | 6 | **Weather Impact** |  |  | 2024-03-13 | 2025-02-28 |  |  |  |  |  |  |  |  |  |  |  |  |  |  |  |  |  |  |  |
| WEATHER.TIA1000 |  | Weather Impact 1 - 02.14.2024 |  | 1d | 2024-03-13 A | 2024-03-13 A | EXS.100 SS | 100% |  | 2024-11-04 | 2024-11-04 |  |  |  |  |  | HP |  |  |  |  | HP |  |  |  |
| WEATHER.TIA1010 |  | Weather Impact 2 - 02.15.2024 |  | 1d | 2024-03-14 A | 2024-03-14 A | WEATHER.TIA1000 | 100% |  | 2024-11-04 | 2024-11-05 |  |  |  |  |  | HP |  |  |  |  | HP |  |  |  |
| WEATHER.TIA1020 |  | Weather Impact 3 - 05.14.2024 |  | 1d | 2024-05-15 A | 2024-05-15 A | P1.B2.03.310 | 100% |  | 2024-11-04 | 2024-11-04 |  |  |  |  |  | HP |  |  |  |  | HP |  |  |  |
| WEATHER.TIA1030 |  | Weather Impact 4 - 05.15.2024 |  | 1d | 2024-05-16 A | 2024-05-16 A | WEATHER.TIA1020 | 100% |  | 2024-11-04 | 2024-11-05 |  |  |  |  |  | HP |  |  |  |  | HP |  |  |  |
| WEATHER.TIA1040 |  | Weather Impact 5 - 05.21.2024 |  | 1d | 2024-07-05 A | 2024-07-05 A | P1.B2.03.220, P1.B2.20.120 | 100% |  | 2024-11-04 | 2024-11-04 |  |  |  |  |  | HP |  |  |  |  | HP |  |  |  |
| WEATHER.TIA1050 |  | Weather Impact 6 - 05.22.2024 |  | 1d | 2024-07-08 A | 2024-07-08 A | WEATHER.TIA1040 | 100% |  | 2024-11-04 | 2024-11-05 |  |  |  |  |  | HP |  |  |  |  | HP |  |  |  |
| WEATHER.TIA1060 |  | Weather Impact 7 - 08.07.2024 |  | 1d | 2024-08-13 A | 2024-08-13 A | P2.2.03.210 | 100% |  | 2024-11-04 | 2024-11-04 |  |  |  |  |  | HP |  |  |  |  | HP |  |  |  |
| WEATHER.TIA1070 |  | Weather Impact 8 - 08.08.2024 |  | 1d | 2024-08-14 A | 2024-08-14 A | WEATHER.TIA1060 | 100% |  | 2024-11-04 | 2024-11-05 |  |  |  |  |  | HP |  |  |  |  | HP |  |  |  |
| WEATHER.TIA1080 |  | Weather Impact 9 - 09.18.2024 |  | 1d | 2024-09-18 A | 2024-09-18 A | P2.3.03.220 | 100% |  | 2024-11-04 | 2024-11-04 |  |  |  |  |  | HP |  |  |  |  | HP |  |  |  |
| WEATHER.TIA1090 |  | Weather Impact 10 - 10.01.2024 |  | 1d | 2024-10-01 A | 2024-10-01 A | P2.4.03.120 | 100% |  | 2024-11-04 | 2024-11-04 |  |  |  |  |  | HP |  |  |  |  | HP |  |  |  |
| WEATHER.TIA1100 |  | Weather Impact 11 - 12.05.2024 |  | 1d | 2024-12-09 A | 2024-12-09 A | P2.7.03.210, P2.7.20.210 | 100% |  | 2025-03-03 | 2025-03-03 |  |  |  |  |  | HP |  |  |  |  | HP |  |  |  |
| WEATHER.TIA1110 |  | Weather Impact 12 - 12.09.2024 |  | 1d | 2024-12-10 A | 2024-12-10 A | WEATHER.TIA1100 | 100% |  | 2025-03-03 | 2025-03-03 |  |  |  |  |  | HP |  |  |  |  | HP |  |  |  |
| WEATHER.TIA1120 |  | Weather Impact 13 - 12.11.2024 |  | 1d | 2024-12-12 A | 2024-12-12 A | P2.7.03.310 | 100% |  | 2025-03-03 | 2025-03-03 |  |  |  |  |  | HP |  |  |  |  | HP |  |  |  |
| WEATHER.TIA1130 |  | Weather Impact 14 - 01.03.2025 |  | 1d | 2025-01-13 A | 2025-01-13 A | P2.8.03.120 | 100% |  | 2025-03-03 | 2025-03-03 |  |  |  |  |  | HP |  |  |  |  | HP |  |  |  |
| WEATHER.TIA1140 |  | Weather Impact 15 - 01.06.2025 |  | 1d | 2025-01-14 A | 2025-01-14 A | WEATHER.TIA1130 | 100% |  | 2025-03-03 | 2025-03-03 |  |  |  |  |  | HP |  |  |  |  | HP |  |  |  |
| WEATHER.TIA1150 |  | Weather Impact 16 - 01.07.2025 |  | 1d | 2025-01-15 A | 2025-01-15 A | WEATHER.TIA1140 | 100% |  | 2025-03-03 | 2025-03-03 |  |  |  |  |  | HP |  |  |  |  | HP |  |  |  |
| WEATHER.TIA1160 |  | Weather Impact 17- 01.08.2025 |  | 1d | 2025-01-16 A | 2025-01-16 A | WEATHER.TIA1150 | 100% |  | 2025-03-03 | 2025-03-03 |  |  |  |  |  | HP |  |  |  |  | HP |  |  |  |
| WEATHER.TIA1170 |  | Weather Impact 18- 01.20.2025 |  | 1d | 2025-01-28 A | 2025-01-28 A | P2.8.03.230 | 100% |  | 2025-03-03 | 2025-03-03 |  |  |  |  |  | HP |  |  |  |  | HP |  |  |  |
| WEATHER.TIA1180 |  | Weather Impact 19 - 01.21.2025 |  | 1d | 2025-01-29 A | 2025-01-29 A | WEATHER.TIA1170 | 100% |  | 2025-03-03 | 2025-03-03 |  |  |  |  |  | HP |  |  |  |  | HP |  |  |  |
| WEATHER.TIA1190 |  | Weather Impact 20 - 01.22.2025 |  | 1d | 2025-01-30 A | 2025-01-30 A | WEATHER.TIA1180 | 100% |  | 2025-03-03 | 2025-03-03 |  |  |  |  |  | HP |  |  |  |  | HP |  |  |  |
| WEATHER.TIA1200 |  | Weather Impact 21 - 02.11.2025 |  | 1d | 2025-02-28 A | 2025-02-28 A | P2.MR/PS.03.130 | 100% |  | 2025-03-03 | 2025-03-03 |  |  |  |  |  | HP |  |  |  |  | HP |  |  |  |

| ID | WBS | Activity | Duration | Start | Finish | Predecessors | Complete | Remaining | Planned start | Planned finish | Total float | RESP UPD | Temp Orig Dur | Resp / SRLM | PHASE | CATW | SCH DEV | RESP / Trade |
| --- | --- | --- | --- | --- | --- | --- | --- | --- | --- | --- | --- | --- | --- | --- | --- | --- | --- | --- |
|  | 3 | **Fragnets** |  | 2026-02-23 | 2026-05-26 |  |  |  |  |  |  |  |  |  |  |  |  |  |
|  | 1 | **Fragnet 001 - Building 63 Equipment Maintenance** |  | 2026-02-23 | 2026-03-18 |  |  |  |  |  |  |  |  |  |  |  |  |  |
| FRAG.001.1000 |  | NIH De-Energization of 59B NSWGR from Building 63 | 1d | 2026-02-23 A | 2026-02-23 A | ENB.155 | 100% |  | 2026-03-02 | 2026-03-02 |  |  |  |  |  |  |  |  |
| FRAG.001.1010 |  | Building 63 Equipment Maintenance Period | 13d | 2026-02-24 A | 2026-03-18 A | FRAG.001.1000 | 100% |  | 2026-03-02 | 2026-03-18 |  |  |  |  |  |  |  |  |
|  | 2 | **Fragnet 002 - RFI 2699 - Tunnel Steam - Reorientation of Valves** |  | 2026-03-02 | 2026-05-26 |  |  |  |  |  |  |  |  |  |  |  |  |  |
| FRAG.002.1000 |  | Remove Insulation | 5d | 2026-03-02 A | 2026-03-05 A | P1.UT.Z1.160 | 100% |  | 2026-03-02 | 2026-03-06 |  | DG |  |  |  |  |  |  |
| FRAG.002.1030 |  | Cut and Remove (2) 14" Valves | 7d | 2026-03-11 A | 2026-03-20 A | FRAG.002.1000 | 100% |  | 2026-03-09 | 2026-03-17 |  | DG |  |  |  |  |  |  |
| FRAG.002.1010 |  | Prep Joints, Fit and Tack 14" Valves | 8d | 2026-03-23 A | 2026-03-27 A | FRAG.002.1030 | 100% |  | 2026-03-18 | 2026-03-27 |  | DG |  |  |  |  |  |  |
| FRAG.002.1020 |  | Weld Out 14" Valves | 6d | 2026-03-30 A | 2026-04-07 | FRAG.002.1010 | 17% | 5d | 2026-03-30 | 2026-04-06 | 0d | DG |  |  |  |  |  |  |
| FRAG.002.1040 |  | 14" Valves Complete | 1d | 2026-04-08 | 2026-04-08 | FRAG.002.1020 |  |  |  |  | 0d | DG |  |  |  |  |  |  |
| FRAG.002.1050 |  | Cut and Remove (2) 6" Valves | 7d | 2026-04-09 | 2026-04-17 | FRAG.002.1040 |  |  |  |  | 0d | DG |  |  |  |  |  |  |
| FRAG.002.1060 |  | Prep Joints, Fit and Tack 6" Valves | 8d | 2026-04-20 | 2026-04-29 | FRAG.002.1050 |  |  |  |  | 0d | DG |  |  |  |  |  |  |
| FRAG.002.1070 |  | Weld Out 6" Valves | 12d | 2026-04-30 | 2026-05-15 | FRAG.002.1060 |  |  |  |  | 0d | DG |  |  |  |  |  |  |
| FRAG.002.1080 |  | 6" Valves Complete | 1d | 2026-05-18 | 2026-05-18 | FRAG.002.1070 |  |  |  |  | 0d | DG |  |  |  |  |  |  |
| FRAG.002.1090 |  | Test/Insulate 6" and 14" Valves | 5d | 2026-05-19 | 2026-05-26 | FRAG.002.1080 |  |  |  |  | 0d | DG |  |  |  |  |  |  |
|  | 3 | **Fragnet 003** |  |  |  |  |  |  |  |  |  |  |  |  |  |  |  |  |
|  | 2 | **DESIGN** |  | 2022-04-20 | 2027-06-25 |  |  |  |  |  |  |  |  |  |  |  |  |  |
|  | 6 | **Pre-Design Submittals** |  | 2022-04-26 | 2023-04-14 |  |  |  |  |  |  |  |  |  |  |  |  |  |
| PDS.110 |  | Prepare & Submit - Design Schedule | 15d | 2022-04-26 A | 2022-05-13 A | EXS.100 | 100% |  | 2022-04-26 | 2022-05-16 |  |  | 120 | ARCH | P01 | DES | PRELIM | ARCH |
| PDS.140 |  | Prepare & Submit - Initial T&D Submittal Schedule | 15d | 2022-04-26 A | 2022-05-13 A | EXS.100 | 100% |  | 2022-04-26 | 2022-05-16 |  |  | 120 | STAFF | P01 | DES | PRELIM | STAFF |
| PDS.220 |  | Prepare & Submit - Geotechnical Investigation Work Plan | 10d | 2022-04-26 A | 2022-05-03 A | EXS.100 | 100% |  | 2022-04-26 | 2022-05-09 |  |  | 80 | GEO | P01 | DES | PRELIM | GEO |
| PDS.230 |  | NIH Review & Approve - Geotechnical Investigation Work Plan | 10d | 2022-05-04 A | 2022-05-19 A | PDS.220 | 100% |  | 2022-05-04 | 2022-05-17 |  |  | 80 | NIH | P01 | DSR | PRELIM | NIH |
| PDS.240 |  | Prepare & Submit - BIM Execution Plan | 20d | 2022-05-06 A | 2023-04-14 A | PDS.110, PD2.DES.099 SS, P2.DES.100 | 100% |  | 2022-05-06 | 2022-06-03 |  |  | 160 | STAFF | P01 | DES | PRELIM | STAFF |
| PDS.150 |  | NIH Review & Approve - Initial T&D Submittal Schedule | 10d | 2022-05-14 A | 2022-05-26 A | PDS.140 | 100% |  | 2022-05-16 | 2022-05-27 |  |  | 80 | NIH | P01 | DSR | PRELIM | NIH |
| PDS.260 |  | NIH Review & Approve - Design Schedule | 10d | 2022-05-14 A | 2022-05-26 A | PDS.110 | 100% |  | 2022-05-16 | 2022-05-27 |  |  | 80 | NIH | P01 | DSR | PRELIM | NIH |
| PDS.270 |  | Prepare & Submit - Test Pit Work Plan | 5d | 2022-06-23 A | 2022-06-28 A | PDS.220, PDS.220 SS | 100% |  | 2022-06-23 | 2022-06-29 |  |  | 40 | STAFF | P01 | DES | PRELIM | STAFF |
| PDS.280 |  | NIH Review & Approve - Test Pit Work Plan | 10d | 2022-06-28 A | 2022-07-27 A | PDS.270 | 100% |  | 2022-06-28 | 2022-07-12 |  |  | 80 | NIH | P01 | DSR | PRELIM | NIH |
| PDS.250 |  | Review & Approve - BIM Execution Plan | 10d | 2022-08-10 A | 2022-11-04 A | PDS.240 | 100% |  | 2022-08-10 | 2022-08-23 |  |  | 80 | NIH | P01 | DSR | PRELIM | NIH |

| ID | WBS | Activity | Type | Duration | Start | Finish | Predecessors | Complete | Planned start | Planned finish | Calendar | Temp Orig Dur | Resp / SRLM | PHASE | CATW | SCH DEV | RESP / Trade | Init | Pick #2 |
| --- | --- | --- | --- | --- | --- | --- | --- | --- | --- | --- | --- | --- | --- | --- | --- | --- | --- | --- | --- |
|  | 1 | **Phase 0 - Design Work Package (Enabling)** |  |  | 2022-05-26 | 2023-07-17 |  |  |  |  |  |  |  |  |  |  |  |  |  |
|  | 1 | **Phase 0 - Work Plan Development (Enabling)** |  |  | 2022-05-26 | 2022-11-04 |  |  |  |  |  |  |  |  |  |  |  |  |  |
| P0.DES.116 |  | Site Survey, Site Utility Investigation/Verification |  | 15d | 2022-05-26 A | 2022-06-15 A | PWS.210 | 100% | 2022-05-26 | 2022-06-16 |  | 120 | DES | P01 | DES | PRELIM | DES |  |  |
| P0.DES.252 |  | Geotechnical Investigation |  | 20d | 2022-06-09 A | 2022-06-17 A | P0.DES.116 SS+10d | 100% | 2022-06-09 | 2022-07-07 |  | 160 | GEO | P01 | DES | PRELIM | GEO |  |  |
| P0.DES.264 |  | Laboratory Analysis & Geotechnical Memo for 65% Phase 1 |  | 30d | 2022-06-20 A | 2022-08-03 A | P0.DES.252 SS+10d | 100% | 2022-06-20 | 2022-08-01 |  | 240 | ARCH | P01 | DES | PRELIM | ARCH |  |  |
| P0.DES.100 |  | Develop - Preliminary Phase 0 Design |  | 30d | 2022-07-05 A | 2022-08-19 A | P2.DES.100 SS, P0.DES.116 SS+15d | 100% | 2022-07-05 | 2022-08-15 |  | 240 | ARCH | P01 | DES | PRELIM | ARCH |  |  |
| P0.DES.262 |  | Perform Test Pits at Center Drive |  | 5d | 2022-07-27 A | 2022-07-29 A | PDS.280, P0.DES.116 SS+10d | 100% | 2022-07-27 | 2022-08-02 |  | 40 | GEO | P01 |  | PRELIM | GEO |  |  |
| P0.DES.112 |  | Prepare & Submit - Phase 0 Work Plan |  | 2d | 2022-08-22 A | 2022-08-26 A | P0.DES.100 | 100% | 2022-08-22 | 2022-08-23 |  | 16 | DES | P01 |  | PRELIM | DES |  |  |
| P0.DES.105 |  | NIH Review - Phase 0 Work Plan (calender days) |  | 21d | 2022-08-29 A | 2022-09-18 A | P0.DES.112, PDS.260, PDS.150, PWS.130 FF, PWS.150 FF | 100% |  |  | 7D / SRLM | 168 | NIH | P01 | DSR | PRELIM | NIH |  |  |
| P0.DES.240 |  | Prepare MDE Permit for Phase 0 Limits of Disturbance |  | 2d | 2022-09-16 A | 2022-09-21 A | P0.DES.105 SS | 100% | 2022-09-16 | 2022-09-19 |  | 16 | ARCH | P01 | DES | PRELIM | ARCH |  |  |
| P0.DES.110 |  | Reconcile Comments - Phase 0 Work Plan |  | 10d | 2022-09-19 A | 2022-09-30 A | P0.DES.105 | 100% |  |  |  | 80 | DES | P01 | DES | PRELIM | DES |  |  |
| P0.DES.150 |  | NIH/HP Conference Review - Phase 0 Work Plan |  | 2d | 2022-09-26 A | 2022-09-26 A | P0.DES.110 | 100% | 2022-09-26 | 2022-09-27 |  | 16 | NIH | P01 | DES | PRELIM | NIH |  |  |
| P0.DES.155 |  | Clean-up/Back-Check Initial Submission - "For Record" Phase 0 Work Plan |  | 5d | 2022-09-30 A | 2022-10-13 A | P0.DES.150 | 100% | 2022-09-30 | 2022-10-06 |  | 40 | DES | P01 | DES | PRELIM | DES |  |  |
| P0.DES.160 |  | NIH Review & Approve - "For Record" Phase 0 Work Plan |  | 5d | 2022-10-14 A | 2022-11-04 A | P0.DES.155 | 100% | 2022-10-17 | 2022-10-21 |  | 40 | NIH | P01 | DSR | PRELIM | NIH |  |  |
| P0.DES.165 |  | Approved - "For Record" IFC Phase 0 Work Plan | milestone | 0d | 2022-11-04 A | 2022-11-04 A | PDS.250 FF, P0.DES.160, P0.DSUM.100 FF | 100% |  |  |  | 0 | NIH | P01 | DSR | PRELIM | NIH |  |  |
|  | 2 | **Phase 0A - Temporary Emergency Egress** |  |  | 2022-09-09 | 2023-07-17 |  |  |  |  |  |  |  |  |  |  |  |  |  |
| P0A.DES.100 |  | HP / Design Team - Design & Develop - Work Plan - Phase 0A |  | 30d | 2022-09-09 A | 2023-01-26 A | P2.DES.100 SS | 100% | 2022-09-09 | 2022-10-21 |  | 240 | ARCH | P01 | DES | PRELIM | ARCH | 0A |  |
| P0A.DES.110 |  | HP / Design Team - Prepare & Submit - Work Plan - Phase 0A |  | 2d | 2023-01-27 A | 2023-01-30 A | P0A.DES.100 | 100% |  |  |  | 16 | DES | P01 |  | PRELIM | DES | 0A |  |
| P0A.DES.120 |  | NIH - Review - Work Plan - Phase 0A |  | 15d | 2023-01-31 A | 2023-02-24 A | P0A.DES.110 | 100% | 2023-01-31 | 2023-02-20 |  | 120 | NIH | P01 | DSR |  | NIH | 0A |  |
| P0A.DES.130 |  | HP / Design Team - Review and Reconcile NIH Comments - Work Plan - Phase 0A |  | 10d | 2023-02-27 A | 2023-03-06 A | P0A.DES.120 | 100% | 2023-02-27 | 2023-03-10 |  | 80 | ARCH | P01 | DES | PRELIM | ARCH | 0A |  |
| P0A.DES.170 |  | HP / Design Team - Review and Reconcile NIH Final Submission Comments - Work Plan - Phase 0A |  | 5d | 2023-03-03 A | 2023-04-06 A | P0A.DES.160 | 100% | 2023-03-03 | 2023-03-09 |  | 40 | ARCH | P01 | DES | PRELIM | ARCH | 0A |  |
| P0A.DES.140 |  | NIH / HP / Design Team - Conference Review - Work Plan - Phase 0A |  | 2d | 2023-03-09 A | 2023-03-09 A | P0A.DES.130 | 100% | 2023-03-09 | 2023-03-10 |  | 16 | NIH | P01 | DES | PRELIM | NIH | 0A |  |
| P0A.DES.150 |  | HP / Design Team - Incorporate Conf Review Comments & Submit Final Submission - Work Plan - Phase 0A |  | 10d | 2023-03-10 A | 2023-03-21 A | P0A.DES.140 FF, P0A.DES.130 | 100% | 2023-03-10 | 2023-03-23 |  | 80 | ARCH | P01 | DES | PRELIM | ARCH | 0A |  |
| P0A.DES.160 |  | NIH - Review - Final Submission - Work Plan - Phase 0A |  | 15d | 2023-03-22 A | 2023-04-06 A | P0A.DES.150 | 100% | 2023-03-22 | 2023-04-11 |  | 120 | NIH | P01 | DSR |  | NIH | 0A |  |
| P0A.DES.190 |  | NIH AHJ - CRA (Construction Risk Assessment) Analysis and Approval - Work Plan - Phase 0A |  | 5d | 2023-04-04 A | 2023-05-23 A | BP3.024.1.110, P0A.DES.200 SS | 100% | 2023-07-03 | 2023-07-10 |  | 40 | NIH | P01 |  |  | NIH | 0A |  |
| P0A.DES.200 |  | NIH - Backcheck Final Submission - Work Plan - Phase 0A |  | 5d | 2023-04-17 A | 2023-05-01 A | P0A.DES.170 | 100% | 2023-04-17 | 2023-04-21 |  | 40 | NIH | P01 | DES | PRELIM | NIH | 0A |  |
| P0A.DES.210 |  | NIH - Review & Approve - Final Submission - Work Plan - Phase 0A |  | 5d | 2023-04-17 A | 2023-05-02 A | P0A.DES.180 FF, P0A.DES.190 FF | 100% | 2023-04-17 | 2023-04-21 |  | 40 | NIH | P01 | DSR | PRELIM | NIH | 0A | FP |
| P0A.DES.220 |  | NIH - Work Plan Approval Memo Issued - Phase 0A | milestone | 0d | 2023-05-02 A | 2023-05-02 A | P0A.DES.210 FF, P0A.DSUM.100 FF | 100% |  |  |  | 0 | NIH | P01 |  |  | NIH | 0A | FP |
| P0A.DES.180 |  | NIH AHJ - ILSM (Interim Life Safety Measures) Analysis and Approval - Work Plan - Phase 0A |  | 5d | 2023-07-14 A | 2023-07-17 A | BP3.024.1.110, P0A.DES.200 SS | 100% | 2023-07-14 | 2023-07-20 |  | 40 | NIH | P01 |  |  | NIH | 0A | FP |

| ID | WBS | Activity | Type | Duration | Start | Finish | Predecessors | Complete | Planned start | Planned finish | Calendar | Init | Temp Orig Dur | Resp / SRLM | PHASE | CATW | SCH DEV | RESP / Trade |
| --- | --- | --- | --- | --- | --- | --- | --- | --- | --- | --- | --- | --- | --- | --- | --- | --- | --- | --- |
|  | 5 | **Phase 0B - Interior Window Infills & Temporary Air Intake** |  |  | 2023-02-23 | 2023-04-27 |  |  |  |  |  |  |  |  |  |  |  |  |
| P0B.DES.100 |  | HP / Design Team - Design & Develop - Work Plan - Phase 0B |  | 30d | 2023-02-23 A | 2023-03-07 A | P0A.DES.120 | 100% | 2023-02-23 | 2023-04-05 |  | 0A | 240 | ARCH | P01 | DES | PRELIM | ARCH |
| P0B.DES.110 |  | HP / Design Team - Prepare & Submit - Work Plan - Phase 0B |  | 2d | 2023-03-08 A | 2023-03-09 A | P0B.DES.100 | 100% |  |  |  | 0A | 16 | DES | P01 |  | PRELIM | DES |
| P0B.DES.120 |  | NIH - Review - Work Plan - Phase 0B |  | 15d | 2023-03-10 A | 2023-03-30 A | P0B.DES.110 | 100% |  |  |  | 0A | 120 | NIH | P01 | DSR | PRELIM | NIH |
| P0B.DES.130 |  | NIH AHJ - ILSM (Interim Life Safety Measures) Analysis and Approval - Work Plan - Phase 0B |  | 10d | 2023-03-17 A | 2023-03-30 A | P0B.DES.120 FF | 100% |  |  |  | 0A | 80 | NIH | P01 |  |  | NIH |
| P0B.DES.140 |  | NIH AHJ - CRA (Construction Risk Assessment) Analysis and Approval - Work Plan - Phase 0B |  | 10d | 2023-03-17 A | 2023-03-30 A | P0B.DES.120 FF | 100% |  |  |  | 0A | 80 | NIH | P01 |  |  | NIH |
| P0B.DES.150 |  | HP / Design Team - Incorporate Review Comments & Submit Final Submission - Work Plan - Phase 0B |  | 5d | 2023-03-31 A | 2023-04-06 A | P0B.DES.120 | 100% |  |  |  | 0A | 40 | ARCH | P01 | DES | PRELIM | ARCH |
| P0B.DES.160 |  | NIH - Review & Approve - Final Submission - Work Plan - Phase 0B |  | 5d | 2023-04-07 A | 2023-04-27 A | P0B.DES.140 FF, P0B.DES.130 FF, P0B.DES.150 | 100% | 2023-04-07 | 2023-04-13 |  | 0A | 40 | NIH | P01 | DSR | PRELIM | NIH |
| P0B.DES.170 |  | NIH - Work Plan Approval Memo Issued - Phase 0B | milestone | 0d | 2023-04-27 A | 2023-04-27 A | P0B.DES.160 FF, P0A.DSUM.110 FF | 100% |  |  |  | 0A | 0 | NIH | P01 |  |  | NIH |
|  | 4 | **Phase 0C - Facade Removal** |  |  | 2023-02-23 | 2023-07-03 |  |  |  |  |  |  |  |  |  |  |  |  |
| P0C.DES.100 |  | HP / Design Team - Design & Develop - Work Plan - Phase 0C |  | 30d | 2023-02-23 A | 2023-03-15 A | P0A.DES.120 | 100% | 2023-02-23 | 2023-04-05 |  | 0A | 240 | ARCH | P01 | DES | PRELIM | ARCH |
| P0C.DES.110 |  | HP / Design Team - Prepare & Submit - Work Plan - Phase 0C |  | 2d | 2023-03-16 A | 2023-03-17 A | P0C.DES.100 | 100% |  |  |  | 0A | 16 | DES | P01 |  | PRELIM | DES |
| P0C.DES.120 |  | NIH - Review - Work Plan - Phase 0C |  | 15d | 2023-03-20 A | 2023-04-06 A | P0C.DES.110 | 100% | 2023-03-20 | 2023-04-07 |  | 0A | 120 | NIH | P01 | DSR |  | NIH |
| P0C.DES.130 |  | HP / Design Team - Review and Reconcile NIH Comments - Work Plan - Phase 0C |  | 5d | 2023-04-07 A | 2023-04-19 A | P0C.DES.120 | 100% | 2023-04-07 | 2023-04-13 |  | 0A | 40 | ARCH | P01 | DES | PRELIM | ARCH |
| P0C.DES.150 |  | HP / Design Team - Incorporate Conf Review Comments & Submit Final Submission - Work Plan - Phase 0C |  | 5d | 2023-04-07 A | 2023-04-19 A | P0C.DES.130 | 100% | 2023-04-07 | 2023-04-13 |  | 0A | 40 | ARCH | P01 | DES | PRELIM | ARCH |
| P0C.DES.160 |  | NIH - Backcheck Final Submission - Phase 0C |  | 10d | 2023-04-20 A | 2023-05-12 A | P0C.DES.150 | 100% | 2023-04-20 | 2023-05-03 |  | 0A | 80 | NIH | P01 | DSR | PRELIM | NIH |
| P0C.DES.190 |  | NIH - Review & Approve - Final Submission - Work Plan - Phase 0C |  | 5d | 2023-06-05 A | 2023-06-07 A | P0C.DES.170 FF, P0C.DES.180 FF, P0C.DES.160 | 100% | 2023-07-07 | 2023-07-13 |  | 0A | 40 | NIH | P01 | DSR | PRELIM | NIH |
| P0C.DES.170 |  | NIH AHJ - ILSM (Interim Life Safety Measures) Analysis and Approval - Work Plan - Phase 0C |  | 8d | 2023-07-03 A | 2023-07-03 A | BP3.024.1.120, P0C.DES.160 SS | 100% | 2023-07-03 | 2023-07-13 |  | 0A | 64 | NIH | P01 |  |  | NIH |
| P0C.DES.180 |  | NIH AHJ - CRA (Construction Risk Assessment) Analysis and Approval - Work Plan - Phase 0C |  | 8d | 2023-07-03 A | 2023-07-03 A | BP3.024.1.120, P0C.DES.160 SS | 100% | 2023-07-03 | 2023-07-13 |  | 0A | 64 | NIH | P01 |  |  | NIH |
| P0C.DES.200 |  | NIH - Work Plan Approval Memo Issued - Phase 0C | milestone | 0d | 2023-07-03 A | 2023-07-03 A | P0C.DES.190 FF, P0A.DSUM.120 FF | 100% |  |  |  | 0A | 0 | NIH | P01 |  |  | NIH |
|  | 4 | **Phase 1A - P1 Garage Ventilation** |  |  | 2022-10-07 | 2023-04-07 |  |  |  |  |  |  |  |  |  |  |  |  |
|  | 2 | **100% IFC Design Package** |  |  | 2022-10-07 | 2023-04-07 |  |  |  |  |  |  |  |  |  |  |  |  |
| P1A.DES.570 |  | Develop - Phase 1A Design Package - 100% - P1 Garage Ventilation and Egress |  | 20d | 2022-10-07 A | 2022-10-28 A | P1.DES.322, P1.DES.130 | 100% | 2022-10-07 | 2022-11-04 |  |  | 160 | ARCH | P01 | DES | PRELIM | ARCH |
| P1A.DES.580 |  | Internal Design QC- Phase 1A 100% Design Package - P1 Garage Ventilation and Egress |  | 10d | 2022-10-29 A | 2022-11-16 A | P1A.DES.570 | 100% | 2022-10-31 | 2022-11-11 |  |  | 80 | ARCH | P01 |  | PRELIM | ARCH |
| P1A.DES.590 |  | Prepare & Submit - Phase 1A 100% Design Package - P1 Garage Ventilation and Egress |  | 5d | 2022-11-17 A | 2022-11-18 A | P1A.DES.580 | 100% | 2022-11-17 | 2022-11-23 |  |  | 40 | ARCH | P01 |  | PRELIM | ARCH |
| P1A.DES.600 |  | NIH Review - Phase 1A Design Package 100% - P1 Garage Ventilation and Egress |  | 30d | 2022-11-21 A | 2022-12-13 A | P1A.DES.590 | 100% | 2022-11-21 | 2022-12-20 | 7D / SRLM |  | 240 | NIH | P01 | DSR | PRELIM | NIH |
| P1A.DES.610 |  | Reconcile Comments - Phase 1A Design Package 100% - P1 Garage Ventilation and Egress |  | 10d | 2022-12-22 A | 2023-01-20 A | P1A.DES.600 | 100% | 2022-12-22 | 2023-01-06 |  |  | 80 | ARCH | P01 | DES | PRELIM | ARCH |
| P1A.DES.620 |  | Conference Review - Phase 1A Design Package 100% - P1 Garage Ventilation and Egress |  | 1d | 2023-01-06 A | 2023-01-06 A | P1A.DES.610 | 100% |  |  |  |  | 8 | NIH | P01 | DES | PRELIM | NIH |
| P1A.DES.630 |  | Clean-up/Back-Check Final Submission - Phase 1A Design Package 100% - P1 Garage Ventilation and Egress |  | 5d | 2023-01-25 A | 2023-02-03 A | P1A.DES.620 | 100% | 2023-01-25 | 2023-01-31 |  |  | 40 | ARCH | P01 | DES | PRELIM | ARCH |
| P1A.DES.640 |  | Final Submission Review & Approve Phase 1A Design Package 100% - P1 Garage Ventilation and Egress |  | 10d | 2023-02-06 A | 2023-04-07 A | P1A.DES.630 | 100% | 2023-02-06 | 2023-02-17 |  |  | 80 | NIH | P01 | DSR | PRELIM | NIH |
| P1A.DES.650 |  | Design Approved - Phase 1A Design Package 100% - P1 Garage Ventilation and Egress | milestone | 0d | 2023-04-07 A | 2023-04-07 A | P1A.DES.640, P1A.DSUM.100 FF | 100% |  |  |  |  | 0 | NIH | P01 | DSR | PRELIM | NIH |

| ID | WBS | Activity | Type | Duration | Start | Finish | Predecessors | Complete | Planned start | Planned finish | Calendar | Temp Orig Dur | Resp / SRLM | PHASE | CATW | SCH DEV | RESP / Trade |
| --- | --- | --- | --- | --- | --- | --- | --- | --- | --- | --- | --- | --- | --- | --- | --- | --- | --- |
|  | 2 | **Phase 1 Design Package (Site Prep, SOE, Utilities, Below Grade Struct)** |  |  | 2022-05-12 | 2023-07-14 |  |  |  |  |  |  |  |  |  |  |  |
|  | 1 | **65% Design Package** |  |  | 2022-05-12 | 2022-11-01 |  |  |  |  |  |  |  |  |  |  |  |
| P1.DES.101 |  | Program Validation of TORFP Bridging Documents - Phase 1 Design Scope |  | 35d | 2022-05-12 A | 2022-08-17 A | P2.DES.100 | 100% | 2022-05-12 | 2022-06-30 |  | 280 | ARCH | P01 | DES | PRELIM | ARCH |
| P1.DES.115 |  | Develop - Phase 1 Design Package - 65% Site Prep, Excavation, Utility Relocation,SOE |  | 50d | 2022-05-25 A | 2022-08-02 A | P0.DES.116 FF+15d, P0.DES.262 FF+10d, P1.DES.101 SS+9d | 100% | 2022-05-25 | 2022-08-04 |  | 400 | ARCH | P01 | DES | PRELIM | ARCH |
| P1.DES.291 |  | Internal Design QC- 65% Design Package Phase 1 |  | 10d | 2022-08-03 A | 2022-08-17 A | P1.DES.115 | 100% | 2022-08-03 | 2022-08-16 |  | 80 | ARCH | P01 |  | PRELIM | ARCH |
| P1.DES.301 |  | Prepare & Submit - 65% Design Package Phase 1 |  | 5d | 2022-08-18 A | 2022-08-23 A | P1.DES.291 | 100% | 2022-08-18 | 2022-08-24 |  | 40 | ARCH | P01 |  | PRELIM | ARCH |
| P1.DES.105 |  | NIH Review - 65% Site Prep, Excavation, Utility Relocation,SOE (calender days) |  | 30d | 2022-08-24 A | 2022-09-29 A | P0.DES.264, P1.DES.301, PWS.170 | 100% | 2022-08-24 | 2022-09-22 | 7D / SRLM | 240 | NIH | P01 | DSR | PRELIM | NIH |
| P1.DES.111 |  | Reconcile Comments - 65% Site Prep, Excavation, Utility Relocation,SOE |  | 10d | 2022-09-30 A | 2022-10-18 A | P1.DES.105 SS+25d | 100% | 2022-09-30 | 2022-10-13 |  | 80 | ARCH | P01 | DES | PRELIM | ARCH |
| P1.DES.112 |  | Conference Review - 65% Site Prep, Excavation, Utility Relocation,SOE |  | 2d | 2022-10-19 A | 2022-10-19 A | P1.DES.111 | 100% | 2022-10-19 | 2022-10-20 |  | 16 | NIH | P01 | DES | PRELIM | NIH |
| P1.DES.120 |  | Clean-up/Back-Check Pre-Final Submission - 65% Site Prep, Excavation, Utility Relocation,SOE |  | 10d | 2022-10-19 A | 2022-10-19 A | P1.DES.112 | 100% | 2022-10-19 | 2022-11-01 |  | 80 | ARCH | P01 | DES | PRELIM | ARCH |
| P1.DES.125 |  | Pre-Final Submission Review & Approve -65% Site Prep, Excavation, Utility Relocation,SOE |  | 10d | 2022-10-21 A | 2022-11-01 A | P1.DES.120 | 100% | 2022-10-21 | 2022-11-03 |  | 80 | NIH | P01 | DSR | PRELIM | NIH |
| P1.DES.130 |  | Design Approved - 65% Site Prep, Excavation, Utility Relocation,SOE | milestone | 0d | 2022-11-01 A | 2022-11-01 A | P1.DES.125, P1.DSUM.140 FF | 100% |  |  |  | 0 | NIH | P01 | DSR | PRELIM | NIH |
|  | 2 | **95% Design Package** |  |  | 2022-09-06 | 2023-03-02 |  |  |  |  |  |  |  |  |  |  |  |
| P1.DES.322 |  | Prepare Final Geotechinal Report for Phase 1 - 95% Design |  | 30d | 2022-09-06 A | 2022-10-03 A | P1.DES.105 | 100% | 2022-09-06 | 2022-10-18 |  | 240 | GEO | P01 | DES | PRELIM | GEO |
| P1.DES.270 |  | Develop - Phase 1 Design Package - 95% Site Prep, Excavation, Utility Relocation,SOE |  | 20d | 2022-11-01 A | 2022-11-18 A | P1.DES.322, P1.DES.130 | 100% | 2022-11-01 | 2022-11-30 |  | 160 | ARCH | P01 | DES | PRELIM | ARCH |
| P1.DES.340 |  | Prepare MDE Permit Docs for Phase 1 Land Disturbance |  | 5d | 2022-11-01 A | 2022-12-22 A | P1.DES.440 SS | 100% | 2022-11-01 | 2022-11-07 |  | 40 | ARCH | P01 | DES | PRELIM | ARCH |
| P1.DES.430 |  | Internal Design QC- 95% Design Package Phase 1 |  | 10d | 2022-11-21 A | 2022-12-14 A | P1.DES.270 | 100% | 2022-11-21 | 2022-12-06 |  | 80 | ARCH | P01 |  | PRELIM | ARCH |
| P1.DES.440 |  | Prepare & Submit - 95% Design Package Phase 1 |  | 5d | 2022-12-15 A | 2022-12-21 A | P1.DES.430 | 100% |  |  |  | 40 | ARCH | P01 |  | PRELIM | ARCH |
| P1.DES.280 |  | NIH Review - 95% Site Prep, Excavation, Utility Relocation,SOE (calender days) |  | 30d | 2022-12-22 A | 2023-01-23 A | P1.DES.440 | 100% | 2022-12-22 | 2023-01-20 | 7D / SRLM | 240 | NIH | P01 | DSR | PRELIM | NIH |
| P1.DES.290 |  | Reconcile Comments -95% Site Prep, Excavation, Utility Relocation,SOE |  | 15d | 2023-01-24 A | 2023-02-17 A | P1.DES.280 | 100% | 2023-01-24 | 2023-02-13 |  | 120 | ARCH | P01 | DES | PRELIM | ARCH |
| P1.DES.300 |  | Conference Review - 95% Site Prep, Excavation, Utility Relocation,SOE |  | 2d | 2023-02-20 A | 2023-02-21 A | P1.DES.290 | 100% |  |  |  | 16 | NIH | P01 | DES | PRELIM | NIH |
| P1.DES.310 |  | Clean-up/Back-Check Pre-Final Submission - 95% Site Prep, Excavation, Utility Relocation,SOE |  | 10d | 2023-02-22 A | 2023-02-28 A | P1.DES.300 | 100% | 2023-02-22 | 2023-03-07 |  | 80 | ARCH | P01 | DES | PRELIM | ARCH |
| P1.DES.320 |  | Pre-Final Submission Review & Approve 95% Site Prep, Excavation, Utility Relocation,SOE |  | 10d | 2023-03-02 A | 2023-03-02 A | P1.DES.310 | 100% | 2023-03-02 | 2023-03-15 |  | 80 | NIH | P01 | DSR | PRELIM | NIH |
| P1.DES.330 |  | Design Approved - 95% Site Prep, Excavation, Utility Relocation,SOE | milestone | 0d | 2023-03-02 A | 2023-03-02 A | P1.DES.320, P1.DSUM.150 FF | 100% |  |  |  | 0 | NIH | P01 | DSR | PRELIM | NIH |

| ID | WBS | Activity | Type | Duration | Start | Finish | Predecessors | Complete | Planned start | Planned finish | Calendar | Temp Orig Dur | Resp / SRLM | PHASE | CATW | SCH DEV | RESP / Trade |
| --- | --- | --- | --- | --- | --- | --- | --- | --- | --- | --- | --- | --- | --- | --- | --- | --- | --- |
|  | 3 | **100% IFC- Design Package** |  |  | 2023-03-02 | 2023-07-14 |  |  |  |  |  |  |  |  |  |  |  |
| P1.DES.350 |  | Develop - Phase 1 Design Package - 100% IFC Site Prep, Excavation, Utility Relocation,SOE |  | 10d | 2023-03-02 A | 2023-03-20 A | P1.DES.330 | 100% | 2023-03-02 | 2023-03-15 |  | 80 | ARCH | P01 | DES | PRELIM | ARCH |
| P1.DES.450 |  | Internal Design QC- 100% IFC Site Prep, Excavation, Utility Relocation,SOE |  | 5d | 2023-03-21 A | 2023-03-29 A | P1.DES.350 | 100% | 2023-03-21 | 2023-03-27 |  | 40 | ARCH | P01 |  | PRELIM | ARCH |
| P1.DES.460 |  | Prepare & Submit - 100% IFC Site Prep, Excavation, Utility Relocation,SOE |  | 4d | 2023-04-04 A | 2023-04-07 A | P1.DES.450 | 100% |  |  |  | 32 | ARCH | P01 |  | PRELIM | ARCH |
| P1.DES.360 |  | NIH Review -100% IFC Site Prep, Excavation, Utility Relocation,SOE (calender days) |  | 30d | 2023-04-10 A | 2023-05-09 A | P1.DES.460 | 100% |  |  | 7D / SRLM | 240 | NIH | P01 | DSR | PRELIM | NIH |
| P1.DES.370 |  | Reconcile Comments - 100% IFC Site Prep, Excavation, Utility Relocation,SOE |  | 15d | 2023-05-10 A | 2023-05-31 A | P1.DES.360 | 100% |  |  |  | 120 | ARCH | P01 | DES |  | ARCH |
| P1.DES.375 |  | Reconcile Comments - Additional Comment Resolution Time - 100% IFC Site Prep, Excavation, Utility Relocation,SOE |  | 1d | 2023-05-19 A | 2023-06-08 A | P1.DES.370 | 100% | 2023-07-03 | 2023-07-03 |  | 8 | NIH | P01 | DES |  | NIH |
| P1.DES.380 |  | Conference Review - 100% IFC Site Prep, Excavation, Utility Relocation,SOE |  | 1d | 2023-06-02 A | 2023-06-02 A | P1.DES.400 SS+2d | 100% | 2023-07-07 | 2023-07-07 |  | 8 | NIH | P01 | DES | PRELIM | NIH |
| P1.DES.400 |  | Clean-up/Back-Check Pre-Final Submission - 100% IFC Site Prep, Excavation, Utility Relocation,SOE |  | 10d | 2023-06-09 A | 2023-06-15 A | P1.DES.375 | 100% | 2023-07-05 | 2023-07-18 |  | 80 | ARCH | P01 | DES | PRELIM | ARCH |
| P1.DES.410 |  | Pre-Final Submission Review & Approve - 100% IFC Site Prep, Excavation, Utility Relocation,SOE |  | 10d | 2023-06-16 A | 2023-06-30 A | P1.DES.380, P1.DES.400 | 100% | 2023-07-19 | 2023-08-01 |  | 80 | NIH | P01 | DSR | PRELIM | NIH |
| P1.DES.415 |  | NIH Green Permit Prepare & Issue - 100% IFC Site Prep, Excavation, Utility Relocation,SOE |  | 5d | 2023-07-03 A | 2023-07-14 A | P1.DES.410 | 100% | 2023-08-02 | 2023-08-08 |  | 40 | NIH | P01 |  |  | NIH |
| P1.DES.420 |  | Design Approved - 100% IFC Site Prep, Excavation, Utility Relocation,SOE | milestone | 0d | 2023-07-14 A | 2023-07-14 A | P1.DES.415 FF, P1.DSUM.160 FF | 100% |  |  |  | 0 | NIH | P01 | DSR | PRELIM | NIH |
|  | 10 | **Phase 2 Design Package (Combined)** |  |  | 2022-04-20 | 2023-07-29 |  |  |  |  |  |  |  |  |  |  |  |
|  | 1 | **65% Design Package** |  |  | 2022-04-20 | 2023-07-29 |  |  |  |  |  |  |  |  |  |  |  |
| PD2.DES.099 |  | Post Award Kick off Meeeting Prep & Agenda |  | 10d | 2022-04-20 A | 2022-04-26 A | EXS.100 | 100% | 2022-04-20 | 2022-05-03 |  | 80 | STAFF | P01 | DES | PRELIM | STAFF |
| P2.DES.100 |  | Post Award Design Kick Off Meeting |  | 2d | 2022-04-26 A | 2022-04-26 A | PD2.DES.099 | 100% | 2022-04-26 | 2022-04-27 |  | 16 | ARCH | P01 | DES | PRELIM | ARCH |
| P2.DES.305 |  | Program Validation of TORFP Bridging Documents - Phase 2 + Phase 5 Scope |  | 140d | 2022-05-12 A | 2022-10-24 A | P2.DES.100 | 100% | 2022-05-12 | 2022-12-01 |  | 1120 | ARCH | P01 | DES | PRELIM | ARCH |
| P2.DES.315 |  | Develop - Bid Package Progress Set - Structure, Core & Shell, Interiors |  | 110d | 2022-05-12 A | 2022-10-21 A | P2.DES.305 FF, P1.DES.101 SS+25d | 100% | 2022-05-12 | 2022-10-18 |  | 880 | ARCH | P01 | DES | PRELIM | ARCH |
| P2.DES.110 |  | Develop - 65% Design Package - Structure, Core & Shell, Interiors |  | 30d | 2022-10-22 A | 2023-01-19 A | P2.DES.315 | 100% | 2022-10-24 | 2022-12-06 |  | 240 | ARCH | P01 | DES | PRELIM | ARCH |
| P2.DES.255 |  | Prepare Validation Report |  | 20d | 2022-10-24 A | 2023-01-19 A | P2.DSUM.210 FF, P1.DES.101, P2.DES.110 FF, P2.DES.305 | 100% | 2022-10-24 | 2022-11-18 |  | 160 | ARCH | P01 | DES | PRELIM | ARCH |
| P2.DES.265 |  | Internal Design QC- 65% Design Package - Structure, Core & Shell, Interiors |  | 10d | 2023-01-20 A | 2023-03-17 A | P2.DES.255 | 100% | 2023-01-20 | 2023-02-02 |  | 80 | ARCH | P01 |  | PRELIM | ARCH |
| P2.DES.275 |  | Prepare & Submit - 65% Design Package - Structure, Core & Shell, Interiors |  | 5d | 2023-03-18 A | 2023-04-04 A | P2.DES.255, P2.DES.265 | 100% | 2023-03-20 | 2023-03-24 |  | 40 | ARCH | P01 |  | PRELIM | ARCH |
| P2.DES.115 |  | NIH Review - 65% Design Package - Structure, Core & Shell, Interiors (calender days) |  | 30d | 2023-04-05 A | 2023-05-07 A | P2.DES.275 | 100% | 2023-04-05 | 2023-05-04 | 7D / SRLM | 240 | NIH | P01 | DSR | PRELIM | NIH |
| P2.DES.120 |  | Reconcile Comments - 65% Design Package - Structure, Core & Shell, Interiors |  | 15d | 2023-05-10 A | 2023-05-19 A | P2.DES.115 | 100% | 2023-05-10 | 2023-05-31 |  | 120 | ARCH | P01 | DES | PRELIM | ARCH |
| P2.DES.122 |  | Reconcile Comments - Additional Comment Resolution Time - 65% Design Package - Structure, Core & Shell, Interiors |  | 7d | 2023-05-22 A | 2023-07-21 A | P2.DES.130 FF, P2.DES.120 | 100% | 2023-05-22 | 2023-05-31 |  | 56 | NIH | P01 | DES | PRELIM | NIH |
| P2.DES.130 |  | Clean-up/Back-Check Pre-Final Submission - 65% Design Package - Structure, Core & Shell (Interim Sub-Not Needed per NIH) |  | 0d | 2023-07-21 A | 2023-07-21 A | P2.DES.125 | 100% | 2023-07-06 | 2023-07-06 |  | 0 | ARCH | P01 | DES | PRELIM | ARCH |
| P2.DES.135 |  | Pre-Final Submission Review & Approve - 65% Design Package - Structure, Core & Shell (Interim Sub-Not Needed per NIH) |  | 0d | 2023-07-21 A | 2023-07-21 A | P2.DES.125 | 100% | 2023-07-06 | 2023-07-06 |  | 0 | NIH | P01 | DSR | PRELIM | NIH |
| P2.DES.140 |  | 65% Design Package - Structure, Core & Shell, Interiors Approved | milestone | 0d | 2023-07-21 A | 2023-07-21 A | P2.DES.122 FF, P2.DES.135, P2.DSUM.180 FF | 100% |  |  |  | 0 | NIH | P01 | DSR | PRELIM | NIH |
| P2.DES.125 |  | Conference Review(s) - 65% Design Package - Structure, Core & Shell, Interiors (As needed) |  | 2d | 2023-07-28 A | 2023-07-29 A | P2.DES.120 FF | 100% | 2023-07-03 | 2023-07-05 |  | 16 | NIH | P01 | DES | PRELIM | NIH |

| ID | WBS | Activity | Type | Duration | Start | Finish | Predecessors | Complete | Planned start | Planned finish | Calendar | Temp Orig Dur | Resp / SRLM | PHASE | CATW | SCH DEV | RESP / Trade | *NIH Resp Check* |
| --- | --- | --- | --- | --- | --- | --- | --- | --- | --- | --- | --- | --- | --- | --- | --- | --- | --- | --- |
|  | 8 | **Phase 2A Design Package (Core & Shell)** |  |  | 2023-04-06 | 2024-03-28 |  |  |  |  |  |  |  |  |  |  |  |  |
|  | 2 | **95% Design Package** |  |  | 2023-04-06 | 2023-11-30 |  |  |  |  |  |  |  |  |  |  |  |  |
| P2A.DES.375 |  | Develop - 95% Design Package - Structure, Core & Shell |  | 34d | 2023-04-06 A | 2023-06-09 A | P2.DES.275 | 100% | 2023-04-06 | 2023-05-23 |  | 272 | ARCH | P01 | DES | PRELIM | ARCH |  |
| P2A.DES.445 |  | Internal Design QC- 95% Design Package - Structure, Core & Shell |  | 24d | 2023-06-10 A | 2023-07-19 A | P2A.DES.375 | 100% | 2023-07-13 | 2023-08-15 |  | 192 | ARCH | P01 |  | PRELIM | ARCH |  |
| PCO.DES.124 |  | (PCO 114) - Incorporate Reconciled from Phase 2 - 65% Design Submission into 95% Package |  | 15d | 2023-07-21 A | 2023-08-22 A | P2A.DES.445 | 100% | 2023-09-01 | 2023-09-22 |  |  | ARCH | P01 |  | PRELIM | ARCH |  |
| P2A.DES.485 |  | 2nd Internal Design QC - 95% Design Package - Structure, Core & Shell (Required due to P2.DES.122 - PCO114) |  | 10d | 2023-08-23 A | 2023-09-06 A | PCO.DES.124 | 100% | 2023-09-01 | 2023-09-15 |  |  | ARCH | P01 |  | PRELIM | ARCH |  |
| P2A.DES.475 |  | Incorporate 2nd Internal QC Comments - 95% Design Package - Structure, Core & Shell |  | 7d | 2023-09-07 A | 2023-09-15 A | P2A.DES.485 | 100% |  |  |  |  | ARCH | P01 |  | PRELIM | ARCH |  |
| P2A.DES.455 |  | Prepare & Submit - 95% Design Package - Structure, Core & Shell |  | 10d | 2023-09-18 A | 2023-09-22 A | P2A.DES.475 | 100% | 2023-09-18 | 2023-09-29 |  | 40 | ARCH | P01 |  | PRELIM | ARCH |  |
| P2A.DES.385 |  | NIH Review - 95% Design Package - Structure, Core & Shell (calender days) |  | 30d | 2023-09-25 A | 2023-10-26 A | P2A.DES.455 | 100% | 2023-09-30 | 2023-10-29 | 7D / SRLM | 240 | NIH | P01 | DSR | PRELIM | NIH |  |
| P2A.DES.395 |  | Reconcile Comments - 95% Design Package - Structure, Core & Shell |  | 15d | 2023-10-27 A | 2023-11-16 A | P2A.DES.385 | 100% |  |  |  | 120 | ARCH | P01 | DES | PRELIM | ARCH |  |
| P2A.DES.465 |  | Reconcile Comments - Additional Comment Resolution Time - 95% Design Package - Structure, Core & Shell |  | 7d | 2023-11-17 A | 2023-11-30 A | P2A.DES.395 | 100% | 2023-11-17 | 2023-11-29 |  | 56 | NIH | P01 | DES | PRELIM | NIH |  |
| P2A.DES.405 |  | Conference Review - 95% Design Package - Structure, Core & Shell (As needed) |  | 2d | 2023-11-28 A | 2023-11-30 A | P2A.DES.395 FF, P2A.DES.385 | 100% | 2023-11-15 | 2023-11-16 |  | 16 | NIH | P01 | DES | PRELIM | NIH |  |
| P2A.DES.415 |  | Clean-up/Back-Check Pre-Final Submission - 95% Design Package - Structure, Core & Shell (P2A Interim - Not needed) |  | 0d | 2023-11-30 A | 2023-11-30 A | P2A.DES.465, P2A.DES.405 | 100% | 2023-12-04 | 2023-12-04 |  | 0 | ARCH | P01 | DES | PRELIM | ARCH |  |
| P2A.DES.425 |  | Pre-Final Submission Review & Approve - 95% Design Package - Structure, Core & Shell (P2A Interim - Not needed) |  | 0d | 2023-11-30 A | 2023-11-30 A | P2A.DES.415 | 100% | 2023-12-04 | 2023-12-04 |  | 0 | NIH | P01 | DSR | PRELIM | NIH |  |
| P2A.DES.435 |  | 95% Design Package - Structure, Core & Shell Approved | milestone | 0d | 2023-11-30 A | 2023-11-30 A | P2A.DES.425 FF, P2.DSUM.230 FF | 100% |  |  |  | 0 | NIH | P01 | DSR | PRELIM | NIH |  |
|  | 3 | **100% IFC - Design Package** |  |  | 2023-09-25 | 2024-03-28 |  |  |  |  |  |  |  |  |  |  |  |  |
| P2A.DES.495 |  | Develop - 100% IFC Design Package - Structure, Core & Shell |  | 40d | 2023-09-25 A | 2023-11-13 A | P2A.DES.455 | 100% | 2023-10-02 | 2023-11-28 |  | 376 | ARCH | P01 | DES | PRELIM | ARCH |  |
| P2A.DES.565 |  | Internal Design QC- 100% IFC Design Package - Structure, Core & Shell |  | 10d | 2023-11-13 A | 2023-11-28 A | P2A.DES.495 | 100% | 2023-11-15 | 2023-11-30 |  | 160 | ARCH | P01 |  | PRELIM | ARCH |  |
| P2A.DES.575 |  | Prepare & Submit - 100% IFC Design Package - Structure, Core & Shell |  | 15d | 2023-12-01 A | 2023-12-21 A | P2A.DES.565, P2A.DES.435 | 100% |  |  |  | 40 | ARCH | P01 |  | PRELIM | ARCH |  |
| P2A.DES.505 |  | NIH Review - 100% IFC Design Package - Structure, Core & Shell (calendar days) |  | 21d | 2023-12-22 A | 2024-01-16 A | P2A.DES.575 | 100% | 2023-12-22 | 2024-01-11 | 7D / SRLM | 240 | NIH | P01 | DSR | PRELIM | NIH |  |
| P2A.DES.515 |  | Reconcile Comments - 100% IFC Design Package - Structure, Core & Shell |  | 15d | 2024-01-17 A | 2024-02-06 A | P2A.DES.505 | 100% |  |  |  | 120 | ARCH | P01 | DES | PRELIM | ARCH |  |
| P2A.DES.845 |  | Reconcile Comments - Additional Comment Resolution Time - 100% Design Package - Structure, Core & Shell |  | 7d | 2024-02-07 A | 2024-02-14 A | P2A.DES.515 | 100% | 2024-03-07 | 2024-03-15 |  | 56 | NIH | P01 | DES | PRELIM | NIH |  |
| P2A.DES.525 |  | Conference Review - 100% IFC Design Package - Structure, Core & Shell |  | 2d | 2024-02-08 A | 2024-02-08 A | P2A.DES.515 FF | 100% | 2024-03-05 | 2024-03-06 |  | 16 | NIH | P01 | DES | PRELIM | NIH |  |
| P2A.DES.535 |  | Clean-up/Back-Check Pre-Final Submission - 100% IFC Design Package - Structure, Core & Shell |  | 6d | 2024-02-15 A | 2024-02-23 A | P2A.DES.525, P2A.DES.845 | 100% | 2024-03-18 | 2024-03-25 |  | 120 | ARCH | P01 | DES | PRELIM | ARCH |  |
| P2A.DES.545 |  | Pre-Final Submission Review & Approve - 100% IFC Design Package - Structure, Core & Shell |  | 10d | 2024-02-26 A | 2024-03-05 A | P2A.DES.535 | 100% | 2024-03-26 | 2024-04-08 |  | 80 | NIH | P01 | DSR | PRELIM | NIH |  |
| P2A.DES.595 |  | NIH Green Permit Prepare & Issue - 100% IFC Design Package - Structure, Core & Shell |  | 5d | 2024-03-06 A | 2024-03-28 A | P2A.DES.545 | 100% | 2024-04-04 | 2024-04-10 |  | 40 | ARCH | P01 |  |  | ARCH | ! |
| P2A.DES.555 |  | 100% IFC Design Package - Structure, Core & Shell Approved | milestone | 0d | 2024-03-28 A | 2024-03-28 A | P2A.DES.595 FF, P2.DES.ST.250 FF, P2.DES.RF.270 FF, P2.DES.FM.270 FF, P2.DES.MP.280 FF, P2.DES.PC.350 FF, P2.DES.GG.340 FF, P2.DES.BEC.250 FF, P2.DSUM.240 FF | 100% |  |  |  | 0 | NIH | P01 | DSR | PRELIM | NIH |  |

| ID | WBS | Activity | Type | Duration | Start | Finish | Predecessors | Complete | Planned start | Planned finish | Calendar | Temp Orig Dur | Resp / SRLM | PHASE | CATW | SCH DEV | RESP / Trade | *NIH Resp Check* |
| --- | --- | --- | --- | --- | --- | --- | --- | --- | --- | --- | --- | --- | --- | --- | --- | --- | --- | --- |
|  | 9 | **Phase 2B Design Package (Electrical One-Line)** |  |  | 2023-04-06 | 2025-02-07 |  |  |  |  |  |  |  |  |  |  |  |  |
|  | 2 | **95% Design Package** |  |  | 2023-04-06 | 2024-06-03 |  |  |  |  |  |  |  |  |  |  |  |  |
| P2B.DES.605 |  | Develop - 95% Design Package - Electrical One-Line |  | 34d | 2023-04-06 A | 2023-06-09 A | P2.DES.275 | 100% | 2023-04-06 | 2023-05-23 |  | 272 | ARCH | P01 | DES | PRELIM | ARCH |  |
| P2B.DES.675 |  | Internal Design QC- 95% Design Package - Electrical One-Line |  | 24d | 2023-06-10 A | 2023-07-19 A | P2B.DES.605 | 100% | 2023-07-13 | 2023-08-15 |  | 192 | ARCH | P01 |  | PRELIM | ARCH |  |
| PCO.DES.134 |  | (PCO 114) - Incorporate Reconciled from Phase 2 - 65% Design Submission into 95% Package |  | 15d | 2023-07-21 A | 2023-08-22 A | P2B.DES.675 | 100% | 2023-09-01 | 2023-09-22 |  |  | ARCH | P01 |  | PRELIM | ARCH |  |
| P2B.DES.715 |  | 2nd Internal Design QC - 95% Design Package - Electrical One-Line (Required due to P2.DES.122 - PCO114) |  | 10d | 2023-08-23 A | 2023-09-06 A | PCO.DES.134 | 100% | 2023-09-01 | 2023-09-15 |  |  | ARCH | P01 |  | PRELIM | ARCH |  |
| P2B.DES.705 |  | Incorporate 2nd Internal QC Comments - 95% Design Package - Electrical One-Line |  | 7d | 2023-09-07 A | 2023-09-15 A | P2B.DES.715 | 100% |  |  |  |  | ARCH | P01 |  | PRELIM | ARCH |  |
| P2B.DES.685 |  | Prepare & Submit - 95% Design Package - Electrical One-Line |  | 10d | 2023-09-18 A | 2023-09-22 A | P2B.DES.705 | 100% | 2023-09-18 | 2023-09-29 |  | 40 | ARCH | P01 |  | PRELIM | ARCH |  |
| P2B.DES.615 |  | NIH Review - 95% Design Package - Electrical One-Line (calender days) |  | 30d | 2023-09-25 A | 2023-10-26 A | P2B.DES.685 | 100% | 2023-09-30 | 2023-10-29 | 7D / SRLM | 240 | NIH | P01 | DSR | PRELIM | NIH |  |
| P2B.DES.625 |  | Reconcile Comments - 95% Design Package - Electrical One-Line |  | 15d | 2023-10-27 A | 2023-11-16 A | P2B.DES.615 | 100% | 2023-11-27 | 2023-12-15 |  | 120 | ARCH | P01 | DES | PRELIM | ARCH |  |
| P2B.DES.695 |  | Reconcile Comments - Additional Comment Resolution Time - 95% Design Package - Electrical One-Line |  | 7d | 2023-11-17 A | 2023-11-29 A | P2B.DES.625 | 100% |  |  |  | 56 | NIH | P01 | DES | PRELIM | NIH |  |
| P2B.DES.845 |  | NIH Notice of requested resubmission of 2B Package - 95% Design Package - Electrical One-Line |  | 1d | 2023-11-30 A | 2023-11-30 A | P2B.DES.695 | 100% | 2023-11-17 | 2023-11-17 |  | 56 | NIH | P01 | DES | PRELIM | NIH |  |
| P2B.DES.855 |  | Additional Design Coordination with NIH on Submission Comments - 95% Design Package - Electrical One-Line |  | 10d | 2023-12-01 A | 2023-12-13 A | P2B.DES.845 | 100% | 2024-03-12 | 2024-03-25 |  | 0 | ARCH | P01 | DES | PRELIM | ARCH |  |
| P2B.DES.635 |  | Conference Review - 95% Design Package - Electrical One-Line (As needed) |  | 2d | 2023-12-14 A | 2023-12-18 A | P2B.DES.625 FF, P2B.DES.855, P2B.DES.615 | 100% | 2024-01-02 | 2024-01-03 |  | 16 | NIH | P01 | DES | PRELIM | NIH |  |
| P2C.DES.405 |  | Incorporate and Submit 95% Resubmission - 95% Design Package - Electrical One-Line |  | 30d | 2023-12-19 A | 2024-03-08 A | P2B.DES.635 | 100% | 2024-03-26 | 2024-05-06 |  | 0 | ARCH | P01 | DES | PRELIM | ARCH |  |
| P2C.DES.415 |  | NIH Review - 95% Design Package Resubmission - Electrical One-Line (calender days) |  | 30d | 2024-03-11 A | 2024-04-05 A | P2C.DES.405 | 100% | 2023-10-07 | 2023-11-05 | 7D / SRLM | 240 | NIH | P01 | DSR | PRELIM | NIH |  |
| P2C.DES.425 |  | D-B Team Respond to Comments - 95% Design Package - Electrical One-Line |  | 10d | 2024-04-08 A | 2024-04-22 A | P2C.DES.415 FF, P2C.DES.415 | 100% | 2024-05-01 | 2024-05-14 |  | 120 | ARCH | P01 | DES | PRELIM | ARCH |  |
| P2B.DES.645 |  | Comment Reconciliation Meetings - 95% Design Package - Electrical One-Line |  | 5d | 2024-05-07 A | 2024-05-21 A | P2C.DES.425, P2B.DES.695 | 100% | 2024-06-03 | 2024-06-07 |  | 0 | ARCH | P01 | DES | PRELIM | ARCH |  |
| P2B.DES.655 |  | Submission Comment Review & Approve - 95% Design Package - Electrical One-Line |  | 5d | 2024-05-22 A | 2024-06-03 A | P2B.DES.645 FF, P2B.DES.645 | 100% | 2024-06-08 | 2024-06-12 | 7D / SRLM | 0 | NIH | P01 | DSR | PRELIM | NIH |  |
| P2B.DES.665 |  | 95% Design Package - Electrical One-Line Approved | milestone | 0d | 2024-06-03 A | 2024-06-03 A | P2B.DES.635 FF, P2B.DES.645 FF, P2B.DES.655 FF, P2.DSUM.270 FF | 100% |  |  |  | 0 | NIH | P01 | DSR | PRELIM | NIH |  |
|  | 3 | **100% IFC - Design Package** |  |  | 2023-10-02 | 2025-02-07 |  |  |  |  |  |  |  |  |  |  |  |  |
| P2B.DES.725 |  | Develop - 100% Design Package - Electrical One-Line |  | 50d | 2023-10-02 A | 2024-03-08 A | P2B.DES.685 | 100% | 2023-10-02 | 2023-12-12 |  | 376 | ARCH | P01 | DES | PRELIM | ARCH |  |
| P2B.DES.795 |  | Internal Design QC- 100% Design Package - Electrical One-Line |  | 10d | 2024-03-11 A | 2024-03-22 A | P2B.DES.725 | 100% | 2024-04-10 | 2024-04-23 |  | 160 | ARCH | P01 |  | PRELIM | ARCH |  |
| P2B.DES.805 |  | Prepare & Submit - 100% Design Package - Electrical One-Line |  | 30d | 2024-03-25 A | 2024-07-17 A | P2B.DES.665 FF, P2B.DES.795 | 100% | 2024-04-24 | 2024-06-05 |  | 40 | ARCH | P01 |  | PRELIM | ARCH |  |
| P2B.DES.735 |  | NIH Review - 100% Design Package - Electrical One-Line (calendar days) |  | 30d | 2024-07-18 A | 2024-08-16 A | P2B.DES.805 | 100% | 2024-08-17 | 2024-09-15 | 7D / SRLM | 240 | NIH | P01 | DSR | PRELIM | NIH |  |
| P2B.DES.745 |  | Reconcile Comments - 100% Design Package - Electrical One-Line |  | 15d | 2024-08-19 A | 2024-09-11 A | P2B.DES.735 | 100% | 2024-09-17 | 2024-10-07 |  | 120 | ARCH | P01 | DES | PRELIM | ARCH |  |
| P2B.DES.835 |  | Reconcile Comments - Additional Comment Resolution Time - 100% Design Package - Electrical One-Line |  | 7d | 2024-09-12 A | 2024-09-27 A | P2B.DES.745 | 100% | 2024-10-08 | 2024-10-16 |  | 56 | NIH | P01 | DES | PRELIM | NIH |  |
| P2B.DES.765 |  | Clean-up/Back-Check Pre-Final Submission - IFC Design Package - Electrical One-Line |  | 11d | 2024-09-13 A | 2024-10-03 A | P2B.DES.835, P2B.DES.755 | 100% | 2024-10-17 | 2024-10-31 |  | 120 | ARCH | P01 | DES | PRELIM | ARCH |  |
| P2B.DES.755 |  | Conference Review - 100% Design Package - Electrical One-Line |  | 2d | 2024-09-17 A | 2024-09-17 A | P2B.DES.745 FF | 100% | 2024-10-04 | 2024-10-07 |  | 16 | NIH | P01 | DES | PRELIM | NIH |  |
| P2B.DES.775 |  | Pre-Final Submission Review & Approve - IFC Design Package - Electrical One-Line |  | 10d | 2024-10-04 A | 2024-10-18 A | P2B.DES.765 | 100% | 2024-11-06 | 2024-11-19 |  | 80 | NIH | P01 | DSR | PRELIM | NIH |  |
| P2B.DES.825 |  | NIH Green Permit Prepare & Issue - IFC Design Package - Electrical One-Line |  | 5d | 2024-10-21 A | 2025-02-07 A | P2B.DES.775 | 100% | 2024-11-20 | 2024-11-26 |  | 40 | ARCH | P01 |  |  | ARCH | ! |
| P2B.DES.785 |  | IFC Design Package - Electrical One-Line Approved | milestone | 0d | 2025-02-07 A | 2025-02-07 A | P2B.DES.825 FF, P2.DSUM.280 FF | 100% |  |  |  | 0 | NIH | P01 | DSR | PRELIM | NIH |  |

| ID | WBS | Activity | Type | Duration | Start | Finish | Predecessors | Complete | Planned start | Planned finish | Calendar | Temp Orig Dur | Resp / SRLM | PHASE | CATW | SCH DEV | RESP / Trade | *NIH Resp Check* |
| --- | --- | --- | --- | --- | --- | --- | --- | --- | --- | --- | --- | --- | --- | --- | --- | --- | --- | --- |
|  | 3 | **Phase 2C Design Package (SRLM Interiors)** |  |  | 2023-04-06 | 2025-03-03 |  |  |  |  |  |  |  |  |  |  |  |  |
|  | 2 | **95% Design Package** |  |  | 2023-04-06 | 2024-07-17 |  |  |  |  |  |  |  |  |  |  |  |  |
| P2C.DES.145 |  | Develop - 95% Design Package - Interiors |  | 34d | 2023-04-06 A | 2023-06-09 A | P5.DES.140 FF, P2.DES.110 | 100% | 2023-04-06 | 2023-05-23 |  | 272 | ARCH | P01 | DES | PRELIM | ARCH |  |
| P2C.DES.215 |  | Internal Design QC- 95% Design Package - Interiors |  | 24d | 2023-06-10 A | 2023-07-19 A | P2.DES.140 FF, P2C.DES.145 | 100% | 2023-07-13 | 2023-08-15 |  | 192 | ARCH | P01 |  | PRELIM | ARCH |  |
| PCO.DES.114 |  | (PCO 114) - Incorporate Reconciled from Phase 2 - 65% Design Submission into 95% Package |  | 15d | 2023-07-21 A | 2023-08-22 A | P2C.DES.215 | 100% | 2023-09-01 | 2023-09-22 |  |  | ARCH | P01 |  | PRELIM | ARCH |  |
| P2C.DES.335 |  | 2nd Internal Design QC - 95% Design Package - Interiors (Required due to P2.DES.122 - PCO114) |  | 10d | 2023-08-23 A | 2023-09-06 A | PCO.DES.114 | 100% | 2023-09-01 | 2023-09-15 |  |  | ARCH | P01 |  | PRELIM | ARCH |  |
| P2C.DES.345 |  | Incorporate 2nd Internal QC Comments - 95% Design Package - Interiors |  | 7d | 2023-09-07 A | 2023-09-22 A | P2C.DES.335 | 100% | 2023-09-07 | 2023-09-15 |  |  | ARCH | P01 |  | PRELIM | ARCH |  |
| P2C.DES.225 |  | Prepare & Submit - 95% Design Package - Interiors |  | 10d | 2023-09-25 A | 2023-10-06 A | P2C.DES.345, P2.ADRB.110 | 100% | 2023-09-18 | 2023-09-29 |  | 40 | ARCH | P01 |  | PRELIM | ARCH |  |
| P2C.DES.150 |  | NIH Review - 95% Design Package - Interiors (calender days) |  | 30d | 2023-10-07 A | 2023-11-09 A | P2C.DES.225 | 100% | 2023-10-07 | 2023-11-05 | 7D / SRLM | 240 | NIH | P01 | DSR | PRELIM | NIH |  |
| P2C.DES.155 |  | Reconcile Comments - 95% Design Package - Interiors |  | 15d | 2023-11-10 A | 2023-12-04 A | P2C.DES.150 | 100% |  |  |  | 120 | ARCH | P01 | DES | PRELIM | ARCH |  |
| P2C.DES.157 |  | Reconcile Comments - Additional Comment Resolution Time - 95% Design Package - Interiors |  | 7d | 2023-12-05 A | 2023-12-21 A | P2C.DES.155 | 100% | 2024-01-04 | 2024-01-12 |  | 56 | NIH | P01 | DES | PRELIM | NIH |  |
| P2C.DES.355 |  | NIH Notice of requested resubmission of 2C Package |  | 1d | 2023-12-22 A | 2023-12-22 A | P2C.DES.157 | 100% | 2024-01-04 | 2024-01-04 |  | 56 | NIH | P01 | DES | PRELIM | NIH |  |
| P2C.DES.165 |  | Additional Design Coordination with NIH on Submission Comments - 95% Design Package - Interiors |  | 20d | 2023-12-26 A | 2024-01-16 A | P2C.DES.355, P2C.DES.157, P2C.DES.160 | 100% | 2024-03-26 | 2024-04-22 |  | 0 | ARCH | P01 | DES | PRELIM | ARCH |  |
| P2C.DES.160 |  | Conference Review - 95% Design Package - Interiors (As needed) |  | 2d | 2024-01-17 A | 2024-01-25 A | P2C.DES.155 FF, P2C.DES.150 | 100% | 2024-03-01 | 2024-03-04 |  | 16 | NIH | P01 | DES | PRELIM | NIH |  |
| P2C.DES.395 |  | Incorporate and Submit 95% Resubmission - 95% Design Package - Interiors |  | 30d | 2024-01-26 A | 2024-03-08 A | P2C.DES.165, P2C.DES.160 | 100% | 2024-03-26 | 2024-05-06 |  | 0 | ARCH | P01 | DES | PRELIM | ARCH |  |
| P2C.DES.365 |  | NIH Review - 95% Design Package Resubmission - Interiors (calender days) |  | 30d | 2024-03-11 A | 2024-04-05 A | P2C.DES.395, P2C.DES.165 | 100% | 2023-10-07 | 2023-11-05 | 7D / SRLM | 240 | NIH | P01 | DSR | PRELIM | NIH |  |
| P2C.DES.375 |  | D-B Team Respond to Comments - 95% Design Package - Interiors |  | 10d | 2024-04-08 A | 2024-04-22 A | P2C.DES.365 | 100% | 2024-05-01 | 2024-05-14 |  | 120 | ARCH | P01 | DES | PRELIM | ARCH |  |
| P2C.DES.385 |  | Comment Reconciliation Meetings - 95% Design Package - Interiors |  | 5d | 2024-05-10 A | 2024-06-24 A | P2C.DES.375 | 100% | 2024-06-03 | 2024-06-07 |  | 56 | NIH | P01 | DES | PRELIM | NIH |  |
| P2C.DES.170 |  | Submission Comment Review & Approve - 95% Design Package - Interiors |  | 5d | 2024-06-25 A | 2024-07-17 A | P2C.DES.385, P2C.DES.165 | 100% | 2024-06-08 | 2024-06-12 | 7D / SRLM | 0 | NIH | P01 | DSR | PRELIM | NIH |  |
| P2C.DES.175 |  | 95% Design Package - Interiors Approved | milestone | 0d | 2024-07-17 A | 2024-07-17 A | P2C.DES.157 FF, P2C.DES.170, P2.DSUM.190 FF | 100% |  |  |  | 0 | NIH | P01 | DSR | PRELIM | NIH |  |
|  | 3 | **100% IFC - Design Package** |  |  | 2023-11-01 | 2025-03-03 |  |  |  |  |  |  |  |  |  |  |  |  |
| P2C.DES.180 |  | Develop - 100% Design Package - Interiors |  | 61d | 2023-11-01 A | 2024-03-08 A | P2C.DES.165 FF, P2C.DES.225 | 100% | 2023-11-01 | 2024-01-30 |  | 376 | ARCH | P01 | DES | PRELIM | ARCH |  |
| P2C.DES.285 |  | Internal Design QC- 100% Design Package - Interiors |  | 10d | 2024-03-11 A | 2024-03-22 A | P2C.DES.180 | 100% | 2024-05-07 | 2024-05-20 |  | 160 | ARCH | P01 |  | PRELIM | ARCH |  |
| P2C.DES.295 |  | Prepare & Submit - 100% Design Package - Interiors |  | 30d | 2024-03-25 A | 2024-07-17 A | P2C.DES.285 | 100% | 2024-05-21 | 2024-07-02 |  | 40 | ARCH | P01 |  | PRELIM | ARCH |  |
| P2C.DES.185 |  | NIH Review - 100% Design Package - Interiors (calendar days) |  | 30d | 2024-07-18 A | 2024-08-19 A | P2C.DES.175 FF, P2C.DES.295, P2.ADRB.110 | 100% | 2024-08-17 | 2024-09-15 | 7D / SRLM | 240 | NIH | P01 | DSR | PRELIM | NIH |  |
| P2C.DES.190 |  | Reconcile Comments - 100% Design Package - Interiors |  | 15d | 2024-08-20 A | 2024-09-09 A | P2C.DES.185 | 100% | 2024-09-17 | 2024-10-07 |  | 120 | ARCH | P01 | DES | PRELIM | ARCH |  |
| P2C.DES.195 |  | Conference Review - 100% Design Package - Interiors |  | 2d | 2024-09-17 A | 2024-09-19 A | P2C.DES.190 FF | 100% | 2024-10-04 | 2024-10-07 |  | 16 | NIH | P01 | DES | PRELIM | NIH |  |
| P2C.DES.325 |  | Reconcile Comments - Additional Comment Resolution Time - 100% Design Package - Interiors |  | 7d | 2024-09-17 A | 2024-09-27 A | P2C.DES.190 | 100% | 2024-10-08 | 2024-10-16 |  | 56 | NIH | P01 | DES | PRELIM | NIH |  |
| P2C.DES.200 |  | Clean-up/Back-Check Pre-Final Submission - IFC Design Package - Interiors |  | 11d | 2024-09-18 A | 2024-10-03 A | P2C.DES.325, P2C.DES.195 | 100% | 2024-10-17 | 2024-10-31 |  | 120 | ARCH | P01 | DES | PRELIM | ARCH |  |
| P2C.DES.205 |  | Pre-Final Submission Review & Approve - IFC Design Package - Interiors |  | 10d | 2024-10-04 A | 2024-10-18 A | P2C.DES.200 | 100% | 2024-11-06 | 2024-11-19 |  | 80 | NIH | P01 | DSR | PRELIM | NIH |  |
| P2C.DES.235 |  | NIH Green Permit Prepare & Issue - IFC Design Package - Interiors |  | 5d | 2024-10-21 A | 2025-03-03 A | P2C.DES.205 | 100% | 2024-11-20 | 2024-11-26 |  | 40 | ARCH | P01 |  |  | ARCH | ! |
| P2C.DES.435 |  | NIH/Plumb. Design Resolution Comments (Design Progress for Release of Submittals) - IFC Design Package - Interiors |  | 5d | 2024-10-21 A | 2025-02-10 A | P2C.DES.205 | 100% | 2025-03-03 | 2025-03-07 |  |  | NIH |  |  |  | NIH |  |
| P2C.DES.210 |  | IFC Design Package - Interiors Approved | milestone | 0d | 2025-03-03 A | 2025-03-03 A | P2C.DES.235 FF, BP1.149.0.110 FF, BP1.095.2.100 FF, P2.DSUM.200 FF | 100% |  |  |  | 0 | NIH | P01 | DSR | PRELIM | NIH |  |

| ID | WBS | Activity | Duration | Start | Finish | Predecessors | Complete | Planned start | Planned finish | SRLM - Crew | Resp / SRLM | RESP / Trade |
| --- | --- | --- | --- | --- | --- | --- | --- | --- | --- | --- | --- | --- |
|  | 11 | **Phase 2 - Exterior Facade** |  | 2023-04-14 | 2024-03-28 |  |  |  |  |  |  |  |
|  | Facade Design | **Facade Design** |  | 2023-04-14 | 2024-03-28 |  |  |  |  |  |  |  |
|  | Glass & Glazing | **Glass & Glazing Design** |  | 2023-04-14 | 2024-03-28 |  |  |  |  |  |  |  |
| P2.DES.GG.100 |  | Aluminum Profile & Product Data Approval | 5d | 2023-04-14 A | 2023-07-27 A | P2.MTG.MOB.100 | 100% | 2023-04-14 | 2023-04-20 | G-Precon | GLAZ | GLAZ |
| P2.DES.GG.110 |  | Submit Embed/Anchor Design/Face of Slab | 30d | 2023-04-14 A | 2023-05-29 A | P2.MTG.MOB.100 | 100% | 2023-04-14 | 2023-05-25 | G-Precon | GLAZ | GLAZ |
| P2.DES.GG.120 |  | Submit Shadow Box and Backpan Design | 36d | 2023-04-14 A | 2023-09-18 A | P2.MTG.MOB.100, P2.DES.GG.140 FF | 100% | 2023-04-14 | 2023-06-05 | G-Precon | GLAZ | GLAZ |
| P2.DES.GG.130 |  | Submit Glass Samples | 20d | 2023-04-21 A | 2023-05-18 A | P2.DES.GG.100 | 100% |  |  | G-Precon | GLAZ | GLAZ |
| P2.DES.GG.140 |  | Approve Glass Samples | 10d | 2023-05-19 A | 2023-07-26 A | P2.DES.GG.130 | 100% | 2023-05-19 | 2023-06-02 |  | ARCH | ARCH |
| P2.DES.GG.150 |  | Thermal and Acoustic Modeling | 45d | 2023-06-06 A | 2023-07-20 A | P2.DES.GG.140 FF, P2.DES.GG.120 SS | 100% | 2023-06-06 | 2023-08-08 | G-Precon | GLAZ | GLAZ |
| P2.DES.GG.160 |  | Submit 35% Shop Drawings (95% QC Design Submission) | 1d | 2023-06-06 A | 2023-06-06 A | P2.DES.GG.120 SS, P2.DES.GG.110 | 100% |  |  | G-Precon | GLAZ | GLAZ |
| P2.DES.GG.220 |  | Preliminary Blast Calculations | 20d | 2023-06-06 A | 2023-07-20 A | P2.DES.GG.170 SS | 100% | 2023-11-08 | 2023-12-07 | G-Precon | GLAZ | GLAZ |
| P2.DES.GG.170 |  | Review 35% Shop Drawings (95% QC Design Submission) | 26d | 2023-06-07 A | 2023-09-06 A | P2.DES.GG.160 | 100% | 2023-06-07 | 2023-07-13 |  | ARCH | ARCH |
| P2.DES.GG.270 |  | Blast Calculations Incorporated Into Design BOD | 17d | 2023-07-21 A | 2023-09-16 A | P2.DES.GG.220 | 100% | 2023-12-08 | 2024-01-03 |  | HP.STRC | HP.STRC |
| P2.DES.GG.180 |  | Prepare & Submit 50% Shop Drawings (95% Design Submission) | 5d | 2023-09-07 A | 2023-09-15 A | P2.DES.GG.170 | 100% | 2023-10-30 | 2023-11-03 | G-Precon | GLAZ | GLAZ |
| P2.DES.GG.190 |  | Incorporate & Submit to NIH 50% Shop Drawings into 95% Design Submission | 4d | 2023-09-18 A | 2023-09-22 A | P2.DES.GG.180 | 100% | 2023-10-31 | 2023-11-03 |  | ARCH | ARCH |
| P2.DES.GG.230 |  | Transistion Detail Coordination | 37d | 2023-09-18 A | 2023-11-09 A | P2.DES.GG.220 FF, P2.DES.GG.180 | 100% | 2023-10-03 | 2023-11-22 | G-Precon | GLAZ | GLAZ |
| P2.DES.GG.200 |  | Review 50% Shop Drawings (95% Design Submission) | 22d | 2023-09-25 A | 2023-10-26 A | P2.DES.GG.190 | 100% | 2023-09-25 | 2023-10-24 |  | NIH | NIH |
| P2.DES.GG.210 |  | Reconcile 50% Shop Drawings (95% Design Submission) Comments | 8d | 2023-10-27 A | 2023-11-07 A | P2.DES.GG.150 FF, P2.DES.GG.200 | 100% | 2023-11-30 | 2023-12-11 | G-Precon | GLAZ | GLAZ |
| P2.DES.GG.250 |  | Prepare & Submit 75% Shop Drawings (100% QC Design Submission) | 3d | 2023-11-08 A | 2023-11-10 A | P2.DES.GG.210 | 100% |  |  | G-Precon | GLAZ | GLAZ |
| P2.DES.GG.240 |  | Coordinate & Enhance Interface Details between other Trades | 17d | 2023-11-10 A | 2023-12-07 A | P2.DES.GG.210 FF, P2.DES.GG.230 | 100% | 2023-11-10 | 2023-12-06 | G-Precon | GLAZ | GLAZ |
| P2.DES.GG.260 |  | Review 75% Shop Drawings (100% QC Design Submission) | 10d | 2023-11-13 A | 2023-11-28 A | P2.DES.GG.250 | 100% |  |  |  | ARCH | ARCH |
| P2.DES.GG.280 |  | Prepare & Submit 95% Shop Drawings (100% Design Submission) | 5d | 2023-12-08 A | 2023-12-14 A | P2.DES.GG.240, P2.DES.GG.260, P2.DES.GG.270 | 100% | 2024-01-09 | 2024-01-15 | G-Precon | GLAZ | GLAZ |
| P2.DES.GG.290 |  | Incorporate & Submit to NIH 95% Shop Drawings (100% Design Submission) | 5d | 2023-12-15 A | 2023-12-21 A | P2.DES.GG.280 | 100% | 2024-01-16 | 2024-01-22 |  | ARCH | ARCH |
| P2.DES.GG.300 |  | Review 95% Shop Drawings (100% Design Submission) | 13d | 2023-12-22 A | 2024-01-16 A | P2.DES.GG.290 | 100% | 2024-01-23 | 2024-02-08 |  | NIH | NIH |
| P2.DES.GG.310 |  | Reconcile 95% Shop Drawings (100% Design Submission) | 12d | 2024-01-17 A | 2024-02-03 A | P2.DES.GG.300 | 100% | 2024-02-16 | 2024-03-04 | G-Precon | GLAZ | GLAZ |
| P2.DES.GG.320 |  | Prepare & Submit 100% IFC Set | 10d | 2024-02-05 A | 2024-02-16 A | P2.DES.GG.310 | 100% | 2024-03-05 | 2024-03-18 | G-Precon | GLAZ | GLAZ |
| P2.DES.GG.330 |  | Incorporate & Submit to NIH IFC Set | 5d | 2024-02-19 A | 2024-02-23 A | P2.DES.GG.320 | 100% | 2024-03-19 | 2024-03-25 |  | ARCH | ARCH |
| P2.DES.GG.340 |  | Review, Approve & Permit IFC Design Submission | 15d | 2024-02-26 A | 2024-03-28 A | P2.DES.GG.330 | 100% | 2024-03-26 | 2024-04-15 |  | NIH | NIH |

Notes:
- P2.DES.GG.100: Posit: Need approval to progress design and eventual procurement
- P2.DES.GG.120: Posit: Finalizing during Design Workshop #2
- P2.DES.GG.140: Posit: Additional Samples ordered. Need formal approval to continue thermal modeling

| ID | WBS | Activity | Duration | Start | Finish | Predecessors | Complete | Planned start | Planned finish | Resp / SRLM | RESP / Trade | SRLM - Crew |
| --- | --- | --- | --- | --- | --- | --- | --- | --- | --- | --- | --- | --- |
|  | Precast | **Precast Design** |  | 2023-04-24 | 2024-03-28 |  |  |  |  |  |  |  |
| P2.DES.PC.100 |  | Prepare Preliminary Panelization Drawing | 10d | 2023-04-24 A | 2023-05-25 A | P2.MTG.MOB.300 | 100% | 2023-04-24 | 2023-05-05 | PRECAST | PRECAST |  |
| P2.DES.PC.110 |  | Submit & Approve Panelization Drawing | 10d | 2023-05-25 A | 2023-06-15 A | P2.DES.PC.100 | 100% | 2023-05-25 | 2023-06-08 | PRECAST | PRECAST |  |
| P2.DES.PC.120 |  | Prepare Anchoring Layout & Initial Connection Drawing | 10d | 2023-05-25 A | 2023-07-27 A | P2.DES.PC.110 | 100% | 2023-07-17 | 2023-07-28 | PRECAST | PRECAST |  |
| P2.DES.PC.140 |  | Prepare Initial Blast Load Calculations | 20d | 2023-06-02 A | 2023-09-15 A | P2.DES.GG.110, P2.DES.PC.120 | 100% | 2023-10-06 | 2023-11-02 | PRECAST | PRECAST |  |
| P2.DES.PC.160 |  | Order & Procure Terracotta & Brick Samples | 20d | 2023-06-16 A | 2023-07-25 A | P2.DES.PC.110 | 100% | 2023-10-02 | 2023-10-27 | PRECAST | PRECAST |  |
| P2.DES.PC.130 |  | Submit 35% Shop Drawings (95% QC Design Submission) | 1d | 2023-07-03 A | 2023-07-04 A | P2.DES.PC.120 | 100% | 2023-07-05 | 2023-07-05 | PRECAST | PRECAST |  |
| P2.DES.PC.150 |  | Review 35% Shop Drawings (95% QC Design Submission) | 15d | 2023-07-05 A | 2023-09-06 A | P2.DES.PC.130 | 100% | 2023-10-09 | 2023-10-27 | ARCH | ARCH |  |
| P2.DES.PC.210 |  | Review & Approve Brick & Terracotta Samples | 27d | 2023-07-26 A | 2023-08-25 A | P2.DES.PC.160 | 100% | 2023-07-26 | 2023-08-31 | ARCH | ARCH |  |
| P2.DES.PC.230 |  | Review & Approve Brick & Terracotta Samples | 20d | 2023-08-28 A | 2023-10-16 A | P2.DES.PC.210 | 100% | 2023-08-28 | 2023-09-25 | NIH | NIH |  |
| P2.DES.PC.190 |  | Prepare & Submit 50% Shop Drawings (95% Design Submission) | 5d | 2023-09-07 A | 2023-09-15 A | P2.DES.PC.150 | 100% | 2023-10-30 | 2023-11-03 | PRECAST | PRECAST |  |
| P2.DES.PC.170 |  | Finalize Connection Details off of Blast Loads | 20d | 2023-09-18 A | 2023-10-13 A | P2.DES.PC.140, P2.DES.PC.200 | 100% | 2023-10-02 | 2023-10-27 | PRECAST | PRECAST |  |
| P2.DES.PC.200 |  | Incorporate & Submit to NIH 50% Shop Drawings into 95% Design Submission | 4d | 2023-09-18 A | 2023-09-22 A | P2.DES.PC.190 | 100% | 2023-10-31 | 2023-11-03 | ARCH | ARCH |  |
| P2.DES.PC.220 |  | Review 50% Shop Drawings (95% Design Submission) | 22d | 2023-09-25 A | 2023-10-26 A | P2.DES.PC.200 | 100% | 2023-11-06 | 2023-12-07 | NIH | NIH |  |
| P2.DES.PC.180 |  | Refine Panel Sizes & Thickness off of blast loads | 20d | 2023-10-16 A | 2023-11-10 A | P2.DES.PC.170 | 100% | 2023-11-15 | 2023-12-14 | PRECAST | PRECAST |  |
| P2.DES.PC.240 |  | Reconcile 50% Shop Drawings (95% Design Submission) Comments | 8d | 2023-10-27 A | 2023-11-07 A | P2.DES.PC.220 | 100% | 2023-11-30 | 2023-12-11 | PRECAST | PRECAST |  |
| P2.DES.PC.250 |  | Coordinate & Enhance Interface Details between other Trades | 20d | 2023-11-08 A | 2023-12-07 A | P2.DES.PC.240 | 100% |  |  | PRECAST | PRECAST |  |
| P2.DES.PC.260 |  | Prepare & Submit 75% Shop Drawings (100% QC Design Submission) | 3d | 2023-11-08 A | 2023-11-10 A | P2.DES.PC.240 | 100% |  |  | GLAZ | GLAZ | G-Precon |
| P2.DES.PC.270 |  | Review 75% Shop Drawings (100% QC Design Submission) | 10d | 2023-11-13 A | 2023-11-28 A | P2.DES.PC.260 | 100% |  |  | ARCH | ARCH |  |
| P2.DES.PC.280 |  | Blast Calculations Incorporated Into Design BOD | 13d | 2023-11-13 A | 2023-12-01 A | P2.DES.PC.270 FF, P2.DES.PC.180 | 100% |  |  | HP.STRC | HP.STRC |  |
| P2.DES.PC.290 |  | Prepare & Submit 95% Shop Drawings (100% Design Submission) | 5d | 2023-12-08 A | 2023-12-14 A | P2.DES.PC.250, P2.DES.PC.280 | 100% | 2024-01-09 | 2024-01-15 | PRECAST | PRECAST |  |
| P2.DES.PC.300 |  | Incorporate & Submit to NIH 95% Shop Drawings (100% Design Submission) | 5d | 2023-12-15 A | 2023-12-21 A | P2.DES.PC.290 | 100% | 2024-01-16 | 2024-01-22 | ARCH | ARCH |  |
| P2.DES.PC.310 |  | Review 95% Shop Drawings (100% Design Submission) | 13d | 2023-12-22 A | 2024-01-16 A | P2.DES.PC.300 | 100% | 2024-01-23 | 2024-02-08 | NIH | NIH |  |
| P2.DES.PC.320 |  | Reconcile 95% Shop Drawings (100% Design Submission) | 12d | 2024-01-17 A | 2024-02-03 A | P2.DES.PC.310 | 100% | 2024-02-16 | 2024-03-04 | PRECAST | PRECAST |  |
| P2.DES.PC.330 |  | Prepare & Submit 100% IFC Set | 10d | 2024-02-05 A | 2024-02-16 A | P2.DES.PC.320 | 100% | 2024-03-05 | 2024-03-18 | PRECAST | PRECAST |  |
| P2.DES.PC.340 |  | Incorporate & Submit to NIH IFC Set | 5d | 2024-02-19 A | 2024-02-23 A | P2.DES.PC.330 | 100% | 2024-03-19 | 2024-03-25 | ARCH | ARCH |  |
| P2.DES.PC.350 |  | Review, Approve & Permit IFC Design Submission | 15d | 2024-02-26 A | 2024-03-28 A | P2.DES.PC.340 | 100% | 2024-03-26 | 2024-04-15 | NIH | NIH |  |

Notes:
- P2.DES.PC.110: Posit: Finalizing at Design Workshop #2
- P2.DES.PC.160: Posit: Ordering after Design Workshop #2
- P2.DES.PC.150: Posit: Accellerated QC Review due to onboarding & panelization. Design Workshops with NIH to expedite decision making

| ID | WBS | Activity | Duration | Start | Finish | Predecessors | Complete | Planned start | Planned finish | Resp / SRLM | RESP / Trade |
| --- | --- | --- | --- | --- | --- | --- | --- | --- | --- | --- | --- |
|  | Metal Panel | **Metal Panel Design** |  | 2023-05-04 | 2024-03-28 |  |  |  |  |  |  |
| P2.DES.MP.100 |  | Prepare Preliminary Details for Morin System into Submission Set | 8d | 2023-05-04 A | 2023-05-23 A | P2.MTG.MOB.400 | 100% | 2023-06-15 | 2023-06-26 | MPANEL | MPANEL |
| P2.DES.MP.110 |  | Prepare Prelminary Joint Alignment Drawings for Review | 4d | 2023-05-24 A | 2023-06-12 A | P2.DES.MP.100 | 100% | 2023-05-24 | 2023-05-30 | MPANEL | MPANEL |
| P2.DES.MP.120 |  | Arch Review of Joint Alignment | 10d | 2023-06-12 A | 2023-07-28 A | P2.DES.MP.110 | 100% | 2023-07-05 | 2023-07-18 | ARCH | ARCH |
| P2.DES.MP.130 |  | Submit 35% Shop Drawings (95% QC Design Submission) | 1d | 2023-06-13 A | 2023-06-13 A | P2.DES.MP.120 FF, P2.DES.MP.100 | 100% | 2023-07-19 | 2023-07-19 | MPANEL | MPANEL |
| P2.DES.MP.140 |  | Review 35% Shop Drawings (95% QC Design Submission) | 26d | 2023-06-13 A | 2023-09-06 A | P2.DES.MP.130 | 100% | 2023-06-29 | 2023-08-04 | ARCH | ARCH |
| P2.DES.MP.150 |  | Prepare & Submit 50% Shop Drawings (95% Design Submission) | 5d | 2023-09-07 A | 2023-09-15 A | P2.DES.MP.140 | 100% | 2023-09-07 | 2023-09-13 | MPANEL | MPANEL |
| P2.DES.MP.160 |  | Incorporate & Submit to NIH 50% Shop Drawings into 95% Design Submission | 4d | 2023-09-18 A | 2023-09-22 A | P2.DES.MP.150 | 100% | 2023-10-16 | 2023-10-19 | ARCH | ARCH |
| P2.DES.MP.170 |  | Review 50% Shop Drawings (95% Design Submission) | 22d | 2023-09-25 A | 2023-10-26 A | P2.DES.MP.160 | 100% | 2023-10-20 | 2023-11-20 | NIH | NIH |
| P2.DES.MP.180 |  | Reconcile 50% Shop Drawings (95% Design Submission) Comments | 5d | 2023-10-27 A | 2023-11-07 A | P2.DES.MP.170 | 100% | 2023-11-30 | 2023-12-06 | MPANEL | MPANEL |
| P2.DES.MP.190 |  | Coordinate & Enhance Interface Details between other Trades | 20d | 2023-11-08 A | 2023-12-07 A | P2.DES.MP.180 | 100% |  |  | MPANEL | MPANEL |
| P2.DES.MP.200 |  | Prepare & Submit 75% Shop Drawings (100% QC Design Submission) | 3d | 2023-11-08 A | 2023-11-10 A | P2.DES.MP.180 | 100% |  |  | MPANEL | MPANEL |
| P2.DES.MP.210 |  | Review 75% Shop Drawings (100% QC Design Submission) | 10d | 2023-11-13 A | 2023-11-28 A | P2.DES.MP.200 | 100% |  |  | ARCH | ARCH |
| P2.DES.MP.220 |  | Prepare & Submit 95% Shop Drawings (100% Design Submission) | 5d | 2023-12-08 A | 2023-12-14 A | P2.DES.MP.190, P2.DES.MP.210 | 100% | 2024-01-09 | 2024-01-15 | MPANEL | MPANEL |
| P2.DES.MP.230 |  | Incorporate & Submit to NIH 95% Shop Drawings (100% Design Submission) | 5d | 2023-12-15 A | 2023-12-21 A | P2.DES.MP.220 | 100% | 2024-01-16 | 2024-01-22 | ARCH | ARCH |
| P2.DES.MP.240 |  | Review 95% Shop Drawings (100% Design Submission) | 13d | 2023-12-22 A | 2024-01-16 A | P2.DES.MP.230 | 100% | 2024-01-23 | 2024-02-08 | NIH | NIH |
| P2.DES.MP.250 |  | Reconcile 95% Shop Drawings (100% Design Submission) | 12d | 2024-01-17 A | 2024-02-02 A | P2.DES.MP.240 | 100% | 2024-02-16 | 2024-03-04 | MPANEL | MPANEL |
| P2.DES.MP.260 |  | Prepare & Submit 100% IFC Set | 10d | 2024-02-05 A | 2024-02-16 A | P2.DES.MP.250 | 100% | 2024-03-05 | 2024-03-18 | MPANEL | MPANEL |
| P2.DES.MP.270 |  | Incorporate & Submit to NIH IFC Set | 5d | 2024-02-19 A | 2024-02-23 A | P2.DES.MP.260 | 100% | 2024-03-19 | 2024-03-25 | ARCH | ARCH |
| P2.DES.MP.280 |  | Review, Approve & Permit IFC Design Submission | 15d | 2024-02-26 A | 2024-03-28 A | P2.DES.MP.270 | 100% | 2024-03-26 | 2024-04-15 | NIH | NIH |
|  | Roofing | **Roofing Design** |  | 2023-05-04 | 2024-03-28 |  |  |  |  |  |  |
| P2.DES.RF.100 |  | Prepare Preliminary Details for Roofing System into Submission Set | 22d | 2023-05-04 A | 2023-06-26 A | P2.MTG.MOB.500, P2.MTG.MOB.500 FF | 100% | 2023-06-15 | 2023-07-17 | ROOF | ROOF |
| P2.DES.RF.120 |  | Coordinate Parapet Walls & Coping with D-B Team & Trade Partners | 22d | 2023-05-10 A | 2023-06-26 A | P2.DES.RF.100 FF, P2.DES.RF.100 | 100% | 2023-05-10 | 2023-06-09 | ROOF | ROOF |
| P2.DES.RF.110 |  | Submit 35% Shop Drawings (95% QC Design Submission) | 1d | 2023-06-27 A | 2023-06-27 A | P2.DES.RF.120 SS | 100% | 2023-10-16 | 2023-10-16 | ROOF | ROOF |
| P2.DES.RF.130 |  | Review 35% Shop Drawings (95% QC Design Submission) | 9d | 2023-06-28 A | 2023-09-06 A | P2.DES.RF.110 | 100% | 2023-10-17 | 2023-10-27 | ARCH | ARCH |
| P2.DES.RF.140 |  | Prepare & Submit 50% Shop Drawings (95% Design Submission) | 1d | 2023-09-07 A | 2023-09-15 A | P2.DES.RF.130 | 100% | 2023-10-30 | 2023-10-30 | ROOF | ROOF |
| P2.DES.RF.150 |  | Incorporate & Submit to NIH 50% Shop Drawings into 95% Design Submission | 4d | 2023-09-18 A | 2023-09-22 A | P2.DES.RF.140 | 100% | 2023-10-31 | 2023-11-03 | ARCH | ARCH |
| P2.DES.RF.280 |  | Calculate Roof Uplift and Coordinate with Structural | 50d | 2023-09-18 A | 2023-10-31 A | P2.DES.RF.140 | 100% | 2023-05-10 | 2023-07-20 | ROOF | ROOF |
| P2.DES.RF.160 |  | Review 50% Shop Drawings (95% Design Submission) | 22d | 2023-09-25 A | 2023-10-26 A | P2.DES.RF.150 | 100% | 2023-11-06 | 2023-12-07 | NIH | NIH |
| P2.DES.RF.170 |  | Reconcile 50% Shop Drawings (95% Design Submission) Comments | 8d | 2023-10-27 A | 2023-11-07 A | P2.DES.RF.160 | 100% | 2023-11-30 | 2023-12-11 | ROOF | ROOF |
| P2.DES.RF.180 |  | Coordinate & Enhance Interface Details between other Trades | 20d | 2023-11-08 A | 2023-12-07 A | P2.DES.RF.170 | 100% |  |  | ROOF | ROOF |
| P2.DES.RF.190 |  | Prepare & Submit 75% Shop Drawings (100% QC Design Submission) | 3d | 2023-11-08 A | 2023-11-10 A | P2.DES.RF.280, P2.DES.RF.120, P2.DES.RF.170 | 100% |  |  | ROOF | ROOF |
| P2.DES.RF.200 |  | Review 75% Shop Drawings (100% QC Design Submission) | 10d | 2023-11-13 A | 2023-11-28 A | P2.DES.RF.190 | 100% |  |  | ARCH | ARCH |
| P2.DES.RF.210 |  | Prepare & Submit 95% Shop Drawings (100% Design Submission) | 5d | 2023-12-08 A | 2023-12-14 A | P2.DES.RF.180, P2.DES.RF.200 | 100% | 2024-01-09 | 2024-01-15 | ROOF | ROOF |
| P2.DES.RF.220 |  | Incorporate & Submit to NIH 95% Shop Drawings (100% Design Submission) | 5d | 2023-12-15 A | 2023-12-21 A | P2.DES.RF.210 | 100% | 2024-01-16 | 2024-01-22 | ARCH | ARCH |
| P2.DES.RF.230 |  | Review 95% Shop Drawings (100% Design Submission) | 13d | 2023-12-22 A | 2024-01-16 A | P2.DES.RF.220 | 100% | 2024-01-23 | 2024-02-08 | NIH | NIH |
| P2.DES.RF.240 |  | Reconcile 95% Shop Drawings (100% Design Submission) | 12d | 2024-01-17 A | 2024-02-02 A | P2.DES.RF.210 FF, P2.DES.RF.230 | 100% | 2024-02-16 | 2024-03-04 | ROOF | ROOF |
| P2.DES.RF.250 |  | Prepare & Submit 100% IFC Set | 10d | 2024-02-05 A | 2024-02-16 A | P2.DES.RF.240 | 100% | 2024-03-05 | 2024-03-18 | ROOF | ROOF |
| P2.DES.RF.260 |  | Incorporate & Submit to NIH IFC Set | 5d | 2024-02-19 A | 2024-02-23 A | P2.DES.RF.250 | 100% | 2024-03-19 | 2024-03-25 | ARCH | ARCH |
| P2.DES.RF.270 |  | Review, Approve & Permit IFC Design Submission | 15d | 2024-02-26 A | 2024-03-28 A | P2.DES.RF.260 | 100% | 2024-03-26 | 2024-04-15 | NIH | NIH |

Notes:
- P2.DES.MP.140: Posit: Accellerated Design QC due to onboarding of D-B Trade Partner (See premobilization meeting above)
- P2.DES.RF.130: Posit: Accellerated Design QC due to onboarding of D-B Trade Partner (See premobilization meeting above)

| ID | WBS | Activity | Duration | Start | Finish | Predecessors | Complete | Planned start | Planned finish | Resp / SRLM | RESP / Trade |
| --- | --- | --- | --- | --- | --- | --- | --- | --- | --- | --- | --- |
|  | Facade Maintenance | **Facade Maintenance Design** |  | 2023-04-19 | 2024-03-28 |  |  |  |  |  |  |
| P2.DES.FM.100 |  | Prepare Preliminary Facade Maintenance Dessign | 23d | 2023-04-19 A | 2023-06-09 A | P2.MTG.MOB.200 | 100% | 2023-06-15 | 2023-07-18 | EXMAINT | EXMAINT |
| P2.DES.FM.110 |  | D-B Team Coordination of Facade Maintenance Design Drawings | 10d | 2023-06-12 A | 2023-06-23 A | P2.DES.FM.100 | 100% | 2023-06-15 | 2023-06-28 | ARCH | ARCH |
| P2.DES.FM.120 |  | Prepare & Submit 35% Shop Drawings (95% QC Design Submission) | 5d | 2023-06-26 A | 2023-07-04 A | P2.DES.FM.110 | 100% | 2023-10-11 | 2023-10-17 | EXMAINT | EXMAINT |
| P2.DES.FM.130 |  | Review 35% Shop Drawings (95% QC Design Submission) | 12d | 2023-07-05 A | 2023-09-06 A | P2.DES.FM.120 | 100% | 2023-10-12 | 2023-10-27 | ARCH | ARCH |
| P2.DES.FM.140 |  | Prepare & Submit 50% Shop Drawings (95% Design Submission) | 5d | 2023-09-07 A | 2023-09-15 A | P2.DES.FM.130 | 100% | 2023-10-30 | 2023-11-03 | EXMAINT | EXMAINT |
| P2.DES.FM.150 |  | Incorporate & Submit to NIH 50% Shop Drawings into 95% Design Submission | 4d | 2023-09-18 A | 2023-09-22 A | P2.DES.FM.140 | 100% | 2023-10-31 | 2023-11-03 | ARCH | ARCH |
| P2.DES.FM.160 |  | Review 50% Shop Drawings (95% Design Submission) | 22d | 2023-09-25 A | 2023-10-26 A | P2.DES.FM.150 | 100% | 2023-11-06 | 2023-12-07 | NIH | NIH |
| P2.DES.FM.170 |  | Reconcile 50% Shop Drawings (95% Design Submission) Comments | 8d | 2023-10-27 A | 2023-11-07 A | P2.DES.FM.160 | 100% | 2023-11-30 | 2023-12-11 | EXMAINT | EXMAINT |
| P2.DES.FM.180 |  | Coordinate & Enhance Interface Details between other Trades | 20d | 2023-11-08 A | 2023-12-07 A | P2.DES.FM.170 | 100% |  |  | EXMAINT | EXMAINT |
| P2.DES.FM.190 |  | Prepare & Submit 75% Shop Drawings (100% QC Design Submission) | 3d | 2023-11-08 A | 2023-11-10 A | P2.DES.FM.170 | 100% |  |  | EXMAINT | EXMAINT |
| P2.DES.FM.200 |  | Review 75% Shop Drawings (100% QC Design Submission) | 10d | 2023-11-13 A | 2023-11-28 A | P2.DES.FM.190 | 100% |  |  | ARCH | ARCH |
| P2.DES.FM.210 |  | Prepare & Submit 95% Shop Drawings (100% Design Submission) | 5d | 2023-12-08 A | 2023-12-14 A | P2.DES.FM.200, P2.DES.FM.180 | 100% | 2024-01-09 | 2024-01-15 | EXMAINT | EXMAINT |
| P2.DES.FM.220 |  | Incorporate & Submit to NIH 95% Shop Drawings (100% Design Submission) | 5d | 2023-12-15 A | 2023-12-21 A | P2.DES.FM.210 | 100% | 2024-01-16 | 2024-01-22 | ARCH | ARCH |
| P2.DES.FM.230 |  | Review 95% Shop Drawings (100% Design Submission) | 13d | 2023-12-22 A | 2024-01-16 A | P2.DES.FM.220 | 100% | 2024-01-23 | 2024-02-08 | NIH | NIH |
| P2.DES.FM.240 |  | Reconcile 95% Shop Drawings (100% Design Submission) | 12d | 2024-01-17 A | 2024-02-02 A | P2.DES.FM.230 | 100% | 2024-02-16 | 2024-03-04 | EXMAINT | EXMAINT |
| P2.DES.FM.250 |  | Prepare & Submit 100% IFC Set | 10d | 2024-02-05 A | 2024-02-16 A | P2.DES.FM.240 | 100% | 2024-03-05 | 2024-03-18 | EXMAINT | EXMAINT |
| P2.DES.FM.260 |  | Incorporate & Submit to NIH IFC Set | 5d | 2024-02-19 A | 2024-02-23 A | P2.DES.FM.250 | 100% | 2024-03-19 | 2024-03-25 | ARCH | ARCH |
| P2.DES.FM.270 |  | Review, Approve & Permit IFC Design Submission | 15d | 2024-02-26 A | 2024-03-28 A | P2.DES.FM.260 | 100% | 2024-03-26 | 2024-04-15 | NIH | NIH |
|  | Exterior Stone | **Exterior Stone Cladding Design** |  | 2023-06-12 | 2024-03-28 |  |  |  |  |  |  |
| P2.DES.ST.100 |  | Evaluate Stone Types & Details for Exterior Cladding System into Submission Set | 40d | 2023-06-12 A | 2023-07-28 A | P2.MTG.MOB.600 | 100% | 2023-06-15 | 2023-08-10 | EXTCLAD | EXTCLAD |
| P2.DES.ST.110 |  | Prepare Stone for Testing & Evaluation | 40d | 2023-07-29 A | 2023-10-06 A | P2.DES.ST.100 | 100% | 2023-10-23 | 2023-12-19 | ARCH | ARCH |
| P2.DES.ST.120 |  | Stone Testing & Reporting | 20d | 2023-10-09 A | 2023-11-14 A | P2.DES.ST.110 | 100% | 2023-11-08 | 2023-12-07 | EXTCLAD | EXTCLAD |
| P2.DES.ST.150 |  | Reconcile 50% Shop Drawings (95% Design Submission) Comments | 8d | 2023-10-27 A | 2023-11-07 A | P2.DES.FM.160, P2.DES.ST.100 | 100% | 2023-11-01 | 2023-11-10 | EXTCLAD | EXTCLAD |
| P2.DES.ST.160 |  | Coordinate & Enhance Interface Details between other Trades | 20d | 2023-11-08 A | 2023-12-07 A | P2.DES.ST.150 FF, P2.DES.ST.150 | 100% |  |  | EXTCLAD | EXTCLAD |
| P2.DES.ST.170 |  | Prepare & Submit 75% Shop Drawings (100% QC Design Submission) | 3d | 2023-11-08 A | 2023-12-01 A | P2.DES.ST.120, P2.DES.ST.150 | 100% | 2023-11-08 | 2023-11-10 | EXTCLAD | EXTCLAD |
| P2.DES.ST.180 |  | Review 75% Shop Drawings (100% QC Design Submission) | 4d | 2023-12-04 A | 2023-12-07 A | P2.DES.ST.170 | 100% | 2024-01-03 | 2024-01-08 | ARCH | ARCH |
| P2.DES.ST.200 |  | Incorporate & Submit to NIH 95% Shop Drawings (100% Design Submission) | 5d | 2023-12-08 A | 2023-12-21 A | P2.DES.ST.180, P2.DES.ST.160 | 100% | 2024-01-16 | 2024-01-22 | ARCH | ARCH |
| P2.DES.ST.210 |  | Review 95% Shop Drawings (100% Design Submission) | 13d | 2023-12-22 A | 2024-01-16 A | P2.DES.ST.200 | 100% | 2024-01-23 | 2024-02-08 | NIH | NIH |
| P2.DES.ST.220 |  | Reconcile 95% Shop Drawings (100% Design Submission) | 12d | 2024-01-17 A | 2024-02-02 A | P2.DES.ST.160 FF, P2.DES.ST.180 FF, P2.DES.ST.210 | 100% | 2024-02-16 | 2024-03-04 | EXTCLAD | EXTCLAD |
| P2.DES.ST.240 |  | Incorporate & Submit to NIH IFC Set | 15d | 2024-02-05 A | 2024-02-23 A | P2.DES.ST.220 | 100% | 2024-03-05 | 2024-03-25 | ARCH | ARCH |
| P2.DES.ST.250 |  | Review, Approve & Permit IFC Design Submission | 15d | 2024-02-26 A | 2024-03-28 A | P2.DES.ST.240 | 100% | 2024-03-26 | 2024-04-15 | NIH | NIH |

Notes:
- P2.DES.FM.130: Posit: Accellerated Design QC due to onboarding of D-B Trade Partner (See premobilization meeting above)
- P2.DES.ST.110: Posit: Accellerated Design QC due to onboarding of D-B Trade Partner (See premobilization meeting above)

| ID | WBS | Activity | Type | Duration | Start | Finish | Predecessors | Complete | Planned start | Planned finish | Calendar | Resp / SRLM | RESP / Trade | Temp Orig Dur | PHASE | SCH DEV | CATW |
| --- | --- | --- | --- | --- | --- | --- | --- | --- | --- | --- | --- | --- | --- | --- | --- | --- | --- |
|  | Enclosure Cx | **Building Enclosure Comissioning Plan** |  |  | 2023-06-30 | 2024-03-28 |  |  |  |  |  |  |  |  |  |  |  |
| P2.DES.BEC.100 |  | Prepare Preliminary Building Enclosure Comissioning Plan |  | 20d | 2023-06-30 A | 2023-10-13 A | P2.DES.275 | 100% | 2023-06-15 | 2023-07-13 |  | ARCH | ARCH |  |  |  |  |
| P2.DES.BEC.110 |  | Internal Review of Building Enclosure Comissioning Plan |  | 20d | 2023-07-03 A | 2023-07-31 A | P2.DES.BEC.100 | 100% | 2023-10-16 | 2023-11-10 |  | HP | HP |  |  |  |  |
| P2.DES.BEC.120 |  | Revise & Resubmit Building Enclosure Comissioning Plan |  | 20d | 2023-08-01 A | 2023-09-01 A | P2.DES.BEC.110 | 100% | 2023-10-23 | 2023-11-17 |  | ARCH | ARCH |  |  |  |  |
| P2.DES.BEC.130 |  | Incorporate & Submit to NIH BECx Plan into 95% Design Submission |  | 5d | 2023-09-04 A | 2023-09-22 A | P2.DES.BEC.120 | 100% | 2023-10-30 | 2023-11-03 |  | ARCH | ARCH |  |  |  |  |
| P2.DES.BEC.140 |  | Review BECx Plan (95% Design Submission) |  | 22d | 2023-09-25 A | 2023-10-26 A | P2.DES.BEC.130 SS, P2.DES.BEC.130 FF, P2.DES.BEC.130 | 100% | 2023-11-06 | 2023-12-07 |  | NIH | NIH |  |  |  |  |
| P2.DES.BEC.150 |  | Reconcile BECx Plan (95% Design Submission) Comments |  | 8d | 2023-10-27 A | 2023-11-07 A | P2.DES.BEC.140 | 100% | 2023-11-30 | 2023-12-11 |  | ARCH | ARCH |  |  |  |  |
| P2.DES.BEC.170 |  | Prepare & Submit BECx 100% QC Design Submission |  | 3d | 2023-11-08 A | 2023-11-21 A | P2.DES.BEC.150 | 100% | 2023-11-08 | 2023-11-10 |  | ARCH | ARCH |  |  |  |  |
| P2.DES.BEC.160 |  | Coordinate Comissioning Plan between all disciplines and requirements |  | 20d | 2023-11-21 A | 2023-12-07 A | P2.DES.BEC.150 | 100% | 2023-11-08 | 2023-12-07 |  | ARCH | ARCH |  |  |  |  |
| P2.DES.BEC.180 |  | Review BECx 100% QC Design Submission |  | 10d | 2023-11-21 A | 2023-12-01 A | P2.DES.BEC.170 | 100% | 2023-11-13 | 2023-11-28 |  | ARCH | ARCH |  |  |  |  |
| P2.DES.BEC.190 |  | Prepare & Submit BECx 100% Design Submission |  | 2d | 2023-12-14 A | 2023-12-15 A | P2.DES.BEC.180, P2.DES.BEC.160 | 100% | 2024-01-15 | 2024-01-16 |  | ARCH | ARCH |  |  |  |  |
| P2.DES.BEC.200 |  | Incorporate & Submit to NIH BECx 100% Design Submission |  | 4d | 2023-12-18 A | 2023-12-21 A | P2.DES.BEC.190 | 100% | 2024-01-17 | 2024-01-22 |  | ARCH | ARCH |  |  |  |  |
| P2.DES.BEC.210 |  | Review BECx 100% Design Submission |  | 13d | 2023-12-22 A | 2024-01-16 A | P2.DES.BEC.200 | 100% | 2024-01-23 | 2024-02-08 |  | NIH | NIH |  |  |  |  |
| P2.DES.BEC.220 |  | Reconcile BECx 100% Design Submission Comments |  | 12d | 2024-01-17 A | 2024-02-02 A | P2.DES.BEC.190 FF, P2.DES.BEC.210 | 100% | 2024-02-16 | 2024-03-04 |  | ARCH | ARCH |  |  |  |  |
| P2.DES.BEC.230 |  | Prepare & Submit BECx 100% Final Plan (IFC) |  | 10d | 2024-02-05 A | 2024-02-16 A | P2.DES.BEC.220 | 100% | 2024-03-05 | 2024-03-18 |  | ARCH | ARCH |  |  |  |  |
| P2.DES.BEC.240 |  | Incorporate & Submit to NIH BECx 100% Final Plan (IFC) |  | 5d | 2024-02-19 A | 2024-02-23 A | P2.DES.BEC.230 | 100% | 2024-03-19 | 2024-03-25 |  | ARCH | ARCH |  |  |  |  |
| P2.DES.BEC.250 |  | Review, Approve & Permit BECx 100% Final Plan (IFC) |  | 15d | 2024-02-26 A | 2024-03-28 A | P2.DES.BEC.240 | 100% | 2024-03-26 | 2024-04-15 |  | NIH | NIH |  |  |  |  |
|  | 5 | **Phase 5 Design Package (West Wing Renovations)** |  |  | 2022-06-08 | 2025-05-21 |  |  |  |  |  |  |  |  |  |  |  |
|  | 2 | **65% Design Package** |  |  | 2022-06-08 | 2024-01-03 |  |  |  |  |  |  |  |  |  |  |  |
| P5.DES.410 |  | Existing Conditions Validation & Verification Inspections |  | 30d | 2022-06-08 A | 2022-10-21 A | PD2.DES.099, PWS.230 | 100% | 2022-06-08 | 2022-07-20 |  | ARCH | ARCH | 240 | P01 | PRELIM |  |
| P5.DES.140 |  | Develop - 65% Design Package - West Wing Renovations |  | 140d | 2022-06-09 A | 2023-06-09 A | P5.DES.410 SS+22d, P1.DES.101 SS+30d | 100% | 2022-06-09 | 2022-12-29 |  | ARCH | ARCH | 1120 | P01 | PRELIM | DES |
| P5.DES.350 |  | Internal Design QC- 65% Design Package Phase 5 - West Wing Renovations |  | 24d | 2023-06-13 A | 2023-07-19 A | P5.DES.140 | 100% | 2023-07-13 | 2023-08-15 |  | ARCH | ARCH | 192 | P01 | PRELIM |  |
| P5.DES.375 |  | Incorporate Internal QC Comments - 95% Design Package - Structure, Core & Shell, Interiors |  | 7d | 2023-07-20 A | 2023-08-22 A | P5.DES.350 | 100% | 2023-09-01 | 2023-09-12 |  | ARCH | ARCH |  | P01 | PRELIM |  |
| P2.DES.355 |  | 2nd Internal Design QC - 95% Design Package - Structure, Core & Shell, Interiors (Required due to P2.DES.122 - PCO114) |  | 10d | 2023-08-23 A | 2023-09-06 A | P5.DES.375 | 100% | 2023-09-01 | 2023-09-15 |  | ARCH | ARCH |  | P01 | PRELIM |  |
| P2.DES.365 |  | Incorporate 2nd Internal QC Comments - 95% Design Package - Structure, Core & Shell, Interiors |  | 7d | 2023-09-07 A | 2023-09-22 A | P2.DES.355 | 100% | 2023-09-07 | 2023-09-15 |  | ARCH | ARCH |  | P01 | PRELIM |  |
| P5.DES.360 |  | Prepare & Submit - 65% Design Package - West Wing Renovations |  | 10d | 2023-09-25 A | 2023-10-06 A | P2.DES.365 | 100% | 2023-09-18 | 2023-09-29 |  | ARCH | ARCH | 40 | P01 | PRELIM |  |
| P5.DES.150 |  | NIH Review - 65% Design Package - West Wing Renovations (calender days) |  | 31d | 2023-10-07 A | 2023-11-09 A | P5.DES.360 | 100% | 2023-11-09 | 2023-12-09 | 7D / SRLM | NIH | NIH | 240 | P01 | PRELIM | DSR |
| P5.DES.160 |  | Reconcile Comments - 65% Design Package - West Wing Renovations |  | 15d | 2023-11-10 A | 2023-12-04 A | P5.DES.150 | 100% |  |  |  | ARCH | ARCH | 120 | P01 | PRELIM | DES |
| P5.DES.165 |  | Reconcile Comments - Additional Comment Resolution Time - 65% Design Package - West Wing Renovations |  | 7d | 2023-12-05 A | 2024-01-03 A | P5.DES.160 | 100% | 2024-01-04 | 2024-01-12 |  | ARCH | ARCH | 56 | P01 | PRELIM | DES |
| P5.DES.180 |  | Clean-up/Back-Check Pre-Final Submission - 65% Design Package - West Wing Renovation (Interim Submission - Not Needed) |  | 0d | 2024-01-03 A | 2024-01-03 A | P5.DES.165 | 100% | 2024-02-05 | 2024-02-05 |  | ARCH | ARCH | 0 | P01 | PRELIM | DES |
| P5.DES.190 |  | Pre-Final Submission Review & Approve - 65% Design Package - West Wing Renovations (Interim Submission - Not Needed) |  | 0d | 2024-01-03 A | 2024-01-03 A | P5.DES.180, P5.DES.165 SS | 100% | 2024-02-01 | 2024-02-01 |  | NIH | NIH | 0 | P01 | PRELIM | DSR |
| P5.DES.200 |  | 65% Design Package - West Wing RenovationsApproved | milestone | 0d | 2024-01-03 A | 2024-01-03 A | P5.DES.165 FF, P5.DES.190, P5.DSUM.230 FF | 100% |  |  |  | NIH | NIH | 0 | P01 | PRELIM | DSR |

| ID | WBS | Activity | Type | Duration | Start | Finish | Predecessors | Complete | Planned start | Planned finish | Calendar | Temp Orig Dur | Resp / SRLM | PHASE | CATW | SCH DEV | RESP / Trade | *NIH Resp Check* |
| --- | --- | --- | --- | --- | --- | --- | --- | --- | --- | --- | --- | --- | --- | --- | --- | --- | --- | --- |
|  | 3 | **95% Design Package** |  |  | 2023-11-01 | 2024-10-30 |  |  |  |  |  |  |  |  |  |  |  |  |
| P5.DES.210 |  | Develop - 95% Design Package - West Wing Renovations |  | 64d | 2023-11-01 A | 2024-03-22 A | P5.DES.360 | 100% | 2023-11-01 | 2024-02-02 |  | 376 | ARCH | P01 | DES | PRELIM | ARCH |  |
| P5.DES.370 |  | Internal Design QC- 95% Design Package Phase 5 - West Wing Renovations |  | 20d | 2024-03-25 A | 2024-04-19 A | P5.DES.210 | 100% | 2024-04-23 | 2024-05-20 |  | 160 | ARCH | P01 |  | PRELIM | ARCH |  |
| P5.DES.380 |  | Prepare & Submit - 95% Design Package - West Wing Renovations |  | 10d | 2024-04-22 A | 2024-06-21 A | P5.DES.370, P5.DES.200 | 100% | 2024-05-22 | 2024-06-05 |  | 40 | ARCH | P01 |  | PRELIM | ARCH |  |
| P5.DES.220 |  | NIH Review - 95% Design Package - West Wing Renovations (calender days) |  | 30d | 2024-06-22 A | 2024-07-19 A | P5.DES.380 | 100% | 2024-06-22 | 2024-07-21 | 7D / SRLM | 240 | NIH | P01 | DSR | PRELIM | NIH |  |
| P5.DES.230 |  | Reconcile Comments - 95% Design Package - West Wing Renovations |  | 15d | 2024-07-22 A | 2024-08-23 A | P5.DES.220 | 100% | 2024-08-22 | 2024-09-12 |  | 120 | ARCH | P01 | DES | PRELIM | ARCH |  |
| P5.DES.235 |  | Reconcile Comments - Additional Comment Resolution Time - 95% Design Package - West Wing Renovations |  | 33d | 2024-08-26 A | 2024-10-30 A | P5.DES.230 | 100% | 2024-09-03 | 2024-10-17 |  | 56 | ARCH | P01 | DES | PRELIM | ARCH |  |
| P5.DES.260 |  | Pre-Final Submission Review & Approve - 95% Design Package - West Wing Renovations (Interim Submission - Not Needed) |  | 0d | 2024-10-21 A | 2024-10-30 A | P5.DES.250 | 100% | 2024-11-05 | 2024-11-05 |  | 0 | NIH | P01 | DSR | PRELIM | NIH |  |
| P5.DES.240 |  | Conference Review - 95% Design Package - West Wing Renovations (As Needed) |  | 2d | 2024-10-23 A | 2024-10-23 A | P5.DES.230 | 100% | 2024-11-01 | 2024-11-04 |  | 16 | ARCH | P01 | DES | PRELIM | ARCH |  |
| P5.DES.250 |  | Clean-up/Back-Check Pre-Final Submission - 95% Design Package - West Wing Renovations (Interim Submission - Not Needed) |  | 0d | 2024-10-30 A | 2024-10-30 A | P5.DES.235, P5.DES.240 | 100% | 2024-11-20 | 2024-11-20 |  | 0 | ARCH | P01 | DES | PRELIM | ARCH |  |
| P5.DES.270 |  | 95% Design Package - West Wing RenovationsApproved | milestone | 0d | 2024-10-30 A | 2024-10-30 A | P5.DES.250 FF, P5.DES.260, P5.DSUM.240 FF | 100% |  |  |  | 0 | NIH | P01 | DSR | PRELIM | NIH |  |
|  | 4 | **100% IFC Design Package** |  |  | 2024-06-24 | 2025-05-21 |  |  |  |  |  |  |  |  |  |  |  |  |
| P5.DES.280 |  | Develop - 100% IFC Design Package - West Wing Renovations |  | 70d | 2024-06-24 A | 2024-10-31 A | P5.DES.380 | 100% | 2024-06-24 | 2024-10-01 |  | 264 | ARCH | P01 | DES | PRELIM | ARCH |  |
| P5.DES.390 |  | Internal Design QC- 100% IFC Design Package Phase 5 - West Wing Renovations |  | 20d | 2024-11-01 A | 2024-11-22 A | P5.DES.280 | 100% | 2024-12-02 | 2024-12-30 |  | 200 | ARCH | P01 |  | PRELIM | ARCH |  |
| P5.DES.400 |  | Prepare & Submit - 100% IFC Design Package - West Wing Renovations |  | 10d | 2024-11-25 A | 2024-12-16 A | P5.DES.390 | 100% | 2024-12-31 | 2025-01-14 |  | 40 | ARCH | P01 |  | PRELIM | ARCH |  |
| P5.DES.290 |  | NIH Review - 100% IFC Design Package - West Wing Renovations (calender days) |  | 30d | 2024-12-17 A | 2025-01-21 A | P5.DES.400, P5.DES.270 | 100% | 2025-01-17 | 2025-02-15 | 7D / SRLM | 240 | NIH | P01 | DSR | PRELIM | NIH |  |
| P5.DES.300 |  | Reconcile Comments - 100% IFC Design Package - West Wing Renovations |  | 15d | 2025-01-22 A | 2025-02-12 A | P5.DES.290 | 100% | 2025-02-17 | 2025-03-07 |  | 120 | ARCH | P01 | DES | PRELIM | ARCH |  |
| P5.DES.310 |  | Conference Review - 100% IFC Design Package - West Wing Renovations |  | 2d | 2025-02-19 A | 2025-02-19 A | P5.DES.300 | 100% | 2025-02-12 | 2025-02-13 |  | 16 | ARCH | P01 | DES | PRELIM | ARCH |  |
| P5.DES.420 |  | Reconcile Comments - Additional Comment Resolution Time - 100% IFC Design Package - West Wing Renovations |  | 7d | 2025-02-20 A | 2025-02-24 A | P5.DES.300 FF, P5.DES.310 | 100% | 2025-02-14 | 2025-02-24 |  | 56 | ARCH | P01 | DES | PRELIM | ARCH |  |
| P5.DES.320 |  | Clean-up/Back-Check Pre-Final Submission - 100% IFC Design Package - West Wing Renovations |  | 11d | 2025-02-25 A | 2025-03-12 A | P5.DES.420 | 100% | 2025-02-25 | 2025-03-11 |  | 104 | ARCH | P01 | DES | PRELIM | ARCH |  |
| P5.DES.330 |  | Pre-Final Submission Review & Approve - 100% IFC Design Package - West Wing Renovations |  | 10d | 2025-03-13 A | 2025-04-18 A | P5.DES.320 | 100% | 2025-03-12 | 2025-03-25 |  | 88 | NIH | P01 | DSR | PRELIM | NIH |  |
| P5.DES.430 |  | NIH Green Permit Prepare & Issue - 100% IFC Design Package - West Wing Renovations |  | 5d | 2025-04-21 A | 2025-05-21 A | P5.DES.330 | 100% | 2025-04-07 | 2025-04-11 |  | 40 | ARCH | P01 |  |  | ARCH | ! |
| P5.DES.340 |  | 100% IFC Design Package - West Wing Renovations Approved | milestone | 0d | 2025-05-21 A | 2025-05-21 A | P5.DES.430 FF, P5.DSUM.250 FF, P5.DES.330 | 100% |  |  |  | 0 | NIH | P01 | DSR | PRELIM | NIH |  |
|  | 7 | **BIM Modeling & Coordination** |  |  | 2023-03-08 | 2027-06-25 |  |  |  |  |  |  |  |  |  |  |  |  |
| P1.BIM.SUM.100 |  | BIM Modeling - Phase 1 (Summary) | level of effort | 180d | 2023-04-04 A | 2024-01-17 A | P1.BIM.WTR.20.100 SS | 100% | 2023-04-04 | 2023-12-18 |  | 1440 | BIM | P01 |  |  | BIM | ! |
| P2.BIM.SUM.100 |  | BIM Modeling - Phase 2 (Summary) | level of effort | 305d | 2023-07-26 A | 2025-05-01 A | P2.BIM.100 SS | 100% | 2023-10-02 | 2024-12-12 |  | 2440 | BIM | P01 |  |  | BIM | ! |

| ID | WBS | Activity | Type | Duration | Start | Finish | Predecessors | Complete | Planned start | Planned finish | Temp Orig Dur | *NIH Resp Check* | Resp / SRLM | PHASE | RESP / Trade |
| --- | --- | --- | --- | --- | --- | --- | --- | --- | --- | --- | --- | --- | --- | --- | --- |
|  | 1 | **Phase 1 - BIM Modeling & Coordination** |  |  | 2023-03-08 | 2024-01-17 |  |  |  |  |  |  |  |  |  |
| P1.BIM.100 |  | BIM Execution Kick Off - From P1 Milestone 95% Design | milestone | 0d | 2023-03-15 A | 2023-03-15 A | PDS.240, P1.DES.330 | 100% |  |  | 0 | ! | BIM | P01 | BIM |
|  | 4 | **BIM - Early Work Water Main** |  |  | 2023-03-22 | 2023-05-04 |  |  |  |  |  |  |  |  |  |
| P1.BIM.WTR.30.100 |  | BIM / Early Work Water Main - Trade Coordination and Clash Detection |  | 3d | 2023-03-22 A | 2023-05-03 A | P1.BIM.WTR.20.100 | 100% | 2023-03-22 | 2023-03-24 | 24 | ! | BIM | P01 | BIM |
| P1.BIM.WTR.20.100 |  | BIM / Early Work Water Main - Model Development |  | 5d | 2023-04-04 A | 2023-04-10 A | P1.BIM.100 SS | 100% |  |  | 40 | ! | BIM | P01 | BIM |
| P1.BIM.WTR.40.100 |  | BIM / Early Work Water Main - Coordination Sign Off |  | 2d | 2023-05-04 A | 2023-05-04 A | P1.BIM.WTR.30.100 | 100% | 2023-05-04 | 2023-05-05 | 16 | ! | BIM | P01 | BIM |
| P1.BIM.WTR.50.100 |  | BIM / Early Work Water Main - BIM Model Updated and Ready for Field Use |  | 2d | 2023-05-04 A | 2023-05-04 A | P1.BIM.WTR.40.100, P1.BIM.SUM.100 SS | 100% | 2023-05-04 | 2023-05-05 | 16 | ! | BIM | P01 | BIM |
|  | 1 | **BIM - Site Utilities** |  |  | 2023-04-03 | 2023-07-14 |  |  |  |  |  |  |  |  |  |
| P1.BIM.SU.10.100 |  | BIM / Site Utilities - Product Data Approved | milestone | 0d | 2023-04-03 A | 2023-04-03 A | P1.DES.320 | 100% |  |  | 0 | ! | ARCH | P01 | ARCH |
| P1.BIM.SU.20.100 |  | BIM / Site Utilities - Model Development |  | 20d | 2023-04-04 A | 2023-07-03 A | P1.BIM.SU.10.100, P1.BIM.100 SS | 100% | 2023-04-04 | 2023-05-01 | 160 | ! | BIM | P01 | BIM |
| P1.BIM.SU.30.100 |  | BIM / Site Utilities - Trade Coordination and Clash Detection |  | 25d | 2023-05-05 A | 2023-07-10 A | P1.BIM.SU.20.100 | 100% | 2023-05-05 | 2023-06-09 | 200 | ! | BIM | P01 | BIM |
| P1.BIM.SU.40.100 |  | BIM / Site Utilities - Coordination Sign Off |  | 5d | 2023-05-12 A | 2023-07-12 A | P1.BIM.SU.30.100 | 100% | 2023-05-12 | 2023-05-18 | 40 | ! | BIM | P01 | BIM |
| P1.BIM.SU.50.100 |  | BIM / Site Utilities - BIM Model Updated and Ready for Field Use |  | 1d | 2023-07-13 A | 2023-07-14 A | P1.BIM.SU.40.100, P1.BIM.SUM.100 SS | 100% | 2023-07-07 | 2023-07-07 | 8 | ! | BIM | P01 | BIM |
|  | 2 | **BIM - Building UG** |  |  | 2023-03-08 | 2023-12-06 |  |  |  |  |  |  |  |  |  |
| P1.BIM.UG.20.100 |  | BIM / Building UG - Model Development |  | 20d | 2023-03-08 A | 2023-07-24 A | P1.BIM.100 SS | 100% | 2023-09-22 | 2023-10-19 | 160 | ! | BIM | P01 | BIM |
| P1.BIM.UG.30.100 |  | BIM / Building UG - Trade Coordination and Clash Detection |  | 20d | 2023-04-05 A | 2023-11-03 A | P1.BIM.UG.20.100 | 100% | 2023-10-20 | 2023-11-16 | 160 | ! | BIM | P01 | BIM |
| P1.BIM.UG.40.100 |  | BIM / Building UG - Coordination Sign Off |  | 5d | 2023-11-06 A | 2023-11-10 A | P1.BIM.UG.30.100 | 100% | 2023-11-02 | 2023-11-08 | 40 | ! | BIM | P01 | BIM |
| P1.BIM.UG.50.100 |  | BIM / Building UG - BIM Model Updated and Ready for Field Use |  | 5d | 2023-12-06 A | 2023-12-06 A | P1.BIM.UG.40.100 | 100% | 2024-01-02 | 2024-01-08 | 40 | ! | BIM | P01 | BIM |
|  | 3 | **BIM - Utility Tunnel OH** |  |  | 2023-05-03 | 2024-01-17 |  |  |  |  |  |  |  |  |  |
| P1.BIM.UT.20.100 |  | BIM / Utility Tunnel OH - Model Development |  | 20d | 2023-05-03 A | 2023-08-09 A | P1.BIM.UG.30.100 SS | 100% | 2023-11-20 | 2023-12-19 | 160 | ! | BIM | P01 | BIM |
| P1.BIM.UT.30.100 |  | BIM / Utility Tunnel OH - Trade Coordination and Clash Detection |  | 20d | 2023-05-24 A | 2023-11-03 A | P1.BIM.UT.20.100 | 100% | 2023-12-20 | 2024-01-18 | 160 | ! | BIM | P01 | BIM |
| P1.BIM.UT.40.100 |  | BIM / Utility Tunnel OH - Coordination Sign Off |  | 5d | 2023-11-06 A | 2023-11-10 A | P1.BIM.UT.30.100 | 100% | 2023-11-02 | 2023-11-08 | 40 | ! | BIM | P01 | BIM |
| P1.BIM.UT.50.100 |  | BIM / Utility Tunnel OH - BIM Model Updated and Ready for Field Use |  | 5d | 2024-01-03 A | 2024-01-17 A | P1.BIM.SUM.100 FF, P1.BIM.UT.40.100 | 100% | 2024-02-01 | 2024-02-07 | 40 | ! | BIM | P01 | BIM |
|  | 2 | **Phase 2 - BIM Modeling & Coordination** |  |  | 2023-07-12 | 2025-08-12 |  |  |  |  |  |  |  |  |  |
| P2.BIM.100 |  | P2 Milestone From 95% Design to Kick Off BIM Execution | milestone | 0d | 2023-07-26 A | 2023-07-26 A | PDS.240, P2C.DES.225 | 100% | 2023-10-02 | 2023-10-02 | 0 | ! | BIM | P01 | BIM |

| ID | WBS | Activity | Duration | Start | Finish | Predecessors | Complete | Planned start | Planned finish | Temp Orig Dur | *NIH Resp Check* | Resp / SRLM | PHASE | RESP / Trade |
| --- | --- | --- | --- | --- | --- | --- | --- | --- | --- | --- | --- | --- | --- | --- |
|  | 4 | **BIM Structural Penetrations Coordination** |  | 2023-07-12 | 2025-02-17 |  |  |  |  |  |  |  |  |  |
|  | 3 | **BIM - MEP Risers Slab Penetrations** |  | 2023-07-12 | 2023-11-17 |  |  |  |  |  |  |  |  |  |
| P2.BIM.MEPR.20.100 |  | BIM / MEP Risers - Model Development | 15d | 2023-07-12 A | 2023-08-11 A | P2.BIM.100 SS | 100% | 2023-10-02 | 2023-10-20 | 160 | ! | BIM | P01 | BIM |
| P2.BIM.MEPR.30.100 |  | BIM / MEP Risers - Trade Coordination and Clash Detection | 15d | 2023-08-14 A | 2023-11-10 A | P2.BIM.MEPR.20.100 | 100% | 2023-10-30 | 2023-11-17 | 160 | ! | BIM | P01 | BIM |
| P2.BIM.MEPR.40.100 |  | BIM / MEP Risers - Coordination Sign Off | 5d | 2023-11-13 A | 2023-11-17 A | P2.BIM.MEPR.30.100 | 100% |  |  | 40 | ! | BIM | P01 | BIM |
|  | 1 | **BIM - B3 Slab Penetrations** |  | 2023-08-02 | 2024-03-22 |  |  |  |  |  |  |  |  |  |
| P2.BIM.B3.20.100 |  | BIM / B3 - Model Development | 15d | 2023-08-02 A | 2023-08-11 A | P2.BIM.MEPR.20.100 SS+15d | 100% | 2023-10-23 | 2023-11-10 | 80 | ! | BIM | P01 | BIM |
| P2.BIM.B3.30.100 |  | BIM / B3 - Trade Coordination and Clash Detection | 15d | 2023-08-14 A | 2023-11-10 A | P2.BIM.B3.20.100 | 100% | 2023-11-06 | 2023-11-28 | 80 | ! | BIM | P01 | BIM |
| P2.BIM.B3.40.100 |  | BIM / B3 - Coordination Sign Off | 5d | 2023-11-13 A | 2024-01-24 A | P2.BIM.B3.30.100 | 100% | 2023-11-13 | 2023-11-17 | 40 | ! | BIM | P01 | BIM |
| P2.BIM.B3.40.120 |  | BIM / B3 - Prep, Submit, Review, and Approve Shop Drawings | 35d | 2024-01-29 A | 2024-03-22 A | P2.BIM.B3.40.100, P2.BIM.B3.30.100 | 100% | 2023-11-13 | 2024-01-04 | 40 | ! | BIM | P01 | BIM |
|  | 2 | **BIM - B2 Slab Penetrations** |  | 2023-09-20 | 2024-02-09 |  |  |  |  |  |  |  |  |  |
| P2.BIM.B2.20.100 |  | BIM / B2 - Model Development | 15d | 2023-09-20 A | 2023-11-13 A | P2.BIM.B3.20.100 | 100% | 2023-11-06 | 2023-11-28 | 160 | ! | BIM | P01 | BIM |
| P2.BIM.B2.30.100 |  | BIM / B2 - Trade Coordination and Clash Detection | 15d | 2023-11-14 A | 2023-12-05 A | P2.BIM.B2.20.100 | 100% | 2023-11-14 | 2023-12-06 | 160 | ! | BIM | P01 | BIM |
| P2.BIM.B2.40.100 |  | BIM / B2 - Coordination Sign Off | 5d | 2023-12-06 A | 2024-01-24 A | P2.BIM.B2.30.100 | 100% | 2024-05-30 | 2024-06-05 | 40 | ! | BIM | P01 | BIM |
| P2.BIM.B2.40.120 |  | BIM / B2 - Prep, Submit, Review, and Approve Shop Drawings | 35d | 2024-01-29 A | 2024-02-09 A | P2.BIM.B2.40.100, P2.BIM.B2.30.100 | 100% | 2024-05-30 | 2024-07-18 | 40 | ! | BIM | P01 | BIM |
|  | 5 | **BIM - L1 Slab Penetrations** |  | 2023-10-25 | 2024-05-14 |  |  |  |  |  |  |  |  |  |
| P2.BIM.L1.20.100 |  | BIM / L1 - Model Development | 15d | 2023-10-25 A | 2023-11-15 A | P2.BIM.B2.20.100 | 100% | 2024-02-09 | 2024-02-29 | 160 | ! | BIM | P01 | BIM |
| P2.BIM.L1.30.100 |  | BIM / L1 - Trade Coordination and Clash Detection | 15d | 2023-11-27 A | 2024-04-05 A | P2.BIM.L1.20.100 | 100% | 2024-02-23 | 2024-03-14 | 160 | ! | BIM | P01 | BIM |
| P2.BIM.L1.40.100 |  | BIM / L1 - Coordination Sign Off | 5d | 2024-04-08 A | 2024-05-14 A | P2.BIM.L1.30.100 | 100% | 2024-05-30 | 2024-06-05 | 40 | ! | BIM | P01 | BIM |
| P2.BIM.L1.40.120 |  | BIM / L1 - Prep, Submit, Review, and Approve Shop Drawings | 35d | 2024-04-15 A | 2024-04-29 A | P2.BIM.L1.40.100 SS | 100% | 2024-05-08 | 2024-06-26 | 40 | ! | BIM | P01 | BIM |
|  | 7 | **BIM - L2 Slab Penetrations** |  | 2024-01-08 | 2024-07-24 |  |  |  |  |  |  |  |  |  |
| P2.BIM.L2.20.100 |  | BIM / L2 - Model Development | 15d | 2024-01-08 A | 2024-01-19 A | P2.BIM.L1.20.100 | 100% | 2024-03-01 | 2024-03-21 | 160 | ! | BIM | P01 | BIM |
| P2.BIM.L2.30.100 |  | BIM / L2 - Trade Coordination and Clash Detection | 15d | 2024-01-22 A | 2024-05-03 A | P2.BIM.L2.20.100 | 100% | 2024-03-15 | 2024-04-04 | 160 | ! | BIM | P01 | BIM |
| P2.BIM.L2.40.100 |  | BIM / L2 - Coordination Sign Off | 5d | 2024-05-06 A | 2024-05-29 A | P2.BIM.L2.30.100 | 100% | 2024-06-06 | 2024-06-12 | 40 | ! | BIM | P01 | BIM |
| P2.BIM.L2.40.120 |  | BIM / L2 - Prep, Submit, Review, and Approve Shop Drawings | 35d | 2024-05-13 A | 2024-07-24 A | P2.BIM.L2.40.100, P2.BIM.L2.30.100 | 100% | 2024-06-13 | 2024-08-01 | 40 | ! | BIM | P01 | BIM |

| ID | WBS | Activity | Duration | Start | Finish | Predecessors | Complete | Planned start | Planned finish | Temp Orig Dur | *NIH Resp Check* | Resp / SRLM | PHASE | RESP / Trade |
| --- | --- | --- | --- | --- | --- | --- | --- | --- | --- | --- | --- | --- | --- | --- |
|  | 11 | **BIM - L3 Slab Penetrations** |  | 2024-02-05 | 2024-08-16 |  |  |  |  |  |  |  |  |  |
| P2.BIM.L3.20.100 |  | BIM / L3 - Model Development | 15d | 2024-02-05 A | 2024-05-03 A | P2.BIM.L2.20.100 | 100% | 2024-05-01 | 2024-05-21 | 160 | ! | BIM | P01 | BIM |
| P2.BIM.L3.30.100 |  | BIM / L3 - Trade Coordination and Clash Detection | 15d | 2024-05-06 A | 2024-05-26 A | P2.BIM.L3.20.100 | 100% | 2024-06-06 | 2024-06-26 | 160 | ! | BIM | P01 | BIM |
| P2.BIM.L3.40.100 |  | BIM / L3 - Coordination Sign Off | 5d | 2024-05-31 A | 2024-06-05 A | P2.BIM.L3.30.100 | 100% | 2024-06-27 | 2024-07-03 | 40 | ! | BIM | P01 | BIM |
| P2.BIM.L3.40.120 |  | BIM / L3 - Prep, Submit, Review, and Approve Shop Drawings | 35d | 2024-06-11 A | 2024-08-16 A | P2.BIM.L3.40.100, P2.BIM.L3.30.100 | 100% | 2024-06-06 | 2024-07-25 | 40 | ! | BIM | P01 | BIM |
|  | 12 | **BIM - L4 Slab Penetrations** |  | 2024-05-06 | 2024-09-16 |  |  |  |  |  |  |  |  |  |
| P2.BIM.L4.20.100 |  | BIM / L4 - Model Development | 15d | 2024-05-06 A | 2024-05-24 A | P2.BIM.L3.20.100 | 100% | 2024-06-03 | 2024-06-21 | 120 | ! | BIM | P01 | BIM |
| P2.BIM.L4.30.100 |  | BIM / L4 - Trade Coordination and Clash Detection | 15d | 2024-05-28 A | 2024-05-28 A | P2.BIM.L4.20.100 | 100% | 2024-06-24 | 2024-07-15 | 160 | ! | BIM | P01 | BIM |
| P2.BIM.L4.40.100 |  | BIM / L4 - Coordination Sign Off | 5d | 2024-06-19 A | 2024-06-21 A | P2.BIM.L4.30.100 | 100% | 2024-06-03 | 2024-06-07 | 40 | ! | BIM | P01 | BIM |
| P2.BIM.L4.40.120 |  | BIM / L4 - Prep, Submit, Review, and Approve Shop Drawings | 35d | 2024-06-21 A | 2024-09-16 A | P2.BIM.L4.40.100, P2.BIM.L4.30.100 | 100% | 2024-06-10 | 2024-07-29 | 40 | ! | BIM | P01 | BIM |
|  | 13 | **BIM - L5 Slab Penetrations** |  | 2024-05-28 | 2024-11-01 |  |  |  |  |  |  |  |  |  |
| P2.BIM.L5.20.100 |  | BIM / L5 - Model Development | 15d | 2024-05-28 A | 2024-06-14 A | P2.BIM.L4.20.100 | 100% | 2024-06-24 | 2024-07-15 | 160 | ! | BIM | P01 | BIM |
| P2.BIM.L5.30.100 |  | BIM / L5 - Trade Coordination and Clash Detection | 15d | 2024-06-17 A | 2024-07-05 A | P2.BIM.L5.20.100 | 100% | 2024-06-17 | 2024-07-08 | 160 | ! | BIM | P01 | BIM |
| P2.BIM.L5.40.100 |  | BIM / L5 - Coordination Sign Off | 5d | 2024-07-08 A | 2024-07-12 A | P2.BIM.L5.30.100 | 100% | 2024-09-05 | 2024-09-11 | 40 | ! | BIM | P01 | BIM |
| P2.BIM.L5.40.120 |  | BIM / L5 - Prep, Submit, Review, and Approve Shop Drawings | 35d | 2024-07-15 A | 2024-11-01 A | P2.BIM.L5.40.100, P2.BIM.L5.30.100 | 100% | 2024-09-03 | 2024-10-21 | 40 | ! | BIM | P01 | BIM |
|  | 14 | **BIM - L6 Slab Penetrations** |  | 2024-06-17 | 2024-11-26 |  |  |  |  |  |  |  |  |  |
| P2.BIM.L6.20.100 |  | BIM / L6 - Model Development | 15d | 2024-06-17 A | 2024-07-26 A | P2.BIM.L5.20.100 | 100% | 2024-06-03 | 2024-06-21 | 160 | ! | BIM | P01 | BIM |
| P2.BIM.L6.30.100 |  | BIM / L6 - Trade Coordination and Clash Detection | 10d | 2024-07-08 A | 2024-08-16 A | P2.BIM.L6.20.100 | 100% | 2024-09-12 | 2024-09-25 | 160 | ! | BIM | P01 | BIM |
| P2.BIM.L6.40.100 |  | BIM / L6 - Coordination Sign Off | 5d | 2024-08-23 A | 2024-08-23 A | P2.BIM.L6.30.100 | 100% | 2024-09-26 | 2024-10-02 | 40 | ! | BIM | P01 | BIM |
| P2.BIM.L6.40.120 |  | BIM / L6 - Prep, Submit, Review, and Approve Shop Drawings | 35d | 2024-09-25 A | 2024-11-26 A | P2.BIM.L6.40.100, P2.BIM.L6.30.100 | 100% | 2024-10-01 | 2024-11-18 | 40 | ! | BIM | P01 | BIM |
|  | 15 | **BIM - L7 Slab Penetrations** |  | 2024-07-12 | 2024-12-06 |  |  |  |  |  |  |  |  |  |
| P2.BIM.L7.20.100 |  | BIM / L7 - Model Development | 15d | 2024-07-12 A | 2024-07-26 A | P2.BIM.L6.20.100 SS | 100% | 2024-08-15 | 2024-09-05 | 160 | ! | BIM | P01 | BIM |
| P2.BIM.L7.30.100 |  | BIM / L7 - Trade Coordination and Clash Detection | 15d | 2024-07-29 A | 2024-08-16 A | P2.BIM.L7.20.100 | 100% | 2024-09-24 | 2024-10-14 | 160 | ! | BIM | P01 | BIM |
| P2.BIM.L7.40.100 |  | BIM / L7 - Coordination Sign Off | 5d | 2024-08-23 A | 2024-08-23 A | P2.BIM.L7.30.100 | 100% | 2024-10-15 | 2024-10-21 | 40 | ! | BIM | P01 | BIM |
| P2.BIM.L7.40.120 |  | BIM / L7 - Prep, Submit, Review, and Approve Shop Drawings | 20d | 2024-10-01 A | 2024-12-06 A | P2.BIM.L7.40.100, P2.BIM.L7.30.100 | 100% | 2024-11-01 | 2024-12-02 | 40 | ! | BIM | P01 | BIM |

| ID | WBS | Activity | Duration | Start | Finish | Predecessors | Complete | Planned start | Planned finish | Temp Orig Dur | *NIH Resp Check* | Resp / SRLM | PHASE | RESP / Trade |
| --- | --- | --- | --- | --- | --- | --- | --- | --- | --- | --- | --- | --- | --- | --- |
|  | 16 | **BIM - L8 Slab Penetrations** |  | 2024-07-29 | 2025-01-30 |  |  |  |  |  |  |  |  |  |
| P2.BIM.L8.20.100 |  | BIM / L8 - Model Development | 15d | 2024-07-29 A | 2024-08-16 A | P2.BIM.L7.20.100 | 100% | 2024-09-24 | 2024-10-14 | 160 | ! | BIM | P01 | BIM |
| P2.BIM.L8.30.100 |  | BIM / L8 - Trade Coordination and Clash Detection | 5d | 2024-10-23 A | 2024-10-29 A | P2.BIM.L8.20.100 | 100% | 2024-11-01 | 2024-11-07 | 160 | ! | BIM | P01 | BIM |
| P2.BIM.L8.40.100 |  | BIM / L8 - Coordination Sign Off | 5d | 2024-10-30 A | 2024-10-31 A | P2.BIM.L8.30.100 | 100% | 2024-11-08 | 2024-11-14 | 40 | ! | BIM | P01 | BIM |
| P2.BIM.L8.40.120 |  | BIM / L8 - Prep, Submit, Review, and Approve Shop Drawings | 20d | 2024-11-15 A | 2025-01-30 A | P2.BIM.L8.40.100, P2.BIM.L8.30.100 | 100% | 2024-12-02 | 2024-12-30 | 40 | ! | BIM | P01 | BIM |
|  | 17 | **BIM - Main Roof / Penthouse Slab Penetrations** |  | 2024-10-16 | 2025-02-06 |  |  |  |  |  |  |  |  |  |
| P2.BIM.MRPH.20.100 |  | BIM / Main Roof / Penthouse - Model Development | 5d | 2024-10-16 A | 2024-11-29 A | P2.BIM.L8.20.100 | 100% | 2024-12-02 | 2024-12-06 | 160 | ! | BIM | P01 | BIM |
| P2.BIM.MRPH.30.100 |  | BIM / Main Roof / Penthouse - Trade Coordination and Clash Detection | 5d | 2024-12-02 A | 2024-12-18 A | P2.BIM.MRPH.20.100 | 100% | 2025-01-02 | 2025-01-08 | 160 | ! | BIM | P01 | BIM |
| P2.BIM.MRPH.40.100 |  | BIM / Main Roof / Penthouse - Coordination Sign Off | 5d | 2024-12-18 A | 2024-12-21 A | P2.BIM.MRPH.30.100 | 100% | 2025-01-09 | 2025-01-15 | 40 | ! | BIM | P01 | BIM |
| P2.BIM.MRPH.40.120 |  | BIM / Main Roof / Prep, Submit, Review, and Approve Shop Drawings | 20d | 2024-12-30 A | 2025-02-06 A | P2.BIM.MRPH.30.100, P2.BIM.MRPH.40.100 | 100% | 2025-01-02 | 2025-01-29 | 40 | ! | BIM | P01 | BIM |
|  | 18 | **BIM - Penthouse Roof Slab Penetrations** |  | 2024-11-27 | 2025-02-17 |  |  |  |  |  |  |  |  |  |
| P2.BIM.PHR.20.100 |  | BIM / Penthouse Roof - Model Development | 5d | 2024-11-27 A | 2025-01-22 A | P2.BIM.MRPH.20.100 SS+10d | 100% | 2024-12-02 | 2024-12-06 | 160 | ! | BIM | P01 | BIM |
| P2.BIM.PHR.30.100 |  | BIM / Penthouse Roof - Trade Coordination and Clash Detection | 5d | 2025-01-22 A | 2025-02-03 A | P2.BIM.PHR.20.100 | 100% | 2025-02-10 | 2025-02-14 | 160 | ! | BIM | P01 | BIM |
| P2.BIM.PHR.40.100 |  | BIM / Penthouse Roof - Coordination Sign Off | 5d | 2025-02-04 A | 2025-02-07 A | P2.BIM.PHR.30.100 | 100% | 2025-03-04 | 2025-03-10 | 40 | ! | BIM | P01 | BIM |
| P2.BIM.PHR.40.110 |  | BIM / Penthouse Roof - Prep, Submit, Review, and Approve Shop Drawings | 20d | 2025-02-10 A | 2025-02-17 A | P2.BIM.PHR.30.100 SS, P2.BIM.PHR.40.100 SS | 100% | 2025-03-04 | 2025-03-31 | 40 | ! | BIM | P01 | BIM |
|  | 1 | **BIM OH & In-Wall Coordination** |  | 2023-07-12 | 2025-08-12 |  |  |  |  |  |  |  |  |  |
|  | 1 | **BIM - B3** |  | 2023-08-02 | 2024-06-24 |  |  |  |  |  |  |  |  |  |
| P2.BIM.B3.20.110 |  | BIM / B3 - Model Development | 25d | 2023-08-02 A | 2023-08-11 A | PCO.DES.114 FF | 100% | 2023-10-23 | 2023-11-28 | 80 | ! | BIM | P01 | BIM |
| P2.BIM.B3.30.110 |  | BIM / B3 - Trade Coordination and Clash Detection | 25d | 2023-08-14 A | 2023-11-10 A | P2.BIM.B3.20.110 | 100% | 2023-11-06 | 2023-12-12 | 80 | ! | BIM | P01 | BIM |
| P2.BIM.B3.40.110 |  | BIM / B3 - Coordination Sign Off | 5d | 2023-11-13 A | 2023-11-17 A | P2.BIM.B3.30.110 | 100% |  |  | 40 | ! | BIM | P01 | BIM |
| P2.BIM.B3.40.130 |  | BIM / B3 - Prep, Submit, Review, and Approve Shop Drawings | 35d | 2024-01-29 A | 2024-03-22 A | P2.BIM.B3.40.110 | 100% | 2024-05-01 | 2024-06-19 | 40 | ! | BIM | P01 | BIM |
| P2.BIM.B3.40.140 |  | BIM / B3 - Fab & Deliver MEP | 30d | 2024-03-25 A | 2024-06-24 A | P2.BIM.B3.40.130 | 100% | 2024-06-20 | 2024-08-01 | 40 | ! | BIM | P01 | BIM |
|  | 3 | **BIM - MEP Risers** |  | 2023-07-12 | 2023-11-17 |  |  |  |  |  |  |  |  |  |
| P2.BIM.MEPR.20.110 |  | BIM / MEP Risers - Model Development | 20d | 2023-07-12 A | 2023-08-11 A | P2C.DES.215 FF | 100% | 2024-05-01 | 2024-05-29 | 160 | ! | BIM | P01 | BIM |
| P2.BIM.MEPR.30.110 |  | BIM / MEP Risers - Trade Coordination and Clash Detection | 20d | 2023-08-14 A | 2023-11-10 A | P2.BIM.MEPR.20.110 | 100% | 2024-05-30 | 2024-06-26 | 160 | ! | BIM | P01 | BIM |
| P2.BIM.MEPR.40.110 |  | BIM / MEP Risers - Coordination Sign Off | 5d | 2023-11-13 A | 2023-11-17 A | P2.BIM.MEPR.30.110 | 100% | 2024-06-27 | 2024-07-03 | 40 | ! | BIM | P01 | BIM |

| ID | WBS | Activity | Duration | Start | Finish | Predecessors | Complete | Planned start | Planned finish | Temp Orig Dur | *NIH Resp Check* | Resp / SRLM | PHASE | RESP / Trade |
| --- | --- | --- | --- | --- | --- | --- | --- | --- | --- | --- | --- | --- | --- | --- |
|  | 2 | **BIM - B2** |  | 2023-10-25 | 2024-10-01 |  |  |  |  |  |  |  |  |  |
| P2.BIM.B2.20.110 |  | BIM / B2 - Model Development | 25d | 2023-10-25 A | 2023-11-15 A | P2.BIM.B3.20.110 | 100% | 2024-04-22 | 2024-05-24 | 160 | ! | BIM | P01 | BIM |
| P2.BIM.B2.30.110 |  | BIM / B2 - Trade Coordination and Clash Detection | 25d | 2023-11-16 A | 2024-05-24 A | P2.BIM.B2.20.110 | 100% | 2024-05-28 | 2024-07-01 | 160 | ! | BIM | P01 | BIM |
| P2.BIM.B2.40.130 |  | BIM / B2 - Prep, Submit, Review, and Approve Shop Drawings | 35d | 2024-05-06 A | 2024-10-01 A | P2.BIM.B2.40.110 | 100% | 2024-06-03 | 2024-07-22 | 40 | ! | BIM | P01 | BIM |
| P2.BIM.B2.40.110 |  | BIM / B2 - Coordination Sign Off | 5d | 2024-05-24 A | 2024-05-29 A | P2.BIM.B2.30.110 | 100% | 2024-06-27 | 2024-07-03 | 40 | ! | BIM | P01 | BIM |
| P2.BIM.B2.40.140 |  | BIM / B2 - Fab & Deliver MEP | 30d | 2024-08-01 A | 2024-10-01 A | P2.BIM.B2.40.130 FF | 100% | 2024-11-01 | 2024-12-16 | 40 | ! | BIM | P01 | BIM |
|  | 5 | **BIM - L1** |  | 2024-01-22 | 2024-12-16 |  |  |  |  |  |  |  |  |  |
| P2.BIM.L1.20.110 |  | BIM / L1 - Model Development | 20d | 2024-01-22 A | 2024-05-31 A | P2.BIM.B2.20.110 | 100% | 2024-05-28 | 2024-06-24 | 160 | ! | BIM | P01 | BIM |
| P2.BIM.L1.30.110 |  | BIM / L1 - Trade Coordination and Clash Detection | 5d | 2024-05-06 A | 2024-05-31 A | P2.BIM.L1.20.110 | 100% | 2024-06-03 | 2024-06-07 | 160 | ! | BIM | P01 | BIM |
| P2.BIM.L1.40.110 |  | BIM / L1 - Coordination Sign Off | 5d | 2024-06-03 A | 2024-06-07 A | P2.BIM.L1.30.110 | 100% | 2024-06-10 | 2024-06-14 | 40 | ! | BIM | P01 | BIM |
| P2.BIM.L1.40.130 |  | BIM / L1 - Prep, Submit, Review, and Approve Shop Drawings | 35d | 2024-06-10 A | 2024-11-15 A | P2.BIM.L1.40.110 | 100% | 2024-06-17 | 2024-08-05 | 40 | ! | BIM | P01 | BIM |
| P2.BIM.L1.40.140 |  | BIM / L1 - Fab & Deliver MEP | 30d | 2024-12-02 A | 2024-12-16 A | P2.BIM.L1.40.130 FF | 100% | 2025-01-02 | 2025-02-12 | 40 | ! | BIM | P01 | BIM |
|  | 7 | **BIM - L2** |  | 2024-04-29 | 2024-12-31 |  |  |  |  |  |  |  |  |  |
| P2.BIM.L2.20.110 |  | BIM / L2 - Model Development | 20d | 2024-04-29 A | 2024-05-24 A | P2.BIM.L1.20.110 FF | 100% | 2024-06-25 | 2024-07-23 | 160 | ! | BIM | P01 | BIM |
| P2.BIM.L2.30.110 |  | BIM / L2 - Trade Coordination and Clash Detection | 20d | 2024-05-27 A | 2024-06-21 A | P2.BIM.L2.20.110 | 100% | 2024-06-27 | 2024-07-25 | 160 | ! | BIM | P01 | BIM |
| P2.BIM.L2.40.110 |  | BIM / L2 - Coordination Sign Off | 5d | 2024-06-24 A | 2024-06-28 A | P2.BIM.L2.30.110 | 100% |  |  | 40 | ! | BIM | P01 | BIM |
| P2.BIM.L2.40.130 |  | BIM / L2 - Prep, Submit, Review, and Approve Shop Drawings | 35d | 2024-07-01 A | 2024-11-22 A | P2.BIM.L2.40.110 | 100% | 2024-09-03 | 2024-10-21 | 40 | ! | BIM | P01 | BIM |
| P2.BIM.L2.40.140 |  | BIM / L2 - Fab & Deliver MEP | 30d | 2024-12-02 A | 2024-12-31 A | P2.BIM.L2.40.130 FF | 100% | 2025-01-02 | 2025-02-12 | 40 | ! | BIM | P01 | BIM |
|  | 11 | **BIM - L3** |  | 2024-05-03 | 2025-01-31 |  |  |  |  |  |  |  |  |  |
| P2.BIM.L3.20.110 |  | BIM / L3 - Model Development | 20d | 2024-05-03 A | 2024-06-07 A | P2.BIM.L2.20.110 SS+10d | 100% | 2024-06-03 | 2024-06-28 | 160 | ! | BIM | P01 | BIM |
| P2.BIM.L3.30.110 |  | BIM / L3 - Trade Coordination and Clash Detection | 20d | 2024-06-12 A | 2024-07-03 A | P2.BIM.L3.20.110 | 100% | 2024-08-01 | 2024-08-28 | 160 | ! | BIM | P01 | BIM |
| P2.BIM.L3.40.110 |  | BIM / L3 - Coordination Sign Off | 5d | 2024-07-15 A | 2024-07-22 A | P2.BIM.L3.30.110 | 100% | 2024-08-29 | 2024-09-05 | 40 | ! | BIM | P01 | BIM |
| P2.BIM.L3.40.130 |  | BIM / L3 - Prep, Submit, Review, and Approve Shop Drawings | 35d | 2024-07-23 A | 2024-11-29 A | P2.BIM.L3.40.110 | 100% | 2024-10-01 | 2024-11-18 | 40 | ! | BIM | P01 | BIM |
| P2.BIM.L3.40.140 |  | BIM / L3 - Fab & Deliver MEP | 30d | 2025-01-02 A | 2025-01-31 A | P2.BIM.L3.40.130 FF | 100% | 2025-02-03 | 2025-03-14 | 40 | ! | BIM | P01 | BIM |

| ID | WBS | Activity | Duration | Start | Finish | Predecessors | Complete | Planned start | Planned finish | Temp Orig Dur | *NIH Resp Check* | Resp / SRLM | PHASE | RESP / Trade |
| --- | --- | --- | --- | --- | --- | --- | --- | --- | --- | --- | --- | --- | --- | --- |
|  | 12 | **BIM - L4** |  | 2024-06-12 | 2025-02-20 |  |  |  |  |  |  |  |  |  |
| P2.BIM.L4.20.110 |  | BIM / L4 - Model Development | 20d | 2024-06-12 A | 2024-07-03 A | P2.BIM.L3.20.110 | 100% | 2024-08-01 | 2024-08-28 | 120 | ! | BIM | P01 | BIM |
| P2.BIM.L4.30.110 |  | BIM / L4 - Trade Coordination and Clash Detection | 20d | 2024-07-10 A | 2024-08-16 A | P2.BIM.L4.20.110 | 100% | 2024-08-29 | 2024-09-26 | 160 | ! | BIM | P01 | BIM |
| P2.BIM.L4.40.110 |  | BIM / L4 - Coordination Sign Off | 5d | 2024-08-23 A | 2024-08-23 A | P2.BIM.L4.30.110 | 100% | 2024-09-17 | 2024-09-23 | 40 | ! | BIM | P01 | BIM |
| P2.BIM.L4.40.130 |  | BIM / L4 - Prep, Submit, Review, and Approve Shop Drawings | 35d | 2024-08-26 A | 2024-12-02 A | P2.BIM.L4.40.110 | 100% | 2024-10-01 | 2024-11-18 | 40 | ! | BIM | P01 | BIM |
| P2.BIM.L4.40.140 |  | BIM / L4 - Fab & Deliver MEP | 30d | 2025-01-02 A | 2025-02-20 A | P2.BIM.L4.40.130 FF | 100% | 2025-02-03 | 2025-03-14 | 40 | ! | BIM | P01 | BIM |
|  | 13 | **BIM - L5** |  | 2024-07-01 | 2025-04-11 |  |  |  |  |  |  |  |  |  |
| P2.BIM.L5.20.110 |  | BIM / L5 - Model Development | 20d | 2024-07-01 A | 2024-08-05 A | P2.BIM.L4.20.110 SS+15d | 100% | 2024-08-01 | 2024-08-28 | 160 | ! | BIM | P01 | BIM |
| P2.BIM.L5.30.110 |  | BIM / L5 - Trade Coordination and Clash Detection | 15d | 2024-08-06 A | 2024-10-23 A | P2.BIM.L5.20.110 | 100% | 2024-10-02 | 2024-10-22 | 160 | ! | BIM | P01 | BIM |
| P2.BIM.L5.40.130 |  | BIM / L5 - Prep, Submit, Review, and Approve Shop Drawings | 35d | 2024-10-24 A | 2024-12-16 A | P2.BIM.L5.40.110 SS | 100% | 2024-11-25 | 2025-01-16 | 40 | ! | BIM | P01 | BIM |
| P2.BIM.L5.40.110 |  | BIM / L5 - Coordination Sign Off | 5d | 2024-10-30 A | 2024-11-25 A | P2.BIM.L5.30.110 | 100% | 2024-11-18 | 2024-11-22 | 40 | ! | BIM | P01 | BIM |
| P2.BIM.L5.40.140 |  | BIM / L5 - Fab & Deliver MEP | 30d | 2025-03-03 A | 2025-04-11 A | P2.BIM.L5.40.130 FF | 100% |  |  | 40 | ! | BIM | P01 | BIM |
|  | 14 | **BIM - L6** |  | 2024-07-22 | 2025-04-11 |  |  |  |  |  |  |  |  |  |
| P2.BIM.L6.20.110 |  | BIM / L6 - Model Development | 20d | 2024-07-22 A | 2024-08-16 A | P2.BIM.L5.20.110 SS+15d | 100% | 2024-09-03 | 2024-09-30 | 160 | ! | BIM | P01 | BIM |
| P2.BIM.L6.30.110 |  | BIM / L6 - Trade Coordination and Clash Detection | 15d | 2024-10-23 A | 2024-11-08 A | P2.BIM.L6.20.110 | 100% | 2024-11-01 | 2024-11-21 | 160 | ! | BIM | P01 | BIM |
| P2.BIM.L6.40.110 |  | BIM / L6 - Coordination Sign Off | 5d | 2024-11-11 A | 2024-11-15 A | P2.BIM.L6.30.110 | 100% | 2024-12-10 | 2024-12-16 | 40 | ! | BIM | P01 | BIM |
| P2.BIM.L6.40.130 |  | BIM / L6 - Prep, Submit, Review, and Approve Shop Drawings | 35d | 2024-12-16 A | 2025-02-24 A | P2.BIM.L6.40.110 | 100% | 2025-01-02 | 2025-02-19 | 40 | ! | BIM | P01 | BIM |
| P2.BIM.L6.40.140 |  | BIM / L6 - Fab & Deliver MEP | 30d | 2025-03-03 A | 2025-04-11 A | P2.BIM.L6.40.130 FF | 100% |  |  | 40 | ! | BIM | P01 | BIM |
|  | 15 | **BIM - L7** |  | 2024-09-25 | 2025-05-23 |  |  |  |  |  |  |  |  |  |
| P2.BIM.L7.20.110 |  | BIM / L7 - Model Development | 15d | 2024-09-25 A | 2024-10-16 A | P2.BIM.L6.20.110 SS | 100% | 2024-10-23 | 2024-11-12 | 160 | ! | BIM | P01 | BIM |
| P2.BIM.L7.30.110 |  | BIM / L7 - Trade Coordination and Clash Detection | 12d | 2024-10-21 A | 2024-11-29 A | P2.BIM.L7.20.110 | 100% | 2024-12-02 | 2024-12-17 | 160 | ! | BIM | P01 | BIM |
| P2.BIM.L7.40.110 |  | BIM / L7 - Coordination Sign Off | 5d | 2024-11-08 A | 2024-11-22 A | P2.BIM.L7.30.110 | 100% | 2025-01-02 | 2025-01-08 | 40 | ! | BIM | P01 | BIM |
| P2.BIM.L7.40.140 |  | BIM / L7 - Fab & Deliver MEP | 30d | 2025-03-10 A | 2025-04-18 A | P2.BIM.L7.40.130 FF | 100% |  |  | 40 | ! | BIM | P01 | BIM |
| P2.BIM.L7.40.130 |  | BIM / L7 - Prep, Submit, Review, and Approve Shop Drawings | 35d | 2025-04-17 A | 2025-05-23 A | P2.BIM.L7.40.110 | 100% | 2025-03-03 | 2025-04-18 | 40 | ! | BIM | P01 | BIM |

| ID | WBS | Activity | Duration | Start | Finish | Predecessors | Complete | Planned start | Planned finish | Total float | Free float | Temp Orig Dur | *NIH Resp Check* | Resp / SRLM | PHASE | RESP / Trade | 744 | RESP UPD |
| --- | --- | --- | --- | --- | --- | --- | --- | --- | --- | --- | --- | --- | --- | --- | --- | --- | --- | --- |
|  | 16 | **BIM - L8** |  | 2024-10-16 | 2025-08-12 |  |  |  |  |  |  |  |  |  |  |  |  |  |
| P2.BIM.L8.20.110 |  | BIM / L8 - Model Development | 20d | 2024-10-16 A | 2024-11-20 A | P2.BIM.L7.20.110 FF | 100% | 2024-11-01 | 2024-12-02 |  |  | 160 | ! | BIM | P01 | BIM |  |  |
| P2.BIM.L8.40.130 |  | BIM / L8 - Prep, Submit, Review, and Approve Shop Drawings | 35d | 2025-03-20 A | 2025-08-12 A | P2.BIM.L6.40.130 | 100% | 2025-03-20 | 2025-05-07 |  |  | 40 | ! | BIM | P01 | BIM | AC | JB |
| P2.BIM.L8.40.140 |  | BIM / L8 - Fab & Deliver MEP | 30d | 2025-03-27 A | 2025-07-31 A | P2.BIM.L8.40.130 FF, P2.BIM.L8.40.130 SS | 100% | 2025-03-27 | 2025-05-07 |  |  | 40 | ! | BIM | P01 | BIM | JWHIT |  |
| P2.BIM.L8.40.150 |  | BIM / L8 - Preliminary Sign Off | 1d | 2025-04-01 A | 2025-04-01 A | P2.BIM.L8.30.110 SS+65d | 100% |  |  |  |  | 40 | ! | BIM | P01 | BIM |  |  |
| P2.BIM.L8.30.110 |  | BIM / L8 - Trade Coordination and Clash Detection | 15d | 2025-04-16 A | 2025-04-25 A | P2.BIM.L8.20.110 | 100% | 2025-01-09 | 2025-01-29 |  |  | 160 | ! | BIM | P01 | BIM |  |  |
| P2.BIM.L8.40.110 |  | BIM / L8 - Coordination Sign Off | 5d | 2025-04-28 A | 2025-05-30 A | P2.BIM.L8.30.110, P2.BIM.L8.40.130 SS | 100% | 2025-04-28 | 2025-05-02 |  |  | 40 | ! | BIM | P01 | BIM |  |  |
|  | 17 | **BIM - Main Roof / Penthouse** |  | 2024-11-12 | 2025-08-06 |  |  |  |  |  |  |  |  |  |  |  |  |  |
| P2.BIM.MRPH.20.110 |  | BIM / Main Roof / Penthouse - Model Development | 20d | 2024-11-12 A | 2025-01-22 A | P2.BIM.L8.20.110 SS+2d | 100% | 2024-12-11 | 2025-01-09 |  |  | 160 | ! | BIM | P01 | BIM |  |  |
| P2.BIM.MRPH.30.120 |  | BIM / Main Roof / Penthouse - Preliminary Sign Off | 1d | 2025-04-04 A | 2025-04-04 A | P2.BIM.MRPH.30.110 SS | 100% |  |  |  |  | 160 | ! | BIM | P01 | BIM |  |  |
| P2.BIM.MRPH.30.110 |  | BIM / Main Roof / Penthouse - Trade Coordination and Clash Detection | 15d | 2025-04-23 A | 2025-06-11 A | P2.BIM.MRPH.20.110 | 100% | 2025-02-04 | 2025-02-24 |  |  | 160 | ! | BIM | P01 | BIM | JWHIT |  |
| P2.BIM.MRPH.40.140 |  | BIM / Main Roof / Penthouse - Fab & Deliver MEP | 30d | 2025-06-01 A | 2025-07-31 A | P2.BIM.MRPH.40.130 SS, P2.BIM.MRPH.40.110 FF | 100% | 2025-07-01 | 2025-08-12 |  |  | 40 | ! | BIM | P01 | BIM | AC | JB |
| P2.BIM.MRPH.40.110 |  | BIM / Main Roof / Penthouse - Coordination Sign Off | 5d | 2025-06-11 A | 2025-06-27 A | P2.BIM.MRPH.30.110, P2.BIM.L8.40.130, P2.BIM.L8.40.110, P2.BIM.MRPH.30.110 SS+65d | 100% | 2025-07-25 | 2025-07-31 |  |  | 40 | ! | BIM | P01 | BIM | JWHIT |  |
| P2.BIM.MRPH.40.130 |  | BIM / Main Roof / Penthouse - Prep, Submit, Review, and Approve Shop Drawings | 35d | 2025-06-20 A | 2025-08-06 A | P2.BIM.MRPH.30.120 | 100% | 2025-07-01 | 2025-08-19 |  |  | 40 | ! | BIM | P01 | BIM | AC | JB |
|  | 3 | **Phase 5 - BIM Modeling & Coordination (Draft)** |  | 2026-11-23 | 2027-06-25 |  |  |  |  |  |  |  |  |  |  |  |  |  |
|  | 1 | **BIM - L1 F-Wing** |  | 2026-11-23 | 2027-02-04 |  |  |  |  |  |  |  |  |  |  |  |  |  |
| P5.BIM.L1.20.100 |  | BIM / L1 F-Wing - Model Development | 20d | 2026-11-23 | 2026-12-22 | MOD.P5.XXX.160, P5.DES.340 |  |  |  | 170d | 0d | 160 | ! | BIM | P01 | BIM |  | BO |
| P5.BIM.L1..30.100 |  | BIM / L1 F-Wing - Trade Coordination and Clash Detection | 20d | 2026-12-23 | 2027-01-21 | P5.BIM.L1.20.100 |  |  |  | 270d | 0d | 160 | ! | BIM | P01 | BIM |  | BO |
| P5.BIM.L1.40.100 |  | BIM / L1 F-Wing - Coordination Sign Off | 5d | 2027-01-22 | 2027-01-28 | P5.BIM.L1..30.100 |  |  |  | 270d | 0d | 40 | ! | BIM | P01 | BIM |  | BO |
| P5.BIM.L1.50.100 |  | BIM / L1 F-Wing - BIM Model Updated and Ready for Field Use | 5d | 2027-01-29 | 2027-02-04 | P5.BIM.L1.40.100 |  |  |  | 270d | 291d | 40 | ! | BIM | P01 | BIM |  | BO |
|  | 2 | **BIM - L2 F-Wing** |  | 2026-12-23 | 2027-03-04 |  |  |  |  |  |  |  |  |  |  |  |  |  |
| P5.BIM.L2.20.100 |  | BIM / L2 F-Wing - Model Development | 20d | 2026-12-23 | 2027-01-21 | P5.BIM.L1.20.100 |  |  |  | 170d | 0d | 160 | ! | BIM | P01 | BIM |  | BO |
| P5.BIM.L2..30.100 |  | BIM / L2 F-Wing - Trade Coordination and Clash Detection | 20d | 2027-01-22 | 2027-02-18 | P5.BIM.L2.20.100 |  |  |  | 250d | 0d | 160 | ! | BIM | P01 | BIM |  | BO |
| P5.BIM.L2.40.100 |  | BIM / L2 F-Wing - Coordination Sign Off | 5d | 2027-02-19 | 2027-02-25 | P5.BIM.L2..30.100 |  |  |  | 250d | 0d | 40 | ! | BIM | P01 | BIM |  | BO |
| P5.BIM.L2.50.100 |  | BIM / L2 F-Wing - BIM Model Updated and Ready for Field Use | 5d | 2027-02-26 | 2027-03-04 | P5.BIM.L2.40.100 |  |  |  | 250d | 271d | 40 | ! | BIM | P01 | BIM |  | BO |

| ID | WBS | Activity | Type | Duration | Start | Finish | Predecessors | Complete | Planned start | Planned finish | Total float | Free float | Calendar | Temp Orig Dur | *NIH Resp Check* | Resp / SRLM | PHASE | RESP UPD | RESP / Trade |
| --- | --- | --- | --- | --- | --- | --- | --- | --- | --- | --- | --- | --- | --- | --- | --- | --- | --- | --- | --- |
|  | 3 | **BIM - L3 F-Wing** |  |  | 2027-01-22 | 2027-04-01 |  |  |  |  |  |  |  |  |  |  |  |  |  |
| P5.BIM.L3.20.100 |  | BIM / L3 F-Wing - Model Development |  | 20d | 2027-01-22 | 2027-02-18 | P5.BIM.L2.20.100 |  |  |  | 170d | 0d |  | 160 | ! | BIM | P01 | BO | BIM |
| P5.BIM.L3..30.100 |  | BIM / L3 F-Wing - Trade Coordination and Clash Detection |  | 20d | 2027-02-19 | 2027-03-18 | P5.BIM.L3.20.100 |  |  |  | 230d | 0d |  | 160 | ! | BIM | P01 | BO | BIM |
| P5.BIM.L3.40.100 |  | BIM / L3 F-Wing - Coordination Sign Off |  | 5d | 2027-03-19 | 2027-03-25 | P5.BIM.L3..30.100 |  |  |  | 230d | 0d |  | 40 | ! | BIM | P01 | BO | BIM |
| P5.BIM.L3.50.100 |  | BIM / L3 F-Wing - BIM Model Updated and Ready for Field Use |  | 5d | 2027-03-26 | 2027-04-01 | P5.BIM.L3.40.100 |  |  |  | 230d | 251d |  | 40 | ! | BIM | P01 | BO | BIM |
|  | 4 | **BIM - L4 F-Wing** |  |  | 2027-02-19 | 2027-04-29 |  |  |  |  |  |  |  |  |  |  |  |  |  |
| P5.BIM.L4.20.100 |  | BIM / L4 F-Wing - Model Development |  | 20d | 2027-02-19 | 2027-03-18 | P5.BIM.L3.20.100 |  |  |  | 170d | 0d |  | 160 | ! | BIM | P01 | BO | BIM |
| P5.BIM.L4..30.100 |  | BIM / L4 F-Wing - Trade Coordination and Clash Detection |  | 20d | 2027-03-19 | 2027-04-15 | P5.BIM.L4.20.100 |  |  |  | 210d | 0d |  | 160 | ! | BIM | P01 | BO | BIM |
| P5.BIM.L4.40.100 |  | BIM / L4 F-Wing - Coordination Sign Off |  | 5d | 2027-04-16 | 2027-04-22 | P5.BIM.L4..30.100 |  |  |  | 210d | 0d |  | 40 | ! | BIM | P01 | BO | BIM |
| P5.BIM.L4.50.100 |  | BIM / L4 F-Wing - BIM Model Updated and Ready for Field Use |  | 5d | 2027-04-23 | 2027-04-29 | P5.BIM.L4.40.100 |  |  |  | 210d | 231d |  | 40 | ! | BIM | P01 | BO | BIM |
|  | 5 | **BIM - L5 F-Wing** |  |  | 2027-03-19 | 2027-05-27 |  |  |  |  |  |  |  |  |  |  |  |  |  |
| P5.BIM.L5.20.100 |  | BIM / L5 F-Wing - Model Development |  | 20d | 2027-03-19 | 2027-04-15 | P5.BIM.L4.20.100 |  |  |  | 170d | 0d |  | 160 | ! | BIM | P01 | BO | BIM |
| P5.BIM.L5..30.100 |  | BIM / L5 F-Wing - Trade Coordination and Clash Detection |  | 20d | 2027-04-16 | 2027-05-13 | P5.BIM.L5.20.100 |  |  |  | 190d | 0d |  | 160 | ! | BIM | P01 | BO | BIM |
| P5.BIM.L5.40.100 |  | BIM / L5 F-Wing - Coordination Sign Off |  | 5d | 2027-05-14 | 2027-05-20 | P5.BIM.L5..30.100 |  |  |  | 190d | 0d |  | 40 | ! | BIM | P01 | BO | BIM |
| P5.BIM.L5.50.100 |  | BIM / L5 F-Wing - BIM Model Updated and Ready for Field Use |  | 5d | 2027-05-21 | 2027-05-27 | P5.BIM.L5.40.100 |  |  |  | 190d | 211d |  | 40 | ! | BIM | P01 | BO | BIM |
|  | 6 | **BIM - L6 F-Wing** |  |  | 2027-04-16 | 2027-06-25 |  |  |  |  |  |  |  |  |  |  |  |  |  |
| P5.BIM.L6.20.100 |  | BIM / L6 F-Wing - Model Development |  | 20d | 2027-04-16 | 2027-05-13 | P5.BIM.L5.20.100 |  |  |  | 170d | 0d |  | 160 | ! | BIM | P01 | BO | BIM |
| P5.BIM.L6..30.100 |  | BIM / L6 F-Wing - Trade Coordination and Clash Detection |  | 20d | 2027-05-14 | 2027-06-11 | P5.BIM.L6.20.100 |  |  |  | 170d | 0d |  | 160 | ! | BIM | P01 | BO | BIM |
| P5.BIM.L6.40.100 |  | BIM / L6 F-Wing - Coordination Sign Off |  | 5d | 2027-06-14 | 2027-06-18 | P5.BIM.L6..30.100 |  |  |  | 170d | 0d |  | 40 | ! | BIM | P01 | BO | BIM |
| P5.BIM.L6.50.100 |  | BIM / L6 F-Wing - BIM Model Updated and Ready for Field Use |  | 5d | 2027-06-21 | 2027-06-25 | P5.BIM.L6.40.100 |  |  |  | 170d | 191d |  | 40 | ! | BIM | P01 | BO | BIM |
|  | 3 | **PERMITTING** |  |  | 2022-09-06 | 2027-09-21 |  |  |  |  |  |  |  |  |  |  |  |  |  |
|  | 6 | **NIH Permitting, Demo, and Site Selection Approvals** |  |  | 2022-11-15 | 2023-01-09 |  |  |  |  |  |  |  |  |  |  |  |  |  |
|  | 8 | **Phase 1A - ACRF Garage** |  |  | 2022-11-15 | 2023-01-09 |  |  |  |  |  |  |  |  |  |  |  |  |  |
| P1.SS.T1A.100 |  | Prepare & Submit NIH Global Notification/Site Selection - ACRF Garage |  | 5d | 2022-11-15 A | 2022-11-18 A | P1A.DES.590 | 100% | 2022-11-15 | 2022-11-21 |  |  |  | 40 | ! | ARCH | P01 |  | ARCH |
| P1.SS.T1A.110 |  | Review & Approve NIH Global Notification/Site Selection - ACRF Garage |  | 45d | 2022-11-21 A | 2023-01-09 A | P1.SS.T1A.100 | 100% | 2022-11-21 | 2023-01-04 |  |  | 7D / SRLM | 360 | ! | FM | P01 |  | FM |
| P1.SS.T1A.120 |  | Site Selection Approved - Contractor Control of Area - ACRF Garage | milestone | 0d | 2023-01-09 A | 2023-01-09 A | P1.SS.T1A.110 FF | 100% |  |  |  |  |  | 0 | ! | NIH | P01 |  | NIH |

| ID | WBS | Activity | Duration | Start | Finish | Predecessors | Complete | Planned start | Planned finish | Total float | Free float | Temp Orig Dur | Resp / SRLM | PHASE | RESP / Trade |
| --- | --- | --- | --- | --- | --- | --- | --- | --- | --- | --- | --- | --- | --- | --- | --- |
|  | 7 | **Demolition Permits** |  | 2023-03-21 | 2027-09-21 |  |  |  |  |  |  |  |  |  |  |
|  | 3 | **Phase 0A - Emergency Egress & Facade Demo** |  | 2023-03-21 | 2023-05-25 |  |  |  |  |  |  |  |  |  |  |
| P1.DEMO.1.130 |  | Prepare & Submit Demo Permit - Emergency Egress Exits | 15d | 2023-03-21 A | 2023-04-28 A | P0A.DES.150 SS | 100% | 2023-03-21 | 2023-04-10 |  |  | 120 | HP | P01 | HP |
| P1.DEMO.2.130 |  | Review & Approve Demo Permit - Emergency Egress Exits | 5d | 2023-05-22 A | 2023-05-25 A | P1.DEMO.1.130 | 100% | 2023-05-22 | 2023-05-26 |  |  | 40 | NIH | P01 | NIH |
|  | 4 | **Phase 0C - Facade Demolition & Protection** |  | 2024-01-10 | 2024-03-04 |  |  |  |  |  |  |  |  |  |  |
| P1.DEMO.1.140 |  | Prepare & Submit Demo Permit - Facade Demolition | 20d | 2024-01-10 A | 2024-02-14 A | P2A.DES.575 | 100% | 2024-02-01 | 2024-02-28 |  |  | 120 | HP | P01 | HP |
| P1.DEMO.2.140 |  | Review & Approve Demo Permit - Facade Demolition | 30d | 2024-02-15 A | 2024-03-04 A | P1.DEMO.1.140 | 100% | 2024-03-15 | 2024-04-25 |  |  | 40 | NIH | P01 | NIH |
|  | 1 | **Phase 1** |  | 2023-04-03 | 2024-06-19 |  |  |  |  |  |  |  |  |  |  |
|  | 1 | **Existing Utility Tunnel** |  | 2023-06-06 | 2023-08-28 |  |  |  |  |  |  |  |  |  |  |
| P1.DEMO.1.100 |  | Prepare & Submit Demo Permit - Utility Tunnel | 15d | 2023-06-06 A | 2023-07-05 A | BP3.310.2.100 | 100% | 2023-07-06 | 2023-07-26 |  |  | 120 | HP | P01 | HP |
| P1.DEMO.2.100 |  | Review & Approve Demo Permit - Utility Tunnel | 10d | 2023-07-25 A | 2023-08-28 A | P1.DEMO.1.100 | 100% | 2023-07-27 | 2023-08-09 |  |  | 80 | NIH | P01 | NIH |
|  | 2 | **ACRF Garage** |  | 2023-04-03 | 2023-10-16 |  |  |  |  |  |  |  |  |  |  |
|  | 1 | **Phase 1A - ACRF Garage Shafts / MEP** |  | 2023-04-03 | 2023-04-14 |  |  |  |  |  |  |  |  |  |  |
| P1A.DEMO.1.100 |  | Prepare & Submit Demo Permit - ACRF Garage Shafts / MEP | 5d | 2023-04-03 A | 2023-04-07 A | BP3.024.1.140 SS+5d | 100% |  |  |  |  | 40 | HP | P01 | HP |
| P1A.DEMO.2.100 |  | Review & Approve Demo Permit - ACRF Garage Shafts / MEP | 5d | 2023-04-10 A | 2023-04-14 A | P1A.DEMO.1.100 | 100% |  |  |  |  | 40 | STAFF | P01 | STAFF |
|  | 2 | **Phase 1 - ACRF Garage Structure** |  | 2023-07-18 | 2023-10-16 |  |  |  |  |  |  |  |  |  |  |
| P1.DEMO.1.110 |  | Prepare & Submit Demo Permit - ACRF Garage Structure | 15d | 2023-07-18 A | 2023-10-02 A | P1.DES.410, BP3.024.1.100 SS | 100% | 2023-08-02 | 2023-08-22 |  |  | 120 | HP | P01 | HP |
| P1.DEMO.2.110 |  | Review & Approve Demo Permit - ACRF Garage Structure | 10d | 2023-10-03 A | 2023-10-16 A | P1.DEMO.1.110 | 100% | 2023-11-02 | 2023-11-15 |  |  | 80 | STAFF | P01 | STAFF |
|  | 4 | **CRC Facade** |  | 2024-05-16 | 2024-06-19 |  |  |  |  |  |  |  |  |  |  |
| P1.DEMO.1.120 |  | Prepare & Submit Demo Permit - CRC Facade | 1d | 2024-05-16 A | 2024-05-16 A | P2A.DES.555 | 100% | 2024-06-20 | 2024-06-20 |  |  | 8 | HP | P01 | HP |
| P1.DEMO.2.120 |  | Review & Approve Demo Permit - CRC Facade | 10d | 2024-05-21 A | 2024-06-19 A | P1.DEMO.1.120 | 100% | 2024-06-21 | 2024-07-05 |  |  | 80 | STAFF | P01 | STAFF |
|  | 2 | **Phase 5** |  | 2027-07-20 | 2027-09-21 |  |  |  |  |  |  |  |  |  |  |
|  | 1 | **Phase 5 - CRC** |  | 2027-07-20 | 2027-09-21 |  |  |  |  |  |  |  |  |  |  |
| P5.DEMO.1.100 |  | Prepare & Submit Demo Permit - CRC - Phase 5 | 15d | 2027-07-20 | 2027-08-09 | P5.PREC.120 |  |  |  | 19d | 0d | 120 | HP |  | HP |
| P5.DEMO.2.100 |  | Review & Approve Demo Permit - CRC - Phase 5 | 30d | 2027-08-10 | 2027-09-21 | P5.DEMO.1.100 |  |  |  | 19d | 40d | 240 | STAFF |  | STAFF |

| ID | WBS | Activity | Duration | Start | Finish | Predecessors | Complete | Planned start | Planned finish | Calendar | Temp Orig Dur | Resp / SRLM | PHASE | CATW | SCH DEV | RESP / Trade |
| --- | --- | --- | --- | --- | --- | --- | --- | --- | --- | --- | --- | --- | --- | --- | --- | --- |
|  | 1 | **MDE - Land Disturbance** |  | 2022-09-06 | 2023-05-30 |  |  |  |  |  |  |  |  |  |  |  |
|  | 1 | **MDE Permit - Phase 0** |  | 2022-09-06 | 2023-03-17 |  |  |  |  |  |  |  |  |  |  |  |
| P0.MDE.100 |  | Phase 0 - NIH MDE Internal Review | 10d | 2022-09-06 A | 2022-09-20 A | P0.DES.240 | 100% | 2022-09-06 | 2022-09-19 |  | 80 | NIH | P01 | PM | PRELIM | NIH |
| P0.MDE.110 |  | Phase 0 - MDE Permit Expediter Review | 10d | 2022-09-21 A | 2022-10-03 A | P0.MDE.100 | 100% | 2022-09-21 | 2022-10-04 |  | 80 | MDE | P01 |  | PRELIM | MDE |
| P0.MDE.120 |  | Phase 0 - Permit Expediter Comment Reconciliation | 10d | 2022-10-04 A | 2022-10-26 A | P0.MDE.110 | 100% | 2022-10-04 | 2022-10-18 |  | 80 | GEO | P01 |  | PRELIM | GEO |
| P0.MDE.130 |  | Phase 0 - MDE Permit Review & Issuance (E&SC only) | 30d | 2022-10-27 A | 2023-01-23 A | P0.MDE.120 | 100% | 2022-10-27 | 2022-11-25 | 7D / SRLM | 240 | MDE | P01 | PM | PRELIM | MDE |
| P0.MDE.140 |  | Phase 0 - MDE Permit Issued | 1d | 2023-01-23 A | 2023-01-23 A | P0.MDE.130 FF, P0.MDE.130 | 100% |  |  |  | 8 | MDE | P01 | PM | PRELIM | MDE |
|  | 1 | **MDE Permit - Phase 0 - Field Mod #1 - E&SC Measures** |  | 2023-01-25 | 2023-02-01 |  |  |  |  |  |  |  |  |  |  |  |
| P0.MDE.MOD1.100 |  | HP / Design Team - Prepare & Submit to NIH ORF/DEP - Phase 0 MDE Permit Field Mod #1 | 2d | 2023-01-25 A | 2023-01-26 A | P0.MDE.140 | 100% |  |  |  | 16 | GEO | P01 |  |  | GEO |
| P0.MDE.MOD1.110 |  | NIH ORF/DEP - Review and Comment - Phase 0 MDE Permit Field Mod #1 | 10d | 2023-01-26 A | 2023-01-27 A | P0.MDE.MOD1.100 | 100% | 2023-01-26 | 2023-02-08 |  | 80 | NIH | P01 |  |  | NIH |
| P0.MDE.MOD1.120 |  | MDE - Review & Recommend - Phase 0 MDE Permit Field Mod #1 | 14d | 2023-01-30 A | 2023-01-31 A | P0.MDE.MOD1.110 | 100% | 2023-01-30 | 2023-02-12 | 7D / SRLM | 112 | MDE | P01 |  |  | MDE |
| P0.MDE.MOD1.130 |  | Approval & Issuance - Phase 0 MDE Permit Field Mod #1 | 1d | 2023-02-01 A | 2023-02-01 A | P0.MDE.MOD1.120 | 100% |  |  |  | 8 | NIH | P01 |  |  | NIH |
|  | 2 | **MDE Permit - Phase 0 - Field Mod #2 - Early Work - Water Main** |  | 2023-02-02 | 2023-03-17 |  |  |  |  |  |  |  |  |  |  |  |
| P0.MDE.MOD2.100 |  | HP / Design Team - Prepare & Submit to NIH ORF/DEP - Phase 0 MDE Permit Field Mod #2 | 5d | 2023-02-02 A | 2023-02-08 A | P0.MDE.MOD1.130 FF+1d | 100% |  |  |  | 40 | GEO | P01 |  |  | GEO |
| P0.MDE.MOD2.110 |  | NIH ORF/DEP - Review and Comment - Phase 0 MDE Permit Field Mod #2 | 10d | 2023-02-09 A | 2023-02-14 A | P0.MDE.MOD2.100 | 100% | 2023-02-09 | 2023-02-22 |  | 80 | NIH | P01 |  |  | NIH |
| P0.MDE.MOD2.120 |  | HP / Design Team - Final Comment Resolution and Resubmission to NIH ORF/DEP - Phase 0 MDE Permit Field Mod #2 | 2d | 2023-02-14 A | 2023-02-27 A | P0.MDE.MOD2.110 | 100% | 2023-02-14 | 2023-02-15 |  | 16 | GEO | P01 |  |  | GEO |
| P0.MDE.MOD2.130 |  | NIH ORF/DEP - Back Check Comment Resolution and Submit to MDE - Phase 0 MDE Permit Field Mod #2 | 5d | 2023-02-27 A | 2023-02-27 A | P0.MDE.MOD2.120 | 100% | 2023-02-27 | 2023-03-03 |  | 40 | NIH | P01 |  |  | NIH |
| P0.MDE.MOD2.140 |  | MDE - Review & Recommend - Phase 0 MDE Permit Field Mod #2 | 14d | 2023-02-28 A | 2023-03-16 A | P0.MDE.MOD2.130 | 100% | 2023-02-28 | 2023-03-13 | 7D / SRLM | 112 | MDE | P01 |  |  | MDE |
| P0.MDE.MOD2.150 |  | NIH ORF/DEP - Approval & Issuance - Phase 0 MDE Permit Field Mod #2 | 1d | 2023-03-17 A | 2023-03-17 A | P0.MDE.MOD2.140 | 100% |  |  |  | 8 | NIH | P01 |  |  | NIH |
|  | 2 | **MDE Permit - Phase 1** |  | 2022-12-22 | 2023-05-30 |  |  |  |  |  |  |  |  |  |  |  |
| P1.MDE.150 |  | HP / Design Team - Prepare & Submit to NIH ORF/DEP - Phase 1 MDE Permit Ammendment - Rev 0 | 1d | 2022-12-22 A | 2023-01-21 A | P1.DES.340 | 100% | 2022-12-22 | 2022-12-22 |  | 8 | DES | P01 |  |  | DES |
| P1.MDE.140 |  | NIH ORF/DEP - Review and Submit to MDE - Phase 1 MDE Permit Ammendment - Rev 0 | 10d | 2023-01-23 A | 2023-01-27 A | P1.MDE.150 | 100% | 2023-01-23 | 2023-02-03 |  | 80 | NIH | P01 |  |  | NIH |
| P1.MDE.160 |  | MDE - Review and Comment - Phase 1 MDE Permit Ammendment - Rev 0 | 30d | 2023-01-30 A | 2023-02-08 A | P1.MDE.140, P0.MDE.140 | 100% | 2023-01-30 | 2023-02-28 | 7D / SRLM | 240 | MDE | P01 |  |  | MDE |
| P1.MDE.170 |  | HP / Design Team - Design Team Comment Resolution - Phase 1 MDE Permit Ammendment - Rev 0 | 9d | 2023-02-09 A | 2023-02-15 A | P1.MDE.160 | 100% | 2023-02-09 | 2023-02-21 |  | 72 | GEO | P01 |  |  | GEO |
| P1.MDE.240 |  | HP / Design Team - Comment Conference - Phase 1 MDE Permit Ammendment - Rev 0 (Wasn't Necessary) | 1d | 2023-02-16 A | 2023-02-16 A | P1.MDE.170 | 100% |  |  |  | 8 | DES | P01 |  |  | DES |
| P1.MDE.180 |  | HP / Design Team - Final Comment Resolution and Resubmission to NIH ORF/DEP - Phase 1 MDE Permit Ammendment - Rev 1 | 5d | 2023-02-17 A | 2023-02-21 A | P1.MDE.240 | 100% | 2023-02-17 | 2023-02-23 |  | 40 | GEO | P01 |  |  | GEO |
| P1.MDE.190 |  | NIH ORF/DEP - Review and Resubmission to MDE - Phase 1 MDE Permit Ammendment - Rev 1 | 10d | 2023-02-22 A | 2023-03-01 A | P1.MDE.180 | 100% | 2023-02-22 | 2023-03-07 |  | 80 | NIH | P01 |  |  | NIH |
| P1.MDE.200 |  | MDE - Review Resubmission and Recommend for Approval - Phase 1 MDE Permit Ammendment - Rev 1 | 30d | 2023-03-02 A | 2023-03-06 A | P1.MDE.190 | 100% | 2023-03-02 | 2023-03-31 | 7D / SRLM | 240 | MDE | P01 |  |  | MDE |
| P1.MDE.250 |  | HP / Design Team - Design Team Comment Resolution of Resubmission - Phase 1 MDE Permit Ammendment - Rev 1 | 9d | 2023-03-07 A | 2023-03-20 A | P1.MDE.200 | 100% | 2023-03-07 | 2023-03-17 |  | 72 | GEO | P01 |  |  | GEO |
| P1.MDE.260 |  | HP / Design Team - Comment Conf for Resubmission Comments - Phase 1 MDE Permit Ammendment - Rev 1 (**UD8.0 - Not Req'd) | 1d | 2023-03-20 A | 2023-03-20 A | P1.MDE.250 | 100% |  |  |  | 8 | DES | P01 |  |  | DES |
| P1.MDE.270 |  | HP / Design Team - Final Comment Resolution and Re-Resubmission to NIH ORF/DEP - Phase 1 MDE Permit Ammend - Rev 2 | 5d | 2023-03-20 A | 2023-03-20 A | P1.MDE.260 | 100% | 2023-03-20 | 2023-03-24 |  | 40 | GEO | P01 |  |  | GEO |
| P1.MDE.280 |  | NIH ORF/DEP - Review and Re-Resubmission to MDE - Phase 1 MDE Permit Ammendment - Rev 2 | 10d | 2023-03-20 A | 2023-03-21 A | P1.MDE.270 | 100% | 2023-03-20 | 2023-03-31 |  | 80 | NIH | P01 |  |  | NIH |
| P1.MDE.290 |  | MDE - Review Re-Resubmission and Recommend for Approval - Phase 1 MDE Permit Ammendment - Rev 2 | 7d | 2023-03-21 A | 2023-03-30 A | P1.MDE.280 | 100% | 2023-03-21 | 2023-03-27 | 7D / SRLM | 56 | MDE | P01 |  |  | MDE |
| P1.MDE.210 |  | MDE - Permit Signed - Phase 1 MDE Permit Ammendment | 14d | 2023-04-01 A | 2023-04-25 A | P1.MDE.290 FF, P1.MDE.290 | 100% | 2023-04-01 | 2023-04-14 | 7D / SRLM | 112 | MDE | P01 |  |  | MDE |
| P1.MDE.220 |  | MDE - Notice of Intent (NOI) Review Period - Phase 1 MDE Permit Ammendment | 14d | 2023-04-28 A | 2023-05-22 A | P1.MDE.210 | 100% | 2023-04-28 | 2023-05-11 | 7D / SRLM | 112 | MDE | P01 |  |  | MDE |
| P1.MDE.230 |  | MDE - NOI Approval - Phase 1 MDE Permit Ammendment | 1d | 2023-05-23 A | 2023-05-23 A | P1.MDE.220 | 100% |  |  |  | 8 | MDE | P01 |  |  | MDE |
| P1.MDE.130 |  | MDE Permit Issued - Phase 1 MDE Permit Ammendment | 14d | 2023-05-24 A | 2023-05-30 A | P1.MDE.230 | 100% | 2023-05-24 | 2023-06-06 | 7D / SRLM | 112 | MDE | P01 | PM | PRELIM | MDE |

| ID | WBS | Activity | Duration | Start | Finish | Predecessors | Complete | Planned start | Planned finish | Temp Orig Dur | Resp / SRLM | PHASE | CATW | SCH DEV | RESP / Trade | 744 | RESP UPD | Update Status |
| --- | --- | --- | --- | --- | --- | --- | --- | --- | --- | --- | --- | --- | --- | --- | --- | --- | --- | --- |
|  | 5 | **MDE - Air Emissions** |  | 2024-07-30 | 2025-11-20 |  |  |  |  |  |  |  |  |  |  |  |  |  |
| P2.MDE.140 |  | Prep & File MDE Air Emission Generator Permit | 5d | 2024-07-30 A | 2025-04-02 A | BP1.263.2.100 SS, P1.MDE.130, BP1.260.0.100 | 100% | 2024-08-29 | 2024-09-05 | 40 | STAFF | P01 | PM | PRELIM | STAFF |  |  |  |
| P2.MDE.150 |  | MDE Air Emission Generator Permit Review | 150d | 2025-04-02 A | 2025-11-20 A | P2.MDE.140 | 100% | 2025-04-02 | 2025-10-31 | 2080 | MDE | P01 | PM | PRELIM | MDE | ZK | ZK |  |
|  | 3 | **ADRB Presentations** |  | 2023-01-16 | 2023-09-25 |  |  |  |  |  |  |  |  |  |  |  |  |  |
| P2.ADRB.100 |  | Exterior Design Progression Presentation Review (from 65% Phase 2) | 5d | 2023-01-16 A | 2023-01-20 A | P5.DES.140, P2.DES.110 | 100% |  |  | 40 | AHJ | P01 |  | PRELIM | AHJ |  |  |  |
| P2.ADRB.110 |  | Exterior Design Progression Presentation Review (from 95% Phase 2) | 5d | 2023-09-25 A | 2023-09-25 A | P2.ADRB.100 | 100% | 2023-09-25 | 2023-09-29 | 40 | AHJ | P01 |  | PRELIM | AHJ |  |  |  |
|  | 4 | **NIH/AHJ** |  | 2024-03-29 | 2025-06-30 |  |  |  |  |  |  |  |  |  |  |  |  |  |
| P2A.NIH.130 |  | SRLM Life Safety AHJ Permit Review (from 100% IFC Phase 2 Design) 2A | 20d | 2024-03-29 A | 2024-04-24 A | P2A.DES.555 FF | 100% | 2024-04-01 | 2024-04-26 | 480 | AHJ |  |  |  | AHJ |  |  |  |
| P2C.NIH.110 |  | SRLM Life Safety AHJ Permit Review (from 100% IFC Phase 2 Design) 2C | 20d | 2024-10-31 A | 2025-06-30 A | P2C.DES.210 FF, P2B.DES.785 FF | 100% | 2024-11-06 | 2024-12-05 | 480 | AHJ |  |  |  | AHJ | SS | TG | O |
|  | 4 | **PRECONSTRUCTION** |  | 2022-04-26 | 2026-12-07 |  |  |  |  |  |  |  |  |  |  |  |  |  |
|  | 3 | **Pre-Work Submittals & Approval** |  | 2022-04-26 | 2023-06-16 |  |  |  |  |  |  |  |  |  |  |  |  |  |
|  | 1 | **Submittal** |  | 2022-04-26 | 2023-06-09 |  |  |  |  |  |  |  |  |  |  |  |  |  |
| PWS.100 |  | Prepare & Submit - Contractor Quality Control Plan | 20d | 2022-04-26 A | 2022-05-04 A | PWS.110 | 100% | 2022-04-26 | 2022-05-23 | 160 | STAFF | P01 | SUB | PRELIM | STAFF |  |  |  |
| PWS.110 |  | Prepare & Submit - Site Specific Safety Plan | 15d | 2022-04-26 A | 2022-05-17 A | EXS.100 | 100% | 2022-04-26 | 2022-05-16 | 120 | STAFF | P01 | SUB | PRELIM | STAFF |  |  |  |
| PWS.160 |  | Prepare & Submit - Preliminary D-B Schedule | 15d | 2022-04-26 A | 2022-05-13 A | EXS.100, EXS.100 SS | 100% | 2022-04-26 | 2022-05-16 | 120 | STAFF | P01 | SUB | PRELIM | STAFF |  |  |  |
| PWS.220 |  | Prepare & Submit - Initial Site Access Personnel | 10d | 2022-04-26 A | 2022-05-09 A | EXS.100 | 100% |  |  | 80 | STAFF | P01 | SUB | PRELIM | STAFF |  |  |  |
| PWS.120 |  | Prepare & Submit - Site Specific Phase 0 Logistics Plan | 20d | 2022-06-28 A | 2022-08-26 A | PWS.110 SS, P0.DES.100 SS | 100% | 2022-06-28 | 2022-07-26 | 160 | STAFF | P01 | SUB | PRELIM | STAFF |  |  |  |
| PWS.180 |  | Prepare & Submit - Site Specific SWPPP & Haz Material Handling | 20d | 2022-09-01 A | 2022-09-29 A | PWS.110 SS, PWS.100 | 100% |  |  | 160 | STAFF | P01 | SUB | PRELIM | STAFF |  |  |  |
| PWS.250 |  | Prepare & Submit - Site Specific Phase 1 Logistics Plan | 20d | 2022-11-01 A | 2022-11-17 A | P1.DES.280, PWS.120 | 100% | 2022-11-01 | 2022-11-30 | 160 | STAFF | P01 | SUB | PRELIM | STAFF |  |  |  |
| PWS.270 |  | Prepare & Submit - Site Specific Phase 2 Logistics Plan | 15d | 2023-06-05 A | 2023-06-09 A | P2C.DES.145 | 100% | 2023-07-13 | 2023-08-02 | 120 | STAFF | P01 | SUB | PRELIM | STAFF |  |  |  |
|  | 2 | **NIH Review** |  | 2022-05-05 | 2023-06-16 |  |  |  |  |  |  |  |  |  |  |  |  |  |
| PWS.130 |  | Review & Approve - Contractor Quality Control Plan | 10d | 2022-05-05 A | 2022-05-16 A | PWS.100 | 100% | 2022-05-05 | 2022-05-18 | 80 | NIH | P01 | RAP | PRELIM | NIH |  |  |  |
| PWS.230 |  | Review & Issue- Initial Site Access Personnel Clearance | 10d | 2022-05-10 A | 2022-05-23 A | PWS.220 | 100% |  |  | 80 | NIH | P01 | RAP | PRELIM | NIH |  |  |  |
| PWS.170 |  | Review & Approve - Preliminary D-B Schedule | 10d | 2022-05-14 A | 2022-05-26 A | PWS.160 | 100% | 2022-05-16 | 2022-05-27 | 80 | NIH | P01 | RAP | PRELIM | NIH |  |  |  |
| PWS.140 |  | Review & Approve - Site Specific Safety Plan | 10d | 2022-05-18 A | 2022-06-28 A | PWS.110 | 100% | 2022-05-18 | 2022-06-01 | 80 | NIH | P01 | RAP | PRELIM | NIH |  |  |  |
| PWS.210 |  | Phase 0 Pre-Construction Meeting - Site Investigation Phase | 2d | 2022-05-26 A | 2022-05-27 A | PWS.140 SS, PDS.230, PWS.230 | 100% |  |  | 16 | STAFF | P01 | RAP | PRELIM | STAFF |  |  |  |
| PWS.150 |  | Review & Approve - Site Specific Phase 0 Logistics Plan | 10d | 2022-09-01 A | 2022-09-15 A | PWS.120 | 100% |  |  | 80 | NIH | P01 | RAP | PRELIM | NIH |  |  |  |
| PWS.190 |  | Reivew & Approve - Site Specific SWPPP & Haz Material Handling | 10d | 2022-09-30 A | 2022-10-13 A | PWS.180 | 100% |  |  | 80 | NIH | P01 | RAP | PRELIM | NIH |  |  |  |
| PWS.260 |  | Review & Approve - Site Specific Phase 1 Logistics Plan | 10d | 2022-11-18 A | 2022-12-05 A | PWS.250 | 100% |  |  | 80 | NIH | P01 | RAP | PRELIM | NIH |  |  |  |
| PWS.280 |  | Review & Approve - Site Specific Phase 2 Logistics Plan | 10d | 2023-06-12 A | 2023-06-16 A | PWS.270 | 100% | 2023-08-03 | 2023-08-16 | 80 | NIH | P01 | RAP | PRELIM | NIH |  |  |  |

| ID | WBS | Activity | Duration | Start | Finish | Predecessors | Complete | Planned start | Planned finish | Calendar | Bid Package | Temp Orig Dur | Resp / SRLM | PHASE | CATW | SCH DEV | RESP / Trade | Pick #1 | Progress Filters | Init | *NIH Resp Check* |
| --- | --- | --- | --- | --- | --- | --- | --- | --- | --- | --- | --- | --- | --- | --- | --- | --- | --- | --- | --- | --- | --- |
|  | 2 | **Phases 0-2 - Buy Out, Submittals, Approval, Fabrication, Mock-ups** |  | 2022-11-03 | 2026-10-16 |  |  |  |  |  |  |  |  |  |  |  |  |  |  |  |  |
|  | 6 | **Bid Package #0 - Phase 0 Pre-work** |  | 2022-11-03 | 2023-05-01 |  |  |  |  |  |  |  |  |  |  |  |  |  |  |  |  |
|  | 1 | **Submittal** |  | 2022-11-03 | 2023-01-24 |  |  |  |  |  |  |  |  |  |  |  |  |  |  |  |  |
| SUB.P0.170 |  | Prepare & Submit - Garage Field Office Drawings | 25d | 2022-11-03 A | 2022-12-09 A | P0.DES.165 | 100% |  |  |  | 1 | 200 | STAFF | P01 | SUB | PRELIM | STAFF |  |  |  |  |
| SUB.P0.130 |  | Prepare & Submit - Vehicle Inspection Station/Guard Booths | 20d | 2022-12-12 A | 2023-01-10 A | P0.DES.160 | 100% |  |  |  | 1 | 160 | STAFF | P01 | SUB | PRELIM | STAFF |  |  |  |  |
| SUB.P0.100 |  | Prepare & Submit - Fencing, Barriers, Temp Protection, Utility Services | 10d | 2022-12-19 A | 2023-01-03 A | P0.DES.160 | 100% |  |  |  | 1 | 80 | STAFF | P01 | SUB | PRELIM | STAFF |  |  |  |  |
| SUB.P0.180 |  | Prepare & Submit - Temporary Exiting Structures & OH Protection Measures | 25d | 2022-12-19 A | 2023-01-24 A | P0A.DES.170 FF | 100% |  |  |  | 1 | 200 | STAFF | P01 | SUB | PRELIM | STAFF |  |  |  |  |
|  | 2 | **NIH Review & Approval** |  | 2022-12-12 | 2023-01-27 |  |  |  |  |  |  |  |  |  |  |  |  |  |  |  |  |
| RAP.P0.180 |  | Review & Approve - Garage Field Office Drawings | 10d | 2022-12-12 A | 2022-12-23 A | SUB.P0.170 | 100% |  |  |  | 1 | 80 | NIH | P01 | RAP | PRELIM | NIH |  |  |  |  |
| RAP.P0.110 |  | Review & Approve - Fencing, Barriers, Temp Protection, Utility Services | 10d | 2023-01-04 A | 2023-01-17 A | P0.DES.165, SUB.P0.100 | 100% |  |  |  | 1 | 80 | NIH | P01 | RAP | PRELIM | NIH |  |  |  |  |
| RAP.P0.140 |  | Review & Approve - Vehicle Inspection Station/Guard Booths | 10d | 2023-01-11 A | 2023-01-24 A | SUB.P0.130 | 100% |  |  |  | 1 | 80 | NIH | P01 | RAP | PRELIM | NIH |  |  |  |  |
| RAP.P0.193 |  | Review & Approve - Temporary Exiting Structures & OH Protection Measures | 10d | 2023-01-25 A | 2023-01-27 A | SUB.P0.180 | 100% | 2023-01-25 | 2023-02-07 |  | 1 | 80 | NIH | P01 | SUB | PRELIM | NIH |  |  |  |  |
|  | 3 | **Fabrication** |  | 2022-12-26 | 2023-05-01 |  |  |  |  |  |  |  |  |  |  |  |  |  |  |  |  |
| FAD.P0.120 |  | Fabricate & Deliver - Fencing, Barriers, Temp Protection, Utility Services | 15d | 2022-12-26 A | 2023-01-27 A | RAP.P0.110 | 100% | 2022-12-27 | 2023-01-17 |  | 1 | 120 | STAFF | P01 | FAB | PRELIM | STAFF |  |  |  |  |
| FAD.P0.190 |  | Fabricate & Deliver- Garage Field Office Components/Equipment | 40d | 2022-12-27 A | 2023-02-20 A | RAP.P0.180 | 100% | 2022-12-27 | 2023-02-21 |  | 1 | 320 | STAFF | P01 | FAB | PRELIM | STAFF | No Succ | Succ! | SUCC! |  |
| FAD.P0.150 |  | Fabricate & Deliver - Vehicle Inspection Station/Guard Booths | 45d | 2023-01-25 A | 2023-05-01 A | RAP.P0.140 | 100% | 2023-01-25 | 2023-03-28 |  | 1 | 360 | STAFF | P01 | FAB | PRELIM | STAFF |  |  |  |  |
| FAD.P0.200 |  | Fabricate & Deliver - Temporary Exiting Structures & OH Protection Measures | 45d | 2023-01-30 A | 2023-01-31 A | RAP.P0.193 | 100% | 2023-01-30 | 2023-03-31 |  | 1 | 360 | STAFF | P01 | FAB | PRELIM | STAFF |  |  |  |  |
|  | 8 | **Bid Package 1** |  | 2022-12-12 | 2026-08-03 |  |  |  |  |  |  |  |  |  |  |  |  |  |  |  |  |
|  | 1 | **Electric Track Vehicle System** |  | 2023-09-05 | 2024-12-05 |  |  |  |  |  |  |  |  |  |  |  |  |  |  |  |  |
| BP1.125.1.100 |  | Prep/Submit/Design - Electric Track Vehicle System - St. Onge | 40d | 2023-09-05 A | 2023-12-13 A | P2C.DES.145 | 100% | 2024-06-19 | 2024-08-14 |  | 1 | 320 | ETV | P01 |  |  | ETV |  |  |  | EVT? |
| BP1.125.0.100 |  | Buyout - Electric Track Vehicle System (Design) (Teledyamics) | 30d | 2023-12-14 A | 2024-08-28 A | BP1.125.1.100 | 100% | 2024-04-08 | 2024-05-17 |  | 1 | 40 | HP | P01 |  |  | HP |  |  |  |  |
| BP1.125.1.110 |  | Prep/Submit/Design - Electric Track Vehicle System - Teledynamics | 40d | 2023-12-15 A | 2024-10-15 A | BP1.125.0.100 FF+20d, BP1.125.1.100 | 100% | 2024-06-19 | 2024-08-14 |  | 1 | 320 | ETV | P01 |  |  | ETV |  |  |  | EVT? |
| BP1.125.2.100 |  | Review/Approve - Electric Track Vehicle System | 35d | 2024-10-15 A | 2024-10-25 A | BP1.125.1.110 | 100% | 2024-11-15 | 2025-01-08 |  | 1 | 280 | NIH | P01 |  |  | NIH |  |  |  |  |
| BP1.125.3.100 |  | Lead/Fab/Deliver - Drug Trolley Track & Equipment | 30d | 2024-10-31 A | 2024-12-05 A | BP1.125.2.100 | 100% | 2024-12-01 | 2024-12-30 | 7D / SRLM | 1 | 480 | ETV | P01 |  |  | ETV |  |  |  | EVT? |
| BP1.125.3.110 |  | Lead/Fab/Deliver - Drug Trolley Hangers | 20d | 2024-10-31 A | 2024-12-05 A | BP1.125.2.100 | 100% | 2025-01-09 | 2025-01-28 | 7D / SRLM | 1 | 480 | ETV | P01 |  |  | ETV |  |  |  | EVT? |

| ID | WBS | Activity | Duration | Start | Finish | Predecessors | Complete | Planned start | Planned finish | Calendar | Bid Package | Temp Orig Dur | Resp / SRLM | PHASE | RESP / Trade | *NIH Resp Check* | Update Status | 744 | RESP UPD |
| --- | --- | --- | --- | --- | --- | --- | --- | --- | --- | --- | --- | --- | --- | --- | --- | --- | --- | --- | --- |
|  | 2 | **Pneumatic Tube** |  | 2023-01-03 | 2024-11-14 |  |  |  |  |  |  |  |  |  |  |  |  |  |  |
| BP1.149.0.110 |  | Buyout - Pneumatic Tube (Design) | 30d | 2023-01-03 A | 2023-11-13 A | P2.DES.110 SS+30d | 100% | 2023-01-03 | 2023-02-13 |  | 1 | 240 | HP | P01 | HP |  |  |  |  |
| BP1.149.0.100 |  | Buyout - Pneumatic Tube (Construction) | 30d | 2024-05-28 A | 2024-06-26 A | P2C.DES.295 SS | 100% | 2024-07-18 | 2024-08-28 |  | 1 | 240 | HP | P01 | HP |  |  |  |  |
| BP1.149.1.100 |  | Prep/Submit - Pneumatic Tube | 20d | 2024-08-01 A | 2024-08-20 A | BP1.149.0.100 | 100% | 2024-09-03 | 2024-09-30 |  | 1 | 160 | PTUBE | P01 | PTUBE |  |  |  |  |
| BP1.149.2.100 |  | Review/Approve - Pneumatic Tube | 35d | 2024-08-20 A | 2024-10-03 A | BP1.149.1.100 | 100% | 2024-10-01 | 2024-11-18 |  | 1 | 280 | NIH | P01 | NIH |  |  |  |  |
| BP1.149.3.110 |  | Lead/Fab/Deliver - Pneumatic Tube Hangers | 20d | 2024-10-29 A | 2024-11-14 A | BP1.149.2.100 | 100% | 2024-11-08 | 2024-11-27 | 7D / SRLM | 1 | 400 | PTUBE | P01 | PTUBE |  |  |  |  |
| BP1.149.3.100 |  | Lead/Fab/Deliver - Pneumatic Tube | 50d | 2024-11-01 A | 2024-11-14 A | BP1.149.2.100 | 100% | 2024-12-01 | 2025-01-19 | 7D / SRLM | 1 | 400 | PTUBE | P01 | PTUBE |  |  |  |  |
|  | 3 | **Modular Ceilings** |  | 2022-12-27 | 2026-02-16 |  |  |  |  |  |  |  |  |  |  |  |  |  |  |
| BP1.095.0.100 |  | Buyout - Modular Ceilings | 30d | 2022-12-27 A | 2023-02-03 A | P2.DES.315 | 100% | 2022-12-27 | 2023-02-07 |  | 1 | 240 | HP | P01 | HP |  |  |  |  |
| BP1.095.1.100 |  | Prep/Submit/Design - Modular Ceilings (With 2C Design) | 150d | 2023-04-14 A | 2024-09-19 A | P2C.DES.295 FF, P2C.DES.145 SS, BP1.095.0.100 | 100% | 2023-11-14 | 2024-06-17 |  | 1 | 160 | FORS | P01 | FORS-1 | ! |  |  |  |
| BP1.095.2.100 |  | Review/Approve - Modular Ceilings | 21d | 2024-09-19 A | 2024-10-16 A | P2C.DES.185 SS, BP1.095.1.100 | 100% | 2024-10-07 | 2024-11-04 |  | 1 | 280 | NIH | P01 | NIH |  |  |  |  |
| BP1.095.3.200 |  | Lead/Fab/Deliver - Structural Steel Supports Flexible OR | 50d | 2024-10-16 A | 2024-12-26 A | BP1.095.2.100 | 100% | 2024-11-06 | 2024-12-25 | 7D / SRLM | 1 | 400 | FORS | P01 | FORS | ! |  |  |  |
| BP1.095.3.220 |  | Lead/Fab/Deliver - Ceiling Level Components | 50d | 2025-09-03 A | 2026-02-16 A | BP1.095.2.100 | 100% | 2025-12-04 | 2026-01-22 | 7D / SRLM | 1 | 400 | FORS | P01 | FORS-1 | ! | O | DL | WLN |
|  | 4 | **Egress Stairs** |  | 2023-01-16 | 2023-05-31 |  |  |  |  |  |  |  |  |  |  |  |  |  |  |
| BP1.055.0.200 |  | Buyout - Egress Stairs - 1A | 30d | 2023-01-16 A | 2023-03-14 A | P1A.DES.590 | 100% | 2023-01-16 | 2023-02-24 |  | 1 | 240 | HP | P01 | HP |  |  |  |  |
| BP1.055.1.200 |  | Prep/Submit/Design - Egress Stairs - 1A | 10d | 2023-03-08 A | 2023-04-19 A | BP1.055.0.200 | 100% | 2023-03-08 | 2023-03-21 |  | 1 | 80 | MISC | P01 | MISC | ! |  |  |  |
| BP1.055.2.200 |  | Review/Approve - Egress Stairs- 1A | 10d | 2023-04-04 A | 2023-04-28 A | BP1.055.1.200 | 100% | 2023-04-04 | 2023-04-17 |  | 1 | 80 | NIH | P01 | NIH |  |  |  |  |
| BP1.055.3.300 |  | Lead/Fab/Deliver - Egress Stairs- 1A | 56d | 2023-04-19 A | 2023-05-31 A | BP1.055.2.200 | 100% | 2023-04-19 | 2023-06-13 | 7D / SRLM | 1 | 448 | MISC | P01 | MISC | ! |  |  |  |
|  | 5 | **Fire Protection** |  | 2023-02-13 | 2025-07-28 |  |  |  |  |  |  |  |  |  |  |  |  |  |  |
| BP1.210.0.100 |  | Buyout - Fire Protection - Phase 1A | 16d | 2023-02-13 A | 2023-03-08 A | P2.DES.315 | 100% | 2023-02-13 | 2023-03-06 |  | 1 | 128 | HP | P01 | HP |  |  |  |  |
| BP1.210.1.100 |  | Buyout - Fire Protection - Phase 2 | 40d | 2023-03-18 A | 2023-06-19 A | P1.DES.330, P2.DES.265, BP1.210.0.100 | 100% | 2024-03-25 | 2024-05-17 |  | 1 | 320 | FP | P01 | FP-1 |  |  |  |  |
| BP1.210.0.110 |  | Prep/Submit/Design - Fire Protection | 16d | 2024-03-29 A | 2024-09-02 A | P2C.DES.295, BP1.210.1.100 | 100% | 2024-08-01 | 2024-08-22 |  | 1 | 128 | FP | P01 | FP-1 |  |  |  |  |
| BP1.210.2.100 |  | Review/Approve - Fire Protection | 35d | 2024-03-29 A | 2024-10-30 A | BP1.210.0.110 FF | 100% | 2024-08-01 | 2024-09-19 |  | 1 | 280 | FP | P01 | FP-1 |  |  |  |  |
| BP1.210.3.100 |  | Lead/Fab/Deliver - Fire Protection | 40d | 2024-08-19 A | 2024-09-03 A | BP1.210.2.100 SS | 100% | 2024-09-04 | 2024-10-13 | 7D / SRLM | 1 | 320 | FP | P01 | FP-1 |  |  |  |  |
| BP1.210.3.200 |  | Lead/Fab/Deliver - Fire Pump | 90d | 2025-06-01 A | 2025-07-28 A | BP1.210.2.100 | 100% | 2025-08-01 | 2025-10-29 | 7D / SRLM | 1 | 720 | FP | P01 | FP-1 |  |  | TG |  |

| ID | WBS | Activity | Duration | Start | Finish | Predecessors | Complete | Planned start | Planned finish | Calendar | Bid Package | Temp Orig Dur | Resp / SRLM | PHASE | RESP / Trade | Trade Review Notes | 744 | Z.RESP | Pick #2 | RESP UPD | Update Status |
| --- | --- | --- | --- | --- | --- | --- | --- | --- | --- | --- | --- | --- | --- | --- | --- | --- | --- | --- | --- | --- | --- |
|  | 6 | **Elevators** |  | 2022-12-19 | 2025-07-14 |  |  |  |  |  |  |  |  |  |  |  |  |  |  |  |  |
| BP1.142.0.100 |  | Buyout - Elevators | 30d | 2022-12-19 A | 2023-01-31 A | P2.DES.315 | 100% |  |  |  | 1 | 240 | HP | P01 | HP |  |  |  |  |  |  |
| BP1.142.1.110 |  | Prep/Submit - Elevator Elevator Embeds | 20d | 2023-07-24 A | 2023-10-19 A | P2.DES.140, BP1.142.0.100 | 100% | 2023-07-24 | 2023-08-18 |  | 1 | 160 | ELEV | P01 | ELEV |  |  |  |  |  |  |
| BP1.142.2.110 |  | Review/Approve - Elevators Embeds | 35d | 2023-10-19 A | 2023-10-26 A | BP1.142.1.110 | 100% | 2023-12-01 | 2024-01-22 |  | 1 | 280 | NIH | P01 | NIH |  |  |  |  |  |  |
| BP1.142.1.500 |  | Lead/Fab/Deliver - Elevator Steel | 10d | 2023-10-20 A | 2023-10-27 A | BP1.142.2.110 | 100% | 2024-01-23 | 2024-02-01 | 7D / SRLM | 4 | 320 | MISCMTL | P01 | MISCMTL | ***LOOK*** OD=40. Temp duration is 10d for schedule purpose. |  |  |  |  |  |
| BP1.142.2.100 |  | Review/Approve - Elevators | 35d | 2024-03-04 A | 2024-05-28 A | BP1.142.1.100 | 100% | 2024-06-03 | 2024-07-22 |  | 1 | 280 | NIH | P01 | NIH |  |  |  |  |  |  |
| BP1.142.1.100 |  | Prep/Submit - Elevators | 20d | 2024-03-06 A | 2024-05-28 A | BP1.142.0.100 | 100% | 2024-10-25 | 2024-11-21 |  | 1 | 160 | ELEV | P01 | ELEV |  |  |  |  |  |  |
| BP1.142.3.100 |  | Lead/Fab/Deliver - Elevator Fronts | 100d | 2024-06-13 A | 2025-07-14 A | BP1.142.2.100 | 100% | 2024-07-01 | 2024-10-08 | 7D / SRLM | 1 | 800 | ELEV | P01 | ELEV |  | RAL |  |  |  |  |
| BP1.142.3.200 |  | Lead/Fab/Deliver - Elevator Rails | 40d | 2024-06-13 A | 2025-05-15 A | BP1.142.2.100 | 100% | 2024-07-01 | 2024-08-09 | 7D / SRLM | 1 | 320 | ELEV | P01 | ELEV |  |  |  |  |  |  |
| BP1.142.3.300 |  | Lead/Fab/Deliver - Elevator Cabs | 80d | 2024-06-13 A | 2025-07-14 A | BP1.142.2.100 | 100% | 2024-07-01 | 2024-09-18 | 7D / SRLM | 1 | 640 | ELEV | P01 | ELEV |  | RAL |  |  |  |  |
| BP1.142.3.400 |  | Lead/Fab/Deliver - Elevator Machines | 150d | 2024-06-13 A | 2024-10-28 A | BP1.142.2.100 | 100% | 2024-07-01 | 2024-11-27 | 7D / SRLM | 1 | 1200 | ELEV | P01 | ELEV |  |  |  |  |  |  |
|  | 7 | **Mechanical** |  | 2022-12-12 | 2025-09-29 |  |  |  |  |  |  |  |  |  |  |  |  |  |  |  |  |
| BP1.200.0.100 |  | Buyout - Mech/Plumbing | 30d | 2022-12-12 A | 2023-01-24 A | EXS.100 SS | 100% |  |  |  | 1 | 240 | HP | P01 | HP |  |  |  |  |  |  |
| BP1.233.3.200 |  | Lead/Fab/Deliver - EF's (1A) | 50d | 2023-01-09 A | 2023-02-21 A | P1A.DES.630 | 100% | 2023-01-09 | 2023-02-27 | 7D / SRLM | 1 | 400 | MECH | P01 | MECH-2 |  |  | Harris |  |  |  |
| BP1.200.1.100 |  | Prep/Submit - Mech/Plumbing - Phase 1 / 1A | 20d | 2023-01-25 A | 2023-10-31 A | P1.DES.410, BP1.200.0.100 | 100% | 2023-01-25 | 2023-02-21 |  | 1 | 160 | MECH | P01 | MECH-2 |  |  | Harris |  |  |  |
| BP1.200.2.100 |  | Review/Approve - Mech/Plumbing - Phase 1 / 1A | 35d | 2023-11-15 A | 2023-12-26 A | P1.DES.420, BP1.200.1.100 | 100% | 2023-11-01 | 2023-12-21 |  | 1 | 280 | NIH | P01 | NIH |  |  |  |  |  |  |
| BP1.232.3.100 |  | Lead/Fab/Deliver - Mechanical Piping in Tunnel | 30d | 2023-12-19 A | 2024-01-25 A | BP1.200.2.100 | 100% | 2024-01-01 | 2024-01-30 | 7D / SRLM | 1 | 240 | MECH | P01 | MECH-2 |  |  | Harris |  |  |  |
| BP1.233.1.120 |  | Prep/Submit - Variable Frequency Drive (VFD) System | 20d | 2024-04-01 A | 2024-04-10 A | P2C.DES.295, BP1.200.0.100 | 100% | 2024-08-01 | 2024-08-28 |  |  | 160 | MECH | P01 | MECH-2 |  |  | Harris |  |  |  |
| BP1.237.1.100 |  | Prep/Submit - AHU's | 20d | 2024-06-03 A | 2024-06-06 A | P2C.DES.285, BP1.200.0.100 | 100% | 2024-06-03 | 2024-06-28 |  |  | 160 | MECH | P01 | MECH-2 |  |  | Harris |  |  |  |
| BP1.237.2.100 |  | Review/Approve - AHU's | 35d | 2024-06-10 A | 2024-09-23 A | BP1.237.1.100 | 100% | 2024-08-01 | 2024-09-19 |  |  | 280 | NIH | P01 | NIH |  |  |  |  |  |  |
| BP1.235.1.100 |  | Prep/Submit - Heat Exchangers | 20d | 2024-07-18 A | 2024-07-30 A | P2C.DES.295, BP1.200.0.100 | 100% | 2024-08-01 | 2024-08-28 |  |  | 160 | MECH | P01 | MECH-2 |  |  | Harris |  |  |  |
| BP1.200.1.170 |  | Prep/Submit - Condensate Pumps | 20d | 2024-08-14 A | 2024-08-15 A | P2C.DES.295 | 100% | 2024-09-03 | 2024-09-30 |  | 1 | 160 | MECH | P01 | MECH-2 |  |  | Harris |  |  |  |
| BP1.200.1.150 |  | Prep/Submit - Pumps | 20d | 2024-08-16 A | 2024-08-16 A | P2C.DES.295 | 100% | 2024-09-03 | 2024-09-30 |  | 1 | 160 | MECH | P01 | MECH-2 |  |  | Harris |  |  |  |
| BP1.200.2.150 |  | Review/Approve - Pumps | 35d | 2024-08-16 A | 2024-09-20 A | BP1.200.1.150 | 100% | 2024-10-01 | 2024-11-18 |  | 1 | 280 | NIH | P01 | NIH |  |  |  |  |  |  |
| BP1.200.2.170 |  | Review/Approve - Condensate Pumps | 35d | 2024-08-16 A | 2024-09-20 A | BP1.200.1.170 | 100% | 2024-10-01 | 2024-11-18 |  | 1 | 280 | NIH | P01 | NIH |  |  |  |  |  |  |
| BP1.233.2.120 |  | Review/Approve - Variable Frequency Drive (VFD) System | 35d | 2024-08-16 A | 2024-09-26 A | BP1.233.1.120 | 100% | 2024-09-03 | 2024-10-21 |  |  | 280 | NIH | P01 | NIH |  |  |  |  |  |  |
| BP1.235.2.100 |  | Review/Approve - Heat Exchangers | 35d | 2024-08-16 A | 2024-09-20 A | BP1.235.1.100 | 100% | 2024-09-03 | 2024-10-21 |  |  | 280 | NIH | P01 | NIH |  |  |  |  |  |  |
| BP1.233.3.100 |  | Lead/Fab/Deliver - Ductwork | 30d | 2024-09-02 A | 2024-10-10 A | BP1.200.2.100, BP1.200.2.110 | 100% | 2024-10-01 | 2024-10-30 | 7D / SRLM | 1 | 240 | MECH | P01 | MECH-2 |  |  | Harris |  |  |  |
| BP1.200.1.160 |  | Prep/Submit - Steam Specialties | 20d | 2024-09-03 A | 2024-10-28 A | P2C.DES.295 | 100% | 2024-10-01 | 2024-10-28 |  | 1 | 160 | MECH | P01 | MECH-2 |  |  | Harris |  |  |  |
| BP1.233.2.110 |  | Review/Approve - UVC Lighting for Airstream Disinfection | 35d | 2024-09-03 A | 2024-10-31 A | BP1.233.1.110 | 100% | 2024-12-02 | 2025-01-21 |  |  | 280 | NIH | P01 | NIH |  |  |  |  |  |  |
| BP1.238.2.110 |  | Review/Approve - Humidifiers | 35d | 2024-09-03 A | 2024-10-31 A | BP1.238.1.110 | 100% | 2024-12-02 | 2025-01-21 |  |  | 280 | NIH | P01 | NIH |  |  |  |  |  |  |
| BP1.237.3.100 |  | Lead/Fab/Deliver - HRU's | 140d | 2024-09-20 A | 2025-04-30 A | BP1.200.2.100, BP1.200.2.110 | 100% | 2024-10-01 | 2025-02-17 | 7D / SRLM | 1 | 1120 | MECH | P01 | MECH-2 |  |  | Harris |  |  |  |
| BP1.237.3.200 |  | Lead/Fab/Deliver - AHU's | 140d | 2024-09-23 A | 2025-02-28 A | BP1.200.2.100, BP1.200.2.110, BP1.237.2.100 | 100% | 2024-10-19 | 2025-03-07 | 7D / SRLM | 1 | 1120 | MECH | P01 | MECH-2 |  |  | Harris |  |  |  |
| BP1.238.1.100 |  | Prep/Submit - FCU's | 20d | 2024-10-01 A | 2024-11-04 A | BP1.200.0.100 | 100% | 2024-12-03 | 2024-12-31 |  |  | 160 | MECH | P01 | MECH-2 |  |  | Harris |  |  |  |
| BP1.250.1.100 |  | Prep/Submit - Control Systems Integration | 20d | 2024-10-01 A | 2024-12-09 A | BP1.200.0.100 | 100% | 2024-12-03 | 2024-12-31 |  |  | 160 | MECH | P01 | MECH-2 |  |  | Harris |  |  |  |
| BP1.250.1.110 |  | Prep/Submit - BAS | 20d | 2024-10-01 A | 2024-12-16 A | BP1.200.0.100 | 100% | 2024-12-03 | 2024-12-31 |  |  | 160 | MECH | P01 | MECH-2 |  |  | Harris |  |  |  |
| BP1.200.2.160 |  | Review/Approve - Steam Specialties | 35d | 2024-10-08 A | 2025-02-25 A | BP1.200.1.160 | 100% | 2024-12-02 | 2025-01-21 |  | 1 | 280 | NIH | P01 | NIH |  |  |  |  |  |  |
| BP1.230.2.110 |  | Review/Approve - Control Valves and Dampers | 35d | 2024-10-16 A | 2025-02-13 A | BP1.230.1.110 | 100% | 2024-12-02 | 2025-01-21 |  |  | 280 | NIH | P01 | NIH |  |  |  |  |  |  |
| BP1.230.1.110 |  | Prep/Submit - Control Valves and Dampers | 20d | 2024-10-18 A | 2024-10-21 A | P2C.DES.235 SS, BP1.200.0.100 | 100% | 2024-11-01 | 2024-12-02 |  |  | 160 | MECH | P01 | MECH-2 |  |  | Harris |  |  |  |
| BP1.233.1.110 |  | Prep/Submit - UVC Lighting for Airstream Disinfection | 20d | 2024-10-18 A | 2024-10-21 A | P2C.DES.235 SS, BP1.200.0.100 | 100% | 2024-11-01 | 2024-12-02 |  |  | 160 | MECH | P01 | MECH-2 |  |  | Harris |  |  |  |
| BP1.238.1.110 |  | Prep/Submit - Humidifiers | 20d | 2024-10-18 A | 2024-10-21 A | P2C.DES.235 SS, BP1.200.0.100 | 100% | 2024-11-01 | 2024-12-02 |  |  | 160 | MECH | P01 | MECH-2 |  |  | Harris |  |  |  |
| BP1.224.3.940 |  | Lead/Fab/Deliver - Pumps | 180d | 2024-10-21 A | 2025-01-01 A | BP1.200.2.150 | 100% | 2024-11-01 | 2025-04-29 | 7D / SRLM | 1 | 480 | PLMB | P01 | PLMB |  |  | Harris |  |  |  |
| BP1.235.3.100 |  | Lead/Fab/Deliver - Heat Exchangers | 192d | 2024-10-21 A | 2025-01-23 A | BP1.235.2.100 | 100% | 2024-11-01 | 2025-05-11 | 7D / SRLM |  | 1536 | MECH | P01 | MECH-2 |  |  | Harris | Succ? |  |  |
| BP1.233.3.400 |  | Lead/Fab/Deliver - Variable Frequency Drive (VFD) System | 301d | 2024-10-28 A | 2025-08-08 A | BP1.233.2.120 | 100% | 2024-11-01 | 2025-08-28 | 7D / SRLM |  | 2408 | MECH | P01 | MECH-2 |  | TG | Harris | Succ? |  |  |
| BP1.230.1.100 |  | Prep/Submit - Laboratory Temperature and Airflow Control Systems | 20d | 2024-11-15 A | 2025-02-28 A | P2C.DES.295, BP1.200.0.100 | 100% | 2024-12-02 | 2024-12-30 |  |  | 160 | MECH | P01 | MECH-2 |  |  | Harris |  |  |  |
| BP1.250.2.100 |  | Review/Approve - Control Systems Integration | 35d | 2024-12-09 A | 2025-02-26 A | BP1.250.1.100 | 100% | 2025-01-02 | 2025-02-19 |  |  | 280 | NIH | P01 | NIH |  |  |  |  |  |  |
| BP1.250.2.110 |  | Review/Approve - BAS | 35d | 2024-12-16 A | 2025-04-10 A | BP1.250.1.110 | 100% | 2025-01-02 | 2025-02-19 |  |  | 280 | NIH | P01 | NIH |  |  |  |  |  |  |
| BP1.233.3.300 |  | Lead/Fab/Deliver - EF's (2) | 90d | 2025-01-07 A | 2025-04-15 A | BP1.200.2.100, BP1.200.2.110 | 100% | 2025-03-01 | 2025-05-29 | 7D / SRLM | 1 | 400 | MECH | P01 | MECH-2 |  |  | Harris |  |  |  |
| BP1.238.2.100 |  | Review/Approve - FCU's | 35d | 2025-02-03 A | 2025-02-21 A | BP1.238.1.100 | 100% | 2025-03-03 | 2025-04-18 |  |  | 280 | NIH | P01 | NIH |  |  |  |  |  |  |
| BP1.230.2.100 |  | Review/Approve - Laboratory Temperature and Airflow Control Systems | 35d | 2025-02-05 A | 2025-06-02 A | BP1.230.1.100 | 100% | 2025-03-04 | 2025-04-21 |  |  | 280 | NIH | P01 | NIH |  | TG |  |  |  |  |
| BP1.230.3.110 |  | Lead/Fab/Deliver - Control Valves and Dampers | 99d | 2025-02-13 A | 2025-05-24 A | BP1.230.2.110 | 100% | 2025-03-04 | 2025-06-10 | 7D / SRLM |  | 792 | MECH | P01 | MECH-2 |  |  | Harris | Succ? Need Duration |  |  |
| BP1.224.3.950 |  | Lead/Fab/Deliver - Steam Specialties | 120d | 2025-02-22 A | 2025-06-20 A | BP1.200.2.160 | 100% | 2025-03-27 | 2025-07-24 | 7D / SRLM | 1 | 480 | PLMB | P01 | PLMB |  | TG | Harris |  | TG |  |
| BP1.250.3.100 |  | Lead/Fab/Deliver - Control Systems Integration | 99d | 2025-02-26 A | 2025-07-07 A | BP1.250.2.100 | 100% | 2025-05-01 | 2025-08-07 | 7D / SRLM |  | 792 | MECH | P01 | MECH-2 |  | TG | Harris | Succ? Need Duration |  |  |
| BP1.224.3.960 |  | Lead/Fab/Deliver - Condensate Pumps | 180d | 2025-02-28 A | 2025-05-12 A | BP1.200.2.170 | 100% | 2025-03-01 | 2025-08-27 | 7D / SRLM | 1 | 480 | PLMB | P01 | PLMB |  |  | Harris |  |  |  |
| BP1.233.3.110 |  | Lead/Fab/Deliver - UVC Lighting for Airstream Disinfection | 99d | 2025-03-01 A | 2025-03-30 A | BP1.233.2.110 | 100% | 2025-03-20 | 2025-06-26 | 7D / SRLM |  | 792 | MECH | P01 | MECH-2 |  |  | Harris | Succ? Need Duration |  |  |
| BP1.238.3.190 |  | Lead/Fab/Deliver - Humidifiers | 99d | 2025-03-01 A | 2025-03-30 A | BP1.238.2.110 | 100% | 2025-03-20 | 2025-06-26 | 7D / SRLM |  | 792 | MECH | P01 | MECH-2 |  |  | Harris | Succ? Need Duration |  |  |
| BP1.238.3.100 |  | Lead/Fab/Deliver - VAV/FCU's | 56d | 2025-03-21 A | 2025-06-16 A | BP1.200.2.100, BP1.200.2.110, BP1.238.2.100 | 100% | 2025-03-01 | 2025-04-25 | 7D / SRLM | 1 | 400 | MECH | P01 | MECH-2 |  | TG | Harris |  |  |  |
| BP1.250.3.110 |  | Lead/Fab/Deliver - BAS | 99d | 2025-04-11 A | 2025-07-03 A | BP1.250.2.110 | 100% | 2025-05-02 | 2025-08-08 | 7D / SRLM |  | 792 | MECH | P01 | MECH-2 |  | TG | Harris | Succ? Need Duration |  |  |
| BP1.230.3.100 |  | Lead/Fab/Deliver - Laboratory Temperature and Airflow Control Systems | 85d | 2025-04-16 A | 2025-07-25 A | BP1.230.2.100 FF, BP1.230.2.100 SS | 100% | 2025-05-02 | 2025-07-25 | 7D / SRLM |  | 792 | MECH | P01 | MECH-2 |  | TG | Harris | Succ? Need Duration |  |  |
| BP1.233.1.100 |  | Prep/Submit - Grilles, Registers and Diffusers | 20d | 2025-04-21 A | 2025-04-22 A | BP1.200.0.100 | 100% | 2025-05-01 | 2025-05-29 |  |  | 160 | MECH | P01 | MECH-2 |  |  | Harris |  |  |  |
| BP1.233.2.100 |  | Review/Approve - Grilles, Registers and Diffusers | 35d | 2025-04-22 A | 2025-05-22 A | BP1.233.1.100 | 100% | 2025-06-04 | 2025-07-23 |  |  | 280 | NIH | P01 | NIH |  |  |  |  |  |  |
| BP1.233.3.410 |  | Lead/Fab/Deliver - Grilles, Registers and Diffusers | 85d | 2025-05-23 A | 2025-09-29 A | BP1.233.2.100 | 100% | 2025-07-24 | 2025-10-16 | 7D / SRLM | 1 | 240 | MECH | P01 | MECH-2 |  | TG | Harris |  | RAL | O |

| ID | WBS | Activity | Duration | Start | Finish | Predecessors | Complete | Remaining | Planned start | Planned finish | Total float | Free float | Calendar | Bid Package | Temp Orig Dur | Resp / SRLM | PHASE | RESP / Trade | Z.RESP | Pick #2 | 744 | RESP UPD | Update Status |
| --- | --- | --- | --- | --- | --- | --- | --- | --- | --- | --- | --- | --- | --- | --- | --- | --- | --- | --- | --- | --- | --- | --- | --- |
|  | 9 | **Plumbing** |  | 2024-06-01 | 2026-08-03 |  |  |  |  |  |  |  |  |  |  |  |  |  |  |  |  |  |  |
| BP1.200.2.110 |  | Review/Approve - Mech/Plumbing - Phase 2 | 35d | 2024-06-01 A | 2024-06-28 A | BP1.200.1.110 SS+15d | 100% |  | 2024-06-18 | 2024-08-06 |  |  |  | 1 | 280 | NIH | P01 | NIH |  |  |  |  |  |
| BP1.220.3.100 |  | Lead/Fab/Deliver - Mixing Valves | 30d | 2024-06-11 A | 2025-01-01 A | BP1.200.2.100, BP1.200.2.110 | 100% |  | 2024-08-01 | 2024-08-30 |  |  | 7D / SRLM | 1 | 240 | PLMB | P01 | PLMB | Harris |  |  |  |  |
| BP1.226.1.110 |  | Prep/Submit - High Purity Water Pipe | 20d | 2024-07-01 A | 2024-07-12 A | P2C.DES.205, BP1.200.0.100 | 100% |  | 2024-12-02 | 2024-12-30 |  |  |  |  | 160 | PLMB | P01 | PLMB | Harris |  |  |  |  |
| BP1.226.2.110 |  | Review/Approve - High Purity Water Pipe | 35d | 2024-07-12 A | 2024-11-08 A | BP1.226.1.110 | 100% |  | 2024-12-31 | 2025-02-18 |  |  |  |  | 280 | NIH | P01 | NIH |  |  |  |  |  |
| BP1.200.1.110 |  | Prep/Submit - Mech/Plumbing - Phase 2 | 20d | 2024-07-18 A | 2024-08-14 A | P2C.DES.295 SS, BP1.200.0.100 | 100% |  |  |  |  |  |  | 1 | 160 | MECH | P01 | MECH-2 | Harris |  |  |  |  |
| BP1.220.1.140 |  | Prep/Submit - Plumbing Equipment | 20d | 2024-08-01 A | 2024-08-15 A | P2C.DES.295, BP1.200.0.100 | 100% |  | 2024-09-03 | 2024-09-30 |  |  |  |  | 160 | PLMB | P01 | PLMB | Harris |  |  |  |  |
| BP1.226.1.100 |  | Prep/Submit - Lab Compressed-Air Systems | 20d | 2024-08-01 A | 2024-08-21 A | P2C.DES.295, BP1.200.0.100 | 100% |  | 2024-09-03 | 2024-09-30 |  |  |  |  | 160 | PLMB | P01 | PLMB | Harris |  |  |  |  |
| BP1.226.3.120 |  | Prep/ Submit - Backflow Preventer Skids | 20d | 2024-08-12 A | 2024-08-13 A | BP1.200.0.100 | 100% |  | 2024-10-01 | 2024-10-28 |  |  |  |  |  | PLMB |  | PLMB |  |  |  |  |  |
| BP1.226.3.130 |  | Review/ Approve - Backflow Preventer Skids | 35d | 2024-08-13 A | 2024-09-13 A | BP1.226.3.120 | 100% |  | 2024-10-29 | 2024-12-18 |  |  |  |  |  | PLMB |  | PLMB |  |  |  |  |  |
| BP1.220.2.140 |  | Review/Approve - Plumbing Equipment | 35d | 2024-08-16 A | 2025-01-10 A | BP1.220.1.140 | 100% |  | 2024-10-01 | 2024-11-18 |  |  |  |  | 280 | BAS | P01 | BAS-1 |  |  |  |  |  |
| BP1.226.2.100 |  | Review/Approve - Lab Compressed-Air Systems | 35d | 2024-08-21 A | 2024-09-23 A | BP1.226.1.100 | 100% |  | 2024-09-04 | 2024-10-22 |  |  |  |  | 280 | NIH | P01 | NIH |  |  |  |  |  |
| BP1.226.3.100 |  | Lead/Fab/Deliver - Med Gas | 50d | 2024-09-02 A | 2025-01-07 A | BP1.200.2.100, BP1.200.2.110 | 100% |  | 2024-10-01 | 2024-11-19 |  |  | 7D / SRLM | 1 | 400 | PLMB | P01 | PLMB | Harris |  |  |  |  |
| BP1.224.1.100 |  | Prep/Submit - Plumbing Fixtures | 20d | 2024-10-01 A | 2024-10-04 A | P2C.DES.235 SS, BP1.200.0.100 | 100% |  | 2024-11-01 | 2024-12-02 |  |  |  |  | 160 | PLMB | P01 | PLMB | Harris |  |  |  |  |
| BP1.226.3.140 |  | Lead/ Fab/ Deliver - Backflow Preventer Skids | 112d | 2024-10-21 A | 2025-03-17 A | BP1.226.3.130 | 100% |  | 2024-11-01 | 2025-02-20 |  |  | 7D / SRLM |  |  | PLMB |  | PLMB |  |  |  |  |  |
| BP1.223.1.100 |  | Prep/Submit - Domestic Water Softeners | 20d | 2024-11-06 A | 2024-11-11 A | P2C.DES.205, BP1.200.0.100 | 100% |  | 2024-12-02 | 2024-12-30 |  |  |  |  | 160 | PLMB | P01 | PLMB | Harris |  |  |  |  |
| BP1.223.2.100 |  | Review/Approve - Domestic Water Softeners | 35d | 2024-11-11 A | 2024-11-20 A | BP1.223.1.100 | 100% |  | 2025-01-02 | 2025-02-19 |  |  |  |  | 280 | NIH | P01 | NIH |  |  |  |  |  |
| BP1.224.2.100 |  | Review/Approve - Plumbing Fixtures | 35d | 2024-11-21 A | 2025-01-10 A | BP1.224.1.100 | 100% |  | 2024-12-02 | 2025-01-21 |  |  |  |  | 280 | NIH | P01 | NIH |  |  |  |  |  |
| BP1.226.3.110 |  | Lead/Fab/Deliver - High Purity Water Pipe | 365d | 2025-02-04 A | 2025-03-19 A | BP1.226.2.110 | 100% |  | 2025-03-01 | 2026-02-28 |  |  | 7D / SRLM |  | 2920 | PLMB | P01 | PLMB | Harris | Succ? |  |  |  |
| BP1.226.1.150 |  | Vendor [Neu-Ion] Released to Submit High Purity Water System Submittals - Lab | 1d | 2025-02-11 A | 2025-02-11 A | P2C.DES.435 | 100% |  | 2025-03-03 | 2025-03-03 |  |  |  |  |  | PLMB |  | PLMB |  |  |  |  |  |
| BP1.226.1.160 |  | HP Release Funds to Vendor (Evoqua) to Submit High Purity Water System Submittals - CSP | 1d | 2025-02-11 A | 2025-02-11 A | P2C.DES.435 | 100% |  | 2025-03-03 | 2025-03-03 |  |  |  |  |  | PLMB |  | PLMB |  |  |  |  |  |
| BP1.226.1.120 |  | Prep/Submit - High Purity Water System - CSP | 28d | 2025-02-12 A | 2025-05-30 A | P2C.DES.205, BP1.226.1.160 | 100% |  | 2025-03-03 | 2025-04-09 |  |  |  |  | 160 | PLMB | P01 | PLMB | Harris |  | TG | TG |  |
| BP1.226.1.130 |  | Prep/Submit - High Purity Water System - Lab | 18d | 2025-02-12 A | 2025-04-25 A | P2C.DES.205, BP1.226.1.150 | 100% |  | 2025-03-03 | 2025-03-26 |  |  |  |  | 160 | PLMB | P01 | PLMB | Harris |  |  |  |  |
| BP1.220.3.120 |  | Lead/Fab/Deliver - Plumbing Equipment Sump Pumps | 168d | 2025-04-01 A | 2025-07-01 A | BP1.220.2.140 | 100% |  | 2025-05-01 | 2025-10-15 |  |  | 7D / SRLM |  | 1344 | PLMB | P01 | PLMB | Harris | Succ? | TG | TG |  |
| BP1.220.3.110 |  | Lead/Fab/Deliver - Plumbing Equipment Water Heater | 95d | 2025-04-10 A | 2025-09-19 A | BP1.220.2.140 | 100% |  | 2025-05-01 | 2025-08-03 |  |  | 7D / SRLM |  | 1344 | PLMB | P01 | PLMB | Harris | Succ? | TG | RAL | O |
| BP1.226.1.140 |  | Prep/Submit - Waste Water Tanks | 20d | 2025-04-18 A | 2025-04-30 A | P2C.DES.205 | 100% |  | 2025-05-01 | 2025-05-29 |  |  |  |  | 160 | PLMB | P01 | PLMB | Harris |  |  |  |  |
| BP1.220.3.140 |  | Lead/Fab/Deliver - Plumbing Equipment Pumps | 100d | 2025-04-21 A | 2025-07-01 A | BP1.220.2.140 | 100% |  | 2025-05-01 | 2025-08-08 |  |  | 7D / SRLM |  | 1568 | PLMB | P01 | PLMB | Harris | Succ? | TG | TG |  |
| BP1.223.3.100 |  | Lead/Fab/Deliver - Domestic Water Softeners | 99d | 2025-04-21 A | 2026-03-31 A | BP1.223.2.100 | 100% |  | 2025-05-01 | 2025-08-07 |  |  | 7D / SRLM |  | 792 | PLMB | P01 | PLMB | Harris | Succ? Need Duration | TG | RAL | O |
| BP1.226.3.900 |  | Lead/Fab/Deliver - Lab Compressed-Air Systems | 170d | 2025-05-15 A | 2025-10-17 A | BP1.226.2.100 | 100% |  | 2025-06-01 | 2025-11-17 |  |  | 7D / SRLM |  | 2016 | PLMB | P01 | PLMB | Harris | Succ? | TG | RAL |  |
| BP1.226.2.120 |  | Review/Approve - High Purity Water Equipment - CSP | 35d | 2025-05-30 A | 2025-07-19 A | BP1.226.1.120 SS, BP1.226.1.120 FF | 100% |  | 2025-07-01 | 2025-08-19 |  |  |  |  | 280 | NIH | P01 | NIH |  |  | TG | TG |  |
| BP1.226.2.170 |  | Review/Approve - Waste Water Tanks | 35d | 2025-06-05 A | 2025-07-01 A | BP1.226.1.140 | 100% |  | 2025-07-01 | 2025-08-19 |  |  |  |  | 280 | NIH | P01 | NIH |  |  | TG | TG |  |
| BP1.224.3.100 |  | Lead/Fab/Deliver - Plumbing Fixtures | 84d | 2025-06-26 A | 2025-11-01 A | BP1.200.2.100, BP1.200.2.110, BP1.224.2.100 | 100% |  | 2025-07-01 | 2025-09-22 |  |  | 7D / SRLM | 1 | 480 | PLMB | P01 | PLMB | Harris |  | TG | RAL |  |
| BP1.226.2.130 |  | Review/Approve - High Purity Water Equipment - Lab | 35d | 2025-06-30 A | 2025-08-04 A | BP1.226.1.130 | 100% |  | 2025-07-01 | 2025-08-19 |  |  |  |  | 280 | NIH | P01 | NIH |  |  | TG | TG |  |
| BP1.226.2.180 |  | Lead/Fab/Deliver - Waste Water Tanks | 168d | 2025-07-15 A | 2025-11-01 A | BP1.226.2.170 | 100% |  | 2025-09-01 | 2026-02-15 |  |  | 7D / SRLM |  | 280 | NIH | P01 | NIH |  |  | TG | RAL |  |
| BP1.226.2.140 |  | Lead/Fab/Deliver - High Purity Water Equipment - CSP | 119d | 2025-08-13 A | 2025-10-22 A | BP1.226.2.120 | 100% |  | 2025-09-01 | 2025-12-28 |  |  | 7D / SRLM |  | 280 | NIH | P01 | NIH |  |  | TG | RAL |  |
| BP1.226.2.150 |  | Lead/Fab/Deliver - High Purity Water Equipment - Lab | 161d | 2026-03-11 A | 2026-08-03 | BP1.226.2.130 | 22% | 125d | 2026-03-01 | 2026-08-08 | 30d | 0d | 7D / SRLM |  | 280 | NIH | P01 | NIH |  |  | TG | RAL | O |

| ID | WBS | Activity | Duration | Start | Finish | Predecessors | Complete | Planned start | Planned finish | Total float | Free float | Calendar | Bid Package | Temp Orig Dur | Resp / SRLM | PHASE | RESP / Trade | Pick #2 | 744 | RESP UPD | Update Status |
| --- | --- | --- | --- | --- | --- | --- | --- | --- | --- | --- | --- | --- | --- | --- | --- | --- | --- | --- | --- | --- | --- |
|  | 8 | **Electrical** |  | 2022-12-19 | 2026-07-08 |  |  |  |  |  |  |  |  |  |  |  |  |  |  |  |  |
| BP1.260.0.100 |  | Buyout - Electrical (HP) | 30d | 2022-12-19 A | 2023-01-31 A | EXS.100 SS | 100% |  |  |  |  |  | 1 | 240 | HP | P01 | HP |  |  |  |  |
| BP1.260.1.130 |  | Prep/Submit - Underground Ducts and Raceways for Electrical Systems | 50d | 2023-08-15 A | 2023-10-27 A | P1.DES.460, BP1.260.0.100 | 100% | 2023-08-15 | 2023-10-24 |  |  |  |  | 160 | ELEC | P01 | ELEC-2 | Pred? |  |  |  |
| BP1.260.0.110 |  | Buyout - Electrical Switchgear | 40d | 2023-09-25 A | 2024-02-26 A | P2B.DES.685, BP1.260.0.100 | 100% | 2023-11-01 | 2023-12-29 |  |  |  | 1 | 240 | ELEC |  | ELEC-2 |  |  |  |  |
| BP1.260.0.120 |  | Buyout - Electrical Gen/ATS | 40d | 2023-09-25 A | 2024-02-16 A | P2B.DES.685, BP1.260.0.100 | 100% | 2023-11-01 | 2023-12-29 |  |  |  | 1 | 240 | ELEC |  | ELEC-2 |  |  |  |  |
| BP1.260.0.130 |  | Buyout - Electrical UPS | 40d | 2023-09-25 A | 2024-04-29 A | P2B.DES.685, BP1.260.0.100 | 100% | 2023-11-01 | 2023-12-29 |  |  |  | 1 | 240 | ELEC |  | ELEC-2 |  |  |  |  |
| BP1.260.2.130 |  | Review/Approve - Underground Ducts and Raceways for Electrical Systems | 35d | 2023-10-27 A | 2024-02-09 A | BP1.260.1.130 | 100% | 2023-12-01 | 2024-01-22 |  |  |  |  | 280 | NIH | P01 | NIH |  |  |  |  |
| BP1.263.1.120 |  | Prep/Submit - Automatic Transfer Switches | 50d | 2024-02-07 A | 2024-07-01 A | BP1.260.0.120 | 100% | 2024-03-01 | 2024-05-09 |  |  |  |  | 160 | ELEC | P01 | ELEC-2 |  |  |  |  |
| BP1.260.3.130 |  | Lead/Fab/Deliver - Underground Ducts and Raceways for Electrical Systems | 99d | 2024-02-10 A | 2024-02-19 A | BP1.260.2.130 | 100% | 2024-03-01 | 2024-06-07 |  |  | 7D / SRLM |  | 792 | ELEC | P01 | ELEC-2 | Succ? Need Duration |  |  |  |
| BP1.263.1.100 |  | Prep/Submit - Generators | 45d | 2024-02-19 A | 2024-06-04 A | BP1.260.0.120 | 100% | 2024-02-15 | 2024-04-17 |  |  |  |  | 160 | ELEC | P01 | ELEC-2 |  |  |  |  |
| BP1.260.1.200 |  | Prep/Submit - Enclosed Bus Assemblies | 30d | 2024-02-26 A | 2024-09-16 A | BP1.260.0.110 | 100% | 2024-03-01 | 2024-04-11 |  |  |  |  | 160 | ELEC | P01 | ELEC-2 | Pred? |  |  |  |
| BP1.260.1.300 |  | Prep/Submit - Electrical Meters | 50d | 2024-02-26 A | 2024-10-28 A | BP1.260.0.110 | 100% | 2024-03-01 | 2024-05-09 |  |  |  |  | 160 | ELEC | P01 | ELEC-2 | Pred? |  |  |  |
| BP1.261.1.110 |  | Prep/Submit - Low-Voltage Switchgear | 50d | 2024-02-26 A | 2024-05-16 A | BP1.260.0.110 | 100% | 2024-03-01 | 2024-05-09 |  |  |  |  | 160 | ELEC | P01 | ELEC-2 |  |  |  |  |
| BP1.261.1.120 |  | Prep/Submit - Low-Voltage Transformers | 35d | 2024-02-26 A | 2024-05-13 A | BP1.260.0.110 | 100% | 2024-03-01 | 2024-04-18 |  |  |  |  | 160 | ELEC | P01 | ELEC-2 |  |  |  |  |
| BP1.261.1.130 |  | Prep/Submit - Switchboards | 25d | 2024-02-26 A | 2024-04-23 A | BP1.260.0.110 | 100% | 2024-03-01 | 2024-04-04 |  |  |  |  | 160 | ELEC | P01 | ELEC-2 |  |  |  |  |
| BP1.261.1.150 |  | Prep/Submit - Liquid-Filled, Medium-Voltage Transformers | 25d | 2024-02-26 A | 2024-05-16 A | BP1.260.0.110 | 100% | 2024-03-01 | 2024-04-04 |  |  |  |  | 160 | ELEC | P01 | ELEC-2 |  |  |  |  |
| BP1.261.1.160 |  | Prep/Submit - Medium-Voltage Vacuum Interrupter Switchgear | 25d | 2024-02-26 A | 2024-05-16 A | BP1.260.0.110 | 100% | 2024-03-01 | 2024-04-04 |  |  |  |  | 160 | ELEC | P01 | ELEC-2 |  |  |  |  |
| BP1.261.1.170 |  | Prep/Submit - Panelboards | 25d | 2024-02-26 A | 2024-07-11 A | BP1.260.0.110 | 100% | 2024-03-01 | 2024-04-04 |  |  |  |  | 160 | ELEC | P01 | ELEC-2 |  |  |  |  |
| BP1.260.1.110 |  | Prep/Submit - Low-Voltage Electrical Power Conductors and Cables | 50d | 2024-03-18 A | 2024-03-25 A | P2C.DES.295, BP1.260.0.100 | 100% | 2024-08-01 | 2024-10-10 |  |  |  |  | 160 | ELEC | P01 | ELEC-2 | Pred? |  |  |  |
| BP1.261.2.100 |  | Review/Approve - Switchboards | 10d | 2024-04-24 A | 2024-07-18 A | BP1.261.1.130 SS | 100% | 2024-05-01 | 2024-05-14 |  |  |  |  | 280 | NIH | P01 | NIH |  |  |  |  |
| BP1.263.1.110 |  | Prep/Submit - Static Uninterruptible Power Supply | 50d | 2024-04-30 A | 2024-07-03 A | BP1.260.0.130 | 100% | 2024-05-15 | 2024-07-25 |  |  |  |  | 160 | ELEC | P01 | ELEC-2 |  |  |  |  |
| BP1.261.2.120 |  | Review/Approve - Low-Voltage Transformers | 20d | 2024-05-14 A | 2024-07-05 A | BP1.261.1.120 | 100% | 2024-06-03 | 2024-06-28 |  |  |  |  | 280 | NIH | P01 | NIH |  |  |  |  |
| BP1.261.2.110 |  | Review/Approve - Low-Voltage Switchgear | 20d | 2024-05-17 A | 2024-06-05 A | BP1.261.1.110 | 100% | 2024-06-03 | 2024-06-28 |  |  |  |  | 280 | NIH | P01 | NIH |  |  |  |  |
| BP1.261.2.150 |  | Review/Approve - Liquid-Filled, Medium-Voltage Transformers | 15d | 2024-05-17 A | 2024-07-18 A | BP1.261.1.150 | 100% | 2024-06-03 | 2024-06-21 |  |  |  |  | 280 | NIH | P01 | NIH |  |  |  |  |
| BP1.261.2.160 |  | Review/Approve - Medium-Voltage Vacuum Interrupter Switchgear | 20d | 2024-05-17 A | 2024-06-05 A | BP1.261.1.160 | 100% | 2024-06-03 | 2024-06-28 |  |  |  |  | 280 | NIH | P01 | NIH |  |  |  |  |
| BP1.260.1.140 |  | Prep/Submit - Medium-Voltage Cables | 50d | 2024-05-20 A | 2024-06-12 A | P2B.DES.795, BP1.260.0.100 | 100% | 2024-07-18 | 2024-09-26 |  |  |  |  | 160 | ELEC | P01 | ELEC-2 | Pred? |  |  |  |
| BP1.260.1.180 |  | Prep/Submit - Ground Ring Monitoring | 50d | 2024-05-28 A | 2024-06-28 A | P2B.DES.795, BP1.260.0.100 | 100% | 2024-07-18 | 2024-09-26 |  |  |  |  | 160 | ELEC | P01 | ELEC-2 | Pred? |  |  |  |
| BP1.263.2.100 |  | Review/Approve - Generators | 20d | 2024-06-05 A | 2024-07-10 A | BP1.263.1.100 | 100% | 2024-06-05 | 2024-07-02 |  |  |  |  | 280 | NIH | P01 | NIH |  |  |  |  |
| BP1.261.3.110 |  | Lead/Fab/Deliver - Low-Voltage Switchgear | 329d | 2024-06-06 A | 2025-04-28 A | BP1.261.2.110 | 100% | 2024-06-06 | 2025-04-30 |  |  | 7D / SRLM |  | 3528 | ELEC | P01 | ELEC-2 | Succ? |  |  |  |
| BP1.261.3.160 |  | Lead/Fab/Deliver - Medium-Voltage Vacuum Interrupter Switchgear | 231d | 2024-06-06 A | 2025-03-28 A | BP1.261.2.160 | 100% | 2024-06-20 | 2025-02-05 |  |  | 7D / SRLM |  | 490 | ELEC | P01 | ELEC-2 | Succ? |  |  |  |
| BP1.260.2.140 |  | Review/Approve - Medium-Voltage Cables | 35d | 2024-06-13 A | 2024-09-03 A | BP1.260.1.140 | 100% | 2024-06-17 | 2024-08-05 |  |  |  |  | 280 | NIH | P01 | NIH |  |  |  |  |
| BP1.260.2.180 |  | Review/Approve - Ground Ring Monitoring | 16d | 2024-06-13 A | 2024-06-28 A | BP1.260.1.180 | 100% | 2024-08-01 | 2024-08-22 |  |  |  |  | 280 | NIH | P01 | NIH |  |  |  |  |
| BP1.263.2.120 |  | Review/Approve - Automatic Transfer Switches | 20d | 2024-07-02 A | 2024-09-30 A | BP1.263.1.120 | 100% | 2024-08-01 | 2024-08-28 |  |  |  |  | 280 | NIH | P01 | NIH |  |  |  |  |
| BP1.263.2.110 |  | Review/Approve - Static Uninterruptible Power Supply | 35d | 2024-07-05 A | 2024-10-01 A | BP1.263.1.110 | 100% | 2024-08-06 | 2024-09-24 |  |  |  |  | 280 | NIH | P01 | NIH |  |  |  |  |
| BP1.261.2.170 |  | Review/Approve - Panelboards | 10d | 2024-07-12 A | 2025-03-28 A | BP1.261.1.170 | 100% | 2024-08-01 | 2024-08-14 |  |  |  |  | 280 | NIH | P01 | NIH |  |  |  |  |
| BP1.260.0.140 |  | Buyout - Electrical Lighting | 30d | 2024-07-18 A | 2024-10-15 A | P2C.DES.295, BP1.260.0.100 | 100% | 2024-08-01 | 2024-09-12 |  |  |  | 1 | 240 | ELEC |  | ELEC-2 |  |  |  |  |
| BP1.261.3.150 |  | Lead/Fab/Deliver - Liquid-Filled Medium-Voltage Transformers | 314d | 2024-07-22 A | 2025-08-29 A | BP1.261.2.150 | 100% | 2024-08-01 | 2025-06-10 |  |  | 7D / SRLM |  | 2688 | ELEC | P01 | ELEC-2 | Succ? | AC | JB |  |
| BP1.262.3.200 |  | Lead/Fab/Deliver - Switchboards - Priority 1 | 240d | 2024-07-23 A | 2025-04-03 A | BP1.261.2.100, BP1.263.3.110 FF | 100% | 2024-11-01 | 2025-06-28 |  |  | 7D / SRLM | 1 | 1040 | ELEC | P01 | ELEC-2 | Dupe? |  |  |  |
| BP1.262.3.210 |  | Lead/Fab/Deliver - Switchboards - Priority 2 | 270d | 2024-08-24 A | 2025-09-05 A | BP1.261.2.100, BP1.263.3.110 FF | 100% | 2024-11-01 | 2025-07-28 |  |  | 7D / SRLM | 1 | 1040 | ELEC | P01 | ELEC-2 | Dupe? | AC | JB | O |
| BP1.260.2.110 |  | Review/Approve - Low-Voltage Electrical Power Conductors and Cables | 35d | 2024-09-10 A | 2024-11-14 A | BP1.260.1.110 | 100% | 2024-10-01 | 2024-11-18 |  |  |  |  | 280 | NIH | P01 | NIH |  |  |  |  |
| BP1.260.2.200 |  | Review/Approve - Enclosed Bus Assemblies | 21d | 2024-09-17 A | 2024-11-22 A | BP1.260.1.200 | 100% | 2024-10-01 | 2024-10-29 |  |  |  |  | 280 | NIH | P01 | NIH |  |  |  |  |
| BP1.262.3.220 |  | Lead/Fab/Deliver - Switchboards - Priority 3 | 299d | 2024-10-07 A | 2025-11-03 A | BP1.261.2.100, BP1.263.3.110 FF | 100% | 2024-11-01 | 2025-08-26 |  |  | 7D / SRLM | 1 | 1040 | ELEC | P01 | ELEC-2 | Dupe? | AC | JB |  |
| BP1.263.3.100 |  | Lead/Fab/Deliver - Generators | 455d | 2024-10-18 A | 2025-01-16 A | BP1.263.2.100 | 100% | 2024-11-01 | 2026-01-29 |  |  | 7D / SRLM |  | 3920 | ELEC | P01 | ELEC-2 | Succ? |  |  |  |
| BP1.260.3.140 |  | Lead/Fab/Deliver - Medium-Voltage Cables | 210d | 2024-10-21 A | 2025-02-20 A | BP1.260.2.140 | 100% | 2024-11-01 | 2025-05-29 |  |  | 7D / SRLM |  | 1680 | ELEC | P01 | ELEC-2 | Succ? |  |  |  |
| BP1.263.3.110 |  | Lead/Fab/Deliver - Static Uninterruptible Power Supply | 99d | 2024-10-23 A | 2025-08-01 A | BP1.263.2.110 | 100% | 2024-11-01 | 2025-02-07 |  |  | 7D / SRLM |  | 792 | ELEC | P01 | ELEC-2 | Succ? Need Duration | AC | JB |  |
| BP1.261.3.120 |  | Lead/Fab/Deliver - Low-Voltage Transformers | 240d | 2024-10-25 A | 2025-03-12 A | BP1.261.2.120 | 100% | 2024-11-01 | 2025-06-28 |  |  | 7D / SRLM |  | 2912 | ELEC | P01 | ELEC-2 | Succ? |  |  |  |
| BP1.260.2.300 |  | Review/Approve - Electrical Meters | 21d | 2024-10-28 A | 2025-03-28 A | BP1.260.1.300 | 100% | 2024-11-01 | 2024-12-03 |  |  |  |  | 280 | NIH | P01 | NIH |  |  |  |  |
| BP1.260.3.110 |  | Lead/Fab/Deliver - Low-Voltage Electrical Power Conductors and Cables | 99d | 2024-11-15 A | 2025-05-19 A | BP1.260.2.110 | 100% | 2024-12-14 | 2025-03-22 |  |  | 7D / SRLM |  | 792 | ELEC | P01 | ELEC-2 | Succ? Need Duration |  |  |  |
| BP1.260.3.200 |  | Lead/Fab/Deliver - Enclosed Bus Assemblies | 210d | 2024-11-26 A | 2025-01-30 A | BP1.260.2.200 | 100% | 2024-12-03 | 2025-06-30 |  |  | 7D / SRLM |  | 1680 | ELEC | P01 | ELEC-2 | Succ? |  |  |  |
| BP1.260.3.300 |  | Lead/Fab/Deliver - Electrical Meters | 180d | 2024-11-28 A | 2025-08-01 A | BP1.260.2.300 SS | 100% | 2024-12-14 | 2025-06-11 |  |  | 7D / SRLM |  | 792 | ELEC | P01 | ELEC-2 | Succ? Need Duration | AC | JB |  |
| BP1.261.3.170 |  | Lead/Fab/Deliver - Liquid Filled - Medium-Voltage - Network Protectors | 241d | 2024-12-02 A | 2025-08-01 A | BP1.261.2.150, BP1.261.3.150 SS | 100% | 2025-01-01 | 2025-08-29 |  |  | 7D / SRLM |  | 2688 | ELEC | P01 | ELEC-2 | Succ? | AC | JB |  |
| BP1.265.1.110 |  | Prep/Submit - Lighting - Exterior | 20d | 2024-12-16 A | 2025-02-28 A | BP1.260.0.140, P2C.DES.295 | 100% | 2025-01-02 | 2025-01-29 |  |  |  |  | 160 | ELEC | P01 | ELEC-2 |  |  |  |  |
| BP1.265.1.120 |  | Prep/Submit - Lighting - Roadway | 20d | 2024-12-16 A | 2025-02-28 A | BP1.260.0.140, P2C.DES.295 | 100% | 2025-01-02 | 2025-01-29 |  |  |  |  | 160 | ELEC | P01 | ELEC-2 |  |  |  |  |
| BP1.263.3.120 |  | Lead/Fab/Deliver - Automatic Transfer Switches | 220d | 2024-12-20 A | 2025-05-23 A | BP1.263.2.120 | 100% | 2025-01-01 | 2025-08-08 |  |  | 7D / SRLM |  | 792 | ELEC | P01 | ELEC-2 | Succ? Need Duration |  |  |  |
| BP1.262.3.100 |  | Lead/Fab/Deliver - Panel Boards | 182d | 2025-01-10 A | 2025-05-19 A | BP1.261.2.170 SS | 100% | 2025-02-15 | 2025-08-15 |  |  | 7D / SRLM | 1 | 480 | ELEC | P01 | ELEC-2 | Dupe? |  |  |  |
| BP1.265.1.100 |  | Prep/Submit - Lighting Controls | 20d | 2025-02-03 A | 2025-02-28 A | BP1.260.0.140, P2C.DES.295 | 100% | 2025-03-03 | 2025-03-28 |  |  |  |  | 160 | ELEC | P01 | ELEC-2 |  |  |  |  |
| BP1.265.3.100 |  | Lead/Fab/Deliver - Decorative Lighting | 148d | 2025-03-01 A | 2025-10-01 A | BP1.260.0.140 | 100% | 2025-03-01 | 2025-07-26 |  |  | 7D / SRLM | 1 | 640 | ELEC | P01 | ELEC-2 |  | AC | JB |  |
| BP1.265.2.100 |  | Review/Approve - Lighting Controls | 35d | 2025-03-03 A | 2025-06-02 A | BP1.265.1.100 | 100% | 2025-03-03 | 2025-04-18 |  |  |  |  | 280 | NIH | P01 | NIH |  | AC | JB |  |
| BP1.265.2.110 |  | Review/Approve - Lighting - Exterior | 35d | 2025-03-03 A | 2025-06-02 A | BP1.265.1.110 | 100% | 2025-03-03 | 2025-04-18 |  |  |  |  | 280 | NIH | P01 | NIH |  | AC | JB |  |
| BP1.265.2.120 |  | Review/Approve - Lighting - Roadway | 35d | 2025-03-03 A | 2026-02-06 A | BP1.265.1.120 | 100% | 2025-03-03 | 2025-04-18 |  |  |  |  | 280 | NIH | P01 | NIH |  | AC | JB | O |
| BP1.260.3.180 |  | Lead/Fab/Deliver - Ground Ring Monitoring | 99d | 2025-04-01 A | 2025-10-06 A | BP1.260.2.180 | 100% | 2025-05-01 | 2025-08-07 |  |  | 7D / SRLM |  | 792 | ELEC | P01 | ELEC-2 | Succ? Need Duration | AC | JB |  |
| BP1.265.3.110 |  | Lead/Fab/Deliver - Lighting - Exterior | 99d | 2025-04-19 A | 2025-08-01 A | BP1.265.2.110 FF, BP1.265.2.110 SS | 100% | 2025-05-21 | 2025-08-27 |  |  | 7D / SRLM |  | 792 | ELEC | P01 | ELEC-2 | Succ? Need Duration | AC | JB |  |
| BP1.265.3.900 |  | Lead/Fab/Deliver - Lighting Controls | 99d | 2025-04-19 A | 2025-08-18 A | BP1.265.2.100 FF, BP1.265.2.100 SS | 100% | 2025-05-21 | 2025-08-27 |  |  | 7D / SRLM |  | 792 | ELEC | P01 | ELEC-2 | Succ? Need Duration | AC | JB | O |
| BP1.283.3.200 |  | Lead/Fab/Deliver - Med Gas Alarm Panels | 98d | 2025-05-15 A | 2025-08-08 A | BP1.200.2.100, BP1.200.2.110 | 100% | 2025-06-01 | 2025-09-06 |  |  | 7D / SRLM | 1 | 480 | ELEC | P01 | ELEC-2 |  | RAL | JB |  |
| BP1.265.3.120 |  | Lead/Fab/Deliver - Lighting - Roadway | 99d | 2026-04-01 | 2026-07-08 | BP1.265.2.120 FF, BP1.265.2.120 SS |  |  |  | 245d | 99d | 7D / SRLM |  | 792 | ELEC | P01 | ELEC-2 | Succ? Need Duration | AC | JB | O |

| ID | WBS | Activity | Duration | Start | Finish | Predecessors | Complete | Planned start | Planned finish | Total float | Free float | Calendar | Bid Package | Temp Orig Dur | Resp / SRLM | PHASE | RESP / Trade | Update Status | Pick #2 | 744 | RESP UPD |
| --- | --- | --- | --- | --- | --- | --- | --- | --- | --- | --- | --- | --- | --- | --- | --- | --- | --- | --- | --- | --- | --- |
|  | 10 | **Low Voltage** |  | 2024-06-26 | 2026-03-01 |  |  |  |  |  |  |  |  |  |  |  |  |  |  |  |  |
| BP1.270.3.100 |  | Lead/Fab/Deliver - Low Voltage Pathway | 40d | 2024-06-26 A | 2024-09-26 A | P2C.DES.295, BP1.260.0.100 | 100% | 2024-08-01 | 2024-09-09 |  |  | 7D / SRLM | 1 | 320 | LOWVOLT | P01 | LOWVOLT-1 |  |  |  |  |
| BP1.270.1.100 |  | Prep/Submit - Communications | 20d | 2024-10-25 A | 2024-11-01 A | P2C.DES.235 SS | 100% | 2024-11-01 | 2024-12-02 |  |  |  |  | 160 | LOWVOLT | P01 | LOWVOLT-1 |  |  |  |  |
| BP1.271.1.100 |  | Prep/Submit - Nurse Call/Code Blue Systems | 20d | 2024-10-25 A | 2024-11-01 A | P2C.DES.235 SS | 100% | 2024-11-01 | 2024-12-02 |  |  |  |  | 160 | LOWVOLT | P01 | LOWVOLT-1 |  |  |  |  |
| BP1.271.1.110 |  | Prep/Submit - Intercommunications and Program Systems | 20d | 2024-10-25 A | 2024-11-01 A | P2C.DES.235 SS | 100% | 2024-11-01 | 2024-12-02 |  |  |  |  | 160 | LOWVOLT | P01 | LOWVOLT-1 |  |  |  |  |
| BP1.274.1.100 |  | Prep/Submit - Audio-Video Systems and Equipment | 20d | 2024-10-25 A | 2024-11-01 A | P2C.DES.235 SS | 100% | 2024-11-01 | 2024-12-02 |  |  |  |  | 160 | LOWVOLT | P01 | LOWVOLT-1 |  |  |  |  |
| BP1.275.1.100 |  | Prep/Submit - Paging Systems | 20d | 2024-10-25 A | 2024-11-01 A | P2C.DES.235 SS | 100% | 2024-11-01 | 2024-12-02 |  |  |  |  | 160 | LOWVOLT | P01 | LOWVOLT-1 |  |  |  |  |
| BP1.280.1.110 |  | Prep/Submit - Electronic Safety and Security | 20d | 2024-10-25 A | 2024-11-01 A | P2C.DES.235 SS | 100% | 2024-11-01 | 2024-12-02 |  |  |  |  | 160 | LOWVOLT | P01 | LOWVOLT-1 |  |  |  |  |
| BP1.270.2.100 |  | Review/Approve - Communications | 35d | 2024-11-01 A | 2024-11-05 A | BP1.270.1.100 | 100% | 2024-12-02 | 2025-01-21 |  |  |  |  | 280 | NIH | P01 | NIH |  |  |  |  |
| BP1.271.2.100 |  | Review/Approve - Nurse Call/Code Blue Systems | 35d | 2024-11-01 A | 2024-11-05 A | BP1.271.1.100 | 100% | 2024-12-02 | 2025-01-21 |  |  |  |  | 280 | NIH | P01 | NIH |  |  |  |  |
| BP1.271.2.110 |  | Review/Approve - Intercommunications and Program Systems | 35d | 2024-11-01 A | 2024-12-05 A | BP1.271.1.110 | 100% | 2024-12-02 | 2025-01-21 |  |  |  |  | 280 | NIH | P01 | NIH |  |  |  |  |
| BP1.274.2.100 |  | Review/Approve - Audio-Video Systems and Equipment | 35d | 2024-11-01 A | 2024-11-05 A | BP1.274.1.100 | 100% | 2024-12-02 | 2025-01-21 |  |  |  |  | 280 | NIH | P01 | NIH |  |  |  |  |
| BP1.275.2.100 |  | Review/Approve - Paging Systems | 35d | 2024-11-01 A | 2024-11-05 A | BP1.275.1.100 | 100% | 2024-12-02 | 2025-01-21 |  |  |  |  | 280 | NIH | P01 | NIH |  |  |  |  |
| BP1.280.2.110 |  | Review/Approve - Electronic Safety and Security | 35d | 2024-11-01 A | 2024-11-05 A | BP1.280.1.110 | 100% | 2024-12-02 | 2025-01-21 |  |  |  |  | 280 | NIH | P01 | NIH |  |  |  |  |
| BP1.274.3.100 |  | Lead/Fab/Deliver - Audio-Video Systems and Equipment | 99d | 2024-12-03 A | 2026-03-01 A | BP1.274.2.100 | 100% | 2025-02-03 | 2025-05-12 |  |  | 7D / SRLM |  | 792 | LOWVOLT | P01 | LOWVOLT-1 | O | Succ? Need Duration | ZK | JB |
| BP1.275.3.100 |  | Lead/Fab/Deliver - LV Paging | 40d | 2024-12-03 A | 2026-03-01 A | BP1.275.2.100 | 100% | 2025-02-03 | 2025-03-14 |  |  | 7D / SRLM | 1 | 320 | LOWVOLT | P01 | LOWVOLT-1 | O |  | ZK | JB |
| BP1.270.3.120 |  | Lead/Fab/Deliver - Communications Equipment | 112d | 2024-12-26 A | 2025-05-30 A | BP1.270.2.100 | 100% | 2025-02-03 | 2025-05-25 |  |  | 7D / SRLM |  | 896 | LOWVOLT | P01 | LOWVOLT-1 |  | Succ? |  |  |
| BP1.275.3.200 |  | Lead/Fab/Deliver - LV Nurse Call | 40d | 2025-01-17 A | 2025-03-01 A | BP1.271.2.100 | 100% | 2025-02-03 | 2025-03-14 |  |  | 7D / SRLM | 1 | 320 | LOWVOLT | P01 | LOWVOLT-1 |  |  |  |  |
| BP1.271.3.110 |  | Lead/Fab/Deliver - Intercommunications and Program Systems | 99d | 2025-01-27 A | 2026-03-01 A | BP1.271.2.110 | 100% | 2025-02-03 | 2025-05-12 |  |  | 7D / SRLM |  | 792 | LOWVOLT | P01 | LOWVOLT-1 | O | Succ? Need Duration | ZK | JB |
| BP1.280.3.100 |  | Lead/Fab/Deliver - LV Security | 40d | 2025-03-03 A | 2025-03-21 A | BP1.280.2.110 | 100% | 2025-03-03 | 2025-04-11 |  |  | 7D / SRLM | 1 | 320 | LOWVOLT | P01 | LOWVOLT-1 |  |  |  |  |
| BP1.280.1.100 |  | Prep/Submit - Fire Detection and Alarm | 20d | 2025-03-10 A | 2025-03-10 A | P2C.DES.235 SS | 100% | 2025-03-03 | 2025-03-28 |  |  |  |  | 160 | LOWVOLT | P01 | LOWVOLT-1 |  |  |  |  |
| BP1.280.2.100 |  | Review/Approve - Fire Detection and Alarm | 35d | 2025-03-10 A | 2025-05-06 A | BP1.280.1.100 | 100% | 2025-03-31 | 2025-05-16 |  |  |  |  | 280 | NIH | P01 | NIH |  |  |  |  |
| BP1.283.3.100 |  | Lead/Fab/Deliver - LV Fire Alarm | 40d | 2025-05-06 A | 2025-05-30 A | BP1.280.2.100, BP1.260.0.100 | 100% | 2025-06-18 | 2025-07-27 |  |  | 7D / SRLM | 1 | 320 | ELEC | P01 | ELEC-2 |  |  |  |  |
|  | 9 | **Bid Package 2** |  | 2023-01-06 | 2026-08-06 |  |  |  |  |  |  |  |  |  |  |  |  |  |  |  |  |
|  | 16 | **Facade Maintenance Equipment** |  | 2023-01-06 | 2026-06-24 |  |  |  |  |  |  |  |  |  |  |  |  |  |  |  |  |
| BP2.112.0.100 |  | Buyout - Facade Maintenance Equipment | 30d | 2023-01-06 A | 2023-07-26 A | P2.DES.315 | 100% | 2023-01-06 | 2023-02-16 |  |  |  | 2 | 240 | HP | P01 | HP |  |  |  |  |
| P2.MTG.MOB.200 |  | Summit Premobilization & Kick-off Meeting | 1d | 2023-04-18 A | 2023-04-18 A | BP2.112.0.100 SS | 100% |  |  |  |  |  |  |  | EXMAINT |  | EXMAINT |  |  |  |  |
| P2.FAD.FM.100 |  | Prepare Davitt Base & Anchor Shop Drawings - Facade Maintenance | 15d | 2023-12-04 A | 2024-01-03 A | P2.DES.FM.210 | 100% | 2024-01-02 | 2024-01-22 |  |  |  |  |  | EXMAINT |  | EXMAINT |  |  |  |  |
| P2.FAD.FM.110 |  | Review Davitt Base & Anchor Shop Drawings - Facade Maintenance | 15d | 2024-01-04 A | 2024-02-05 A | P2.FAD.FM.100 | 100% | 2024-02-05 | 2024-02-23 |  |  |  |  |  | ARCH |  | ARCH |  |  |  |  |
| P2.FAD.FM.130 |  | Review & Approve Davitt Base & Anchor Shop Drawings - Facade Maintenance | 10d | 2024-02-06 A | 2024-02-20 A | P2.FAD.FM.110 | 100% | 2024-03-05 | 2024-03-18 |  |  |  |  |  | NIH |  | NIH |  |  |  |  |
| P2.FAD.FM.160 |  | Prepare Facade Maintenance Shop Drawings | 20d | 2024-02-23 A | 2024-03-14 A | P2.FAD.FM.130 | 100% | 2024-03-18 | 2024-04-12 |  |  |  |  |  | EXMAINT |  | EXMAINT |  |  |  |  |
| P2.FAD.FM.170 |  | Review & Approve Facade Maintenance Shop Drawings | 10d | 2024-03-15 A | 2024-03-29 A | P2.FAD.FM.160 | 100% | 2024-04-09 | 2024-04-22 |  |  |  |  |  | ARCH |  | ARCH |  |  |  |  |
| P2.FAD.FM.140 |  | Release Davitt Base & Anchors - Facade Maintenance | 1d | 2024-04-01 A | 2024-04-01 A | P2.FAD.FM.130, P2.FAD.FM.170 | 100% | 2024-05-01 | 2024-05-01 |  |  |  |  |  | EXMAINT |  | EXMAINT |  |  |  |  |
| P2.FAD.FM.150 |  | Davitt Base & Anchors Fabrication | 75d | 2024-04-02 A | 2024-04-24 A | P2.FAD.FM.140 | 100% | 2024-05-02 | 2024-08-16 |  |  |  |  |  | EXMAINT |  | EXMAINT |  |  |  |  |
| P2.FAD.FM.180 |  | Assemble & Ship Davit Base & Anchor Assemblies - Facade Maintenance | 5d | 2024-04-25 A | 2024-05-03 A | P2.FAD.FM.150 | 100% | 2024-08-19 | 2024-08-23 |  |  |  |  |  | EXMAINT |  | EXMAINT |  |  |  |  |
| P2.FAD.FM.220 |  | Release Facade Maintenance Equipment For Fabrication | 15d | 2024-04-30 A | 2024-06-12 A | P2.FAD.FM.170 | 100% | 2024-05-01 | 2024-05-21 |  |  |  |  |  | EXMAINT |  | EXMAINT |  |  |  |  |
| P2.FAD.FM.230 |  | Davitt Arm Procurement | 60d | 2024-05-22 A | 2025-03-20 A | P2.FAD.FM.220 SS | 100% | 2024-06-10 | 2024-09-03 |  |  |  |  |  | EXMAINT |  | EXMAINT |  |  |  |  |
| P2.FAD.FM.240 |  | Cable System Procurement | 60d | 2024-05-22 A | 2025-03-20 A | P2.FAD.FM.220 SS | 100% | 2024-06-10 | 2024-09-03 |  |  |  |  |  | EXMAINT |  | EXMAINT |  |  |  |  |
| P2.FAD.FM.200 |  | Davitt Base & Anchor Delivery for Structure- Facade Maintenance | 1d | 2024-10-15 A | 2024-10-31 A | P2.FAD.FM.180 | 100% | 2025-01-02 | 2025-01-02 |  |  |  |  |  | EXMAINT |  | EXMAINT |  |  |  |  |
| P2.FAD.FM.250 |  | Landing Platform Procurement | 60d | 2026-04-01 | 2026-06-24 | P2.FAD.FM.220 |  |  |  | 194d | 139d |  |  |  | EXMAINT |  | EXMAINT | O |  |  |  |

Notes:
- P2.FAD.FM.140: Posit: Embeds to be released prior to IFC Submission to facilitate schedule
- P2.FAD.FM.220: Posit: Release to coordinate with construction activity
- P2.FAD.FM.230: Posit: To be used for construction
- P2.FAD.FM.240: Posit: Finish-Finish with Roof Installation
- P2.FAD.FM.250: Posit: Delivery at end of Project

| ID | WBS | Activity | Duration | Start | Finish | Predecessors | Complete | Planned start | Planned finish | Calendar | Bid Package | Temp Orig Dur | Resp / SRLM | PHASE | RESP / Trade | Pick |
| --- | --- | --- | --- | --- | --- | --- | --- | --- | --- | --- | --- | --- | --- | --- | --- | --- |
|  | 17 | **Architectural Precast** |  | 2023-01-06 | 2024-12-21 |  |  |  |  |  |  |  |  |  |  |  |
| BP2.034.0.100 |  | Buyout - Architectural Precast | 30d | 2023-01-06 A | 2023-03-17 A | P2.DES.315 | 100% | 2023-01-06 | 2023-02-16 |  | 2 | 240 | HP | P01 | HP |  |
| P2.MTG.MOB.300 |  | ACD Premobilization & Kick-off Meeting | 1d | 2023-04-21 A | 2023-04-21 A | BP2.034.0.100 | 100% |  |  |  |  |  | PRECAST |  | PRECAST |  |
|  | 1 | **Phase 1A - Architectural Precast** |  | 2023-04-04 | 2023-08-30 |  |  |  |  |  |  |  |  |  |  |  |
| BP2.034.1.110 |  | Prep/Submit - Architectural Precast - Phase 1A | 10d | 2023-04-04 A | 2023-04-12 A | BP2.034.0.100, P1A.DES.650 FF | 100% | 2023-04-04 | 2023-04-17 |  | 2 | 80 | PRECAST | P01 | PRECAST |  |
| BP2.034.2.110 |  | Review/Approve - Architectural Precast - Phase 1A | 10d | 2023-04-13 A | 2023-05-17 A | BP2.034.1.110 | 100% | 2023-04-13 | 2023-04-26 |  | 2 | 80 | NIH | P01 | NIH |  |
| BP2.034.3.110 |  | Lead/Fab/Deliver - Architectural Precast - Phase 1A | 28d | 2023-05-18 A | 2023-08-30 A | BP2.034.2.110 | 100% | 2023-05-18 | 2023-06-14 | 7D / SRLM | 2 | 224 | PRECAST | P01 | PRECAST | 84 |
|  | Precast | **Precast Preconstruction & Procurement** |  | 2023-10-16 | 2024-12-21 |  |  |  |  |  |  |  |  |  |  |  |
| P2.FAD.PC.100 |  | Prepare Embed Shop Drawings - Precast | 15d | 2023-10-16 A | 2024-03-28 A | P2.DES.PC.170 | 100% | 2023-11-01 | 2023-11-21 |  |  |  | PRECAST |  | PRECAST |  |
| P2.FAD.PC.130 |  | Brick Procurement | 120d | 2023-10-27 A | 2024-05-20 A | P2.DES.PC.230 | 100% | 2023-11-13 | 2024-05-02 |  |  |  | PRECAST |  | PRECAST |  |
| P2.FAD.PC.110 |  | Prepare Precast Shop Drawings | 30d | 2023-12-22 A | 2024-03-28 A | P2.DES.PC.290 | 100% | 2024-01-02 | 2024-02-12 |  |  |  | PRECAST |  | PRECAST |  |
| P2.FAD.PC.140 |  | Review & Approve Embed Shop Drawings - Precast | 20d | 2024-03-29 A | 2024-05-15 A | P2.FAD.PC.100 | 100% | 2024-04-22 | 2024-05-17 |  |  |  | ARCH |  | ARCH |  |
| P2.FAD.PC.150 |  | Review Precast Shop Drawings | 20d | 2024-03-29 A | 2024-04-18 A | P2.FAD.PC.110 | 100% | 2024-04-15 | 2024-05-10 |  |  |  | ARCH |  | ARCH |  |
| P2.FAD.PC.190 |  | Release Embeds - Precast | 1d | 2024-03-29 A | 2024-03-29 A | P2.FAD.PC.100 | 100% | 2024-05-03 | 2024-05-03 |  |  |  | PRECAST |  | PRECAST |  |
| P2.FAD.PC.210 |  | Embed Fabrication - Precast | 20d | 2024-04-01 A | 2024-05-14 A | P2.FAD.PC.190 | 100% | 2024-05-02 | 2024-05-30 |  |  |  | PRECAST |  | PRECAST |  |
| P2.FAD.PC.220 |  | Release Precast For Fabrication | 15d | 2024-04-19 A | 2024-04-19 A | P2.FAD.PC.150, P2.FAD.GG.400 | 100% | 2024-06-24 | 2024-07-15 |  |  |  | PRECAST |  | PRECAST |  |
| P2.FAD.PC.230 |  | Precast Mold Creation | 110d | 2024-04-22 A | 2024-10-10 A | P2.FAD.PC.220 FF | 100% | 2024-06-24 | 2024-11-26 |  |  |  | PRECAST |  | PRECAST |  |
| P2.FAD.PC.260 |  | Precast Fabrication - Brick Faced Panels | 120d | 2024-04-26 A | 2024-10-31 A | P2.FAD.PC.200 FF, P2.FAD.PC.130 SS+20d, P2.FAD.PC.230 SS | 100% | 2024-06-24 | 2024-12-12 |  |  |  | PRECAST |  | PRECAST |  |
| P2.FAD.PC.280 |  | Precast Fabrication - Terracotta Faced Panels | 100d | 2024-04-26 A | 2024-10-24 A | P2.FAD.PC.200 FF, P2.FAD.PC.120 SS+120d, P2.FAD.PC.230 SS | 100% | 2024-06-03 | 2024-10-22 |  |  |  | PRECAST |  | PRECAST |  |
| P2.FAD.PC.170 |  | Revise & Resubmit Precast Shop Drawings | 15d | 2024-05-01 A | 2024-06-07 A | P2.FAD.PC.150 | 100% | 2024-05-23 | 2024-06-13 |  |  |  | PRECAST |  | PRECAST |  |
| P2.FAD.PC.240 |  | Assemble & Ship Embed Assemblies - Precast | 5d | 2024-05-15 A | 2024-05-22 A | P2.FAD.PC.210 | 100% | 2024-06-10 | 2024-06-14 |  |  |  | PRECAST |  | PRECAST |  |
| P2.FAD.PC.250 |  | Embed Delivery for Structure - Precast | 1d | 2024-05-23 A | 2024-05-23 A | P2.FAD.PC.240 | 100% | 2024-06-17 | 2024-06-17 |  |  |  | PRECAST |  | PRECAST |  |
| P2.FAD.PC.200 |  | Review & Approve Precast Shop Drawings | 10d | 2024-06-10 A | 2024-07-18 A | P2.FAD.PC.170 | 100% | 2024-06-10 | 2024-06-21 |  |  |  | ARCH |  | ARCH |  |
| P2.FAD.PC.270 |  | Delivery - Precast | 5d | 2024-12-16 A | 2024-12-21 A | P2.FAD.PC.260, P2.FAD.PC.280, P2.FAD.GG.290 | 100% | 2025-01-02 | 2025-01-08 |  |  |  | PRECAST |  | PRECAST |  |

Notes:
- P2.FAD.PC.130: Posit: Brick/Terracotta to be released prior to 100% Submission to facilitate schedule
- P2.FAD.PC.190: Posit: Embeds to be released prior to IFC Submission to facilitate schedule
- P2.FAD.PC.220: Posit: Precast to be released prior to IFC Submission to facilitate schedule

| ID | WBS | Activity | Duration | Start | Finish | Predecessors | Complete | Remaining | Planned start | Planned finish | Total float | Free float | Calendar | Bid Package | Temp Orig Dur | Resp / SRLM | PHASE | RESP / Trade | *NIH Resp Check* | SRLM - Crew | Pick #2 | 744 | RESP UPD | Update Status |
| --- | --- | --- | --- | --- | --- | --- | --- | --- | --- | --- | --- | --- | --- | --- | --- | --- | --- | --- | --- | --- | --- | --- | --- | --- |
|  | 19 | **Terracotta Panels** |  | 2023-01-09 | 2024-06-28 |  |  |  |  |  |  |  |  |  |  |  |  |  |  |  |  |  |  |  |
| BP2.042.0.100 |  | Buyout - Terracotta Panels | 30d | 2023-01-09 A | 2023-03-17 A | P2.DES.315 | 100% |  | 2023-01-09 | 2023-02-17 |  |  |  | 2 | 240 | HP | P01 | HP |  |  |  |  |  |  |
| BP2.042.1.100 |  | Prep/Submit - Terracotta Panels | 20d | 2023-06-15 A | 2023-07-31 A | BP2.042.0.100 | 100% |  | 2024-06-26 | 2024-07-24 |  |  |  | 2 | 160 | PRECAST | P01 | PRECAST | T.FACADE.PRECAST |  |  |  |  |  |
| BP2.042.2.100 |  | Review/Approve - Terracotta Panels | 35d | 2023-08-01 A | 2023-10-27 A | BP2.042.1.100 | 100% |  | 2024-07-25 | 2024-09-12 |  |  |  | 2 | 280 | NIH | P01 | NIH |  |  |  |  |  |  |
| P2.FAD.PC.120 |  | Terracotta Procurement | 185d | 2023-10-30 A | 2024-06-28 A | BP2.042.2.100, P2.DES.PC.230 | 100% |  | 2023-11-13 | 2024-08-05 |  |  |  |  |  | PRECAST |  | PRECAST |  |  |  |  |  |  |
|  | 18 | **Exterior Glazing** |  | 2023-01-09 | 2026-05-05 |  |  |  |  |  |  |  |  |  |  |  |  |  |  |  |  |  |  |  |
| BP2.088.0.200 |  | Buyout - Exterior Glazing | 30d | 2023-01-09 A | 2023-05-08 A | P2.DES.315 | 100% |  | 2023-01-09 | 2023-02-17 |  |  |  | 2 | 240 | HP | P01 | HP |  |  |  |  |  |  |
| P2.MTG.MOB.100 |  | GPR - Premobilization & Kick-Off Meeting | 1d | 2023-04-13 A | 2023-04-13 A | BP2.088.0.200 FF, BP2.088.0.200 SS | 100% |  |  |  |  |  |  |  |  | GLAZ |  | GLAZ |  | G-Precon |  |  |  |  |
|  | Glass & Glazing | **Glass & Glazing Preconstruction & Procurement** |  | 2023-10-16 | 2026-05-05 |  |  |  |  |  |  |  |  |  |  |  |  |  |  |  |  |  |  |  |
| P2.FAD.GG.100 |  | Prepare Embed Shop Drawings - Glass & Glazing | 20d | 2023-10-16 A | 2024-01-04 A | BP4.030.1.110 | 100% |  | 2023-11-22 | 2023-12-21 |  |  |  |  |  | GLAZ |  | GLAZ |  | G-Precon |  |  |  |  |
| P2.FAD.GG.120 |  | Fabricate Extrusions (Dyes) | 100d | 2023-12-22 A | 2024-05-21 A | P2.DES.GG.250 | 100% |  | 2024-01-02 | 2024-05-20 |  |  |  |  |  | GLAZ |  | GLAZ |  | G-Precon |  |  |  |  |
| P2.FAD.GG.130 |  | Review Embed Shop Drawings - Glass & Glazing | 10d | 2024-01-05 A | 2024-01-26 A | P2.FAD.GG.100 | 100% |  | 2024-02-01 | 2024-02-14 |  |  |  |  |  | ARCH |  | ARCH |  |  |  |  |  |  |
| P2.FAD.GG.110 |  | Prepare Glass & Glazing Shop Drawings (Windows) | 15d | 2024-02-05 A | 2024-02-23 A | P2.DES.GG.320 FF+5d | 100% |  | 2024-03-01 | 2024-03-21 |  |  |  |  |  | GLAZ |  | GLAZ |  | G-Precon |  |  |  |  |
| P2.FAD.GG.160 |  | Revise & Resubmit Embed Shop Drawings - Glass & Glazing | 10d | 2024-02-07 A | 2024-02-28 A | P2.FAD.GG.130 | 100% |  | 2024-03-01 | 2024-03-14 |  |  |  |  |  | GLAZ |  | GLAZ |  | G-Precon |  |  |  |  |
| P2.FAD.GG.140 |  | Review Glass & Glazing Shop Drawings (Windows) | 10d | 2024-02-23 A | 2024-03-01 A | P2.FAD.GG.110 | 100% |  | 2024-03-01 | 2024-03-14 |  |  |  |  |  | ARCH |  | ARCH |  |  |  |  |  |  |
| P2.FAD.GG.180 |  | Review & Approve Embed Shop Drawings - Glass & Glazing | 10d | 2024-02-28 A | 2024-03-21 A | P2.FAD.GG.160 | 100% |  | 2024-03-15 | 2024-03-28 |  |  |  |  |  | ARCH |  | ARCH |  |  |  |  |  |  |
| P2.FAD.GG.170 |  | Revise & Resubmit Glass & Glazing Shop Drawings | 5d | 2024-03-04 A | 2024-04-03 A | P2.FAD.GG.140 | 100% |  | 2024-04-02 | 2024-04-08 |  |  |  |  |  | GLAZ |  | GLAZ |  | G-Precon |  |  |  |  |
| P2.FAD.GG.190 |  | Release Embeds - Glass & Glazing | 1d | 2024-03-21 A | 2024-03-21 A | P2.FAD.GG.180 | 100% |  | 2024-04-15 | 2024-04-15 |  |  |  |  |  | GLAZ |  | GLAZ |  | G-Precon |  |  |  |  |
| P2.FAD.GG.210 |  | Embed Fabrication - Glass & Glazing | 30d | 2024-03-22 A | 2024-04-19 A | P2.FAD.GG.190 | 100% |  | 2024-04-01 | 2024-05-10 |  |  |  |  |  | GLAZ |  | GLAZ |  | G-Precon |  |  |  |  |
| P2.FAD.GG.330 |  | Prepare Curtain Wall & Storefront Shop Drawings | 20d | 2024-03-29 A | 2024-07-15 A | P2A.DES.555 | 100% |  | 2024-03-26 | 2024-04-22 |  |  |  |  |  | GLAZ |  | GLAZ |  | G-Precon |  |  |  |  |
| P2.FAD.GG.200 |  | Review & Approve Glass & Glazing Shop Drawings (Windows) | 10d | 2024-04-03 A | 2024-04-16 A | P2.FAD.GG.170 | 100% |  | 2024-05-03 | 2024-05-16 |  |  |  |  |  | NIH |  | NIH |  |  |  |  |  |  |
| P2.FAD.GG.220 |  | Release Glass & Glazing For Fabrication (Windows) | 5d | 2024-04-17 A | 2024-04-23 A | P2.FAD.GG.200 | 100% |  | 2024-05-17 | 2024-05-23 |  |  |  |  |  | GLAZ |  | GLAZ |  | G-Precon |  |  |  |  |
| P2.FAD.GG.250 |  | Assemble & Ship Embed Assemblies - Glass & Glazing | 5d | 2024-04-22 A | 2024-04-26 A | P2.FAD.GG.210 | 100% |  | 2024-05-01 | 2024-05-07 |  |  |  |  |  | GLAZ |  | GLAZ |  | G-Precon |  |  |  |  |
| P2.FAD.GG.150 |  | Fabricate Glass for Windows | 80d | 2024-04-24 A | 2024-06-27 A | P2.FAD.GG.220 | 100% |  | 2024-05-01 | 2024-08-22 |  |  |  |  |  | GLAZ |  | GLAZ |  | G-Precon |  |  |  |  |
| P2.FAD.GG.400 |  | Embed Delivery for Precast - Glass & Glazing | 1d | 2024-04-26 A | 2024-04-26 A | P2.FAD.GG.250 | 100% |  | 2024-05-08 | 2024-05-08 |  |  |  |  |  | GLAZ |  | GLAZ |  | G-Precon |  |  |  |  |
| P2.FAD.GG.240 |  | Fabricate Aluminum Extrusions (Windows) | 60d | 2024-04-29 A | 2024-06-27 A | P2.FAD.GG.220, P2.FAD.GG.120 FF+30d | 100% |  | 2024-05-01 | 2024-07-25 |  |  |  |  |  | GLAZ |  | GLAZ |  | G-Precon |  |  |  |  |
| P2.FAD.GG.410 |  | Embed Fabrication - CurtainWall | 15d | 2024-05-08 A | 2024-05-29 A | P2.FAD.GG.330 SS | 100% |  | 2024-06-10 | 2024-06-28 |  |  |  |  |  | GLAZ |  | GLAZ |  | G-Precon |  |  |  |  |
| P2.FAD.GG.260 |  | Embed Delivery for Structure - Glass & Glazing | 1d | 2024-05-30 A | 2024-05-30 A | P2.FAD.GG.410 | 100% |  | 2024-07-01 | 2024-07-01 |  |  |  |  |  | GLAZ |  | GLAZ |  | G-Precon |  |  |  |  |
| P2.FAD.GG.270 |  | Assemble & Glaze Units (Windows) | 50d | 2024-06-28 A | 2024-09-15 A | P2.FAD.GG.240, P2.FAD.GG.150 | 100% |  | 2024-08-29 | 2024-11-07 |  |  |  |  |  | GLAZ |  | GLAZ |  | G-Precon |  |  |  |  |
| P2.FAD.GG.360 |  | Review & Approve Curtain Wall Shop Drawings | 15d | 2024-07-16 A | 2024-09-09 A | P2.FAD.GG.330 SS | 100% |  | 2024-08-01 | 2024-08-21 |  |  |  |  |  | NIH |  | NIH |  |  |  |  |  |  |
| P2.FAD.GG.380 |  | Release CurtainWall & Storefront For Fabrication | 5d | 2024-09-09 A | 2024-09-25 A | P2.FAD.GG.360 | 100% |  | 2024-10-04 | 2024-10-10 |  |  |  |  |  | GLAZ |  | GLAZ |  | G-Precon |  |  |  |  |
| P2.FAD.GG.320 |  | Fabricate Aluminum Extrusions (Curtainwall & Storefront Frames) | 60d | 2024-09-26 A | 2024-12-31 A | P2.FAD.GG.380 | 100% |  | 2024-10-01 | 2024-12-26 |  |  |  |  |  | GLAZ |  | GLAZ |  | G-Precon |  |  |  |  |
| P2.FAD.GG.370 |  | Fabricate Glass for CurtainWall & Storefront | 80d | 2024-09-26 A | 2025-04-15 A | P2.FAD.GG.380 | 100% |  | 2024-10-01 | 2025-01-24 |  |  |  |  |  | GLAZ |  | GLAZ |  | G-Precon |  |  |  |  |
| P2.FAD.GG.230 |  | Fabricate Back-pans & Shadowboxes | 75d | 2024-09-27 A | 2025-02-21 A | P2.FAD.GG.380 | 100% |  | 2024-10-11 | 2025-01-29 |  |  |  |  |  | GLAZ |  | GLAZ |  | G-Precon |  |  |  |  |
| P2.FAD.GG.280 |  | Deliver Units to Precast Shops | 5d | 2024-10-09 A | 2024-10-14 A | P2.FAD.GG.270 | 100% |  | 2024-11-01 | 2024-11-07 |  |  |  |  |  | GLAZ |  | GLAZ |  | G-Precon |  |  |  |  |
| P2.FAD.GG.290 |  | Pre-Glaze Units into Precast Panels | 40d | 2024-10-11 A | 2024-11-22 A | P2.FAD.GG.280, P2.FAD.PC.260 FF+15d | 100% |  | 2024-11-08 | 2025-01-08 |  |  |  |  |  | GLAZ |  | GLAZ |  | G-Precon |  |  |  |  |
| P2.FAD.GG.390 |  | Assemble & Glaze Units (Storefront & CurtainWall) | 20d | 2025-01-02 A | 2025-04-21 A | P2.FAD.GG.320, P2.FAD.GG.230 FF, P2.FAD.GG.370 FF | 100% |  | 2025-03-17 | 2025-04-11 |  |  |  |  |  | GLAZ |  | GLAZ |  | G-Precon |  |  |  |  |
| P2.FAD.GG.135 |  | Prep/Submit - Aluminum Storefront (Doors Only - Framing with Curtain Wall) | 14d | 2025-04-01 A | 2025-04-14 A | P2.DES.GG.340 | 100% |  | 2025-05-01 | 2025-05-20 |  |  |  |  | 160 | GLAZ | P01 | GLAZ |  | G-Precon | Pred? |  |  |  |
| P2.FAD.GG.420 |  | Deliver Curtain Wall (Early) | 5d | 2025-04-07 A | 2025-04-11 A | P2.FAD.GG.135 SS+4d | 100% |  | 2025-05-07 | 2025-05-13 |  |  |  |  |  | GLAZ |  | GLAZ |  | G-Precon |  |  |  |  |
| P2.FAD.GG.145 |  | Review/Approve - Doors/Frames - Aluminum Storefront (Doors Only - Framing with Curtain Wall) | 35d | 2025-04-14 A | 2025-06-18 A | P2.FAD.GG.135 | 100% |  | 2025-05-21 | 2025-07-10 |  |  |  |  | 280 | NIH | P01 | NIH |  |  |  | TC | TC |  |
| P2.FAD.GG.300 |  | Deliver Curtain Wall | 5d | 2025-04-22 A | 2025-04-29 A | P2.FAD.GG.420 SS | 100% |  | 2025-05-07 | 2025-05-13 |  |  |  |  |  | GLAZ |  | GLAZ |  | G-Precon |  |  |  |  |
| P2.FAD.GG.215 |  | Lead/Fab/Deliver - Doors/Frames - Aluminum Storefront (Doors Only - Framing with Curtain Wall) | 105d | 2025-06-19 A | 2026-04-28 | P2.FAD.GG.145 | 73% | 28d | 2025-07-09 | 2025-10-21 | 205d | 0d | 7D / SRLM |  | 840 | GLAZ | P01 | GLAZ |  | G-Precon | Succ? | TC | BA | O |
| P2.FAD.GG.310 |  | Deliver Storefront Doors | 5d | 2026-04-29 | 2026-05-05 | P2.FAD.GG.215, P2.FAD.GG.290, P2.FAD.GG.390, P2.L1.F.LC.1070 |  |  |  |  | 144d | 59d |  |  |  | GLAZ |  | GLAZ |  | G-Precon |  |  | BA |  |

Notes:
- P2.FAD.PC.120: Posit: Brick/Terracotta to be released prior to 100% Submission to facilitate schedule
- P2.FAD.GG.120: Posit: Extrusions to be released prior to 100% Submission to facilitate schedule
- P2.FAD.GG.190: Posit: Embeds to be released prior to IFC Submission to facilitate schedule
- P2.FAD.GG.220: Posit: Glass&Glazing Additional Components to be released prior to IFC Submission to facilitate schedule
- P2.FAD.GG.150: Posit: Glass to be released prior to 100% Submission to facilitate schedule
- P2.FAD.GG.270: Posit: To break out unit types to support preglazing precast & construction sequence
- P2.FAD.GG.380: Posit: Glass&Glazing Additional Components to be released prior to IFC Submission to facilitate schedule
- P2.FAD.GG.370: Posit: Glass to be released prior to 100% Submission to facilitate schedule
- P2.FAD.GG.280: Posit: Windows getting preglazed into precast
- P2.FAD.GG.390: Posit: To break out unit types to support preglazing precast & construction sequence
- P2.FAD.GG.420: Posit: To be delivered after precast installation onsite (by area)
- P2.FAD.GG.300: Posit: To be delivered after precast installation onsite (by area)
- P2.FAD.GG.310: Posit: To be delivered near end of building enclosure scope

| ID | WBS | Activity | Duration | Start | Finish | Predecessors | Complete | Remaining | Planned start | Planned finish | Total float | Free float | Calendar | Bid Package | Temp Orig Dur | Resp / SRLM | PHASE | RESP / Trade | Posit | 744 | RESP UPD | Pick #2 | *NIH Resp Check* | Update Status |
| --- | --- | --- | --- | --- | --- | --- | --- | --- | --- | --- | --- | --- | --- | --- | --- | --- | --- | --- | --- | --- | --- | --- | --- | --- |
|  | 20 | **Metal Panels** |  | 2023-03-01 | 2025-06-20 |  |  |  |  |  |  |  |  |  |  |  |  |  |  |  |  |  |  |  |
| BP2.074.0.100 |  | Buyout - Metal Panels | 30d | 2023-03-01 A | 2023-04-25 A | P2.DES.315 | 100% |  | 2023-03-01 | 2023-04-11 |  |  |  | 2 | 240 | HP | P01 | HP |  |  |  |  |  |  |
| P2.MTG.MOB.400 |  | Eastern Premobilizaiton & Kick-off Meeting | 1d | 2023-05-03 A | 2023-05-03 A | BP2.074.0.100 | 100% |  |  |  |  |  |  |  |  | MPANEL |  | MPANEL |  |  |  |  |  |  |
| P2.FAD.MP.100 |  | Prepare Metal Panel Shop Drawings | 20d | 2024-05-01 A | 2024-11-04 A | P2.DES.MP.280 | 100% |  | 2024-06-03 | 2024-06-28 |  |  |  |  |  | MPANEL |  | MPANEL |  |  |  |  |  |  |
| P2.FAD.MP.200 |  | Review Metal Panel Shop Drawings | 10d | 2024-11-05 A | 2024-11-27 A | P2.FAD.MP.100 | 100% |  | 2024-12-04 | 2024-12-17 |  |  |  |  |  | ARCH |  | ARCH |  |  |  |  |  |  |
| P2.FAD.MP.300 |  | Revise & Resubmit Metal Panel Shop Drawings | 15d | 2024-11-11 A | 2024-12-10 A | P2.FAD.MP.200 | 100% |  | 2025-01-02 | 2025-01-22 |  |  |  |  |  | MPANEL |  | MPANEL |  |  |  |  |  |  |
| P2.FAD.MP.400 |  | Review & Approve Metal Panel Shop Drawings | 10d | 2024-12-11 A | 2025-01-06 A | P2.FAD.MP.300 | 100% |  | 2025-01-23 | 2025-02-05 |  |  |  |  |  | ARCH |  | ARCH |  |  |  |  |  |  |
| P2.FAD.MP.800 |  | Louver Procurement | 100d | 2025-01-02 A | 2025-02-04 A | P2.FAD.MP.500 | 100% |  | 2025-02-28 | 2025-07-21 |  |  |  |  |  | MPANEL |  | MPANEL |  |  |  |  |  |  |
| P2.FAD.MP.500 |  | Release Metal Panel Scopes For Fabrication | 15d | 2025-01-07 A | 2025-01-29 A | P2.FAD.MP.400 | 100% |  | 2025-02-07 | 2025-02-27 |  |  |  |  |  | MPANEL |  | MPANEL | Release to coordinate with construction activity |  |  |  |  |  |
| P2.FAD.MP.600 |  | ACM Product Procurement | 80d | 2025-01-30 A | 2025-06-20 A | P2.FAD.MP.500 | 100% |  | 2025-02-28 | 2025-06-20 |  |  |  |  |  | MPANEL |  | MPANEL |  | TC | TC |  |  |  |
| P2.FAD.MP.700 |  | Panel Procurement | 80d | 2025-01-30 A | 2025-06-20 A | P2.FAD.MP.500 | 100% |  | 2025-02-28 | 2025-06-20 |  |  |  |  |  | MPANEL |  | MPANEL |  | TC | TC |  |  |  |
|  | 5 | **Fixed Louvers** |  | 2024-03-18 | 2025-06-20 |  |  |  |  |  |  |  |  |  |  |  |  |  |  |  |  |  |  |  |
| BP2.089.1.100 |  | Prep/Submit - Fixed Louvers | 20d | 2024-03-18 A | 2024-05-30 A | P2.FAD.MP.100 SS | 100% |  | 2024-04-01 | 2024-04-26 |  |  |  |  | 160 | T | P2-5 | T |  |  |  | Pred? |  |  |
| BP2.089.2.100 |  | Review/Approve - Fixed Louvers | 35d | 2024-05-31 A | 2024-11-20 A | BP2.089.1.100 | 100% |  | 2024-06-17 | 2024-08-05 |  |  |  |  | 280 | NIH | P2-5 | NIH |  |  |  |  |  |  |
| BP2.089.3.100 |  | Lead/Fab/Deliver - Fixed Louvers | 100d | 2024-11-21 A | 2025-06-20 A | BP2.089.2.100 | 100% |  | 2024-12-17 | 2025-03-26 |  |  | 7D / SRLM |  | 672 | T | P2-5 | T |  | TC | TC | Succ? |  |  |
|  | 21 | **Exterior Expansion Joints** |  | 2023-08-30 | 2026-04-28 |  |  |  |  |  |  |  |  |  |  |  |  |  |  |  |  |  |  |  |
| BP2.079.0.200 |  | Buyout - Exterior Expansion Joints | 30d | 2023-08-30 A | 2023-11-17 A | P2.DES.315 | 100% |  | 2023-03-01 | 2023-04-11 |  |  |  | 2 | 240 | HP | P01 | HP |  |  |  |  |  |  |
| BP2.079.1.200 |  | Prep/Submit - Exterior Expansion Joints | 20d | 2024-10-28 A | 2025-04-23 A | BP2.079.0.200, P2C.DES.205 | 100% |  | 2024-11-01 | 2024-12-02 |  |  |  | 2 | 160 | EJ | P01 | EJ |  |  |  |  | EXP JT? |  |
| BP2.079.2.200 |  | Review/Approve - Exterior Expansion Joints | 30d | 2025-04-24 A | 2025-08-27 A | BP2.079.1.200 | 100% |  | 2025-05-16 | 2025-06-27 |  |  |  | 2 | 280 | NIH | P01 | NIH |  | TC | TC |  |  |  |
| BP2.079.3.200 |  | Lead/Fab/Deliver - Stainless Steel Covers | 15d | 2025-08-28 A | 2026-04-28 | BP2.079.2.200 |  | 28d | 2025-08-15 | 2025-08-29 | 198d | 0d | 7D / SRLM | 2 | 640 | EJ | P01 | EJ |  | TC | BA |  | EXP JT? | O |
| BP2.079.3.230 |  | Lead/Fab/Deliver - Joint Slide Seismic Covers | 15d | 2025-08-28 A | 2026-04-28 | BP2.079.2.200 |  | 28d | 2025-08-15 | 2025-08-29 | 198d | 0d | 7D / SRLM | 2 | 640 | EJ | P01 | EJ |  | TC | BA |  | EXP JT? | O |
|  | 22 | **Interior Expansion Joints** |  | 2023-08-30 | 2025-07-31 |  |  |  |  |  |  |  |  |  |  |  |  |  |  |  |  |  |  |  |
| BP2.079.0.100 |  | Buyout - Interior Expansion Joints | 30d | 2023-08-30 A | 2023-11-17 A | P2C.DES.225 | 100% |  | 2023-11-01 | 2023-12-14 |  |  |  | 2 | 240 | HP | P01 | HP |  |  |  |  |  |  |
| BP2.079.1.100 |  | Prep/Submit - Interior Expansion Joints | 20d | 2024-10-28 A | 2025-03-20 A | BP2.079.0.100, P2C.DES.205 | 100% |  | 2024-11-01 | 2024-12-02 |  |  |  | 2 | 160 | EJ | P01 | EJ |  |  |  |  | EXP JT? |  |
| BP2.079.2.100 |  | Review/Approve - Interior Expansion Joints | 35d | 2025-03-21 A | 2025-03-24 A | BP2.079.1.100 | 100% |  | 2025-03-06 | 2025-04-23 |  |  |  | 2 | 280 | NIH | P01 | NIH |  |  |  |  |  |  |
| BP2.079.3.100 |  | Lead/Fab/Deliver - Expansion Joints | 80d | 2025-03-25 A | 2025-07-31 A | BP2.079.2.100 | 100% |  | 2025-06-01 | 2025-08-19 |  |  | 7D / SRLM | 2 | 640 | EJ | P01 | EJ |  | TC | TC |  | EXP JT? |  |

| ID | WBS | Activity | Duration | Start | Finish | Predecessors | Complete | Remaining | Planned start | Planned finish | Total float | Free float | Calendar | Bid Package | Temp Orig Dur | Resp / SRLM | PHASE | RESP / Trade | Trade Review Notes | 744 | RESP UPD | Update Status | Pick #2 | Posit |
| --- | --- | --- | --- | --- | --- | --- | --- | --- | --- | --- | --- | --- | --- | --- | --- | --- | --- | --- | --- | --- | --- | --- | --- | --- |
|  | 23 | **Roofing** |  | 2023-01-09 | 2026-08-06 |  |  |  |  |  |  |  |  |  |  |  |  |  |  |  |  |  |  |  |
| BP2.073.0.100 |  | Buyout - Roofing | 30d | 2023-01-09 A | 2023-05-24 A | P2.DES.315 | 100% |  | 2023-01-09 | 2023-02-17 |  |  |  | 2 | 240 | HP | P01 | HP |  |  |  |  |  |  |
| P2.MTG.MOB.500 |  | Elite Premobilization & Kick-off Meeting | 1d | 2023-05-03 A | 2023-05-03 A | BP2.073.0.100 SS | 100% |  |  |  |  |  |  |  |  | ROOF |  | ROOF |  |  |  |  |  |  |
| BP2.070.1.100 |  | Prep/Submit - Roofing - Sheet Metal | 20d | 2024-02-19 A | 2024-03-18 A | BP2.073.0.100, P2.DES.RF.270 | 100% |  | 2024-04-01 | 2024-04-26 |  |  |  |  | 160 | ROOF | P01 | ROOF |  |  |  |  |  |  |
| BP2.070.1.110 |  | Prep/Submit - Roofing - Vegetated | 20d | 2024-02-21 A | 2024-03-15 A | BP2.073.0.100, P2.DES.RF.270 | 100% |  | 2024-04-01 | 2024-04-26 |  |  |  |  | 160 | ROOF | P01 | ROOF |  |  |  |  |  |  |
| BP2.070.2.110 |  | Review/Approve - Roofing - Vegetated | 35d | 2024-03-18 A | 2024-11-13 A | BP2.070.1.110 | 100% |  | 2024-04-29 | 2024-06-17 |  |  |  |  | 280 | NIH | P01 | NIH |  |  |  |  |  |  |
| BP2.076.1.100 |  | Prep/Submit - Roof Specialties | 20d | 2024-03-18 A | 2025-01-21 A | BP2.073.0.100, P2.DES.RF.270 | 100% |  | 2024-04-01 | 2024-04-26 |  |  |  |  | 160 | ROOF | P01 | ROOF |  |  |  |  |  |  |
| BP2.070.2.100 |  | Review/Approve - Roofing - Sheet Metal | 35d | 2024-03-19 A | 2025-01-27 A | BP2.070.1.100 | 100% |  | 2024-03-19 | 2024-05-06 |  |  |  |  | 280 | NIH | P01 | NIH |  |  |  |  |  |  |
| BP2.073.1.100 |  | Prep/Submit - Roofing | 30d | 2024-10-18 A | 2025-01-21 A | BP2.073.0.100, P2C.DES.205 | 100% |  | 2024-11-01 | 2024-12-16 |  |  |  | 2 | 240 | ROOF | P01 | ROOF |  |  |  |  |  |  |
| BP2.073.2.100 |  | Review/Approve - Roofing | 35d | 2025-01-21 A | 2025-01-27 A | BP2.073.1.100 | 100% |  | 2025-02-10 | 2025-03-28 |  |  |  | 2 | 280 | NIH | P01 | NIH |  |  |  |  |  |  |
| BP2.076.2.100 |  | Review/Approve - Roof Specialties | 35d | 2025-01-21 A | 2025-01-27 A | BP2.076.1.100 | 100% |  | 2025-02-10 | 2025-03-28 |  |  |  |  | 280 | NIH | P01 | NIH |  |  |  |  |  |  |
| BP2.073.3.100 |  | Lead/Fab/Deliver - Roofing System | 10d | 2025-02-01 A | 2025-03-28 A | BP2.073.2.100 | 100% |  | 2025-03-01 | 2025-03-10 |  |  | 7D / SRLM | 2 | 1360 | ROOF | P01 | ROOF | 57 |  |  |  |  |  |
| BP2.076.3.100 |  | Lead/Fab/Deliver - Roof Specialties | 30d | 2025-02-01 A | 2025-03-30 A | BP2.076.2.100 | 100% |  | 2025-03-01 | 2025-03-30 |  |  | 7D / SRLM |  | 1008 | ROOF | P01 | ROOF |  |  |  |  |  |  |
| BP2.073.3.110 |  | Lead/Fab/Deliver - Roofing Pavers | 50d | 2025-02-14 A | 2025-06-07 A | BP2.073.2.100 | 100% |  | 2025-03-01 | 2025-04-19 |  |  | 7D / SRLM | 2 | 1360 | ROOF | P01 | ROOF | 57 | TC | TC |  |  |  |
| BP2.070.3.100 |  | Lead/Fab/Deliver - Roofing - Sheet Metal | 126d | 2025-06-20 A | 2026-04-15 | BP2.070.2.100, P2.L11.EMMR.3.150 | 88% | 15d | 2025-07-18 | 2025-11-20 | 258d | 118d | 7D / SRLM |  | 1008 | ROOF | P01 | ROOF |  | TC | BA | O |  |  |
| BP2.070.3.110 |  | Lead/Fab/Deliver - Roofing - Vegetated | 30d | 2026-07-08 | 2026-08-06 | BP2.070.2.110, P2.MR.EMT.2000 FF, P2.SITE.15 |  |  |  |  | 67d | 83d | 7D / SRLM |  | 1008 | ROOF | P01 | ROOF |  | TC | TC |  |  |  |
|  | 4 | **Exterior Cladding** |  | 2023-04-04 | 2025-10-30 |  |  |  |  |  |  |  |  |  |  |  |  |  |  |  |  |  |  |  |
| BP2.044.0.100 |  | Buyout - Exterior Stone Cladding | 30d | 2023-04-04 A | 2023-06-05 A | P2.DES.275 | 100% |  | 2023-04-04 | 2023-05-15 |  |  |  |  | 240 | HP | P01 | HP |  |  |  |  | Pred?, Buyout Package? |  |
| P2.MTG.MOB.600 |  | Rugo Premobilization & Kick-off Meeting | 1d | 2023-06-09 A | 2023-06-09 A | BP2.044.0.100 | 100% |  |  |  |  |  |  |  |  | EXTCLAD |  | EXTCLAD |  |  |  |  |  |  |
| P2.FAD.ST.100 |  | Prepare Exterior Cladding Shop Drawings | 20d | 2024-03-28 A | 2024-09-16 A | P2.DES.ST.250, P2.FAD.GG.330 SS+10d | 100% |  | 2024-04-01 | 2024-04-26 |  |  |  |  |  | EXTCLAD |  | EXTCLAD |  |  |  |  |  |  |
| P2.FAD.ST.130 |  | Review & Approve Exterior Cladding Shop Drawings | 10d | 2024-09-10 A | 2024-10-07 A | P2.FAD.ST.100 | 100% |  | 2024-10-03 | 2024-10-16 |  |  |  |  |  | ARCH |  | ARCH |  |  |  |  |  |  |
| P2.FAD.ST.140 |  | Release Exterior Cladding Scopes For Fabrication | 15d | 2024-10-08 A | 2025-01-21 A | P2.FAD.ST.130 | 100% |  | 2024-11-04 | 2024-11-22 |  |  |  |  |  | EXTCLAD |  | EXTCLAD |  |  |  |  |  | Release to coordinate with construction activity |
| P2.FAD.ST.160 |  | Exterior Facade Stone Product Procurement | 168d | 2024-10-09 A | 2025-07-28 A | P2.FAD.ST.140 SS | 100% |  | 2024-11-11 | 2025-07-10 |  |  |  |  |  | EXTCLAD |  | EXTCLAD |  | TC | TC |  |  | Tie into Storefront install |
| P2.FAD.ST.150 |  | Lead/Fab/Deliver - Site Stone | 40d | 2025-10-01 A | 2025-10-30 A | P2.FAD.ST.160 | 100% |  | 2025-10-01 | 2025-11-25 |  |  |  |  |  | EXTCLAD |  | EXTCLAD |  |  | BA |  |  | Tie into Site walls |

| ID | WBS | Activity | Duration | Start | Finish | Predecessors | Complete | Planned start | Planned finish | Calendar | Bid Package | Temp Orig Dur | Resp / SRLM | PHASE | RESP / Trade | *NIH Resp Check* | Pick #1 |
| --- | --- | --- | --- | --- | --- | --- | --- | --- | --- | --- | --- | --- | --- | --- | --- | --- | --- |
|  | 10 | **Bid Package 3** |  | 2023-01-09 | 2023-12-27 |  |  |  |  |  |  |  |  |  |  |  |  |
|  | 16 | **Utilities** |  | 2023-01-09 | 2023-07-02 |  |  |  |  |  |  |  |  |  |  |  |  |
| BP3.330.0.100 |  | Buyout - Utilities | 30d | 2023-01-09 A | 2023-04-21 A | P1.DES.440 | 100% | 2023-01-09 | 2023-02-17 |  | 3 | 240 | HP | P01 | HP |  |  |
| BP3.330.1.100 |  | Prep/Submit - Utilities | 20d | 2023-04-10 A | 2023-04-28 A | BP3.330.0.100, P1.DES.310 | 100% | 2023-04-10 | 2023-05-05 |  | 3 | 160 | UTIL | P01 | UTIL | ! |  |
| BP3.330.1.110 |  | Prep/Submit - Utilities - Early Work Water Main | 5d | 2023-04-10 A | 2023-04-14 A | BP3.330.0.100 | 100% |  |  |  | 3 | 40 | UTIL | P01 | UTIL | ! |  |
| BP3.330.2.110 |  | Review/Approve - Utilities - Early Work Water Main | 5d | 2023-04-17 A | 2023-04-28 A | BP3.330.1.110 | 100% | 2023-04-17 | 2023-04-21 |  | 3 | 40 | NIH | P01 | NIH |  |  |
| BP3.330.3.110 |  | Lead/Fab/Deliver - Utilities - Early Work Water Main | 14d | 2023-04-24 A | 2023-05-12 A | BP3.330.2.110 | 100% | 2023-04-24 | 2023-05-07 | 7D / SRLM | 3 | 112 | UTIL | P01 | UTIL | ! |  |
| BP3.330.2.100 |  | Review/Approve - Utilities | 5d | 2023-05-01 A | 2023-05-11 A | BP3.330.1.100 | 100% | 2023-05-01 | 2023-05-05 |  | 3 | 40 | NIH | P01 | NIH |  |  |
| BP3.330.1.140 |  | Existing Ductbank Test-Pits | 5d | 2023-05-22 A | 2023-05-26 A | BP3.330.0.100 | 100% |  |  |  | 3 | 40 | UTIL | P01 | UTIL-1 |  |  |
| BP3.330.3.100 |  | Lead/Fab/Deliver - Utilities | 35d | 2023-05-25 A | 2023-06-22 A | BP3.330.2.100 | 100% | 2023-05-25 | 2023-06-28 | 7D / SRLM | 3 | 280 | UTIL | P01 | UTIL | ! |  |
| BP3.330.1.130 |  | Ductbank & Storm Structure Design Adjustments - from TestPits (SS-110 & CB20-17) | 2d | 2023-05-29 A | 2023-05-30 A | BP3.330.1.140 | 100% | 2023-05-30 | 2023-05-31 |  | 3 | 16 | ARCH | P01 | ARCH | ! |  |
| BP3.330.1.120 |  | Prep/Submit - Utilities (Sanitary Structure SS-110 & Storm Structure CB20-17) | 3d | 2023-05-31 A | 2023-06-05 A | BP3.330.1.130 | 100% | 2023-05-31 | 2023-06-02 |  | 3 | 24 | UTIL | P01 | UTIL | ! |  |
| BP3.330.2.120 |  | Review/Approve - Utilities (Sanitary Structure SS-110 & Storm Structure CB20-17) | 3d | 2023-06-05 A | 2023-06-07 A | BP3.330.1.120, BP3.330.2.100 | 100% | 2023-07-06 | 2023-07-10 |  | 3 | 24 | NIH | P01 | NIH |  |  |
| BP3.330.3.120 |  | Lead/Fab/Deliver - Utilities (Sanitary Structure SS-110 & Storm Structure CB20-17) | 12d | 2023-06-08 A | 2023-07-02 A | BP3.330.2.120 | 100% | 2023-07-11 | 2023-07-22 | 7D / SRLM | 3 | 96 | UTIL | P01 | UTIL | ! |  |
|  | 17 | **Demolition** |  | 2023-01-09 | 2023-07-31 |  |  |  |  |  |  |  |  |  |  |  |  |
|  | 1 | **Demo - Phase 0A** |  | 2023-01-09 | 2023-05-31 |  |  |  |  |  |  |  |  |  |  |  |  |
| BP3.024.0.110 |  | Buyout - Demolition - Phase 0A | 30d | 2023-01-09 A | 2023-03-30 A | P1.DES.440 | 100% | 2023-01-09 | 2023-02-17 |  | 3 | 240 | HP | P01 | HP |  |  |
| BP3.024.1.110 |  | Prep/Submit - Demolition - Phase 0A | 10d | 2023-04-03 A | 2023-04-14 A | BP3.024.0.110, P0A.DES.150 | 100% |  |  |  | 3 | 80 | DEMO.1 | P01 | DEMO.1 |  |  |
| BP3.024.2.110 |  | Review/Approve - Demolition - Phase 0A | 15d | 2023-04-14 A | 2023-05-31 A | P0A.DES.180 FF, P0A.DES.190 FF, BP3.024.1.110 | 100% | 2023-04-14 | 2023-05-04 |  | 3 | 120 | NIH | P01 | NIH |  |  |
| BP3.024.3.110 |  | Lead - Demolition - Phase 0A | 14d | 2023-04-17 A | 2023-04-25 A | BP3.024.2.110 SS | 100% | 2023-04-17 | 2023-04-30 | 7D / SRLM | 3 | 112 | DEMO.1 | P01 | DEMO.1 |  | No Succ |
|  | 2 | **Demo - Phase 0C** |  | 2023-01-09 | 2023-07-31 |  |  |  |  |  |  |  |  |  |  |  |  |
| BP3.024.0.120 |  | Buyout - Demolition - Phase 0C | 30d | 2023-01-09 A | 2023-03-30 A | P1.DES.440 | 100% | 2023-01-09 | 2023-02-17 |  | 3 | 240 | HP | P01 | HP |  |  |
| BP3.024.1.120 |  | Prep/Submit - Demolition - Phase 0C | 10d | 2023-03-13 A | 2023-03-17 A | BP3.024.0.120, P0C.DES.110 | 100% | 2023-03-13 | 2023-03-24 |  | 3 | 80 | DEMO.1 | P01 | DEMO.1 |  |  |
| BP3.024.2.120 |  | Review/Approve - Demolition - Phase 0C | 15d | 2023-03-17 A | 2023-07-31 A | P0C.DES.170 FF, P0C.DES.180 FF, BP3.024.1.120 | 100% | 2023-03-17 | 2023-04-06 |  | 3 | 120 | NIH | P01 | NIH |  |  |

| ID | WBS | Activity | Duration | Start | Finish | Predecessors | Complete | Planned start | Planned finish | Calendar | Bid Package | Temp Orig Dur | Resp / SRLM | PHASE | RESP / Trade | Pick #1 | *NIH Resp Check* |
| --- | --- | --- | --- | --- | --- | --- | --- | --- | --- | --- | --- | --- | --- | --- | --- | --- | --- |
|  | 3 | **Demo - Phase 1** |  | 2023-01-09 | 2023-07-31 |  |  |  |  |  |  |  |  |  |  |  |  |
| BP3.024.0.100 |  | Buyout - Demolition - Phase 1 | 30d | 2023-01-09 A | 2023-03-30 A | P1.DES.440 | 100% | 2023-01-09 | 2023-02-17 |  | 3 | 240 | HP | P01 | HP |  |  |
| BP3.024.3.100 |  | Lead - Demolition - Phase 1 | 21d | 2023-06-20 A | 2023-06-30 A | BP3.024.2.100 SS | 100% | 2023-08-02 | 2023-08-22 | 7D / SRLM | 3 | 168 | DEMO.1 | P01 | DEMO.1 | No Succ |  |
| BP3.024.1.100 |  | Prep/Submit - Demolition - Phase 1 | 10d | 2023-06-23 A | 2023-06-29 A | BP3.024.0.100, P1.DES.410 SS | 100% | 2023-07-19 | 2023-08-01 |  | 3 | 80 | DEMO.1 | P01 | DEMO.1 |  |  |
| BP3.024.2.100 |  | Review/Approve - Demolition - Phase 1 | 20d | 2023-06-30 A | 2023-07-31 A | BP3.024.1.100 | 100% | 2023-08-02 | 2023-08-29 |  | 3 | 160 | NIH | P01 | NIH |  |  |
|  | 4 | **Demo - Phase 1A** |  | 2023-01-09 | 2023-04-25 |  |  |  |  |  |  |  |  |  |  |  |  |
| BP3.024.0.140 |  | Buyout - Demolition - Phase 1A | 30d | 2023-01-09 A | 2023-03-30 A | P1.DES.440 | 100% | 2023-01-09 | 2023-02-17 |  | 3 | 240 | HP | P01 | HP |  |  |
| BP3.024.1.140 |  | Prep/Submit - Demolition - Phase 1A | 10d | 2023-03-16 A | 2023-03-17 A | BP3.024.0.140, P1A.DES.630 | 100% | 2023-03-16 | 2023-03-29 |  | 3 | 80 | DEMO.1A | P01 | DEMO.1A |  |  |
| BP3.024.2.140 |  | Review/Approve - Demolition - Phase 1A | 15d | 2023-03-20 A | 2023-04-13 A | P1A.DES.640 FF+5d, BP3.024.1.140 | 100% | 2023-03-20 | 2023-04-07 |  | 3 | 120 | NIH | P01 | NIH |  |  |
| BP3.024.3.140 |  | Lead - Demolition - Phase 1A | 5d | 2023-04-13 A | 2023-04-25 A | BP3.024.2.140 FF | 100% | 2023-04-13 | 2023-04-17 | 7D / SRLM | 3 | 40 | DEMO.1A | P01 | DEMO.1A | No Succ |  |
|  | 18 | **Earthwork** |  | 2023-01-09 | 2023-07-01 |  |  |  |  |  |  |  |  |  |  |  |  |
| BP3.310.0.100 |  | Buyout - Earthwork | 30d | 2023-01-09 A | 2023-06-06 A | P1.DES.440 | 100% | 2023-01-09 | 2023-02-17 |  | 3 | 240 | HP | P01 | HP |  |  |
| BP3.310.1.100 |  | Prep/Submit - Earthwork | 7d | 2023-05-04 A | 2023-05-26 A | BP3.310.0.100, P1.DES.320 | 100% | 2023-05-04 | 2023-05-12 |  | 3 | 56 | CIVIL | P01 | CIVIL |  | ! |
| BP3.310.2.100 |  | Review/Approve - Earthwork | 17d | 2023-05-30 A | 2023-06-13 A | BP3.310.1.100 | 100% | 2023-05-30 | 2023-06-21 |  | 3 | 136 | NIH | P01 | NIH |  |  |
| BP3.310.3.100 |  | Lead/Fab/Deliver - Earthwork | 7d | 2023-05-31 A | 2023-07-01 A | BP3.310.2.100 | 100% | 2023-05-31 | 2023-06-06 | 7D / SRLM | 3 | 56 | CIVIL | P01 | CIVIL |  | ! |
|  | 19 | **Auger Cast Piles** |  | 2023-01-09 | 2023-12-27 |  |  |  |  |  |  |  |  |  |  |  |  |
| BP3.316.0.100 |  | Buyout - Auger Cast Piles | 30d | 2023-01-09 A | 2023-04-18 A | P1.DES.440 | 100% | 2023-01-09 | 2023-02-17 |  | 3 | 240 | HP | P01 | HP |  |  |
| BP3.316.1.100 |  | Prep/Submit/Design - Auger Cast Piles | 30d | 2023-04-07 A | 2023-04-28 A | BP3.316.0.100, P1.DES.320 | 100% | 2023-04-07 | 2023-05-18 |  | 3 | 240 | ACP | P01 | ACP |  |  |
| BP3.316.2.100 |  | Review/Approve - Auger Cast Piles | 35d | 2023-10-02 A | 2023-11-29 A | BP3.316.1.100 | 100% | 2023-10-02 | 2023-11-17 |  | 3 | 240 | NIH | P01 | NIH |  |  |
| BP3.316.3.100 |  | Lead/Fab/Deliver - Auger Cast Piles | 15d | 2023-11-30 A | 2023-12-27 A | BP3.316.2.100 | 100% | 2023-11-04 | 2023-11-18 | 7D / SRLM | 3 | 240 | ACP | P01 | ACP |  |  |
|  | 20 | **Earth Support - SOE** |  | 2023-01-09 | 2023-07-26 |  |  |  |  |  |  |  |  |  |  |  |  |
| BP3.315.0.100 |  | Buyout - Earth Support - SOE | 30d | 2023-01-09 A | 2023-04-18 A | P1.DES.440 | 100% | 2023-01-09 | 2023-02-17 |  | 3 | 240 | HP | P01 | HP |  |  |
| BP3.315.1.100 |  | Prep/Submit/Design - Earth Support - SOE | 30d | 2023-04-07 A | 2023-05-26 A | BP3.315.0.100, P1.DES.320 | 100% | 2023-04-07 | 2023-05-18 |  | 3 | 240 | SOE | P01 | SOE |  |  |
| BP3.315.2.100 |  | Review/Approve - Earth Support - SOE | 35d | 2023-05-30 A | 2023-07-11 A | BP3.315.1.100 | 100% | 2023-05-30 | 2023-07-18 |  | 3 | 280 | NIH | P01 | NIH |  |  |
| BP3.315.3.100 |  | Lead/Fab/Deliver - Earth Support - SOE | 25d | 2023-07-11 A | 2023-07-26 A | BP3.315.2.100 | 100% | 2023-08-10 | 2023-09-03 | 7D / SRLM | 3 | 200 | SOE | P01 | SOE |  |  |

| ID | WBS | Activity | Duration | Start | Finish | Predecessors | Complete | Planned start | Planned finish | Calendar | Bid Package | Temp Orig Dur | Resp / SRLM | PHASE | RESP / Trade | Pick #2 |
| --- | --- | --- | --- | --- | --- | --- | --- | --- | --- | --- | --- | --- | --- | --- | --- | --- |
|  | 11 | **Bid Package 4** |  | 2023-03-28 | 2025-04-30 |  |  |  |  |  |  |  |  |  |  |  |
|  | 1 | **Miscellaneous Metals** |  | 2023-09-25 | 2025-04-30 |  |  |  |  |  |  |  |  |  |  |  |
| BP4.055.0.100 |  | Buyout - Miscellaneous Metals | 30d | 2023-09-25 A | 2024-01-02 A | P2A.DES.575 FF, P2C.DES.225 | 100% | 2023-11-01 | 2023-12-14 |  | 4 | 240 | HP | P01 | HP |  |
| BP4.055.1.100 |  | Prep/Submit - Miscellaneous Metals | 40d | 2024-01-04 A | 2024-04-02 A | BP4.055.0.100, P1.DES.410 | 100% | 2024-02-05 | 2024-03-29 |  | 4 | 320 | MISCMTL | P01 | MISCMTL |  |
| BP4.055.1.200 |  | Prep/Submit - Miscellaneous Metals Embeds for Concrete | 30d | 2024-01-04 A | 2024-04-02 A | BP4.055.0.100, P1.DES.410 | 100% | 2024-02-05 | 2024-03-15 |  | 4 | 320 | MISCMTL | P01 | MISCMTL |  |
| BP4.055.2.200 |  | Review/Approve - Miscellaneous Metals Embeds for Concrete | 35d | 2024-02-29 A | 2024-04-30 A | BP4.055.1.200 FF+5d | 100% | 2024-04-01 | 2024-05-17 |  | 4 | 280 | NIH | P01 | NIH |  |
| BP4.055.1.190 |  | Prep/Submit - Metal Pan Stairs | 20d | 2024-04-01 A | 2024-04-10 A | BP4.055.0.100, P2A.DES.555 | 100% | 2024-05-01 | 2024-05-29 |  |  | 160 | MISCMTL | P01 | MISCMTL |  |
| BP4.055.2.100 |  | Review/Approve - Miscellaneous Metals | 35d | 2024-04-02 A | 2024-04-30 A | BP4.055.1.100 FF+5d | 100% | 2024-05-01 | 2024-06-19 |  | 4 | 280 | NIH | P01 | NIH |  |
| BP4.055.1.300 |  | Prep/Submit - Steel Gratings | 20d | 2024-04-11 A | 2024-04-26 A | BP4.055.0.100 | 100% | 2024-05-01 | 2024-05-29 |  |  | 160 | T | P2-5 | T | Trade? |
| BP4.055.3.400 |  | Lead/Fab/Deliver - Stairs | 75d | 2024-04-22 A | 2024-07-17 A | BP4.055.2.190 SS | 100% | 2024-08-01 | 2024-10-14 | 7D / SRLM | 4 | 600 | MISCMTL | P01 | MISCMTL |  |
| BP4.055.2.300 |  | Review/Approve - Steel Gratings | 35d | 2024-04-29 A | 2024-05-28 A | BP4.055.1.300 | 100% | 2024-06-03 | 2024-07-22 |  |  | 280 | NIH | P2-5 | NIH |  |
| BP4.055.3.510 |  | Lead/Fab/Deliver - Miscellaneous Metals Embeds for Concrete | 20d | 2024-05-01 A | 2024-05-30 A | BP4.055.2.200 | 100% | 2024-06-01 | 2024-06-20 | 7D / SRLM | 4 | 640 | MISCMTL | P01 | MISCMTL |  |
| BP4.055.3.100 |  | Lead/Fab/Deliver - Miscellaneous Metals | 40d | 2024-05-24 A | 2024-07-26 A | BP4.055.2.100 | 100% | 2024-06-01 | 2024-07-10 | 7D / SRLM | 4 | 480 | MISCMTL | P01 | MISCMTL |  |
| BP4.055.3.300 |  | Lead/Fab/Deliver - Steel Gratings | 50d | 2024-05-29 A | 2024-09-16 A | BP4.055.2.300 | 100% | 2024-07-01 | 2024-08-19 | 7D / SRLM |  | 792 | T | P2-5 | T | Trade? Succ? Need Duration |
| BP4.055.2.190 |  | Review/Approve - Metal Pan Stairs | 20d | 2024-07-05 A | 2024-10-21 A | BP4.055.1.190 | 100% | 2024-08-01 | 2024-08-28 |  |  | 280 | NIH | P01 | NIH |  |
| BP4.055.3.200 |  | Lead/Fab/Deliver - Catwalks | 60d | 2024-07-08 A | 2024-07-23 A | BP4.055.2.100, P2C.DES.295 | 100% | 2024-08-01 | 2024-09-29 | 7D / SRLM | 4 | 640 | MISCMTL | P01 | MISCMTL |  |
| BP4.055.1.110 |  | Prep/Submit - Pipe and Tube Railings | 20d | 2024-09-30 A | 2024-10-30 A | BP4.055.0.100 | 100% | 2024-10-25 | 2024-11-21 |  |  | 160 | MISCMTL | P01 | MISCMTL |  |
| BP4.055.2.110 |  | Review/Approve - Pipe and Tube Railings | 35d | 2024-09-30 A | 2025-01-29 A | BP4.055.1.110 | 100% | 2024-11-14 | 2025-01-07 |  |  | 280 | NIH | P01 | NIH |  |
| BP4.055.3.150 |  | Lead/Fab/Deliver - Pipe and Tube Railings | 99d | 2025-01-29 A | 2025-04-30 A | BP4.055.2.110 | 100% | 2025-02-22 | 2025-05-31 | 7D / SRLM |  | 792 | MISCMTL | P01 | MISCMTL | Duration, Succ, Need Duration |
|  | 2 | **Concrete** |  | 2023-03-28 | 2024-05-10 |  |  |  |  |  |  |  |  |  |  |  |
| BP4.030.0.100 |  | Buyout - Concrete | 30d | 2023-03-28 A | 2023-06-23 A | P2.DES.315 | 100% | 2023-03-28 | 2023-05-08 |  | 4 | 240 | HP | P01 | HP | NT |
| BP4.030.1.100 |  | Prep/Submit - Concrete & Underslab WP (PD, Pour Sequencing, Procedures, Shoring, Control Joints) | 20d | 2023-07-18 A | 2023-09-14 A | BP4.030.0.100, P1.DES.410 | 100% | 2023-08-02 | 2023-08-29 |  | 4 | 160 | STRCONC | P01 | STRCONC | NT |
| BP4.030.2.100 |  | Review/Approve - Concrete & Underslab WP (PD, Pour Sequencing, Procedures, Shoring, Control Joints) | 35d | 2023-07-19 A | 2023-11-28 A | BP4.030.1.100 | 100% | 2023-08-30 | 2023-10-18 |  | 4 | 280 | NIH | P01 | NIH | NT |
| BP4.030.1.120 |  | Prep/Submit - Concrete Batch Plant | 20d | 2023-08-23 A | 2023-08-24 A | BP4.030.0.100 | 100% | 2023-09-01 | 2023-09-29 |  |  |  | CONC | P01 | CONC |  |
| BP4.030.2.120 |  | Review/Approve - Concrete Batch Plant | 20d | 2023-08-25 A | 2023-09-07 A | BP4.030.1.120 | 100% | 2023-10-03 | 2023-10-30 |  |  |  | NIH | P01 | NIH |  |
| BP4.030.1.110 |  | Prep/Submit - Concrete Shop Drawings, Phase 1 | 20d | 2023-09-15 A | 2023-10-14 A | BP4.030.1.100 | 100% | 2023-11-06 | 2023-12-05 |  |  |  | CONC | P01 | CONC |  |
| BP4.030.2.130 |  | Construct Batch Plant | 25d | 2023-10-02 A | 2023-11-09 A | BP4.030.2.120 | 100% | 2023-10-02 | 2023-11-03 |  |  |  | NIH | P01 | NIH |  |
| BP4.030.2.110 |  | Review/Approve - Concrete Shop Drawings, Phase 1 | 35d | 2023-10-16 A | 2024-01-02 A | BP4.030.1.110 | 100% | 2023-11-22 | 2024-01-15 |  |  |  | NIH | P01 | NIH |  |
| BP4.030.1.130 |  | Prep/Submit - Concrete Shop Drawings, Phase 2 | 60d | 2023-12-26 A | 2024-03-26 A | P2A.DES.555 FF+15d, P2A.DES.575 | 100% | 2024-02-01 | 2024-04-24 |  |  |  | CONC | P01 | CONC |  |
| BP4.030.3.110 |  | Lead/Fab/Deliver - Under Slab Waterproofing | 10d | 2024-01-01 A | 2024-02-14 A | BP4.030.2.100 | 100% | 2024-01-02 | 2024-01-15 |  | 4 | 280 | WTPF | P01 | WTPF |  |
| BP4.030.3.100 |  | Lead/Fab/Deliver - Concrete | 1d | 2024-01-03 A | 2024-01-03 A | BP4.030.2.110, BP4.030.2.130, BP4.030.2.100 | 100% | 2024-02-01 | 2024-02-01 | 7D / SRLM | 4 | 320 | STRCONC | P01 | STRCONC | NT |
| BP4.030.2.140 |  | Review/Approve - Concrete Shop Drawings, Phase 2 | 35d | 2024-03-26 A | 2024-05-10 A | BP4.030.1.130 | 100% | 2024-04-19 | 2024-06-07 |  |  |  | NIH | P01 | NIH |  |

| ID | WBS | Activity | Duration | Start | Finish | Predecessors | Complete | Planned start | Planned finish | Calendar | Bid Package | Temp Orig Dur | Resp / SRLM | PHASE | RESP / Trade | *NIH Resp Check* | Update Status | Pick #2 | 744 | RESP UPD |
| --- | --- | --- | --- | --- | --- | --- | --- | --- | --- | --- | --- | --- | --- | --- | --- | --- | --- | --- | --- | --- |
|  | 3 | **Masonry** |  | 2024-04-25 | 2024-10-05 |  |  |  |  |  |  |  |  |  |  |  |  |  |  |  |
| BP4.040.0.100 |  | Buyout - Masonry | 30d | 2024-04-25 A | 2024-08-06 A | P2C.DES.175 FF | 100% | 2024-05-01 | 2024-06-12 |  | 4 | 240 | HP | P01 | HP |  |  |  |  |  |
| BP4.040.1.100 |  | Prep/Submit - Masonry | 15d | 2024-08-28 A | 2024-09-04 A | BP4.040.0.100 | 100% | 2024-09-10 | 2024-09-30 |  | 4 | 160 | CMU | P01 | CMU |  |  |  |  |  |
| BP4.040.2.100 |  | Review/Approve - Masonry | 35d | 2024-09-05 A | 2024-10-01 A | BP4.040.1.100 | 100% | 2024-10-24 | 2024-12-13 |  | 4 | 280 | NIH | P01 | NIH |  |  |  |  |  |
| BP4.040.3.100 |  | Lead/Fab/Deliver - Masonry | 30d | 2024-10-02 A | 2024-10-05 A | BP4.040.2.100 | 100% | 2024-11-26 | 2024-12-25 | 7D / SRLM | 4 | 240 | CMU | P01 | CMU |  |  |  |  |  |
|  | 4 | **Waterproofing** |  | 2023-03-28 | 2024-03-27 |  |  |  |  |  |  |  |  |  |  |  |  |  |  |  |
| BP4.071.0.110 |  | Buyout - Waterproofing - Phase 1A | 30d | 2023-03-28 A | 2023-06-16 A | P1A.DES.650 | 100% | 2023-03-28 | 2023-05-08 |  | 4 | 240 | HP | P01 | HP |  |  |  |  |  |
| BP4.071.1.110 |  | Prep/Submit - Waterproofing - Phase 1A | 20d | 2023-06-20 A | 2023-08-03 A | BP4.071.0.110 | 100% | 2023-08-02 | 2023-08-29 |  | 4 | 160 | WTPF | P01 | WTPF |  |  |  |  |  |
| BP4.071.2.110 |  | Review/Approve - Waterproofing - Phase 1A | 35d | 2023-08-04 A | 2023-09-11 A | BP4.071.1.110 | 100% | 2023-08-30 | 2023-10-18 |  | 4 | 280 | NIH | P01 | NIH |  |  |  |  |  |
| BP4.071.0.100 |  | Buyout - Waterproofing | 30d | 2023-08-28 A | 2023-11-17 A | P2C.DES.335 | 100% | 2023-03-28 | 2023-05-08 |  | 4 | 240 | HP | P01 | HP |  |  |  |  |  |
| BP4.071.3.110 |  | Lead/Fab/Deliver - Waterproofing - Phase 1A | 5d | 2023-09-11 A | 2023-09-18 A | BP4.071.2.110 | 100% | 2023-10-03 | 2023-10-07 | 7D / SRLM | 4 | 280 | WTPF | P01 | WTPF |  |  |  |  |  |
| BP4.071.1.100 |  | Prep/Submit - Waterproofing | 20d | 2023-11-20 A | 2024-02-21 A | BP4.071.0.100, P1.DES.410 | 100% | 2023-11-08 | 2023-12-07 |  | 4 | 160 | WTPF | P01 | WTPF |  |  |  |  |  |
| BP4.071.2.100 |  | Review/Approve - Waterproofing | 20d | 2024-02-26 A | 2024-03-25 A | BP4.071.1.100 | 100% | 2024-03-15 | 2024-04-11 |  | 4 | 280 | NIH | P01 | NIH |  |  |  |  |  |
| BP4.071.3.100 |  | Lead/Fab/Deliver - Waterproofing | 5d | 2024-03-25 A | 2024-03-27 A | BP4.071.2.100 FF+5d | 100% | 2024-04-04 | 2024-04-08 | 7D / SRLM | 4 | 280 | WTPF | P01 | WTPF |  |  |  |  |  |
|  | 12 | **Bid Package 5** |  | 2023-04-04 | 2026-09-15 |  |  |  |  |  |  |  |  |  |  |  |  |  |  |  |
|  | 1 | **Shielding (Lead)** |  | 2023-04-04 | 2024-12-02 |  |  |  |  |  |  |  |  |  |  |  |  |  |  |  |
| BP5.134.0.200 |  | Buyout - Shielding (Lead) | 10d | 2023-04-04 A | 2023-06-23 A | BP5.092.0.200 FF | 100% | 2024-01-17 | 2024-01-30 |  | 5 | 80 | HP | P01 | HP |  |  |  |  |  |
| BP5.134.1.200 |  | Prep/Submit - Shielding (Lead) | 20d | 2024-01-01 A | 2024-02-01 A | BP5.134.0.200, P2C.DES.295 | 100% | 2024-10-01 | 2024-10-28 |  | 5 | 160 | SHIELD | P01 | SHIELD | T.MEP.ELEC |  |  |  |  |
| BP5.134.2.200 |  | Review/Approve - Shielding (Lead) | 35d | 2024-02-02 A | 2024-02-19 A | BP5.134.1.200 | 100% | 2024-10-29 | 2024-12-18 |  | 5 | 280 | NIH | P01 | NIH |  |  |  |  |  |
| BP5.134.3.200 |  | Lead/Fab/Deliver - Shielding (Lead) | 120d | 2024-11-18 A | 2024-12-02 A | BP5.134.2.200 | 100% | 2025-01-01 | 2025-04-30 | 7D / SRLM | 5 | 960 | SHIELD | P01 | SHIELD | T.MEP.ELEC |  |  |  |  |
|  | 2 | **Shielding (Copper)** |  | 2023-05-18 | 2024-09-27 |  |  |  |  |  |  |  |  |  |  |  |  |  |  |  |
| BP5.134.0.100 |  | Buyout - RF Shielding (Copper) | 10d | 2023-05-18 A | 2023-06-22 A | P2.DES.275 | 100% | 2024-01-16 | 2024-01-29 |  | 5 | 80 | HP | P01 | HP |  |  |  |  |  |
| BP5.134.1.100 |  | Design - RF Shielding (Copper) | 60d | 2023-06-23 A | 2024-09-27 A | P2C.DES.180 FF, BP5.134.0.100 | 100% | 2024-01-30 | 2024-04-22 |  | 5 | 160 | SHIELD | P01 | SHIELD | T.MEP.ELEC |  |  |  |  |
|  | 3 | **Drywall & Related** |  | 2023-04-04 | 2025-11-22 |  |  |  |  |  |  |  |  |  |  |  |  |  |  |  |
| BP5.092.0.200 |  | Buyout - Drywall & Related | 10d | 2023-04-04 A | 2023-06-23 A | P2.DES.315 | 100% | 2023-04-04 | 2023-04-17 |  | 5 | 80 | HP | P01 | HP |  |  |  |  |  |
| BP5.092.1.200 |  | Prep/Submit - Drywall & Related | 20d | 2024-03-01 A | 2024-03-05 A | BP5.092.0.200, P2C.DES.185 | 100% | 2024-10-01 | 2024-10-28 |  | 5 | 160 | GYP | P01 | GYP-1 |  |  |  |  |  |
| BP5.092.2.200 |  | Review/Approve - Drywall & Related | 35d | 2024-03-06 A | 2024-09-23 A | BP5.092.1.200 | 100% | 2024-10-29 | 2024-12-18 |  | 5 | 280 | NIH | P01 | NIH |  |  |  |  |  |
| BP5.054.1.100 |  | Prep/Submit - Metal Framing & Drywall for Priority Walls - Cold Formed | 20d | 2024-05-28 A | 2024-07-31 A | BP5.092.0.200, P2C.DES.285 | 100% | 2024-05-28 | 2024-06-24 |  |  | 160 | GYP | P01 | GYP-1 |  |  |  |  |  |
| BP5.054.2.100 |  | Review/Approve - Metal Framing - Cold Formed | 35d | 2024-06-28 A | 2024-09-30 A | BP5.054.1.100 SS | 100% | 2024-07-31 | 2024-09-18 |  |  | 280 | NIH | P01 | NIH |  |  |  |  |  |
| BP5.054.3.100 |  | Lead/Fab/Deliver - Framing | 30d | 2024-08-27 A | 2024-10-07 A | BP5.054.2.100 FF | 100% | 2024-09-28 | 2024-10-27 | 7D / SRLM | 5 | 400 | GYP | P01 | GYP-1 |  |  |  |  |  |
| BP5.095.3.100 |  | Lead/Fab/Deliver - ACT Grid/Tile | 42d | 2025-04-01 A | 2025-04-30 A | BP5.092.2.200 | 100% | 2025-05-01 | 2025-06-11 | 7D / SRLM | 5 | 640 | GYP | P01 | GYP-1 |  |  |  |  |  |
| BP4.134.3.130 |  | Lead/Fab/Deliver - Radiation Protection Lead Gypsum Board | 21d | 2025-11-10 A | 2025-11-22 A | BP5.092.2.200 | 100% | 2026-01-01 | 2026-01-21 | 7D / SRLM |  | 792 | GYP | P01 | GYP-1 |  | O | Succ? Need Duration | DL | WLN |

| ID | WBS | Activity | Duration | Start | Finish | Predecessors | Complete | Remaining | Planned start | Planned finish | Total float | Free float | Calendar | Bid Package | Temp Orig Dur | Resp / SRLM | PHASE | RESP / Trade | Update Status | 744 | RESP UPD | Pick #2 | *NIH Resp Check* |
| --- | --- | --- | --- | --- | --- | --- | --- | --- | --- | --- | --- | --- | --- | --- | --- | --- | --- | --- | --- | --- | --- | --- | --- |
|  | 4 | **Doors Frames & Hardware** |  | 2024-06-20 | 2026-09-15 |  |  |  |  |  |  |  |  |  |  |  |  |  |  |  |  |  |  |
| BP5.081.0.100 |  | Buyout - Doors Frames & Hardware - Priority Masonry | 7d | 2024-06-20 A | 2024-08-22 A | P2C.DES.165, P2C.DES.175 | 100% |  | 2024-09-03 | 2024-09-11 |  |  |  | 5 | 240 | HP | P01 | HP |  |  |  |  |  |
| BP5.081.0.110 |  | Buyout - Doors Frames & Hardware | 20d | 2024-07-18 A | 2024-10-08 A | P2C.DES.165, P2C.DES.175 | 100% |  | 2024-09-03 | 2024-09-30 |  |  |  | 5 | 240 | HP | P01 | HP |  |  |  |  |  |
| BP5.081.1.400 |  | Prep/Submit - Frames - Aluminum (Masonry) - Priority | 20d | 2024-08-16 A | 2024-08-23 A | BP5.081.0.100 SS | 100% |  | 2024-09-12 | 2024-10-09 |  |  |  |  | 160 | DFH | P01 | DFH |  |  |  |  |  |
| BP5.081.2.400 |  | Review/Approve - Frames - Aluminum (Masonry) - Priority | 35d | 2024-08-23 A | 2024-09-04 A | BP5.081.1.400 FF | 100% |  | 2024-09-12 | 2024-10-30 |  |  |  |  | 280 | NIH | P01 | NIH |  |  |  |  |  |
| BP5.081.3.400 |  | Lead/Fab/Deliver - Frames - Hollow Metal (Masonry) - Priority | 40d | 2024-10-01 A | 2024-10-28 A | BP5.081.2.400 | 100% |  | 2024-11-01 | 2024-12-10 |  |  | 7D / SRLM |  | 560 | DFH | P01 | DFH |  |  |  |  |  |
| BP5.081.1.100 |  | Prep/Submit - Doors Frames & Hardware | 20d | 2024-10-08 A | 2024-11-15 A | P2C.DES.295, BP5.081.0.110 SS | 100% |  | 2024-11-01 | 2024-12-02 |  |  |  | 5 | 160 | DFH | P01 | DFH |  |  |  |  |  |
| BP5.083.1.110 |  | Prep/Submit - Doors/Frames - Lead Lined | 20d | 2024-10-08 A | 2024-11-15 A | BP5.081.0.110, P2C.DES.200 | 100% |  | 2024-11-15 | 2024-12-16 |  |  |  |  | 160 | DFH | P01 | DFH |  |  |  |  |  |
| BP5.081.2.100 |  | Review/Approve - Doors Frames & Hardware | 35d | 2024-12-11 A | 2024-12-25 A | BP5.081.1.100 | 100% |  | 2025-01-02 | 2025-02-19 |  |  |  | 5 | 280 | NIH | P01 | NIH |  |  |  |  |  |
| BP5.083.2.110 |  | Review/Approve - Doors/Frames - Lead Lined | 35d | 2024-12-11 A | 2024-12-25 A | BP5.083.1.110 | 100% |  | 2025-01-02 | 2025-02-19 |  |  |  |  | 280 | NIH | P01 | NIH |  |  |  |  |  |
| BP5.081.3.200 |  | Lead/Fab/Deliver - Priority Door Frames | 80d | 2025-01-20 A | 2025-02-27 A | BP5.081.2.100 | 100% |  | 2025-02-01 | 2025-04-21 |  |  | 7D / SRLM | 5 | 640 | DFH | P01 | DFH |  |  |  |  |  |
| BP5.081.1.410 |  | Prep/Submit - Doors/Frame - GFRP (LSP) | 20d | 2025-01-27 A | 2025-03-04 A | BP5.081.0.110 SS | 100% |  | 2025-02-03 | 2025-02-28 |  |  |  |  | 160 | CLEAN-1 | P01 | CLEAN-1 |  |  |  |  |  |
| BP5.081.2.410 |  | Review/Approve - Doors/Frame - GFRP (LSP) | 35d | 2025-03-04 A | 2026-05-12 | BP5.081.1.410 | 14% | 30d | 2025-03-10 | 2025-04-25 | 101d | 0d |  |  | 280 | CLEAN-1 | P01 | CLEAN-1 | O | JT | JT |  |  |
| BP5.083.3.110 |  | Lead/Fab/Deliver - Door Frames - Lead Lined | 70d | 2025-04-01 A | 2025-09-01 A | BP5.083.2.110 | 100% |  | 2025-05-01 | 2025-07-09 |  |  | 7D / SRLM |  | 560 | DFH | P01 | DFH | O | JT | JT |  |  |
| BP5.081.3.410 |  | Lead/Fab/Deliver - Doors/Frames - HM/Hardware | 168d | 2025-04-11 A | 2025-12-24 A | BP5.081.1.100 | 100% |  | 2026-01-01 | 2026-06-17 |  |  | 7D / SRLM |  | 1344 | DFH | P01 | DFH | O | JT | JT |  |  |
| BP5.081.3.300 |  | Lead/Fab/Deliver - Doors & Hardware | 120d | 2025-12-18 A | 2026-07-29 | BP5.081.2.100 |  | 120d | 2026-01-01 | 2026-04-30 | 183d | 0d | 7D / SRLM | 5 | 960 | DFH | P01 | DFH | O | JT | JT |  |  |
| BP4.134.3.100 |  | Lead/Fab/Deliver - RF Frames/ Doors (Shielded) | 99d | 2026-04-01 | 2026-07-08 | BP5.081.2.100, PCO.225.1140 |  |  |  |  | 168d | 0d | 7D / SRLM |  | 792 | SHIELD | P01 | SHIELD | O | DL | AW | Trade? Need Duration |  |
| BP5.083.3.120 |  | Lead/Fab/Deliver - Doors - Lead Lined | 168d | 2026-04-01 | 2026-09-15 | BP5.083.2.110 |  |  |  |  | 117d | 36d | 7D / SRLM |  | 1344 | DFH | P01 | DFH | O | JT | JT |  |  |
| BP5.081.3.420 |  | Lead/Fab/Deliver - Doors/Frame/HDW - GFRP (LSP) | 70d | 2026-05-13 | 2026-07-21 | BP5.081.2.410 |  |  |  |  | 146d | 9d | 7D / SRLM |  | 560 | CLEAN-1 | P01 | CLEAN-1 | O | JT | JT |  |  |
|  | 13 | **Bid Package 6** |  | 2023-01-30 | 2026-10-16 |  |  |  |  |  |  |  |  |  |  |  |  |  |  |  |  |  |  |
|  | 1 | **Headwalls** |  | 2023-01-30 | 2026-08-18 |  |  |  |  |  |  |  |  |  |  |  |  |  |  |  |  |  |  |
| BP6.102.0.100 |  | Buyout - Headwalls | 30d | 2023-01-30 A | 2023-06-29 A | P2.DES.315 | 100% |  | 2023-01-30 | 2023-03-10 |  |  |  | 6 | 240 | HP | P01 | HP |  |  |  |  |  |
| BP6.102.1.100 |  | Prep/Submit - Headwalls | 20d | 2024-12-19 A | 2025-03-04 A | BP6.102.0.100, P2C.DES.205 | 100% |  | 2025-01-03 | 2025-01-30 |  |  |  | 6 | 160 | LABCASE | P01 | LABCASE |  |  |  |  | T.FINISH.EQUIP |
| BP6.102.2.100 |  | Review/Approve - Headwalls | 35d | 2025-03-04 A | 2025-11-06 A | BP6.102.1.100 | 100% |  | 2025-03-17 | 2025-05-02 |  |  |  | 6 | 280 | NIH | P01 | NIH | O | DL | WLN |  |  |
| BP6.102.3.100 |  | Lead/Fab/Deliver - Headwalls | 120d | 2026-02-02 A | 2026-08-18 | BP6.102.2.100 |  | 140d | 2026-02-21 | 2026-06-20 | 83d | 0d | 7D / SRLM | 6 | 800 | LABCASE | P01 | LABCASE | O | DL | WLN |  | T.FINISH.EQUIP |

Notes:
- BP6.102.3.100: NOTES: This Delivery of the Headwall only drives the Headwall install. not in-wall blocking install.

| ID | WBS | Activity | Duration | Start | Finish | Predecessors | Complete | Remaining | Planned start | Planned finish | Total float | Free float | Constraint | Calendar | Bid Package | Temp Orig Dur | Resp / SRLM | PHASE | RESP / Trade | Update Status | 744 | RESP UPD | Pick #2 | *NIH Resp Check* | **NEAR CRITICAL** |
| --- | --- | --- | --- | --- | --- | --- | --- | --- | --- | --- | --- | --- | --- | --- | --- | --- | --- | --- | --- | --- | --- | --- | --- | --- | --- |
|  | 2 | **Lab Casework** |  | 2023-02-13 | 2026-05-05 |  |  |  |  |  |  |  |  |  |  |  |  |  |  |  |  |  |  |  |  |
| BP6.123.0.100 |  | Buyout - Lab Casework | 30d | 2023-02-13 A | 2023-06-23 A | P2.DES.275 | 100% |  | 2023-02-13 | 2023-03-24 |  |  |  |  | 6 | 240 | HP | P01 | HP |  |  |  |  |  |  |
| BP6.123.1.100 |  | Prep/Submit - Lab Casework | 20d | 2025-03-19 A | 2025-03-20 A | BP6.123.0.100, P2C.DES.210 | 100% |  | 2025-05-01 | 2025-05-29 |  |  |  |  | 6 | 160 | LABCASE | P01 | LABCASE |  |  |  |  |  |  |
| BP6.123.2.100 |  | Review/Approve - Lab Casework | 35d | 2025-03-20 A | 2025-04-18 A | BP6.123.1.100 | 100% |  | 2025-05-30 | 2025-07-18 |  |  |  |  | 6 | 280 | NIH | P01 | NIH |  |  |  |  |  |  |
| BP6.123.3.100 |  | Lead/Fab/Deliver - Lab Casework | 100d | 2026-01-08 A | 2026-05-05 | BP6.123.2.100 | 80% | 20d | 2026-03-01 | 2026-06-08 | 12d | 0d | as late as possible | 7D / SRLM | 6 | 800 | LABCASE | P01 | LABCASE | O | DL | WLN |  |  |  |
|  | 3 | **Laboratory/Med Equipment** |  | 2023-02-13 | 2026-10-16 |  |  |  |  |  |  |  |  |  |  |  |  |  |  |  |  |  |  |  |  |
| BP6.115.0.100 |  | Buyout - Laboratory/Med Equipment | 30d | 2023-02-13 A | 2023-06-23 A | P2.DES.275 | 100% |  | 2023-02-13 | 2023-03-24 |  |  |  |  | 6 | 240 | HP | P01 | HP |  |  |  |  |  |  |
| BP6.115.1.100 |  | Prep/Submit - Laboratory/Med Equipment | 20d | 2024-10-01 A | 2024-12-31 A | BP6.115.0.100, P2C.DES.235 SS | 100% |  | 2024-11-01 | 2024-12-02 |  |  |  |  | 6 | 160 | EQUIP | P01 | EQUIP |  |  |  |  |  |  |
| BP6.115.2.100 |  | Review/Approve - Laboratory/Med Equipment | 35d | 2024-10-21 A | 2024-12-31 A | BP6.115.1.100 | 100% |  | 2025-01-02 | 2025-02-19 |  |  |  |  | 6 | 280 | NIH | P01 | NIH |  |  |  |  |  |  |
| BP6.115.3.100 |  | Lead/Fab/Deliver - Laboratory/Med Equipment | 100d | 2024-12-31 A | 2025-02-17 A | BP6.115.2.100 | 100% |  | 2025-02-20 | 2025-05-30 |  |  |  | 7D / SRLM | 6 | 800 | EQUIP | P01 | EQUIP |  |  |  |  |  |  |
| BP6.115.1.140 |  | Prep/Submit - Biological Safety Cabinets | 20d | 2025-02-04 A | 2025-03-07 A | BP6.115.0.100, P2C.DES.205 | 100% |  | 2025-03-03 | 2025-03-28 |  |  |  |  |  | 160 | LABCASE | P01 | LABCASE |  |  |  |  |  |  |
| BP6.115.2.140 |  | Review/Approve - Biological Safety Cabinets | 35d | 2025-03-07 A | 2025-05-01 A | BP6.115.1.140 | 100% |  | 2025-08-04 | 2025-09-22 |  |  |  |  |  | 280 | NIH | P01 | NIH |  |  |  |  |  |  |
| BP6.117.1.100 |  | Prep/Submit - Equipment - Patient Care | 20d | 2025-12-01 A | 2025-12-01 A | BP6.115.0.100, P2C.DES.205, BP6.115.1.140 | 100% |  | 2026-01-02 | 2026-01-29 |  |  |  |  |  | 160 | EQUIP | P01 | EQUIP | O | DL | WLN |  |  |  |
| BP6.117.1.110 |  | Prep/Submit - Equipment - Operating Room | 20d | 2025-12-01 A | 2025-12-01 A | BP6.115.0.100, P2C.DES.205, BP6.117.1.100 | 100% |  | 2026-01-30 | 2026-02-26 |  |  |  |  |  | 160 | EQUIP | P01 | EQUIP | O | DL | WLN |  |  |  |
| BP6.117.1.120 |  | Prep/Submit - Equipment - Radiology | 20d | 2025-12-01 A | 2026-04-28 | BP6.115.0.100, P2C.DES.205, BP6.117.1.110 |  | 20d | 2026-02-27 | 2026-03-26 | 80d | 0d |  |  |  | 160 | EQUIP | P01 | EQUIP |  | DL | WLN |  |  |  |
| BP6.117.2.100 |  | Review/Approve - Equipment - Patient Care | 35d | 2025-12-01 A | 2026-05-19 | BP6.117.1.100 |  | 35d | 2026-01-30 | 2026-03-19 | 65d | 0d |  |  |  | 280 | NIH | P01 | NIH | O | DL | WLN |  |  |  |
| BP6.117.2.120 |  | Review/Approve - Equipment - Radiology | 35d | 2025-12-01 A | 2026-06-17 | BP6.117.1.120 |  | 35d | 2026-03-27 | 2026-05-14 | 80d | 0d |  |  |  | 280 | NIH | P01 | NIH |  | DL | WLN |  |  |  |
| BP6.115.3.140 |  | Lead/Fab/Deliver - Biological Safety Cabinets | 77d | 2026-04-01 | 2026-06-16 | BP6.115.2.140 |  |  |  |  | 190d | 161d |  | 7D / SRLM |  | 792 | EQUIP | P01 | EQUIP | O | DL | WLN | Succ? Need Duration |  |  |
| BP6.117.2.110 |  | Review/Approve - Equipment - Operating Room | 35d | 2026-05-20 | 2026-07-09 | BP6.117.1.110, BP6.117.2.100 |  |  |  |  | 65d | 0d |  |  |  | 280 | NIH | P01 | NIH |  | DL | WLN |  |  |  |
| BP6.117.3.100 |  | Lead/Fab/Deliver - Equipment - Patient Care | 99d | 2026-05-20 | 2026-08-26 | BP6.117.2.100 |  |  |  |  | 144d | 83d |  | 7D / SRLM |  | 792 | EQUIP | P01 | EQUIP |  | DL | WLN | Succ? Need Duration |  |  |
| BP6.117.3.120 |  | Lead/Fab/Deliver - Equipment - Radiology | 99d | 2026-06-18 | 2026-09-24 | BP6.117.2.120 |  |  |  |  | 115d | 54d |  | 7D / SRLM |  | 792 | EQUIP | P01 | EQUIP |  | DL | WLN | Succ? Need Duration |  |  |
| BP6.117.3.110 |  | Lead/Fab/Deliver - Equipment - Operating Room | 99d | 2026-07-10 | 2026-10-16 | BP6.117.2.110 |  |  |  |  | 93d | 32d |  | 7D / SRLM |  | 792 | EQUIP | P01 | EQUIP |  |  | WLN | Succ? Need Duration |  |  |
|  | 4 | **Cold Rooms** |  | 2023-02-13 | 2026-02-27 |  |  |  |  |  |  |  |  |  |  |  |  |  |  |  |  |  |  |  |  |
| BP6.132.0.100 |  | Buyout - Cold Rooms | 30d | 2023-02-13 A | 2023-07-21 A | P2.DES.315 | 100% |  | 2023-02-13 | 2023-03-24 |  |  |  |  | 6 | 240 | HP | P01 | HP |  |  |  | N |  |  |
| BP6.132.1.100 |  | Prep/Submit - Cold Rooms | 20d | 2025-03-17 A | 2025-03-17 A | BP6.132.0.100, P2C.DES.210 | 100% |  | 2025-03-04 | 2025-03-31 |  |  |  |  | 6 | 160 | COLD | P01 | COLD |  |  |  | N | T.FINISH.EQUIP |  |
| BP6.132.2.100 |  | Review/Approve - Cold Rooms | 35d | 2025-03-17 A | 2025-06-30 A | BP6.132.1.100 | 100% |  | 2025-04-01 | 2025-05-19 |  |  |  |  | 6 | 280 | COLD | P01 | COLD |  | JT | JT | N |  |  |
| BP6.132.3.100 |  | Lead/Fab/Deliver - Cold Rooms | 80d | 2026-01-01 A | 2026-02-27 A | BP6.132.2.100 | 100% |  | 2026-01-01 | 2026-03-21 |  |  |  | 7D / SRLM | 6 | 800 | COLD | P01 | COLD | O | JT | JT | N | T.FINISH.EQUIP | 3 |

| ID | WBS | Activity | Duration | Start | Finish | Predecessors | Complete | Planned start | Planned finish | Total float | Free float | Calendar | Bid Package | Temp Orig Dur | Pick #2 | Resp / SRLM | PHASE | RESP / Trade | *NIH Resp Check* | 744 | RESP UPD | Update Status |
| --- | --- | --- | --- | --- | --- | --- | --- | --- | --- | --- | --- | --- | --- | --- | --- | --- | --- | --- | --- | --- | --- | --- |
|  | 5 | **Cleanroom GFRP** |  | 2023-07-03 | 2026-07-09 |  |  |  |  |  |  |  |  |  |  |  |  |  |  |  |  |  |
| BP6.092.0.100 |  | Buyout - Cleanroom GFRP | 30d | 2023-07-03 A | 2023-12-07 A | P2C.DES.225 | 100% | 2023-11-01 | 2023-12-14 |  |  |  | 6 | 240 | N | HP | P01 | HP |  |  |  |  |
| BP6.092.1.100 |  | Prep/Submit - Cleanroom GFRP | 20d | 2024-08-12 A | 2025-02-06 A | BP6.092.0.100, P2C.DES.235 SS | 100% | 2024-11-01 | 2024-12-02 |  |  |  | 6 | 160 | N | CLEAN-1 | P01 | CLEAN-1 | T.FINISH.GYP |  |  |  |
| BP6.092.2.100 |  | Review/Approve - Cleanroom GFRP | 35d | 2025-03-04 A | 2025-06-30 A | BP6.092.1.100 | 100% | 2025-05-02 | 2025-06-20 |  |  |  | 6 | 280 | N | CLEAN-1 | P01 | CLEAN-1 |  | JT | JT |  |
| BP6.092.3.100 |  | Lead/Fab/Deliver - Cleanroom GFRP | 100d | 2026-04-01 | 2026-07-09 | BP6.092.2.100 |  |  |  | 84d | 0d | 7D / SRLM | 6 | 800 | N | CLEAN-1 | P01 | CLEAN-1 | T.FINISH.GYP | JT | JT | O |
|  | 14 | **Bid Package 7** |  | 2023-08-30 | 2026-08-25 |  |  |  |  |  |  |  |  |  |  |  |  |  |  |  |  |  |
|  | 12 | **Structural Steel** |  | 2023-09-25 | 2025-03-28 |  |  |  |  |  |  |  |  |  |  |  |  |  |  |  |  |  |
| BP7.051.0.100 |  | Buyout - Strucutral Steel Framing | 30d | 2023-09-25 A | 2024-01-04 A | P2A.DES.575 FF | 100% | 2023-11-30 | 2024-01-12 |  |  |  |  | 240 | Pred? | HP | P2-5 | HP |  |  |  |  |
| BP7.051.0.110 |  | Buyout - Architectural Structural Steel Framing | 30d | 2023-09-25 A | 2024-01-04 A | P2C.DES.225 | 100% | 2023-12-14 | 2024-01-26 |  |  |  |  | 240 | Pred? | HP | P2-5 | HP |  |  |  |  |
| BP7.051.1.100 |  | Prep/Submit - Strucutral Steel Framing | 20d | 2024-03-20 A | 2024-04-26 A | BP7.051.0.100, P2A.DES.555 | 100% | 2024-04-01 | 2024-04-26 |  |  |  |  | 160 |  | STEEL | P2-5 | STEEL |  |  |  |  |
| BP7.051.2.100 |  | Review/Approve - Strucutral Steel Framing | 35d | 2024-04-03 A | 2024-06-26 A | BP7.051.1.100 | 100% | 2024-05-22 | 2024-07-11 |  |  |  |  | 280 |  | NIH | P2-5 | NIH |  |  |  |  |
| BP7.053.1.100 |  | Prep/Submit - Steel Decking | 20d | 2024-04-09 A | 2024-04-23 A | BP7.051.0.100, P2A.DES.555 | 100% | 2024-05-01 | 2024-05-29 |  |  |  |  | 160 |  | STEEL | P2-5 | STEEL |  |  |  |  |
| BP7.053.2.100 |  | Review/Approve - Steel Decking | 35d | 2024-04-24 A | 2024-08-26 A | BP7.053.1.100 | 100% | 2024-05-30 | 2024-07-18 |  |  |  |  | 280 |  | NIH | P2-5 | NIH |  |  |  |  |
| BP7.051.3.100 |  | Lead/Fab/Deliver - Structural Steel Framing | 98d | 2024-06-20 A | 2024-08-20 A | BP7.051.2.100 | 100% | 2024-06-15 | 2024-09-20 |  |  | 7D / SRLM |  | 784 | Succ P2.2.I.05.110 | STEEL | P2-5 | STEEL |  |  |  |  |
| BP7.051.1.110 |  | Prep/Submit - Architectural Structural Steel Framing | 20d | 2024-07-01 A | 2024-07-15 A | BP7.051.0.110, P2A.DES.555 | 100% | 2024-08-01 | 2024-08-28 |  |  |  |  | 160 |  | STEEL | P2-5 | STEEL |  |  |  |  |
| BP7.051.2.110 |  | Review/Approve - Architectural Structural Steel Framing | 35d | 2024-07-15 A | 2024-08-26 A | BP7.051.1.110 | 100% | 2024-08-29 | 2024-10-17 |  |  |  |  | 280 |  | NIH | P2-5 | NIH |  |  |  |  |
| BP7.053.3.100 |  | Lead/Fab/Deliver - Steel Decking | 45d | 2024-09-23 A | 2024-10-21 A | BP7.053.2.100 | 100% | 2024-10-01 | 2024-11-14 |  |  | 7D / SRLM |  | 952 | Succ P2.2.I.05.210 | STEEL | P2-5 | STEEL |  |  |  |  |
| BP7.051.3.110 |  | Lead/Fab/Deliver - Architectural Structural Steel Framing | 49d | 2024-12-03 A | 2025-03-28 A | BP7.051.2.110 | 100% | 2025-01-01 | 2025-02-18 |  |  | 7D / SRLM |  | 784 | Succ? | STEEL | P2-5 | STEEL |  |  |  |  |
|  | 1 | **Paint & Wall Covering** |  | 2023-09-29 | 2026-06-19 |  |  |  |  |  |  |  |  |  |  |  |  |  |  |  |  |  |
| BP7.099.0.100 |  | Buyout - Paint & Wall Covering | 30d | 2023-09-29 A | 2024-03-25 A | P2C.DES.180 FF, P2C.DES.225 | 100% | 2024-03-25 | 2024-05-03 |  |  |  | 7 | 240 |  | HP | P01 | HP |  |  |  |  |
| BP7.099.1.100 |  | Prep/Submit - Paint & Wall Covering | 20d | 2024-06-26 A | 2024-07-08 A | BP7.099.0.100 | 100% | 2024-05-01 | 2024-05-29 |  |  |  | 7 | 160 |  | PAINT | P01 | PAINT-1 |  |  |  |  |
| BP7.099.2.100 |  | Review/Approve - Paint & Wall Covering | 35d | 2024-07-08 A | 2024-07-17 A | BP7.099.1.100 FF+10d | 100% | 2024-08-09 | 2024-09-27 |  |  |  | 7 | 280 |  | NIH | P01 | NIH |  |  |  |  |
| BP7.099.3.100 |  | Lead/Fab/Deliver - Paint | 5d | 2024-09-30 A | 2024-10-07 A | BP7.099.2.100 | 100% | 2024-10-01 | 2024-10-05 |  |  | 7D / SRLM | 7 | 320 |  | PAINT | P01 | PAINT-1 |  |  |  |  |
| BP7.097.3.100 |  | Lead/Fab/Deliver - Wall Covering | 80d | 2026-04-01 | 2026-06-19 | BP7.099.2.100 |  |  |  | 122d | 31d | 7D / SRLM | 7 | 640 |  | PAINT | P01 | PAINT-1 |  |  | JT | O |

| ID | WBS | Activity | Duration | Start | Finish | Predecessors | Complete | Planned start | Planned finish | Total float | Free float | Calendar | Bid Package | Temp Orig Dur | Pick #2 | Resp / SRLM | PHASE | RESP / Trade | Update Status | 744 | RESP UPD |
| --- | --- | --- | --- | --- | --- | --- | --- | --- | --- | --- | --- | --- | --- | --- | --- | --- | --- | --- | --- | --- | --- |
|  | 2 | **Building Specialties** |  | 2023-08-30 | 2026-08-25 |  |  |  |  |  |  |  |  |  |  |  |  |  |  |  |  |
| BP7.100.0.100 |  | Buyout - Building Specialties | 30d | 2023-08-30 A | 2024-04-23 A | P2C.DES.225 | 100% | 2023-10-09 | 2023-11-17 |  |  |  | 7 | 240 | N | HP | P01 | HP |  |  |  |
| BP7.100.0.110 |  | Buyout - Photoluminescent markings | 30d | 2024-03-26 A | 2024-07-08 A | P2C.DES.295 | 100% | 2023-10-09 | 2023-11-17 |  |  |  | 7 | 240 | N | HP | P01 | HP |  |  |  |
| BP7.100.1.110 |  | Prep/Submit - Photoluminescent markings | 20d | 2024-06-10 A | 2024-08-23 A | BP7.100.0.110 | 100% | 2024-10-25 | 2024-11-21 |  |  |  | 7 | 160 | N | SPECIAL | P01 | SPECIAL |  |  |  |
| BP7.102.1.130 |  | Prep/Submit - Partitions - Demountable | 20d | 2024-07-01 A | 2024-08-12 A | BP7.100.0.100, P2C.DES.235 SS | 100% | 2024-11-01 | 2024-12-02 |  |  |  |  | 160 |  | SPECIAL | P01 | SPECIAL |  |  |  |
| BP7.102.1.140 |  | Prep/Submit - Partitions - Folding Panel | 20d | 2024-07-12 A | 2024-07-12 A | BP7.100.0.100, P2C.DES.295 | 100% | 2024-10-25 | 2024-11-21 |  |  |  |  | 160 |  | SPECIAL | P01 | SPECIAL |  |  |  |
| BP7.102.2.140 |  | Review/Approve - Partitions - Folding Panel | 35d | 2024-07-12 A | 2024-09-30 A | BP7.102.1.140 | 100% | 2024-10-01 | 2024-11-18 |  |  |  |  | 280 |  | NIH | P01 | NIH |  |  |  |
| BP7.102.2.130 |  | Review/Approve - Partitions - Demountable | 35d | 2024-08-12 A | 2025-01-13 A | BP7.102.1.130 | 100% | 2024-12-03 | 2025-01-22 |  |  |  |  | 280 |  | NIH | P01 | NIH |  |  |  |
| BP7.100.2.110 |  | Review/Approve - Photoluminescent markings | 35d | 2024-08-26 A | 2025-03-05 A | BP7.100.1.110 | 100% | 2024-10-01 | 2024-11-18 |  |  |  | 7 | 280 | N | NIH | P01 | NIH |  |  |  |
| BP7.102.1.110 |  | Prep/Submit - Cubicle Curtains and Track | 20d | 2024-12-10 A | 2024-12-18 A | BP7.100.0.100 | 100% | 2025-01-03 | 2025-01-30 |  |  |  |  | 160 |  | SPECIAL | P01 | SPECIAL |  |  |  |
| BP7.105.1.100 |  | Prep/Submit - Metal Lockers | 20d | 2025-01-13 A | 2025-02-03 A | BP7.100.0.100, P2C.DES.205 | 100% | 2025-02-04 | 2025-03-03 |  |  |  |  | 160 |  | SPECIAL | P01 | SPECIAL |  |  |  |
| BP7.102.1.120 |  | Prep/Submit - Toilet Compartment | 20d | 2025-01-15 A | 2025-02-10 A | BP7.100.0.100, P2C.DES.205 | 100% | 2025-02-04 | 2025-03-03 |  |  |  |  | 160 |  | SPECIAL | P01 | SPECIAL |  |  |  |
| BP7.102.2.110 |  | Review/Approve - Cubicle Curtains and Track | 35d | 2025-01-27 A | 2025-12-19 A | BP7.102.1.110 | 100% | 2025-02-03 | 2025-03-21 |  |  |  |  | 280 |  | NIH | P01 | NIH | O | JT | JT |
| BP7.105.2.100 |  | Review/Approve - Metal Lockers | 35d | 2025-02-01 A | 2025-10-24 A | BP7.105.1.100 | 100% | 2025-03-03 | 2025-04-18 |  |  |  |  | 280 |  | NIH | P01 | NIH |  | JT | JT |
| BP7.102.2.120 |  | Review/Approve - Toilet Compartment | 35d | 2025-02-10 A | 2025-10-07 A | BP7.102.1.120 | 100% | 2025-03-03 | 2025-04-18 |  |  |  |  | 280 |  | NIH | P01 | NIH |  | JT | JT |
| BP7.100.1.100 |  | Prep/Submit - Building Specialties | 20d | 2025-02-21 A | 2025-03-20 A | BP7.100.0.100, P2C.DES.210 | 100% | 2025-04-02 | 2025-04-29 |  |  |  | 7 | 160 | N | SPECIAL | P01 | SPECIAL |  |  |  |
| BP7.100.2.100 |  | Review/Approve - Building Specialties | 35d | 2025-03-20 A | 2025-04-10 A | BP7.100.1.100 | 100% | 2025-04-30 | 2025-06-18 |  |  |  | 7 | 280 | N | NIH | P01 | NIH |  |  |  |
| BP7.100.3.110 |  | Lead/Fab/Deliver - Photoluminescent markings | 50d | 2025-07-21 A | 2025-10-24 A | BP7.100.2.110 | 100% | 2025-08-01 | 2025-09-19 |  |  | 7D / SRLM | 7 | 400 | N | SPECIAL | P01 | SPECIAL |  | RA | RA |
| BP7.100.3.100 |  | Lead/Fab/Deliver - Building Specialties | 50d | 2026-04-01 | 2026-05-20 | BP7.100.2.100 |  |  |  | 196d | 140d | 7D / SRLM | 7 | 400 | N | SPECIAL | P01 | SPECIAL | O | JT | JT |
| BP7.102.3.110 |  | Lead/Fab/Deliver - Cubicle Curtains and Track | 42d | 2026-04-01 | 2026-05-12 | BP7.102.2.110 |  |  |  | 160d | 105d | 7D / SRLM |  | 336 | Succ? | SPECIAL | P01 | SPECIAL | O | JT | JT |
| BP7.102.3.120 |  | Lead/Fab/Deliver - Toilet Compartment | 42d | 2026-04-01 | 2026-05-12 | BP7.102.2.120 |  |  |  | 236d | 105d | 7D / SRLM |  | 336 | Succ? | SPECIAL | P01 | SPECIAL | O | JT | JT |
| BP7.102.3.130 |  | Lead/Fab/Deliver - Partitions - Demountable | 147d | 2026-04-01 | 2026-08-25 | BP7.102.2.130 |  |  |  | 83d | 7d | 7D / SRLM |  | 1176 | Succ? | SPECIAL | P01 | SPECIAL | O | RA | EJ |
| BP7.102.3.140 |  | Lead/Fab/Deliver - Partitions - Folding Panel | 147d | 2026-04-01 | 2026-08-25 | BP7.102.2.140 |  |  |  | 55d | 0d | 7D / SRLM |  | 1176 | Succ? | SPECIAL | P01 | SPECIAL | O | RA | EJ |
| BP7.102.3.200 |  | Lead/Fab/Deliver - Toilet Partitions | 50d | 2026-04-01 | 2026-05-20 | BP7.100.2.100 |  |  |  | 266d | 26d | 7D / SRLM | 7 | 400 | N | SPECIAL | P01 | SPECIAL | O | JT | JT |
| BP7.102.3.300 |  | Lead/Fab/Deliver - Wall Protection / Crash Guards | 50d | 2026-04-01 | 2026-05-20 | BP7.100.2.100 |  |  |  | 152d | 0d | 7D / SRLM | 7 | 640 | N | SPECIAL | P01 | SPECIAL | O | JT | JT |
| BP7.105.3.100 |  | Lead/Fab/Deliver - Metal Lockers | 99d | 2026-04-01 | 2026-07-08 | BP7.105.2.100 |  |  |  | 168d | 41d | 7D / SRLM |  | 792 | Succ? Need Duration | SPECIAL | P01 | SPECIAL | O | JT | JT |

| ID | WBS | Activity | Duration | Start | Finish | Predecessors | Complete | Remaining | Planned start | Planned finish | Total float | Free float | Calendar | Bid Package | Temp Orig Dur | Resp / SRLM | PHASE | RESP / Trade | Update Status | 744 | RESP UPD | Pick #2 |
| --- | --- | --- | --- | --- | --- | --- | --- | --- | --- | --- | --- | --- | --- | --- | --- | --- | --- | --- | --- | --- | --- | --- |
|  | 3 | **Epoxy Floors** |  | 2023-10-12 | 2025-09-05 |  |  |  |  |  |  |  |  |  |  |  |  |  |  |  |  |  |
| BP7.096.0.200 |  | Buyout - Epoxy Floors | 30d | 2023-10-12 A | 2024-04-18 A | P2C.DES.225 | 100% |  | 2023-12-01 | 2024-01-15 |  |  |  | 7 | 240 | HP | P01 | HP |  |  |  |  |
| BP7.096.1.200 |  | Prep/Submit - Epoxy Floors | 20d | 2024-09-18 A | 2024-11-21 A | BP7.096.0.200, P2C.DES.235 SS | 100% |  | 2024-11-01 | 2024-12-02 |  |  |  | 7 | 160 | EPOXYF | P01 | EPOXYF |  |  |  |  |
| BP7.096.2.200 |  | Review/Approve - Epoxy Floors | 35d | 2024-11-22 A | 2025-02-21 A | BP7.096.1.200 | 100% |  | 2024-12-23 | 2025-02-11 |  |  |  | 7 | 280 | NIH | P01 | NIH |  |  |  |  |
| BP7.096.3.200 |  | Lead/Fab/Deliver - Epoxy Floors | 60d | 2025-05-01 A | 2025-09-05 A | BP7.096.2.200 | 100% |  | 2025-06-01 | 2025-07-30 |  |  | 7D / SRLM | 7 | 480 | EPOXYF | P01 | EPOXYF | O | RA | RA |  |
|  | 4 | **Carpet & Resilient** |  | 2023-10-12 | 2026-05-30 |  |  |  |  |  |  |  |  |  |  |  |  |  |  |  |  |  |
| BP7.096.0.100 |  | Buyout - Carpet | 30d | 2023-10-12 A | 2024-07-01 A | P2C.DES.225 | 100% |  | 2024-03-25 | 2024-05-03 |  |  |  | 7 | 240 | HP | P01 | HP |  |  |  | N |
| BP7.096.1.100 |  | Prep/Submit - Carpet | 20d | 2024-10-25 A | 2024-11-13 A | BP7.096.0.100, P2C.DES.235 SS | 100% |  | 2024-11-01 | 2024-12-02 |  |  |  | 7 | 160 | FLOOR | P01 | FLOOR |  |  |  | N |
| BP7.096.2.100 |  | Review/Approve - Carpet | 35d | 2024-11-04 A | 2025-04-30 A | BP7.096.1.100 | 100% |  | 2024-12-23 | 2025-02-11 |  |  |  | 7 | 280 | NIH | P01 | NIH |  |  |  | N |
| BP7.096.3.100 |  | Lead/Fab/Deliver - Carpet | 60d | 2026-04-01 | 2026-05-30 | BP7.096.2.100 |  |  |  |  | 156d | 38d | 7D / SRLM | 7 | 480 | FLOOR | P01 | FLOOR | O | RA | EJ | N |
|  | 5 | **Tile** |  | 2023-10-12 | 2026-05-30 |  |  |  |  |  |  |  |  |  |  |  |  |  |  |  |  |  |
| BP7.093.0.100 |  | Buyout - Tile | 30d | 2023-10-12 A | 2024-07-01 A | P2C.DES.225 | 100% |  | 2024-03-25 | 2024-05-03 |  |  |  | 7 | 240 | HP | P01 | HP |  |  |  |  |
| BP7.093.1.100 |  | Prep/Submit - Tile | 20d | 2024-10-25 A | 2024-11-21 A | BP7.093.0.100, P2C.DES.235 SS | 100% |  | 2024-11-01 | 2024-12-02 |  |  |  | 7 | 160 | TILE | P01 | TILE |  |  |  |  |
| BP7.093.2.100 |  | Review/Approve - Tile | 35d | 2024-11-22 A | 2025-03-20 A | BP7.093.1.100 | 100% |  | 2024-12-23 | 2025-02-11 |  |  |  | 7 | 280 | NIH | P01 | NIH |  |  |  |  |
| BP7.093.3.100 |  | Lead/Fab/Deliver - Tile | 60d | 2026-04-01 | 2026-05-30 | BP7.093.2.100 |  |  |  |  | 135d | 59d | 7D / SRLM | 7 | 480 | TILE | P01 | TILE | O | RA | EJ |  |
|  | 6 | **Ornamental Metals** |  | 2023-10-23 | 2026-07-22 |  |  |  |  |  |  |  |  |  |  |  |  |  |  |  |  |  |
| BP4.055.0.110 |  | Buyout - Glazed Decorative Metal Railings | 30d | 2023-10-23 A | 2024-04-01 A | P2C.DES.225 | 100% |  | 2023-10-24 | 2023-12-06 |  |  |  |  | 240 | HP | P01 | HP |  |  |  | Pred |
| BP7.057.0.100 |  | Buyout - Ornamental Metals | 30d | 2023-11-27 A | 2024-04-01 A | P2C.DES.225 | 100% |  | 2023-11-01 | 2023-12-14 |  |  |  | 7 | 240 | HP | P01 | HP |  |  |  |  |
| BP4.055.0.120 |  | Buyout - Formed Metal Panels | 30d | 2024-03-15 A | 2024-04-03 A | P2C.DES.285 SS | 100% |  | 2024-07-18 | 2024-08-28 |  |  |  |  | 240 | HP | P01 | HP |  |  |  | Pred |
| BP4.055.1.120 |  | Prep/Submit - Decorative Metal Railings | 20d | 2024-10-21 A | 2025-01-08 A | BP4.055.0.110, P2C.DES.235 SS | 100% |  | 2024-11-01 | 2024-12-02 |  |  |  |  | 160 | MISCMTL | P01 | MISCMTL |  |  |  |  |
| BP4.055.2.120 |  | Review/Approve - Decorative Metal Railings | 35d | 2025-01-09 A | 2025-01-22 A | BP4.055.1.120 | 100% |  | 2025-02-17 | 2025-04-04 |  |  |  |  | 280 | NIH | P01 | NIH |  |  |  |  |
| BP4.055.3.110 |  | Lead/Fab/Deliver - Decorative Metal Railings | 99d | 2025-02-03 A | 2025-02-28 A | BP4.055.2.120 | 100% |  | 2025-03-03 | 2025-06-09 |  |  | 7D / SRLM |  | 792 | MISCMTL | P01 | MISCMTL |  |  |  | Duration, Succ, Need Duration |
| BP4.055.1.130 |  | Prep/Submit - Glazed Decorative Metal Railings | 20d | 2025-02-17 A | 2025-02-18 A | BP4.055.0.110, P2C.DES.210 | 100% |  | 2025-03-04 | 2025-03-31 |  |  |  |  | 160 | MISCMTL | P01 | MISCMTL |  |  |  |  |
| BP4.055.1.310 |  | Prep/Submit - Formed Metal Panels | 20d | 2025-02-17 A | 2025-02-18 A | BP4.055.0.120 | 100% |  | 2025-03-03 | 2025-03-28 |  |  |  |  | 160 | MISCMTL | P01 | MISCMTL |  |  |  |  |
| BP7.057.1.100 |  | Prep/Submit - Ornamental Metals | 20d | 2025-02-17 A | 2025-02-18 A | BP7.057.0.100, P2C.DES.210 | 100% |  | 2025-03-04 | 2025-03-31 |  |  |  | 7 | 160 | MISCMTL | P01 | MISCMTL |  |  |  |  |
| BP4.055.2.130 |  | Review/Approve - Glazed Decorative Metal Railings | 35d | 2025-02-19 A | 2025-03-13 A | BP4.055.1.130 | 100% |  | 2025-03-04 | 2025-04-21 |  |  |  |  | 280 | NIH | P01 | NIH |  |  |  |  |
| BP4.055.2.310 |  | Review/Approve - Formed Metal Panels | 35d | 2025-02-19 A | 2026-04-14 | BP4.055.1.310 | 71% | 10d | 2025-03-31 | 2025-05-16 | 86d | 0d |  |  | 280 | NIH | P01 | NIH | O | RA | EJ |  |
| BP7.057.2.100 |  | Review/Approve - Ornamental Metals | 35d | 2025-02-19 A | 2025-03-13 A | BP7.057.1.100 | 100% |  | 2025-03-04 | 2025-04-21 |  |  |  | 7 | 280 | NIH | P01 | NIH |  |  |  |  |
| BP4.055.3.120 |  | Lead/Fab/Deliver - Glazed Decorative Metal Railings | 99d | 2025-03-03 A | 2025-04-30 A | BP4.055.2.130 | 100% |  | 2025-05-01 | 2025-08-07 |  |  | 7D / SRLM |  | 792 | MISCMTL | P01 | MISCMTL |  |  |  | Duration, Succ, Need Duration |
| BP7.057.3.100 |  | Lead/Fab/Deliver - Ornamental Metals | 80d | 2026-04-01 | 2026-06-19 | BP7.057.2.100 |  |  |  |  | 157d | 82d | 7D / SRLM | 7 | 640 | MISCMTL | P01 | MISCMTL | O | RA | EJ |  |
| BP4.055.3.520 |  | Lead/Fab/Deliver - Formed Metal Panels | 99d | 2026-04-15 | 2026-07-22 | BP4.055.2.310 |  |  |  |  | 124d | 49d | 7D / SRLM |  | 792 | MISCMTL | P01 | MISCMTL | O | RA | EJ | Duration, Succ, Need Duration |

| ID | WBS | Activity | Duration | Start | Finish | Predecessors | Complete | Remaining | Planned start | Planned finish | Total float | Free float | Calendar | Bid Package | Temp Orig Dur | Resp / SRLM | PHASE | RESP / Trade | Pick #2 | 744 | RESP UPD | Update Status |
| --- | --- | --- | --- | --- | --- | --- | --- | --- | --- | --- | --- | --- | --- | --- | --- | --- | --- | --- | --- | --- | --- | --- |
|  | 7 | **Interior Glass** |  | 2024-08-22 | 2026-06-19 |  |  |  |  |  |  |  |  |  |  |  |  |  |  |  |  |  |
| BP7.088.0.100 |  | Buyout - Interior Glass | 8d | 2024-08-22 A | 2024-09-24 A | P2C.DES.180 | 100% |  | 2024-09-03 | 2024-09-12 |  |  |  | 7 | 240 | HP | P01 | HP |  |  |  |  |
| BP2.088.1.100 |  | Prep/Submit - Glazing - Decorative | 20d | 2025-02-15 A | 2025-04-28 A | BP7.088.0.100, P2C.DES.210 | 100% |  | 2025-03-04 | 2025-03-31 |  |  |  |  | 160 | GLASS | P01 | GLASS | Pred? |  |  |  |
| BP7.088.1.100 |  | Prep/Submit - Interior Glass | 20d | 2025-02-15 A | 2025-06-03 A | P2A.DES.555, BP7.088.0.100, P2C.DES.185 | 100% |  | 2025-03-03 | 2025-03-28 |  |  |  | 7 | 160 | GLASS | P01 | GLASS |  | TC | TC |  |
| BP2.088.2.100 |  | Review/Approve - Glazing - Decorative | 35d | 2025-04-28 A | 2025-06-27 A | BP2.088.1.100 | 100% |  | 2025-05-21 | 2025-07-10 |  |  |  |  | 280 | NIH | P01 | NIH |  | TC | TC |  |
| BP7.088.2.100 |  | Review/Approve - Interior Glass | 35d | 2025-06-04 A | 2025-11-10 A | BP7.088.1.100 | 100% |  | 2025-07-16 | 2025-09-03 |  |  |  | 7 | 280 | NIH | P01 | NIH |  | TC | BA |  |
| BP2.088.3.100 |  | Lead/Fab/Deliver - Glazing - Decorative | 105d | 2025-06-18 A | 2026-04-28 | BP2.088.2.100 | 73% | 28d | 2025-07-18 | 2025-10-30 | 230d | 120d | 7D / SRLM |  | 840 | GLASS | P01 | GLASS | Succ? | TC | BA | O |
| BP2.134.3.140 |  | Lead/Fab/Deliver - Radiation Protection Lead Glass | 99d | 2025-06-18 A | 2026-04-28 | BP2.088.2.100 | 72% | 28d | 2025-07-18 | 2025-10-24 | 92d | 34d | 7D / SRLM |  | 792 | GLASS | P01 | GLASS | Trade? Succ? Need Duration | TC | BA | O |
| BP7.088.3.100 |  | Lead/Fab/Deliver - Interior Glass | 80d | 2025-11-11 A | 2026-06-19 | BP7.088.2.100 |  | 80d | 2025-12-20 | 2026-03-09 | 129d | 65d | 7D / SRLM | 7 | 640 | GLASS | P01 | GLASS |  | TC | BA |  |
|  | 8 | **Millwork** |  | 2024-01-16 | 2026-06-03 |  |  |  |  |  |  |  |  |  |  |  |  |  |  |  |  |  |
| BP7.062.0.100 |  | Buyout - Millwork | 30d | 2024-01-16 A | 2024-04-24 A | P2C.DES.225 | 100% |  | 2024-03-25 | 2024-05-03 |  |  |  | 7 | 240 | HP | P01 | HP |  |  |  |  |
| BP7.062.1.100 |  | Prep/Submit - Millwork | 20d | 2024-07-12 A | 2024-10-10 A | BP7.062.0.100, P2C.DES.235 SS | 100% |  | 2024-11-01 | 2024-12-02 |  |  |  | 7 | 160 | MILL | P01 | MILL |  |  |  |  |
| BP7.064.1.100 |  | Prep/Submit - Cabinets | 20d | 2024-07-12 A | 2024-10-10 A | BP7.062.0.100, P2C.DES.235 SS | 100% |  | 2024-11-01 | 2024-12-02 |  |  |  |  | 160 | MILL | P01 | MILL |  |  |  |  |
| BP7.123.1.100 |  | Prep/Submit - Solid Surfacing Countertops | 20d | 2024-07-12 A | 2024-10-10 A | BP7.062.0.100, P2C.DES.235 SS | 100% |  | 2024-11-01 | 2024-12-02 |  |  |  |  | 160 | MILL | P01 | MILL |  |  |  |  |
| BP7.062.2.100 |  | Review/Approve - Millwork | 35d | 2024-10-10 A | 2025-06-09 A | BP7.062.1.100 | 100% |  | 2024-12-03 | 2025-01-22 |  |  |  | 7 | 280 | NIH | P01 | NIH |  | ZK | ZK |  |
| BP7.064.2.100 |  | Review/Approve - Cabinets | 35d | 2024-10-10 A | 2025-06-09 A | BP7.064.1.100 | 100% |  | 2024-12-03 | 2025-01-22 |  |  |  |  | 280 | NIH | P01 | NIH |  | ZK | ZK |  |
| BP7.123.2.100 |  | Review/Approve - Solid Surfacing Countertops | 35d | 2024-10-10 A | 2025-06-09 A | BP7.123.1.100 | 100% |  | 2024-12-03 | 2025-01-22 |  |  |  |  | 280 | NIH | P01 | NIH |  | ZK | ZK |  |
| BP7.062.3.100 |  | Lead/Fab/Deliver - Millwork | 80d | 2025-06-30 A | 2026-06-03 | BP7.062.2.100 | 20% | 64d | 2025-07-09 | 2025-09-26 | 110d | 34d | 7D / SRLM | 7 | 640 | MILL | P01 | MILL |  | RAL | WLK |  |
| BP7.064.3.100 |  | Lead/Fab/Deliver - Cabinets | 126d | 2025-06-30 A | 2026-06-03 | BP7.064.2.100 | 49% | 64d | 2025-07-09 | 2025-11-11 | 217d | 126d | 7D / SRLM |  | 1008 | MILL | P01 | MILL | Succ? | RAL | WLK |  |
| BP7.123.3.100 |  | Lead/Fab/Deliver - Solid Surfacing Countertops | 99d | 2025-06-30 A | 2026-06-03 | BP7.123.2.100 | 35% | 64d | 2025-07-09 | 2025-10-15 | 196d | 69d | 7D / SRLM |  | 792 | MILL | P01 | MILL | Succ? Need Duration | RAL | WLK |  |
|  | 9 | **Signage** |  | 2023-09-04 | 2026-05-20 |  |  |  |  |  |  |  |  |  |  |  |  |  |  |  |  |  |
| BP7.101.0.100 |  | Buyout - Signage | 30d | 2023-09-04 A | 2024-07-22 A | P2C.DES.225 | 100% |  | 2023-10-09 | 2023-11-17 |  |  |  | 7 | 240 | HP | P01 | HP |  |  |  |  |
| BP7.101.1.100 |  | Prep/Submit - Signage | 20d | 2025-04-07 A | 2025-04-30 A | BP7.101.0.100, P2C.DES.210 | 100% |  | 2025-05-01 | 2025-05-29 |  |  |  | 7 | 160 | SIGN | P01 | SIGN |  |  |  |  |
| BP7.101.2.100 |  | Review/Approve - Signage | 35d | 2025-05-15 A | 2025-09-10 A | BP7.101.1.100 | 100% |  | 2025-06-02 | 2025-07-21 |  |  |  | 7 | 280 | NIH | P01 | NIH |  | RA | RA | O |
| BP7.101.3.100 |  | Lead/Fab/Deliver - Signage | 50d | 2026-04-01 | 2026-05-20 | BP7.101.2.100 |  |  |  |  | 217d | 97d | 7D / SRLM | 7 | 400 | SIGN | P01 | SIGN |  | RA | EJ | O |

| ID | WBS | Activity | Duration | Start | Finish | Predecessors | Complete | Remaining | Planned start | Planned finish | Total float | Free float | Calendar | Temp Orig Dur | Pick #2 | Resp / SRLM | PHASE | RESP / Trade | Update Status | 744 | RESP UPD | Bid Package | *NIH Resp Check* |
| --- | --- | --- | --- | --- | --- | --- | --- | --- | --- | --- | --- | --- | --- | --- | --- | --- | --- | --- | --- | --- | --- | --- | --- |
|  | 10 | **Stretched Fabric Wall System** |  | 2024-01-16 | 2026-04-10 |  |  |  |  |  |  |  |  |  |  |  |  |  |  |  |  |  |  |
| BP7.097.0.110 |  | Buyout - Stretched-Fabric Wall Systems | 30d | 2024-01-16 A | 2024-04-24 A | P2C.DES.395 | 100% |  | 2024-04-08 | 2024-05-17 |  |  |  | 240 | Pred? | HP | P01 | HP |  |  |  |  |  |
| BP7.097.1.110 |  | Prep/Submit - Stretched-Fabric Wall Systems | 20d | 2024-07-12 A | 2024-10-09 A | BP7.097.0.110, P2C.DES.235 SS | 100% |  | 2024-11-01 | 2024-12-02 |  |  |  | 160 | Trade? | T | P01 | T |  |  |  |  |  |
| BP7.097.2.110 |  | Review/Approve - Stretched-Fabric Wall Systems | 35d | 2024-10-10 A | 2025-03-31 A | BP7.097.1.110 | 100% |  | 2024-12-03 | 2025-01-22 |  |  |  | 280 |  | NIH | P01 | NIH |  |  |  |  |  |
| BP7.097.3.110 |  | Lead/Fab/Deliver - Stretched-Fabric Wall Systems | 99d | 2025-04-01 A | 2026-04-10 | BP7.097.2.110 | 90% | 10d | 2025-05-22 | 2025-08-28 | 195d | 40d | 7D / SRLM | 792 | Trade? Succ? Need Duration | T | P01 | T | O | JT | JT |  |  |
|  | 11 | **Appliances** |  | 2026-02-02 | 2026-08-25 |  |  |  |  |  |  |  |  |  |  |  |  |  |  |  |  |  |  |
| BP7.113.0.100 |  | Buyout - Appliances | 30d | 2026-02-02 A | 2026-02-10 A | P2C.DES.210 | 100% |  | 2026-03-02 | 2026-04-10 |  |  |  | 240 | Pred? | HP | P01 | HP | O | RA | RA |  |  |
| BP7.113.1.100 |  | Prep/Submit - Appliances | 20d | 2026-02-11 A | 2026-02-13 A | BP7.113.0.100 | 100% |  | 2026-03-02 | 2026-03-27 |  |  |  | 160 | Trade? | T | P01 | T |  | RA | RA |  |  |
| BP7.113.2.100 |  | Review/Approve - Appliances | 35d | 2026-02-16 A | 2026-05-05 | BP7.113.1.100 | 29% | 25d | 2026-03-02 | 2026-04-17 | 60d | 0d |  | 280 |  | NIH | P01 | NIH |  | RA | EJ |  |  |
| BP7.113.3.100 |  | Lead/Fab/Deliver - Appliances | 112d | 2026-05-06 | 2026-08-25 | BP7.113.2.100 |  |  |  |  | 86d | 43d | 7D / SRLM | 896 | Trade?,Succ? | T | P01 | T |  | RA | EJ |  |  |
|  | 15 | **Bid Package 8** |  | 2023-10-09 | 2026-07-04 |  |  |  |  |  |  |  |  |  |  |  |  |  |  |  |  |  |  |
|  | 6 | **OH Coiling Doors** |  | 2023-10-09 | 2026-07-04 |  |  |  |  |  |  |  |  |  |  |  |  |  |  |  |  |  |  |
| BP8.083.0.100 |  | Buyout - Doors - Overhead Coiling | 30d | 2023-10-09 A | 2023-11-17 A | P2C.DES.225 | 100% |  | 2024-03-25 | 2024-05-03 |  |  |  | 240 | Pred? | HP | P2-5 | HP |  |  |  |  |  |
| BP8.083.1.100 |  | Prep/Submit - Doors - Overhead Coiling | 20d | 2023-12-01 A | 2024-04-01 A | BP8.083.0.100 | 100% |  | 2024-08-30 | 2024-09-27 |  |  |  | 160 |  | OHDOOR | P2-5 | OHDOOR |  |  |  |  |  |
| BP8.083.2.100 |  | Review/Approve - Doors - Overhead Coiling | 35d | 2024-04-02 A | 2024-10-01 A | BP8.083.1.100 | 100% |  | 2024-09-30 | 2024-11-15 |  |  |  | 280 |  | NIH | P2-5 | NIH |  |  |  |  |  |
| BP8.083.3.100 |  | Lead/Fab/Deliver - Doors - Overhead Coiling | 100d | 2025-06-01 A | 2026-07-04 | BP8.083.2.100 | 5% | 95d | 2025-07-01 | 2025-10-08 | 218d | 15d | 7D / SRLM | 1344 | Succ? | OHDOOR | P2-5 | OHDOOR |  | RA | EJ |  |  |
|  | 1 | **Playfield & Equipment** |  | 2023-12-08 | 2026-06-19 |  |  |  |  |  |  |  |  |  |  |  |  |  |  |  |  |  |  |
| BP8.116.0.100 |  | Buyout - Playfield & Equipment | 30d | 2023-12-08 A | 2024-11-27 A | P2C.DES.225 | 100% |  | 2024-03-25 | 2024-05-03 |  |  |  | 240 |  | HP | P01 | HP |  |  |  | 8 |  |
| BP8.116.1.100 |  | Prep/Submit - Playfield & Equipment | 20d | 2024-12-23 A | 2025-01-08 A | BP8.116.0.100, P2C.DES.295 | 100% |  | 2025-01-02 | 2025-01-29 |  |  |  | 160 |  | PLAYGR. | P01 | PLAYGR. |  |  |  | 8 | T.LAND |
| BP8.116.2.100 |  | Review/Approve - Playfield & Equipment | 35d | 2024-12-23 A | 2025-01-08 A | BP8.116.1.100 | 100% |  | 2025-02-24 | 2025-04-11 |  |  |  | 280 |  | NIH | P01 | NIH |  |  |  | 8 |  |
| BP8.116.3.100 |  | Lead/Fab/Deliver - Playfield & Equipment | 80d | 2026-04-01 | 2026-06-19 | BP8.116.2.100 |  |  |  |  | 257d | 129d | 7D / SRLM | 640 |  | PLAYGR. | P01 | PLAYGR. | O | RA | EJ | 8 | T.LAND |
|  | 2 | **Decorative Fence and Gates** |  | 2024-01-02 | 2026-05-20 |  |  |  |  |  |  |  |  |  |  |  |  |  |  |  |  |  |  |
| BP8.323.0.200 |  | Buyout - Decorative Fence and Gates | 20d | 2024-01-02 A | 2024-09-27 A | P2C.DES.225 | 100% |  | 2024-02-01 | 2024-02-28 |  |  |  | 240 |  | HP | P01 | HP |  |  |  | 8 |  |
| BP8.323.1.200 |  | Prep/Submit - Decorative Fence and Gates | 20d | 2025-02-20 A | 2025-02-26 A | BP8.323.0.200, P2C.DES.185 | 100% |  | 2025-03-03 | 2025-03-28 |  |  |  | 160 |  | LAND | P01 | LAND |  |  |  | 8 |  |
| BP8.323.2.200 |  | Review/Approve - Decorative Fence and Gates | 35d | 2025-04-07 A | 2025-06-03 A | BP8.323.1.200 | 100% |  | 2025-03-31 | 2025-05-16 |  |  |  | 280 |  | NIH | P01 | NIH |  | RA | RA | 8 |  |
| BP8.323.3.200 |  | Lead/Fab/Deliver - Decorative Fence and Gates | 50d | 2026-04-01 | 2026-05-20 | BP8.323.2.200 |  |  |  |  | 301d | 173d | 7D / SRLM | 400 |  | LAND | P01 | LAND | O | RA | EJ | 8 |  |

| ID | WBS | Activity | Duration | Start | Finish | Predecessors | Complete | Remaining | Planned start | Planned finish | Total float | Free float | Calendar | Bid Package | Temp Orig Dur | Pick #2 | Resp / SRLM | PHASE | RESP / Trade | Update Status | 744 | RESP UPD | *NIH Resp Check* | **NEAR CRITICAL** |
| --- | --- | --- | --- | --- | --- | --- | --- | --- | --- | --- | --- | --- | --- | --- | --- | --- | --- | --- | --- | --- | --- | --- | --- | --- |
|  | 3 | **Anti-Ram Bollards** |  | 2024-01-02 | 2026-05-20 |  |  |  |  |  |  |  |  |  |  |  |  |  |  |  |  |  |  |  |
| BP8.323.0.100 |  | Buyout - Anti-Ram Bollards | 30d | 2024-01-02 A | 2024-09-27 A | P2C.DES.225 | 100% |  | 2024-02-01 | 2024-03-13 |  |  |  | 8 | 240 | N | HP | P01 | HP |  |  |  |  |  |
| BP8.323.1.100 |  | Prep/Submit - Anti-Ram Bollards | 20d | 2025-04-09 A | 2025-04-09 A | BP8.323.0.100, P2C.DES.185 | 100% |  | 2025-05-01 | 2025-05-29 |  |  |  | 8 | 160 | N | LAND | P01 | LAND |  |  |  |  |  |
| BP8.323.2.100 |  | Review/Approve - Anti-Ram Bollards | 35d | 2025-04-09 A | 2025-05-13 A | BP8.323.1.100 | 100% |  | 2025-06-03 | 2025-07-22 |  |  |  | 8 | 280 | N | NIH | P01 | NIH |  |  |  |  |  |
| BP8.323.3.100 |  | Lead/Fab/Deliver - Anti-Ram Bollards | 50d | 2026-04-01 | 2026-05-20 | BP8.323.2.100 |  |  |  |  | 69d | 0d | 7D / SRLM | 8 | 400 | N | LAND | P01 | LAND | O | RA | EJ |  |  |
|  | 4 | **Site Furnishings** |  | 2023-11-02 | 2026-05-20 |  |  |  |  |  |  |  |  |  |  |  |  |  |  |  |  |  |  |  |
| BP8.129.0.100 |  | Buyout - Site Furnishings | 30d | 2023-11-02 A | 2024-04-23 A | P2C.DES.225 | 100% |  | 2024-03-25 | 2024-05-03 |  |  |  | 8 | 240 |  | HP | P01 | HP |  |  |  |  |  |
| BP8.129.1.100 |  | Prep/Submit - Site Furnishings | 20d | 2024-09-05 A | 2024-09-06 A | BP8.129.0.100, P2C.DES.235 SS | 100% |  | 2024-11-01 | 2024-12-02 |  |  |  | 8 | 160 |  | LAND | P01 | LAND |  |  |  |  |  |
| BP8.129.2.100 |  | Review/Approve - Site Furnishings | 35d | 2024-09-07 A | 2025-01-27 A | BP8.129.1.100 | 100% |  | 2025-01-02 | 2025-02-19 |  |  |  | 8 | 280 |  | NIH | P01 | NIH |  |  |  |  |  |
| BP8.129.3.100 |  | Lead/Fab/Deliver - Site Furnishings | 50d | 2026-04-01 | 2026-05-20 | BP8.129.2.100 |  |  |  |  | 287d | 131d | 7D / SRLM | 8 | 400 |  | LAND | P01 | LAND | O |  | EJ |  |  |
|  | 5 | **Site Concrete** |  | 2024-07-18 | 2025-10-03 |  |  |  |  |  |  |  |  |  |  |  |  |  |  |  |  |  |  |  |
| BP8.320.0.100 |  | Buyout - Site Concrete | 30d | 2024-07-18 A | 2024-07-31 A | P2C.DES.295 | 100% |  | 2024-08-01 | 2024-09-12 |  |  |  | 8 | 240 |  | HP | P01 | HP |  |  |  |  |  |
| BP8.320.1.100 |  | Prep/Submit - Site Concrete | 20d | 2025-04-18 A | 2025-04-21 A | P1.DES.410, BP8.320.0.100, P2C.DES.210 | 100% |  | 2025-05-01 | 2025-05-29 |  |  |  | 8 | 160 |  | SITECON | P01 | SITECON |  |  |  | T.MEP.UTIL |  |
| BP8.320.2.100 |  | Review/Approve - Site Concrete | 35d | 2025-04-22 A | 2025-05-13 A | BP8.320.1.100 | 100% |  | 2025-05-30 | 2025-07-18 |  |  |  | 8 | 280 |  | NIH | P01 | NIH |  |  |  |  |  |
| BP8.320.3.100 |  | Lead/Fab/Deliver - Site Concrete | 30d | 2025-10-01 A | 2025-10-03 A | BP8.320.2.100 | 100% |  | 2025-10-01 | 2025-10-30 |  |  | 7D / SRLM | 8 | 240 |  | SITECON | P01 | SITECON |  | RAL | RAL | T.MEP.UTIL |  |
|  | 7 | **Site Asphalt** |  | 2025-02-01 | 2025-09-30 |  |  |  |  |  |  |  |  |  |  |  |  |  |  |  |  |  |  |  |
| BP8.320.0.110 |  | Buyout - Asphalt | 30d | 2025-02-01 A | 2025-03-05 A | P2C.DES.210 | 100% |  | 2025-05-01 | 2025-06-12 |  |  |  | 8 | 240 |  | HP | P01 | HP |  |  |  |  |  |
| BP8.320.1.110 |  | Prep/Submit - Asphalt | 20d | 2025-04-07 A | 2025-04-30 A | BP8.320.0.110 | 100% |  | 2025-06-13 | 2025-07-11 |  |  |  | 8 | 160 |  | ASPHALT | P01 | ASPHALT |  |  |  | T.MEP.UTIL |  |
| BP8.320.2.110 |  | Review/Approve - Asphalt | 35d | 2025-05-01 A | 2025-05-15 A | BP8.320.1.110 | 100% |  | 2025-06-04 | 2025-07-23 |  |  |  | 8 | 280 |  | NIH | P01 | NIH |  |  |  |  |  |
| BP8.320.3.110 |  | Lead/Fab/Deliver - Asphalt | 30d | 2025-09-01 A | 2025-09-30 A | BP8.320.2.110 | 100% |  | 2026-02-03 | 2026-03-04 |  |  | 7D / SRLM | 8 | 240 |  | ASPHALT | P01 | ASPHALT |  | RAL | RAL | T.MEP.UTIL |  |
|  | 1 | **Bid Package 9** |  | 2023-10-12 | 2026-07-04 |  |  |  |  |  |  |  |  |  |  |  |  |  |  |  |  |  |  |  |
|  | 7 | **Hydraulic Lift** |  | 2023-10-12 | 2026-07-04 |  |  |  |  |  |  |  |  |  |  |  |  |  |  |  |  |  |  |  |
| BP9.111.0.110 |  | Buyout - Hydraulic Lift | 30d | 2023-10-12 A | 2023-11-07 A | P2C.DES.225 | 100% |  | 2024-03-25 | 2024-05-03 |  |  |  |  | 240 | Pred? | HP | P2-5 | HP |  |  |  |  |  |
| BP9.111.1.110 |  | Prep/Submit - Hydraulic Lift | 20d | 2023-12-01 A | 2024-04-01 A | BP9.111.0.110 | 100% |  | 2024-08-30 | 2024-09-27 |  |  |  |  | 160 | Trade? | T | P2-5 | T |  |  |  |  |  |
| BP9.111.2.110 |  | Review/Approve - Hydraulic Lift | 35d | 2024-04-02 A | 2024-05-22 A | BP9.111.1.110 | 100% |  | 2024-09-30 | 2024-11-15 |  |  |  |  | 280 |  | NIH | P2-5 | NIH |  |  |  |  |  |
| BP9.111.3.110 |  | Lead/Fab/Deliver - Hydraulic Lift | 150d | 2025-06-01 A | 2026-07-04 | BP9.111.2.110 | 37% | 95d | 2025-07-01 | 2025-11-27 | 204d | 1d | 7D / SRLM |  | 1848 | Trade?, Succ? | T | P2-5 | T |  | RA | EJ |  | 4.3 |

| ID | WBS | Activity | Duration | Start | Finish | Predecessors | Complete | Planned start | Planned finish | Calendar | Temp Orig Dur | Pick #2 | Resp / SRLM | PHASE | RESP / Trade | SRLM - Crew | Testing Type |
| --- | --- | --- | --- | --- | --- | --- | --- | --- | --- | --- | --- | --- | --- | --- | --- | --- | --- |
|  | 1 | **Material Hoist** |  | 2024-03-01 | 2024-09-30 |  |  |  |  |  |  |  |  |  |  |  |  |
| BP9.111.0.120 |  | Buyout - Material Hoist | 30d | 2024-03-01 A | 2024-03-29 A | P2C.DES.235 SS | 100% | 2024-11-01 | 2024-12-16 |  | 240 | Pred? | HP | P2-5 | HP |  |  |
| BP9.111.1.120 |  | Prep/Submit - Material Hoist | 20d | 2024-04-08 A | 2024-04-30 A | BP9.111.0.120, P2C.DES.235 SS | 100% | 2024-12-17 | 2025-01-15 |  | 160 | Trade? | T | P2-5 | T |  |  |
| BP9.111.2.120 |  | Review/Approve - Material Hoist | 35d | 2024-05-01 A | 2024-08-23 A | BP9.111.1.120 | 100% | 2025-01-16 | 2025-03-05 |  | 280 |  | NIH | P2-5 | NIH |  |  |
| BP9.111.3.120 |  | Lead/Fab/Deliver - Material Hoist | 150d | 2024-08-23 A | 2024-09-30 A | BP9.111.2.120 | 100% | 2025-03-06 | 2025-08-02 | 7D / SRLM | 1848 | Trade?, Succ? | T | P2-5 | T |  |  |
|  | 7 | **Bid Package 10** |  | 2024-06-05 | 2024-09-26 |  |  |  |  |  |  |  |  |  |  |  |  |
|  | 8 | **Entrance Grilles** |  | 2024-06-05 | 2024-09-26 |  |  |  |  |  |  |  |  |  |  |  |  |
| BP10.124.1.100 |  | Prep/Submit - Entrance Floor Grilles | 20d | 2024-06-05 A | 2024-06-10 A | BP7.100.0.100, P2C.DES.235 SS | 100% | 2024-11-01 | 2024-12-02 |  | 160 | Trade? | T | P2-5 | T |  |  |
| BP10.124.2.100 |  | Review/Approve - Entrance Floor Grilles | 35d | 2024-06-11 A | 2024-08-20 A | BP10.124.1.100 | 100% | 2024-12-03 | 2025-01-22 |  | 280 |  | NIH | P2-5 | NIH |  |  |
| BP10.124.3.100 |  | Lead/Fab/Deliver - Entrance Floor Grilles | 99d | 2024-08-21 A | 2024-09-26 A | BP10.124.2.100 | 100% | 2025-01-23 | 2025-05-01 | 7D / SRLM | 792 | Trade? Succ? Need Duration | T | P2-5 | T |  |  |
|  | 5 | **Phase 5 - Buy Out, Submittals, Approval, Fabrication, Mock-ups (Draft)** |  |  |  |  |  |  |  |  |  |  |  |  |  |  |  |
|  | 1 | **Mock Ups** |  | 2023-04-13 | 2026-12-07 |  |  |  |  |  |  |  |  |  |  |  |  |
|  | 1 | **Exterior Mock-ups** |  | 2023-04-13 | 2026-12-07 |  |  |  |  |  |  |  |  |  |  |  |  |
|  | 1 | **Performance Mock-up** |  | 2023-04-13 | 2024-04-10 |  |  |  |  |  |  |  |  |  |  |  |  |
| P2.DES.PMU.100 |  | GPR Prepare Performance Mock-up Drawings | 15d | 2023-04-13 A | 2023-05-03 A | P2.MTG.MOB.100 | 100% | 2023-06-15 | 2023-07-06 |  |  |  | GLAZ |  | GLAZ | G-PMU |  |
| P2.DES.PMU.110 |  | Designer Review Performance Mock-up Drawings | 10d | 2023-05-04 A | 2023-05-18 A | P2.DES.PMU.100 | 100% | 2023-07-10 | 2023-07-21 |  |  |  | ARCH |  | ARCH |  |  |
| P2.DES.PMU.120 |  | GPR Revise Performance Mock-up Drawings | 10d | 2023-05-19 A | 2023-07-07 A | P2.DES.PMU.110 | 100% | 2023-07-24 | 2023-08-04 |  |  |  | GLAZ |  | GLAZ | G-PMU |  |
| P2.DES.PMU.130 |  | Designer Review Performance Mock-up Drawings | 5d | 2023-06-01 A | 2023-06-09 A | P2.DES.PMU.120 | 100% | 2023-06-01 | 2023-06-07 |  |  |  | ARCH |  | ARCH |  |  |
| P2.DES.PMU.140 |  | ACD Prepare Supplementary Precast Mock-up Drawings | 5d | 2023-06-01 A | 2023-07-03 A | P2.DES.PMU.130 | 100% | 2023-08-14 | 2023-08-18 |  |  |  | PRECAST |  | PRECAST |  |  |
| P2.DES.PMU.160 |  | Testing Agency Prepare Drawings from Integrated PMU Drawings | 5d | 2023-06-09 A | 2023-07-20 A | P2.DES.PMU.150 | 100% | 2023-10-10 | 2023-10-16 |  |  |  | GLAZ |  | GLAZ | G-PMU |  |
| P2.DES.PMU.150 |  | Designer Review & Approve Integrated Performance Mock-up Drawings | 5d | 2023-07-10 A | 2023-07-18 A | P2.DES.PMU.140 | 100% | 2023-10-03 | 2023-10-09 |  |  |  | ARCH |  | ARCH |  |  |
| P2.DES.PMU.170 |  | Designer Review Lab PMU Drawings | 5d | 2023-07-21 A | 2023-07-27 A | P2.DES.PMU.160 | 100% | 2023-10-17 | 2023-10-23 |  |  |  | ARCH |  | ARCH |  |  |
| P2.DES.PMU.180 |  | Testing Agency Finalize Integrated PMU Drawings | 10d | 2023-07-28 A | 2023-08-30 A | P2.DES.PMU.170 | 100% | 2023-10-24 | 2023-11-06 |  |  |  | GLAZ |  | GLAZ | G-PMU |  |
| P2.DES.PMU.190 |  | NIH Review Performance Mock-up Drawings | 10d | 2023-07-28 A | 2023-09-15 A | P2.DES.PMU.180 | 100% | 2023-10-31 | 2023-11-13 |  |  |  | NIH |  | NIH |  |  |
| P2.DES.PMU.220 |  | Release Performance Mock-up Materials - Curtain Wall | 1d | 2023-08-30 A | 2023-08-30 A | P2.DES.PMU.180 | 100% | 2023-10-30 | 2023-10-30 |  |  |  | GLAZ |  | GLAZ | G-PMU |  |
| P2.DES.PMU.240 |  | Mock-up Material Procurement | 75d | 2023-08-31 A | 2024-01-15 A | P2.DES.PMU.220 | 100% | 2023-11-06 | 2024-02-22 |  |  |  | GLAZ |  | GLAZ | G-PMU |  |
| P2.DES.PMU.200 |  | Revise Performance Mock-up Drawings | 20d | 2023-09-18 A | 2023-10-20 A | P2.DES.PMU.190 | 100% | 2023-11-14 | 2023-12-13 |  |  |  | GLAZ |  | GLAZ | G-PMU |  |
| P2.DES.PMU.230 |  | Release Performance Mock-up Materials - Precast | 1d | 2023-09-29 A | 2023-09-29 A | P2.DES.PMU.180 | 100% | 2023-10-30 | 2023-10-30 |  |  |  | PRECAST |  | PRECAST |  |  |
| P2.DES.PMU.250 |  | Mock-up Material Procurement & Fabrication - Precast | 65d | 2023-09-30 A | 2024-01-30 A | P2.DES.PMU.230 | 100% | 2023-11-06 | 2024-02-08 |  |  |  | PRECAST |  | PRECAST |  |  |
| P2.DES.PMU.210 |  | NIH Review & Approve Performance Mock-up Drawings | 10d | 2023-10-23 A | 2023-11-09 A | P2.DES.PMU.200 | 100% | 2023-11-22 | 2023-12-07 |  |  |  | NIH |  | NIH |  |  |
| P2.DES.PMU.260 |  | Mock-up Fabrication & Assembly - Curtain Wall | 10d | 2024-01-16 A | 2024-02-09 A | P2.DES.PMU.240 | 100% | 2024-02-01 | 2024-02-14 |  |  |  | GLAZ |  | GLAZ | G-PMU |  |
| P2.DES.PMU.280 |  | Mock-up Installation & Pre-Testing | 15d | 2024-02-12 A | 2024-02-23 A | P2.DES.PMU.260 FF+10d, P2.DES.PMU.250 FF+5d, P2.DES.PMU.210 | 100% | 2024-03-05 | 2024-03-25 |  |  |  | GLAZ |  | GLAZ | G-PMU | AT55 |
| P2.DES.PMU.290 |  | Mock-up Testing | 2d | 2024-02-26 A | 2024-02-27 A | P2.DES.PMU.280 | 100% | 2024-03-26 | 2024-03-27 |  |  |  | GLAZ |  | GLAZ | G-PMU |  |
| P2.DES.PMU.310 |  | Mock-up Correction & Re-Testing | 10d | 2024-02-28 A | 2024-03-19 A | P2.DES.PMU.290 | 100% | 2024-03-26 | 2024-04-08 |  |  |  | GLAZ |  | GLAZ | G-PMU |  |
| P2.DES.PMU.300 |  | Prepare, Submit & Record Performance Mock-up Results | 20d | 2024-03-20 A | 2024-04-10 A | P2.DES.PMU.310, P2.DES.PMU.290 | 100% | 2024-04-10 | 2024-05-07 |  |  |  | GLAZ |  | GLAZ | G-PMU |  |

| ID | WBS | Activity | Type | Duration | Start | Finish | Predecessors | Complete | Remaining | Planned start | Planned finish | Total float | Free float | Resp / SRLM | RESP / Trade | SRLM - Crew | Testing Type | RESP UPD |
| --- | --- | --- | --- | --- | --- | --- | --- | --- | --- | --- | --- | --- | --- | --- | --- | --- | --- | --- |
|  | 2 | **Visual Mock-up** |  |  | 2023-04-13 | 2026-12-07 |  |  |  |  |  |  |  |  |  |  |  |  |
| P2.DES.VMU.100 |  | Prepare Visual Mock-up Design Drawings |  | 15d | 2023-04-13 A | 2023-05-03 A | P2.DES.275 | 100% |  |  |  |  |  | ARCH | ARCH |  |  |  |
| P2.DES.VMU.110 |  | Review Visual Mock-up Design Drawings |  | 10d | 2023-05-04 A | 2023-05-17 A | P2.DES.VMU.100 | 100% |  | 2023-07-10 | 2023-07-21 |  |  | HP | HP |  |  |  |
| P2.DES.VMU.120 |  | Revise Visual Mock-up Design Drawings |  | 5d | 2023-05-18 A | 2023-05-24 A | P2.DES.VMU.110 | 100% |  | 2023-06-28 | 2023-07-05 |  |  | ARCH | ARCH |  |  |  |
| P2.DES.VMU.130 |  | Present Preliminary Visual Mock-up Design Drawings to NIH |  | 1d | 2023-05-25 A | 2023-05-25 A | P2.DES.VMU.120 | 100% |  | 2023-07-07 | 2023-07-07 |  |  | ARCH | ARCH |  |  |  |
| P2.DES.VMU.140 |  | Revise & Resubmit Visual Mock-up Design Drawings |  | 10d | 2023-05-26 A | 2023-06-13 A | P2.DES.VMU.130 | 100% |  | 2023-07-10 | 2023-07-21 |  |  | ARCH | ARCH |  |  |  |
| P2.DES.VMU.150 |  | NIH Review Visual Mock-up Design Drawings |  | 10d | 2023-06-14 A | 2023-07-19 A | P2.DES.VMU.140 FF, P2.DES.VMU.140 | 100% |  | 2023-07-24 | 2023-08-04 |  |  | NIH | NIH |  |  |  |
| P2.DES.VMU.160 |  | Revise Visual Mock-up Design Drawings |  | 5d | 2023-07-20 A | 2023-07-25 A | P2.DES.VMU.150 | 100% |  | 2023-10-13 | 2023-10-19 |  |  | ARCH | ARCH |  |  |  |
| P2.DES.VMU.180 |  | Prepare Visual Mock-up Shop Drawings - Precast |  | 10d | 2023-07-26 A | 2023-08-23 A | P2.DES.VMU.160 | 100% |  | 2023-10-27 | 2023-11-09 |  |  | PRECAST | PRECAST |  |  |  |
| P2.DES.VMU.190 |  | Prepare Visual Mock-up Shop Drawings - Glass & Glazing |  | 10d | 2023-07-26 A | 2023-08-23 A | P2.DES.VMU.160 | 100% |  | 2023-10-27 | 2023-11-09 |  |  | GLAZ | GLAZ | G-VMU |  |  |
| P2.DES.VMU.200 |  | Prepare Visual Mock-up Shop Drawings - Metal Panel |  | 10d | 2023-07-26 A | 2023-08-23 A | P2.DES.VMU.160 | 100% |  | 2023-10-27 | 2023-11-09 |  |  | MPANEL | MPANEL |  |  |  |
| P2.DES.VMU.230 |  | Prepare Visual Mock-up Shop Drawings - Roofing |  | 10d | 2023-07-26 A | 2023-08-23 A | P2.DES.VMU.160 | 100% |  | 2023-10-27 | 2023-11-09 |  |  | ROOF | ROOF |  |  |  |
| P2.DES.VMU.240 |  | Review Visual Mock-up Shop Drawings - Precast |  | 10d | 2023-08-24 A | 2023-08-30 A | P2.DES.VMU.180 | 100% |  | 2023-11-10 | 2023-11-27 |  |  | ARCH | ARCH |  |  |  |
| P2.DES.VMU.250 |  | Review Visual Mock-up Shop Drawings - Glazing |  | 10d | 2023-08-24 A | 2023-08-30 A | P2.DES.VMU.190 FF, P2.DES.VMU.190 | 100% |  | 2023-11-10 | 2023-11-27 |  |  | ARCH | ARCH |  |  |  |
| P2.DES.VMU.260 |  | Review Visual Mock-up Shop Drawings - Metal Panel |  | 10d | 2023-08-24 A | 2023-08-30 A | P2.DES.VMU.200 | 100% |  | 2023-11-10 | 2023-11-27 |  |  | ARCH | ARCH |  |  |  |
| P2.DES.VMU.290 |  | Review Visual Mock-up Shop Drawings - Roofing |  | 10d | 2023-08-24 A | 2023-08-30 A | P2.DES.VMU.230 | 100% |  | 2023-11-10 | 2023-11-27 |  |  | ARCH | ARCH |  |  |  |
| P2.DES.VMU.300 |  | Revise & Resubmit Visual Mock-up Shop Drawings - Precast |  | 5d | 2023-08-31 A | 2023-09-29 A | P2.DES.VMU.240 | 100% |  | 2023-11-28 | 2023-12-04 |  |  | PRECAST | PRECAST |  |  |  |
| P2.DES.VMU.310 |  | Revise & Resubmit Visual Mock-up Shop Drawings - Glazing |  | 5d | 2023-08-31 A | 2023-09-29 A | P2.DES.VMU.250 FF, P2.DES.VMU.250 | 100% |  | 2023-11-28 | 2023-12-04 |  |  | GLAZ | GLAZ | G-VMU |  |  |
| P2.DES.VMU.320 |  | Revise & Resubmit Visual Mock-up Shop Drawings - Metal Panel |  | 5d | 2023-08-31 A | 2023-09-29 A | P2.DES.VMU.260 | 100% |  | 2023-11-28 | 2023-12-04 |  |  | MPANEL | MPANEL |  |  |  |
| P2.DES.VMU.350 |  | Revise & Resubmit Visual Mock-up Shop Drawings - Roofing |  | 5d | 2023-08-31 A | 2023-09-29 A | P2.DES.VMU.290 | 100% |  | 2023-11-28 | 2023-12-04 |  |  | ROOF | ROOF |  |  |  |
| P2.DES.VMU.360 |  | Review & Approve Visual Mock-up Shop Drawings - Precast |  | 20d | 2023-10-16 A | 2023-11-27 A | P2.DES.VMU.300 | 100% |  | 2023-11-01 | 2023-11-30 |  |  | ARCH | ARCH |  |  |  |
| P2.DES.VMU.430 |  | Release Visual Mock-up Materials - Precast |  | 1d | 2023-10-17 A | 2023-10-17 A | P2.DES.VMU.360 | 100% |  | 2023-12-01 | 2023-12-01 |  |  | PRECAST | PRECAST |  |  |  |
| P2.DES.VMU.490 |  | Visual Mock-up Material Procurement - Precast |  | 100d | 2023-10-18 A | 2024-03-15 A | P2.DES.VMU.430 | 100% |  | 2023-12-04 | 2024-04-23 |  |  | PRECAST | PRECAST |  |  |  |
| P2.DES.VMU.370 |  | Review & Approve Visual Mock-up Shop Drawings - Glazing |  | 20d | 2023-10-19 A | 2023-11-27 A | P2.DES.VMU.310 FF, P2.DES.VMU.310 | 100% |  | 2023-11-01 | 2023-11-30 |  |  | ARCH | ARCH |  |  |  |
| P2.DES.VMU.410 |  | Review Visual Mock-up Shop Drawings - Roofing |  | 20d | 2023-10-24 A | 2023-11-27 A | P2.DES.VMU.350 | 100% |  | 2023-11-01 | 2023-11-30 |  |  | ARCH | ARCH |  |  |  |
| P2.DES.VMU.380 |  | Review Visual Mock-up Shop Drawings - Metal Panel |  | 20d | 2023-10-31 A | 2023-11-27 A | P2.DES.VMU.320 | 100% |  | 2023-11-01 | 2023-11-30 |  |  | ARCH | ARCH |  |  |  |
| P2.DES.VMU.220 |  | Prepare Visual Mock-up Shop Drawings - Exterior Cladding |  | 10d | 2023-11-01 A | 2023-11-14 A | P2.DES.VMU.160 | 100% |  | 2023-12-01 | 2023-12-14 |  |  | EXTCLAD | EXTCLAD |  |  |  |
| P2.DES.VMU.420 |  | Release Visual Mock-up Materials - Glazing |  | 1d | 2023-11-08 A | 2023-11-08 A | P2.DES.VMU.370 | 100% |  | 2023-12-01 | 2023-12-01 |  |  | GLAZ | GLAZ | G-VMU |  |  |
| P2.DES.VMU.480 |  | Visual Mock-up Material Procurement - Glazing |  | 85d | 2023-11-09 A | 2024-02-19 A | P2.DES.VMU.420 | 100% |  | 2023-12-04 | 2024-04-02 |  |  | GLAZ | GLAZ | G-VMU |  |  |
| P2.DES.VMU.280 |  | Review Visual Mock-up Shop Drawings - Exterior Cladding |  | 10d | 2023-11-14 A | 2023-11-27 A | P2.DES.VMU.220 | 100% |  | 2023-12-15 | 2023-12-29 |  |  | ARCH | ARCH |  |  |  |
| P2.DES.VMU.340 |  | Revise & Resubmit Visual Mock-up Shop Drawings - Exterior Cladding |  | 5d | 2023-11-28 A | 2023-12-27 A | P2.DES.VMU.280 | 100% |  | 2024-01-02 | 2024-01-08 |  |  | EXTCLAD | EXTCLAD |  |  |  |
| P2.DES.VMU.690 |  | Revise & Resubmit Visual Mock-up Shop Drawings - Roofing |  | 5d | 2023-12-18 A | 2024-01-15 A | P2.DES.VMU.410 | 100% |  | 2024-01-02 | 2024-01-08 |  |  | ROOF | ROOF |  |  |  |
| P2.DES.VMU.710 |  | Revise & Resubmit Visual Mock-up Shop Drawings - Metal Panel |  | 5d | 2023-12-18 A | 2024-01-15 A | P2.DES.VMU.380 | 100% |  | 2024-01-02 | 2024-01-08 |  |  | MPANEL | MPANEL |  |  |  |
| P2.DES.VMU.750 |  | Prepare Visual Mock-up Shop Drawings - Louvers |  | 10d | 2023-12-18 A | 2024-01-31 A | P2.DES.VMU.160 | 100% |  | 2023-10-09 | 2023-10-20 |  |  | MPANEL | MPANEL |  |  |  |
| P2.DES.VMU.760 |  | Prepare Visual Mock-up Shop Drawings - Quench Vents |  | 10d | 2024-01-02 A | 2024-01-15 A | P2.DES.VMU.380 | 100% |  | 2024-02-01 | 2024-02-14 |  |  | MPANEL | MPANEL |  |  |  |
| P2.DES.VMU.210 |  | Prepare Visual Mock-up Shop Drawings - Support Structure |  | 10d | 2024-01-04 A | 2024-01-16 A | P2.DES.VMU.160 | 100% |  | 2024-02-01 | 2024-02-14 |  |  | STEEL | STEEL |  |  |  |
| P2.DES.VMU.400 |  | Review & Approve Visual Mock-up Shop Drawings - Exterior Cladding |  | 5d | 2024-01-16 A | 2024-02-01 A | P2.DES.VMU.340 | 100% |  | 2024-02-01 | 2024-02-07 |  |  | ARCH | ARCH |  |  |  |
| P2.DES.VMU.700 |  | Review & Approve Visual Mock-up Shop Drawings - Roofing |  | 20d | 2024-01-16 A | 2024-02-01 A | P2.DES.VMU.690 | 100% |  | 2024-02-08 | 2024-03-06 |  |  | ARCH | ARCH |  |  |  |
| P2.DES.VMU.720 |  | Review & Approve Visual Mock-up Shop Drawings - Metal Panel |  | 20d | 2024-01-16 A | 2024-02-01 A | P2.DES.VMU.710 | 100% |  | 2024-02-08 | 2024-03-06 |  |  | ARCH | ARCH |  |  |  |
| P2.DES.VMU.820 |  | Review Visual Mock-up Shop Drawings - Quench Vents |  | 10d | 2024-01-16 A | 2024-02-28 A | P2.DES.VMU.760 | 100% |  | 2024-02-15 | 2024-02-28 |  |  | ARCH | ARCH |  |  |  |
| P2.DES.VMU.270 |  | Review Visual Mock-up Shop Drawings - Support Structure |  | 10d | 2024-01-17 A | 2024-01-25 A | P2.DES.VMU.210 | 100% |  | 2024-02-15 | 2024-02-28 |  |  | ARCH | ARCH |  |  |  |
| P2.DES.VMU.450 |  | Release Visual Mock-up Materials - Support Structure |  | 1d | 2024-01-26 A | 2024-01-26 A | P2.DES.VMU.270 | 100% |  | 2024-02-01 | 2024-02-01 |  |  | STEEL | STEEL |  |  |  |
| P2.DES.VMU.510 |  | Visual Mock-up Material Procurement - Support Structure |  | 25d | 2024-01-30 A | 2024-03-01 A | P2.DES.VMU.450, P2.DES.VMU.270 | 100% |  | 2024-02-01 | 2024-03-06 |  |  | STEEL | STEEL |  |  |  |
| P2.DES.VMU.770 |  | Review Visual Mock-up Shop Drawings - Louvers |  | 10d | 2024-01-31 A | 2024-02-13 A | P2.DES.VMU.750 | 100% |  | 2024-03-01 | 2024-03-14 |  |  | ARCH | ARCH |  |  |  |
| P2.DES.VMU.440 |  | Release Visual Mock-up Materials - Metal Panel |  | 1d | 2024-02-02 A | 2024-02-02 A | P2.DES.VMU.720 | 100% |  | 2024-03-04 | 2024-03-04 |  |  | MPANEL | MPANEL |  |  |  |
| P2.DES.VMU.460 |  | Release Visual Mock-up Materials - Exterior Cladding |  | 1d | 2024-02-02 A | 2024-02-02 A | P2.DES.VMU.400 | 100% |  | 2024-03-04 | 2024-03-04 |  |  | EXTCLAD | EXTCLAD |  |  |  |
| P2.DES.VMU.470 |  | Release Visual Mock-up Materials - Roofing |  | 1d | 2024-02-02 A | 2024-02-02 A | P2.DES.VMU.700 | 100% |  | 2024-03-04 | 2024-03-04 |  |  | EXTCLAD | EXTCLAD |  |  |  |
| P2.DES.VMU.500 |  | Visual Mock-up Material Procurement - Metal Panel |  | 40d | 2024-02-05 A | 2024-08-19 A | P2.DES.VMU.440 | 100% |  | 2024-03-05 | 2024-04-29 |  |  | MPANEL | MPANEL |  |  |  |
| P2.DES.VMU.520 |  | Visual Mock-up Material Procurement - Exterior Cladding |  | 40d | 2024-02-05 A | 2024-05-13 A | P2.DES.VMU.460 | 100% |  | 2024-03-01 | 2024-04-25 |  |  | EXTCLAD | EXTCLAD |  |  |  |
| P2.DES.VMU.530 |  | Visual Mock-up Material Procurement - Roofing |  | 40d | 2024-02-05 A | 2024-06-28 A | P2.DES.VMU.470 | 100% |  | 2024-03-01 | 2024-04-25 |  |  | EXTCLAD | EXTCLAD |  |  |  |
| P2.DES.VMU.800 |  | Release Visual Mock-up Materials - Louvers |  | 1d | 2024-02-14 A | 2024-02-14 A | P2.DES.VMU.770 | 100% |  | 2024-03-15 | 2024-03-15 |  |  | MPANEL | MPANEL |  |  |  |
| P2.DES.VMU.810 |  | Visual Mock-up Material Procurement - Louver |  | 70d | 2024-02-15 A | 2024-05-26 A | P2.DES.VMU.800 | 100% |  | 2024-03-18 | 2024-06-24 |  |  | MPANEL | MPANEL |  |  |  |
| P2.DES.VMU.550 |  | Mock-up Fabrication & Assembly of Glazed Units |  | 20d | 2024-02-20 A | 2024-04-01 A | P2.DES.VMU.480 | 100% |  | 2024-03-01 | 2024-03-28 |  |  | GLAZ | GLAZ | G-VMU |  |  |
| P2.DES.VMU.850 |  | Release Visual Mock-up Materials - Quench Vent |  | 1d | 2024-02-29 A | 2024-02-29 A | P2.DES.VMU.820 | 100% |  | 2024-03-04 | 2024-03-04 |  |  | MPANEL | MPANEL |  |  |  |
| P2.DES.VMU.540 |  | Mock-up Installation & Inspections - Support Structure |  | 10d | 2024-03-04 A | 2024-03-07 A | P2.DES.VMU.510 | 100% |  | 2024-04-02 | 2024-04-15 |  |  | STEEL | STEEL |  |  |  |
| P2.DES.VMU.860 |  | Visual Mock-up Material Procurement - Quench Vent |  | 50d | 2024-03-05 A | 2024-05-28 A | P2.DES.VMU.850 | 100% |  | 2024-04-01 | 2024-06-10 |  |  | MPANEL | MPANEL |  |  |  |
| P2.DES.VMU.570 |  | Mock-up Installation - Precast |  | 5d | 2024-03-26 A | 2024-03-28 A | P2.DES.VMU.540, P2.DES.VMU.490 SS, P1.B2.03.020 | 100% |  | 2024-04-23 | 2024-04-29 |  |  | PRECAST | PRECAST |  | AT55 |  |
| P2.DES.VMU.590 |  | Mock-up Installation - Framing & Sheathing |  | 10d | 2024-04-01 A | 2024-04-12 A | P2.DES.VMU.570 | 100% |  | 2024-05-01 | 2024-05-14 |  |  | PRECAST | PRECAST |  |  |  |
| P2.DES.VMU.870 |  | Mock-up Installation - AVB |  | 2d | 2024-04-10 A | 2024-04-16 A | P2.DES.VMU.590 | 100% |  | 2024-05-15 | 2024-05-16 |  |  | EJ | EJ |  |  |  |
| P2.DES.VMU.580 |  | Mock-up Installation - Curtain Wall, Canopy & Storefront |  | 10d | 2024-04-22 A | 2024-04-30 A | P2.DES.VMU.570, P2.DES.VMU.550, P2.DES.VMU.870 | 100% |  | 2024-05-17 | 2024-05-31 |  |  | GLAZ | GLAZ | G-VMU |  |  |
| P2.DES.VMU.610 |  | Mock-up Installation - Exterior Cladding |  | 5d | 2024-05-13 A | 2024-05-13 A | P2.DES.VMU.520, P2.DES.VMU.870 | 100% |  | 2024-07-08 | 2024-07-12 |  |  | EXTCLAD | EXTCLAD |  |  |  |
| P2.DES.VMU.620 |  | Mock-up Installation - Roofing |  | 5d | 2024-05-13 A | 2024-08-02 A | P2.DES.VMU.530 FF, P2.DES.VMU.580 | 100% |  | 2024-06-28 | 2024-07-05 |  |  | EXTCLAD | EXTCLAD |  |  |  |
| P2.DES.VMU.730 |  | Mock-up Installation - Louver |  | 5d | 2024-05-27 A | 2024-05-27 A | P2.DES.VMU.810 | 100% |  | 2024-06-27 | 2024-07-03 |  |  | MPANEL | MPANEL |  |  |  |
| P2.DES.VMU.740 |  | Mock-up Installation - Quench Vent |  | 5d | 2024-05-28 A | 2024-05-28 A | P2.DES.VMU.860 | 100% |  | 2024-06-27 | 2024-07-03 |  |  | MPANEL | MPANEL |  |  |  |
| P2.DES.VMU.600 |  | Mock-up Installation - Metal Panel |  | 5d | 2024-07-10 A | 2024-08-23 A | P2.DES.VMU.610, P2.DES.VMU.500, P2.DES.VMU.580, P2.DES.VMU.870, P2.DES.VMU.620 | 100% |  | 2024-09-03 | 2024-09-09 |  |  | MPANEL | MPANEL |  |  |  |
| P2.DES.VMU.630 |  | Mock-up Installation - Caulking, Roof Trim-Out, & Misc Finishes |  | 5d | 2024-08-15 A | 2024-12-23 A | P2.DES.VMU.610, P2.DES.VMU.600, P2.DES.VMU.740 | 100% |  | 2024-09-10 | 2024-09-16 |  |  | FINISH | FINISH |  |  |  |
| P2.DES.VMU.640 |  | Mock-up Inspections |  | 5d | 2025-01-23 A | 2025-01-23 A | P2.DES.VMU.570 FF, P2.DES.VMU.730, P2.DES.VMU.740, P2.DES.VMU.630, P2.DES.VMU.620 | 100% |  | 2025-02-03 | 2025-02-07 |  |  | NIH | NIH |  |  |  |
| P2.DES.VMU.670 |  | Visual Mock Up Onsite | level of effort | 383d | 2025-01-23 A | 2026-11-05 | P2.DES.VMU.640 SS | 60% | 154d | 2025-02-03 | 2026-08-04 | 55d | 0d | NIH | NIH |  |  | TC |
| P2.DES.VMU.650 |  | Submit & Record Visual Mock-up Results |  | 5d | 2025-01-24 A | 2025-01-25 A | P2.DES.VMU.640 | 100% |  | 2025-02-10 | 2025-02-14 |  |  | HP | HP |  |  |  |
| P2.DES.VMU.680 |  | Remove Visual Mockup |  | 20d | 2026-11-06 | 2026-12-07 | P2.FAC.F.9030, P2.FAC.Z1.9030, P2.FAC.Z2.9030, P2.FAC.Z3.9030 |  |  |  |  | 55d | 0d | HP | HP |  |  | TC |

Notes:
- P2.DES.VMU.150: Posit: NIH to confirn & review during Design Workshop #2
- P2.DES.VMU.650: Posit: This Visual Mock-up will be after release of Precast & Glass/Glazing Materials

| ID | WBS | Activity | Type | Duration | Start | Finish | Predecessors | Complete | Planned start | Planned finish | Resp / SRLM | RESP / Trade | Z.RESP | 744 |
| --- | --- | --- | --- | --- | --- | --- | --- | --- | --- | --- | --- | --- | --- | --- |
|  | 2 | **Interior Clinical Mock-up** |  |  | 2023-10-03 | 2025-08-15 |  |  |  |  |  |  |  |  |
|  | 1 | **Interior Mock Up Precon** |  |  | 2023-10-03 | 2025-08-15 |  |  |  |  |  |  |  |  |
| CW.FD-MU -170 |  | HP Request As-Builts for Blood Bank (RFI 125) |  | 5d | 2023-10-03 A | 2023-10-26 A | P2C.DES.225 FF | 100% | 2024-06-03 | 2024-06-07 | HP | HP |  |  |
| CW.FD-MU -490 |  | ZGF Prepares and Develops Draft CMU Layout, Schedule, & Equipment List |  | 25d | 2023-10-06 A | 2023-10-16 A | P2A.DES.455 | 100% | 2023-10-27 | 2023-12-04 | ARCH | ARCH |  |  |
| CW.FD-MU -460 |  | ZGF Developed Mockup Design for Blood Bank Location |  | 25d | 2023-10-27 A | 2023-12-01 A | CW.FD-MU -170, CW.FD-MU -490 | 100% | 2023-10-27 | 2023-12-04 | ARCH | ARCH |  |  |
| CW.FD-MU -470 |  | NIH Review Mockup Layout for Blood Bank Location |  | 5d | 2023-12-01 A | 2023-12-29 A | CW.FD-MU -460 | 100% | 2024-06-03 | 2024-06-07 | ARCH | ARCH |  |  |
| CW.FD-MU -480 |  | HP Search for Alternate Mockup Locations on behalf of NIH |  | 5d | 2024-01-02 A | 2024-02-01 A | CW.FD-MU -470 | 100% | 2024-06-03 | 2024-06-07 | ARCH | ARCH |  |  |
| CW.FD-MU -150 |  | Prep/Submit Shop Drawings/Samples/ Submittals - Framing & R/I Trades |  | 40d | 2024-01-29 A | 2024-10-31 A | CW.FD-MU -110 SS | 100% | 2024-04-26 | 2024-06-21 | MEP | MEP-2 | Harris |  |
| CW.FD-MU -120 |  | NIH Provides Space Or Issues Notice to Rent Space |  | 5d | 2024-02-02 A | 2024-04-05 A | P2C.DES.225, CW.FD-MU -480 | 100% | 2024-03-01 | 2024-03-07 | NIH | NIH |  |  |
| CW.FD-MU -110 |  | Design Development of Mock-up in Rental Space |  | 50d | 2024-02-06 A | 2024-05-03 A | CW.FD-MU -120 SS+10d | 100% | 2023-11-01 | 2024-01-15 | ARCH | ARCH |  |  |
| CW.FD-MU -200 |  | Rental Agreement for Space & Occupation |  | 20d | 2024-04-08 A | 2024-05-31 A | CW.FD-MU -120 | 100% | 2024-05-08 | 2024-06-05 | HP | HP |  |  |
| CW.FD-MU -140 |  | Submit Mock Up Drawings to NIH for Comments |  | 10d | 2024-05-06 A | 2024-05-15 A | CW.FD-MU -200, CW.FD-MU -110 | 100% | 2024-06-05 | 2024-06-18 | HP | HP |  |  |
| CW.FD-MU -180 |  | Design Submission to NIH for Approval |  | 10d | 2024-05-16 A | 2024-11-01 A | CW.FD-MU -140 | 100% | 2024-06-07 | 2024-06-20 | NIH | NIH |  |  |
| CW.FD-MU -430 |  | Prep/Submit - Paint - Clinical Mock-up |  | 5d | 2024-07-10 A | 2024-07-17 A | BP7.099.0.100 | 100% | 2024-08-01 | 2024-08-07 | LABCASE | LABCASE |  |  |
| CW.FD-MU -440 |  | Review/Approve/Release - Paint - Clinical Mock-up |  | 35d | 2024-07-17 A | 2024-07-17 A | CW.FD-MU -430 SS | 100% | 2024-08-01 | 2024-09-19 | PAINT | PAINT-1 |  |  |
| CW.FD-MU -410 |  | Review/Approve/Release - Modular Ceilings - Clinical Mock-up |  | 35d | 2024-08-19 A | 2024-09-05 A | CW.FD-MU -400 | 100% | 2024-11-01 | 2024-12-23 | FORS | FORS-1 |  |  |
| CW.FD-MU -400 |  | Prep/Submit - Modular Ceilings - Clinical Mock-up |  | 20d | 2024-08-22 A | 2024-09-05 A | BP1.095.1.100 FF, BP1.095.0.100 | 100% | 2024-09-03 | 2024-09-30 | FORS | FORS-1 |  |  |
| CW.FD-MU -340 |  | Prep/Submit - Building Specialties - Clinical Mock-up |  | 5d | 2024-09-02 A | 2024-09-05 A | BP7.100.0.100, CW.FD-MU -140 | 100% | 2024-10-01 | 2024-10-07 | LABCASE | LABCASE |  |  |
| CW.FD-MU -370 |  | Prep/Submit - Flooring - Clinical Mock-up |  | 20d | 2024-09-02 A | 2024-10-02 A | BP7.093.0.100, BP7.096.0.100, BP7.096.0.200 | 100% | 2024-10-01 | 2024-10-28 | FLOOR | FLOOR |  |  |
| CW.FD-MU -160 |  | Framing & Rough-In Trades - Deliveries - Clinical Mock-ups |  | 22d | 2024-09-03 A | 2024-09-30 A | CW.FD-MU -150 SS+10d | 100% | 2024-10-01 | 2024-10-30 | MEP | MEP-2 | Harris |  |
| CW.FD-MU -350 |  | Review/Approve/Release - Building Specialties - Clinical Mock-up |  | 35d | 2024-09-05 A | 2025-03-14 A | CW.FD-MU -340 SS | 100% | 2024-10-01 | 2024-11-18 | HP | HP |  |  |
| CW.FD-MU -220 |  | Prep/Submit - Lab Casework & Equipment - Clinical Mock-up |  | 10d | 2024-09-30 A | 2024-09-30 A | BP6.123.0.100, CW.FD-MU -140 | 100% | 2024-10-01 | 2024-10-14 | LABCASE | LABCASE |  |  |
| CW.FD-MU -240 |  | Review/Approve/Release - Lab Casework & Equipment - Clinical Mock-up |  | 35d | 2024-09-30 A | 2025-01-16 A | CW.FD-MU -220 FF | 100% | 2024-10-01 | 2024-11-18 | LABCASE | LABCASE |  |  |
| CW.FD-MU -380 |  | Review/Approve/Release - Flooring - Clinical Mock-up |  | 35d | 2024-10-02 A | 2025-02-03 A | CW.FD-MU -370 | 100% | 2024-12-03 | 2025-01-22 | FLOOR | FLOOR |  |  |
| CW.FD-MU -280 |  | Prep/Submit - Door Frames - Clinical Mock-up |  | 5d | 2024-10-31 A | 2025-01-08 A | CW.FD-MU -140 | 100% | 2024-11-01 | 2024-11-07 | LABCASE | LABCASE |  |  |
| CW.FD-MU -310 |  | Prep/Submit - Doors & Hardware - Clinical Mock-up |  | 20d | 2024-10-31 A | 2025-01-08 A | BP5.081.0.110, CW.FD-MU -140 | 100% | 2024-11-01 | 2024-12-02 | HP | HP |  |  |
| CW.FD-MU -420 |  | Lead/Fab/Delivery - Modular Ceilings - Clinical Mock-up |  | 50d | 2024-11-01 A | 2025-02-03 A | CW.FD-MU -410 | 100% | 2024-12-02 | 2025-02-11 | FORS | FORS-1 |  |  |
| CW.FD-MU -450 |  | Lead/Fab/Delivery - Paint - Clinical Mock-up |  | 20d | 2024-11-01 A | 2025-02-03 A | CW.FD-MU -440 | 100% | 2024-12-02 | 2024-12-30 | PAINT | PAINT-1 |  |  |
| CW.FD-MU -190 |  | Mock Up Design Set Approved | milestone | 0d | 2024-11-01 A | 2024-11-01 A | CW.FD-MU -180 FF | 100% |  |  | NIH | NIH |  |  |
| CW.FD-MU -290 |  | Review/Approve/Release - Door Frames - Clinical Mock-up |  | 35d | 2025-01-08 A | 2025-02-10 A | CW.FD-MU -280 SS | 100% | 2025-02-03 | 2025-03-21 | HP | HP |  |  |
| CW.FD-MU -320 |  | Review/Approve/Release - Doors & Hardware - Clinical Mock-up |  | 35d | 2025-01-08 A | 2025-02-10 A | CW.FD-MU -310 | 100% | 2025-02-05 | 2025-03-25 | NIH | NIH |  |  |
| CW.FD-MU -390 |  | Lead/Fab/Delivery - Flooring- Clinical Mock-up |  | 30d | 2025-01-27 A | 2025-02-07 A | CW.FD-MU -380 | 100% | 2025-03-25 | 2025-05-05 | FLOOR | FLOOR |  |  |
| CW.FD-MU -230 |  | Lead/Fab/Delivery - Lab Casework & Equipment - Clinical Mock-up |  | 40d | 2025-02-03 A | 2025-02-21 A | CW.FD-MU -240 | 100% | 2025-03-03 | 2025-04-25 | LABCASE | LABCASE |  |  |
| CW.FD-MU -270 |  | Lead/Fab/Delivery - Interior Glazing - Clinical Mock-up |  | 50d | 2025-02-03 A | 2025-02-25 A | BP7.088.0.100, CW.FD-MU -140 | 100% | 2025-03-03 | 2025-05-09 | GLASS | GLASS |  |  |
| CW.FD-MU -300 |  | Lead/Fab/Delivery - Door Frames - Clinical Mock-up |  | 30d | 2025-03-01 A | 2025-03-20 A | CW.FD-MU -290 | 100% | 2025-03-03 | 2025-04-11 | HP | HP |  |  |
| CW.FD-MU -330 |  | Lead/Fab/Delivery - Doors & Hardware - Clinical Mock-up |  | 50d | 2025-04-01 A | 2025-06-16 A | CW.FD-MU -320 | 100% | 2025-05-01 | 2025-07-11 | GYP | GYP |  | EJ |
| CW.FD-MU -360 |  | Lead/Fab/Delivery - Building Specialties - Clinical Mock-up |  | 40d | 2025-06-02 A | 2025-06-30 A | CW.FD-MU -350 | 100% | 2025-07-01 | 2025-08-26 | HP | HP |  | EJ |
| CW.FD-MU -210 |  | NIH final review of Clincial Mock-ups |  | 5d | 2025-08-15 A | 2025-08-15 A | CW.INTMU -1940, CW.INTMU -1840, CW.INTMU -300, CW.FD-MU -190, CW.INTMU -1740 | 100% | 2025-08-01 | 2025-08-07 | NIH | NIH |  |  |

| ID | WBS | Activity | Duration | Start | Finish | Predecessors | Complete | Planned start | Planned finish | Resp / SRLM | RESP / Trade | Z.RESP | 744 | RESP UPD |
| --- | --- | --- | --- | --- | --- | --- | --- | --- | --- | --- | --- | --- | --- | --- |
|  | 2 | **Hybrid Operating Room - 3-2845** |  | 2024-09-03 | 2025-07-24 |  |  |  |  |  |  |  |  |  |
| CW.INTMU -100 |  | Layout, Frame, Caulk, HTF Tops - Hybrid Operating Room - 3-2845 | 13d | 2024-09-03 A | 2024-09-26 A | CW.FD-MU -160 | 100% | 2024-10-16 | 2024-11-01 | HP | HP |  |  |  |
| CW.INTMU -120 |  | OH Rough Coordination - Hybrid Operating Room - 3-2845 | 10d | 2024-09-17 A | 2025-03-28 A | CW.INTMU -100 SS | 100% | 2024-10-16 | 2024-10-29 | R/I.OH | R/I.OH | Harris |  |  |
| CW.INTMU -190 |  | In Wall and Above Ceiling - Hybrid Operating Room - 3-2845 | 20d | 2024-09-17 A | 2025-04-28 A | CW.INTMU -200 SS | 100% | 2024-11-18 | 2024-12-17 | R/I.OH | R/I.OH | Harris |  |  |
| CW.INTMU -200 |  | Frame Cieling Soffit - Hybrid Operating Room - 3-2845 | 20d | 2024-09-17 A | 2024-10-01 A | CW.INTMU -120 SS | 100% | 2024-10-21 | 2024-11-15 | STEEL | STEEL |  |  |  |
| CW.INTMU -140 |  | NIH In Wall and OH RI Inspection - Hybrid Operating Room - 3-2845 | 5d | 2024-10-25 A | 2024-10-25 A | CW.INTMU -190 SS | 100% | 2024-11-04 | 2024-11-08 | GYP | GYP |  |  |  |
| CW.INTMU -160 |  | HTF Walls and Soffits - Hybrid Operating Room - 3-2845 | 60d | 2025-06-02 A | 2025-06-12 A | CW.INTMU -140 | 100% | 2025-07-01 | 2025-09-24 | GYP | GYP |  | FM | FM |
| CW.INTMU -180 |  | Interior Finishes and Mill Work - Hybrid Operating Room - 3-2845 | 44d | 2025-07-03 A | 2025-07-14 A | CW.FD-MU -450, CW.FD-MU -390, CW.FD-MU -300, CW.FD-MU -230, CW.INTMU -160 SS+23d | 100% | 2025-08-01 | 2025-10-02 | R/I.IW | R/I.IW |  | FM | FM |
| CW.INTMU -220 |  | NIH Flexible Ceiling Inspection - Hybrid Operating Room - 3-2845 | 13d | 2025-07-14 A | 2025-07-18 A | CW.INTMU -180, CW.FD-MU -420 | 100% | 2025-10-03 | 2025-10-21 | AHJ | AHJ |  | FM | FM |
| CW.INTMU -230 |  | Final Trims and Division 10 Install - Hybrid Operating Room - 3-2845 | 20d | 2025-07-14 A | 2025-07-18 A | CW.INTMU -220, CW.FD-MU -330, CW.FD-MU -360, CW.FD-MU -270 | 100% | 2025-10-22 | 2025-11-18 | NIH | NIH |  | FM | FM |
| CW.INTMU -300 |  | NIH Functional/Final Review - Hybrid Operating Room - 3-2845 | 11d | 2025-07-24 A | 2025-07-24 A | CW.INTMU -230 | 100% | 2025-11-19 | 2025-12-05 | GYP | GYP-1 |  |  |  |
|  | 4 | **Minor Procedure Room - 3-3910** |  | 2024-09-03 | 2025-07-24 |  |  |  |  |  |  |  |  |  |
| CW.INTMU -1750 |  | Layout, Frame, Caulk, HTF Tops - Minor Procedure Room - 3-3910 | 13d | 2024-09-03 A | 2024-09-26 A | CW.FD-MU -160 | 100% | 2024-10-16 | 2024-11-01 | HP | HP |  |  |  |
| CW.INTMU -1760 |  | OH Rough Coordination - Minor Procedure Room - 3-3910 | 10d | 2024-09-17 A | 2025-03-28 A | CW.INTMU -1750 SS+5d | 100% | 2024-10-23 | 2024-11-05 | R/I.OH | R/I.OH | Harris |  |  |
| CW.INTMU -1770 |  | Frame Cieling Soffit - Minor Procedure Room - 3-3910 | 20d | 2024-09-17 A | 2024-12-02 A | CW.INTMU -1760 SS | 100% | 2024-10-16 | 2024-11-12 | STEEL | STEEL |  |  |  |
| CW.INTMU -1780 |  | In Wall and Above Ceiling - Minor Procedure Room - 3-3910 | 20d | 2024-09-17 A | 2024-10-24 A | CW.INTMU -1770 SS | 100% | 2024-11-18 | 2024-12-17 | R/I.OH | R/I.OH | Harris |  |  |
| CW.INTMU -1790 |  | NIH In Wall and OH RI Inspection - Minor Procedure Room - 3-3910 | 5d | 2024-10-25 A | 2024-10-25 A | CW.INTMU -1780 SS | 100% | 2024-11-07 | 2024-11-13 | GYP | GYP |  |  |  |
| CW.INTMU -1800 |  | HTF Walls and Soffits - Minor Procedure Room - 3-3910 | 15d | 2025-06-02 A | 2025-06-12 A | CW.INTMU -1790 | 100% | 2025-07-01 | 2025-07-22 | GYP | GYP |  | FM | FM |
| CW.INTMU -1810 |  | Interior Finishes and Mill Work - Minor Procedure Room - 3-3910 | 44d | 2025-06-18 A | 2025-06-20 A | CW.FD-MU -390, CW.FD-MU -300, CW.FD-MU -230, CW.FD-MU -450, CW.INTMU -1800 | 100% | 2025-07-23 | 2025-09-23 | R/I.IW | R/I.IW |  | FM | FM |
| CW.INTMU -1830 |  | Final Trims and Division 10 Install - Minor Procedure Room - 3-3910 | 15d | 2025-07-14 A | 2025-07-18 A | CW.INTMU -1810, CW.FD-MU -330, CW.FD-MU -360, CW.FD-MU -270, CW.FD-MU -420 | 100% | 2025-08-01 | 2025-08-21 | NIH | NIH |  | FM | FM |
| CW.INTMU -1840 |  | NIH Functional/Final Review - Minor Procedure Room - 3-3910 | 4d | 2025-07-24 A | 2025-07-24 A | CW.INTMU -1830 | 100% | 2025-08-22 | 2025-08-27 | GYP | GYP-1 |  | FM | FM |
|  | 5 | **MRI Room - 1-2815** |  | 2024-09-03 | 2025-07-24 |  |  |  |  |  |  |  |  |  |
| CW.INTMU -1850 |  | Layout, Frame, Caulk, HTF Tops - MRI Room - 1-2815 | 13d | 2024-09-03 A | 2024-09-26 A | CW.FD-MU -160 | 100% | 2024-10-16 | 2024-11-01 | HP | HP |  |  |  |
| CW.INTMU -1860 |  | OH Rough Coordination - MRI Room - 1-2815 | 10d | 2024-09-17 A | 2025-03-28 A | CW.INTMU -1850 SS+5d | 100% | 2024-10-23 | 2024-11-05 | R/I.OH | R/I.OH | Harris |  |  |
| CW.INTMU -1870 |  | Frame Cieling Soffit - MRI Room - 1-2815 | 20d | 2024-09-17 A | 2024-12-02 A | CW.INTMU -1860 SS | 100% | 2024-10-16 | 2024-11-12 | STEEL | STEEL |  |  |  |
| CW.INTMU -1880 |  | In Wall and Above Ceiling - MRI Room - 1-2815 | 20d | 2024-09-17 A | 2025-03-04 A | CW.INTMU -1870 SS | 100% | 2024-10-16 | 2024-11-12 | R/I.OH | R/I.OH | Harris |  |  |
| CW.INTMU -1890 |  | NIH In Wall and OH RI Inspection - MRI Room - 1-2815 | 5d | 2024-10-25 A | 2024-10-25 A | CW.INTMU -1880 SS | 100% | 2024-11-07 | 2024-11-13 | GYP | GYP |  |  |  |
| CW.INTMU -1900 |  | HTF Walls and Soffits - MRI Room - 1-2815 | 15d | 2025-06-02 A | 2025-06-12 A | CW.INTMU -1890 | 100% | 2025-07-01 | 2025-07-22 | GYP | GYP |  | FM | FM |
| CW.INTMU -1910 |  | Interior Finishes and Mill Work - MRI Room - 1-2815 | 44d | 2025-06-18 A | 2025-06-20 A | CW.FD-MU -390, CW.FD-MU -300, CW.FD-MU -230, CW.FD-MU -450, CW.INTMU -1900 | 100% | 2025-07-23 | 2025-09-23 | R/I.IW | R/I.IW |  | FM | FM |
| CW.INTMU -1930 |  | Final Trims and Division 10 Install - MRI Room - 1-2815 | 15d | 2025-07-14 A | 2025-07-18 A | CW.INTMU -1910, CW.FD-MU -330, CW.FD-MU -360, CW.FD-MU -270 | 100% | 2025-08-01 | 2025-08-21 | NIH | NIH |  | FM | FM |
| CW.INTMU -1940 |  | NIH Functional/Final Review - MRI Room - 1-2815 | 4d | 2025-07-24 A | 2025-07-24 A | CW.INTMU -1930 | 100% | 2025-08-22 | 2025-08-27 | GYP | GYP-1 |  | FM | FM |

| ID | WBS | Activity | Duration | Start | Finish | Predecessors | Complete | Remaining | Planned start | Planned finish | Total float | Free float | Expected finish | Resp / SRLM | RESP / Trade | Z.RESP | 744 | RESP UPD | Update Status |
| --- | --- | --- | --- | --- | --- | --- | --- | --- | --- | --- | --- | --- | --- | --- | --- | --- | --- | --- | --- |
|  | 6 | **Pre/Post Anesthesia Room - 3-5820-21** |  | 2024-09-03 | 2025-07-24 |  |  |  |  |  |  |  |  |  |  |  |  |  |  |
| CW.INTMU -1650 |  | Layout, Frame, Caulk, HTF Tops - Pre/Post Anesthesia Room - 3-5820-21 | 13d | 2024-09-03 A | 2024-09-26 A | CW.FD-MU -160 | 100% |  | 2024-10-16 | 2024-11-01 |  |  |  | HP | HP |  |  |  |  |
| CW.INTMU -1660 |  | OH Rough Coordination - Pre/Post Anesthesia Room - 3-5820-21 | 2d | 2024-09-17 A | 2024-11-29 A | CW.INTMU -1650 SS+5d | 100% |  | 2024-10-23 | 2024-10-24 |  |  |  | R/I.OH | R/I.OH | Harris |  |  |  |
| CW.INTMU -1670 |  | Frame Cieling Soffit - Pre/Post Anesthesia Room - 3-5820-21 | 20d | 2024-09-17 A | 2024-12-02 A | CW.INTMU -1650, CW.INTMU -1660 | 100% |  | 2024-10-16 | 2024-11-12 |  |  |  | STEEL | STEEL |  |  |  |  |
| CW.INTMU -1680 |  | In Wall and Above Ceiling - Pre/Post Anesthesia Room - 3-5820-21 | 4d | 2024-09-17 A | 2024-10-24 A | CW.INTMU -1670 SS | 100% |  | 2024-11-15 | 2024-11-20 |  |  |  | R/I.OH | R/I.OH | Harris |  |  |  |
| CW.INTMU -1690 |  | NIH In Wall and OH RI Inspection - Pre/Post Anesthesia Room - 3-5820-21 | 5d | 2024-10-25 A | 2024-10-25 A | CW.INTMU -1680 SS | 100% |  | 2024-11-07 | 2024-11-13 |  |  |  | GYP | GYP |  |  |  |  |
| CW.INTMU -1700 |  | HTF Walls and Soffits - Pre/Post Anesthesia Room - 3-5820-21 | 14d | 2025-07-14 A | 2025-07-18 A | CW.INTMU -1690 | 100% |  | 2025-08-01 | 2025-08-20 |  |  |  | GYP | GYP |  | FM | FM |  |
| CW.INTMU -1710 |  | Interior Finishes and Mill Work - Pre/Post Anesthesia Room - 3-5820-21 | 44d | 2025-07-14 A | 2025-07-18 A | CW.INTMU -1700, CW.FD-MU -390, CW.FD-MU -300, CW.FD-MU -230, CW.FD-MU -450 | 100% |  | 2025-08-21 | 2025-10-22 |  |  |  | R/I.IW | R/I.IW |  | FM | FM |  |
| CW.INTMU -1730 |  | Final Trims and Division 10 Install - Pre/Post Anesthesia Room - 3-5820-21 | 15d | 2025-07-14 A | 2025-07-18 A | CW.INTMU -1710, CW.FD-MU -330, CW.FD-MU -360, CW.FD-MU -270, CW.INTMU -1660 | 100% |  | 2025-10-23 | 2025-11-12 |  |  |  | NIH | NIH |  | FM | FM |  |
| CW.INTMU -1740 |  | NIH Functional/Final Review - Pre/Post Anesthesia Room - 3-5820-21 | 4d | 2025-07-24 A | 2025-07-24 A | CW.INTMU -1730 | 100% |  | 2025-11-13 | 2025-11-18 |  |  |  | GYP | GYP-1 |  | FM | FM |  |
|  | 4 | **OFOI Equipment** |  | 2023-11-09 | 2026-11-24 |  |  |  |  |  |  |  |  |  |  |  |  |  |  |
|  | 3 | **PCO 708 - Medical Equipment Procurement** |  | 2023-11-09 | 2026-04-15 |  |  |  |  |  |  |  |  |  |  |  |  |  |  |
| OFOI.PWS.1080 |  | D-B Team - Submits Serial Letter to NIH (SL#0086) - Major Medical Equipment | 1d | 2023-11-09 A | 2023-11-09 A | P2C.DES.150 | 100% |  | 2024-12-02 | 2024-12-02 |  |  |  | HP | HP |  |  |  |  |
| OFOI.PWS.1250 |  | D-B Team - Submits Serial Letter to NIH (SL#0283) - Major Medical Equipment | 1d | 2024-10-16 A | 2024-10-16 A | OFOI.PWS.1080 | 100% |  | 2024-12-02 | 2024-12-02 |  |  |  | HP | HP |  |  |  |  |
| OFOI.PWS.1160 |  | D-B Team - Re-Submits Serial Letter to NIH (SL#0283) During Partnering Meeting | 1d | 2024-11-19 A | 2024-11-19 A | OFOI.PWS.1250 | 100% |  | 2024-12-02 | 2024-12-02 |  |  |  | HP | HP |  |  |  |  |
| OFOI.PWS.1150 |  | NIH Review and Provides Direction on SL#0086 & SL#0283 | 20d | 2024-11-20 A | 2024-12-02 A | OFOI.PWS.1160 | 100% |  | 2024-12-02 | 2024-12-30 |  |  |  | NIH | NIH |  |  |  |  |
| OFOI.PWS.1090 |  | D-B Team - Proceeds with Verbal Direction from NIH during Partnering Session 11/19/2024 | 1d | 2024-12-02 A | 2024-12-03 A | OFOI.PWS.1150 SS | 100% |  | 2025-01-02 | 2025-01-02 |  |  |  | HP | HP |  |  |  |  |
| OFOI.PWS.1100 |  | D-B Team - Coordination/Mapping - Major Medical Equipment - B2 | 16d | 2024-12-04 A | 2025-01-24 A | OFOI.PWS.1090 FF | 100% |  | 2025-01-02 | 2025-01-23 |  |  |  | ARCH | ARCH |  |  |  |  |
| OFOI.PWS.1260 |  | D-B Team - Coordination/Mapping - Major Medical Equipment - L1 | 10d | 2024-12-12 A | 2025-05-16 A | OFOI.PWS.1090, OFOI.PWS.1110 FF, OFOI.PWS.1340 | 100% |  | 2025-02-24 | 2025-03-07 |  |  |  | ARCH | ARCH |  |  |  |  |
| OFOI.PWS.1270 |  | D-B Team - Coordination/Mapping - Major Medical Equipment - L3 | 10d | 2024-12-25 A | 2025-06-30 A | OFOI.PWS.1090, OFOI.PWS.1030 FF, OFOI.PWS.1340 | 100% |  | 2025-04-29 | 2025-05-12 |  |  |  | ARCH | ARCH |  | JO | AM |  |
| OFOI.PWS.1330 |  | NIH Contract MOD from NIH to Proceed with Coordination | 1d | 2025-01-28 A | 2025-04-09 A | OFOI.PWS.1150 | 100% |  | 2025-03-03 | 2025-03-03 |  |  |  | NIH | NIH |  |  |  |  |
| OFOI.PWS.1340 |  | D-B Team Proceeds per OAC Meeting 4/9/25 | 1d | 2025-04-09 A | 2025-04-09 A | OFOI.PWS.1330 SS | 100% |  | 2025-03-03 | 2025-03-03 |  |  |  | HP | HP |  |  |  |  |
| OFOI.PWS.1110 |  | D-B Team - BIM Modeling - Major Medical Equipment - B2 | 10d | 2025-05-05 A | 2025-05-16 A | OFOI.PWS.1100, P2.BIM.L8.40.110, OFOI.PWS.1340 | 100% |  | 2025-06-02 | 2025-06-13 |  |  |  | MEP | MEP-2 |  |  |  |  |
| OFOI.PWS.1020 |  | D-B Team - BIM Coordination - B2 | 10d | 2025-05-19 A | 2025-06-13 A | OFOI.PWS.1010, OFOI.PWS.1110 | 100% |  | 2025-06-16 | 2025-06-27 |  |  |  | BIM | BIM |  | JO | AM |  |
| OFOI.PWS.1310 |  | D-B Team - BIM Modeling - Major Medical Equipment - L1 | 10d | 2025-05-19 A | 2025-05-28 A | OFOI.PWS.1260, OFOI.PWS.1110 | 100% |  | 2025-06-16 | 2025-06-27 |  |  |  | MEP | MEP-2 |  | JO | AM |  |
| OFOI.PWS.1030 |  | D-B Team - BIM Coordination - L1 | 20d | 2025-06-04 A | 2025-09-19 A | OFOI.PWS.1310 | 100% |  | 2025-07-02 | 2025-07-30 |  |  |  | BIM | BIM |  | JO | BO | O |
| OFOI.PWS.1120 |  | D-B Team - BIM Shop Drawings - Major Medical Equipment - B2 | 6d | 2025-06-13 A | 2025-06-20 A | OFOI.PWS.1020 | 100% |  | 2025-07-02 | 2025-07-10 |  |  |  | MEP | MEP-2 |  | JO | AM |  |
| OFOI.PWS.1280 |  | Internal (DOR Review) - Shop Drawings - Major Medical Equipment - B2 | 10d | 2025-06-25 A | 2026-04-07 | OFOI.PWS.1120 | 50% | 5d | 2025-07-11 | 2025-07-24 | 13d | 0d |  | ARCH | ARCH |  | JO | TG | O |
| OFOI.PWS.1320 |  | D-B Team - BIM Modeling - Major Medical Equipment - L3 | 10d | 2025-07-03 A | 2025-07-17 A | OFOI.PWS.1270 | 100% |  | 2025-08-05 | 2025-08-18 |  |  |  | MEP | MEP-2 |  | JO | AM |  |
| OFOI.PWS.1040 |  | D-B Team - BIM Coordination - L3 | 30d | 2025-07-18 A | 2025-09-19 A | OFOI.PWS.1320 | 100% |  | 2025-08-19 | 2025-09-30 |  |  |  | BIM | BIM |  | JO | BO | O |
| OFOI.PWS.1300 |  | Internal (DOR Review) - Shop Drawings - Major Medical Equipment - L3 | 10d | 2025-09-12 A | 2026-04-14 | OFOI.PWS.1200 |  | 10d | 2025-11-14 | 2025-12-01 | 19d | 0d |  | ARCH | ARCH |  | JO | TG |  |
| OFOI.PWS.1290 |  | Internal (DOR Review) - Shop Drawings - Major Medical Equipment - L1 | 10d | 2025-09-17 A | 2026-04-06 | OFOI.PWS.1170 | 60% | 4d | 2025-10-10 | 2025-10-23 | 160d | 0d |  | ARCH | ARCH |  | JO | TG | O |
| OFOI.PWS.1170 |  | D-B Team - BIM Shop Drawings - Major Medical Equipment - L1 | 6d | 2025-12-01 A | 2025-12-08 A | OFOI.PWS.1030 | 100% |  | 2026-01-02 | 2026-01-09 |  |  |  | MEP | MEP-2 |  | JO | BO | O |
| OFOI.PWS.1200 |  | D-B Team - BIM Shop Drawings - Major Medical Equipment - L3 | 10d | 2025-12-01 A | 2025-12-17 A | OFOI.PWS.1040 | 100% |  | 2026-01-02 | 2026-01-15 |  |  |  | MEP | MEP-2 |  | JO | BO | O |
| OFOI.PWS.1230 |  | Ready to start Construction Activities - Major Medical Equipment - L1 | 1d | 2026-04-06 | 2026-04-07 | OFOI.PWS.1180 FF |  |  |  |  | 160d | 11d |  | MEP | MEP-2 |  | JO | JH | O |
| OFOI.PWS.1180 |  | External (NIH Review) - Shop Drawings - Major Medical Equipment - L1 | 0d | 2026-04-07 | 2026-04-07 | OFOI.PWS.1290 |  |  |  |  | 160d | 0d | 2025-10-10 | NIH | NIH |  | JO | TG | O |
| OFOI.PWS.1130 |  | External (NIH Review) - Shop Drawings - Major Medical Equipment - B2 | 0d | 2026-04-08 | 2026-04-08 | OFOI.PWS.1280 |  |  |  |  | 13d | 0d | 2025-10-10 | NIH | NIH |  | JO | TG | O |
| OFOI.PWS.1220 |  | Ready to start Construction Activities - Major Medical Equipment - B2 | 1d | 2026-04-08 | 2026-04-08 | OFOI.PWS.1130 |  |  |  |  | 13d | 9d |  | MEP | MEP-2 |  | JO | SS | O |
| OFOI.PWS.1240 |  | Ready to start Construction Activities - Major Medical Equipment - L3 | 1d | 2026-04-14 | 2026-04-15 | OFOI.PWS.1210 FF |  |  |  |  | 19d | 0d |  | MEP | MEP-2 |  | JO | MLF |  |
| OFOI.PWS.1210 |  | External (NIH Review) - Shop Drawings - Major Medical Equipment - L3 | 0d | 2026-04-15 | 2026-04-15 | OFOI.PWS.1300 |  |  |  |  | 19d | 0d | 2025-10-10 | NIH | NIH |  | JO | TG |  |

| ID | WBS | Activity | Duration | Start | Finish | Predecessors | Complete | Planned start | Planned finish | Total float | Free float | Constraint | Resp / SRLM | RESP / Trade | RESP UPD |
| --- | --- | --- | --- | --- | --- | --- | --- | --- | --- | --- | --- | --- | --- | --- | --- |
|  | 1 | **OFOI Preconstruction** |  | 2024-11-19 | 2024-11-19 |  |  |  |  |  |  |  |  |  |  |
| OFOI.PWS.1000 |  | NIH Procurement of Major Medical Equipment & Distribution of Vendor Specific Shop Drawings (NOT BEING PROVIDED) | 20d | 2024-11-19 A | 2024-11-19 A | P2C.DES.295 | 100% | 2024-11-19 | 2024-12-18 |  |  |  | NIH | NIH |  |
| OFOI.PWS.1010 |  | D-B Team Design Finalization & Coordination of Vendor Specific Shop Drawings (NOT BEING PROVIDED) | 20d | 2024-11-19 A | 2024-11-19 A | OFOI.PWS.1000 | 100% | 2024-11-19 | 2024-12-18 |  |  |  | ARCH | ARCH |  |
|  | 2 | **OFOI Equipment Deliveries** |  | 2026-04-15 | 2026-11-24 |  |  |  |  |  |  |  |  |  |  |
|  | 1 | **B2 - OFOI Equipment Deliveries** |  | 2026-08-03 | 2026-10-02 |  |  |  |  |  |  |  |  |  |  |
| OFOI.EQUIP.B2.1020 |  | MRI (IV) - Equipment / MRI Room B2-2820 & MRI EQ Room B202820A | 5d | 2026-08-03 | 2026-08-07 | CW.INTMU -1850, OFOI.PWS.1000, OFOI.PWS.1220 |  |  |  | 113d | 0d | as late as possible | NIH | NIH | EJ |
| OFOI.EQUIP.B2.1030 |  | MRI/CT - Equipment / MRI/CT Room B2-2840 & MRI EQ Room B202840A | 5d | 2026-08-03 | 2026-08-07 | OFOI.PWS.1000, OFOI.PWS.1220 |  |  |  | 113d | 0d | as late as possible | NIH | NIH | EJ |
| OFOI.EQUIP.B2.1000 |  | Cath Lab 1 (III) - Equipment / B2-2822 | 5d | 2026-09-28 | 2026-10-02 | OFOI.PWS.1000, OFOI.PWS.1220 |  |  |  | 76d | 0d | as late as possible | NIH | NIH | EJ |
| OFOI.EQUIP.B2.1010 |  | Cath Lab 2 (III) - Equipment / B2-2842 | 5d | 2026-09-28 | 2026-10-02 | OFOI.PWS.1000, OFOI.PWS.1220 |  |  |  | 76d | 0d | as late as possible | NIH | NIH | EJ |
| OFOI.EQUIP.B2.1040 |  | XR EQ - Equipment / B2-2826 | 5d | 2026-09-28 | 2026-10-02 | OFOI.PWS.1000, OFOI.PWS.1220 |  |  |  | 76d | 0d | as late as possible | NIH | NIH | EJ |
| OFOI.EQUIP.B2.1050 |  | XR EQ - Equipment / B2-2846 | 5d | 2026-09-28 | 2026-10-02 | OFOI.PWS.1000, OFOI.PWS.1220 |  |  |  | 76d | 0d | as late as possible | NIH | NIH | EJ |
|  | 2 | **L1 - OFOI Equipment Deliveries** |  | 2026-04-22 | 2026-04-28 |  |  |  |  |  |  |  |  |  |  |
| OFOI.EQUIP.L1.1000 |  | MRI 3T (1) - Equipment / MRI Room 1-2855 & MRI EQ (III) Room 1-2839 | 5d | 2026-04-22 | 2026-04-28 | OFOI.PWS.1000, OFOI.PWS.1230 |  |  |  | 154d | 0d | as late as possible | NIH | NIH | EJ |
| OFOI.EQUIP.L1.1010 |  | MRI 3T (2) - Equipment / MRI Room 1-2835 & MRI EQ (III) Room 1-2839 | 5d | 2026-04-22 | 2026-04-28 | OFOI.PWS.1000, OFOI.PWS.1230 |  |  |  | 154d | 0d | as late as possible | NIH | NIH | EJ |
| OFOI.EQUIP.L1.1020 |  | MRI 3T (3) - Equipment / MRI Room 1-2815 & MRI EQ (III) Room 1-2819 | 5d | 2026-04-22 | 2026-04-28 | OFOI.PWS.1000, OFOI.PWS.1230 |  |  |  | 154d | 0d | as late as possible | NIH | NIH | EJ |
| OFOI.EQUIP.L1.1030 |  | MRI 1.5T (4) - Equipment / MRI Room 1-2805 & MRI EQ (III) Room 1-2809 | 5d | 2026-04-22 | 2026-04-28 | OFOI.PWS.1000, OFOI.PWS.1230 |  |  |  | 154d | 0d | as late as possible | NIH | NIH | EJ |
| OFOI.EQUIP.L1.1040 |  | MRI 1.5T (5) - Equipment / MRI Room 1-2825 & MRI EQ (III) Room 1-2829 | 5d | 2026-04-22 | 2026-04-28 | OFOI.PWS.1000, OFOI.PWS.1230 |  |  |  | 154d | 0d | as late as possible | NIH | NIH | EJ |
| OFOI.EQUIP.L1.1050 |  | MRI 1.5T (6) - Equipment / MRI Room 1-2845 & MRI EQ (III) Room 1-2829 | 5d | 2026-04-22 | 2026-04-28 | OFOI.PWS.1000, OFOI.PWS.1230 |  |  |  | 154d | 0d | as late as possible | NIH | NIH | EJ |
| OFOI.EQUIP.L1.1060 |  | MRI 1.5T (FUTURE) (7) - Equipment / MRI Room 1-2865 & MRI EQ (III) Room 1-2849 | 5d | 2026-04-22 | 2026-04-28 | OFOI.PWS.1000, OFOI.PWS.1230 |  |  |  | 154d | 0d | as late as possible | NIH | NIH | EJ |
| OFOI.EQUIP.L1.1070 |  | CT (1) - Equipment / CT Room 1-3912 | 5d | 2026-04-22 | 2026-04-28 | OFOI.PWS.1000, OFOI.PWS.1230 |  |  |  | 149d | 0d | as late as possible | NIH | NIH | EJ |
| OFOI.EQUIP.L1.1080 |  | CT (2) - Equipment / CT Room 1-3910 | 5d | 2026-04-22 | 2026-04-28 | OFOI.PWS.1000, OFOI.PWS.1230 |  |  |  | 149d | 0d | as late as possible | NIH | NIH | EJ |
| OFOI.EQUIP.L1.1090 |  | CT (3) - Equipment / CT Room 1-3916 | 5d | 2026-04-22 | 2026-04-28 | OFOI.PWS.1000, OFOI.PWS.1230 |  |  |  | 149d | 0d | as late as possible | NIH | NIH | EJ |
| OFOI.EQUIP.L1.1100 |  | CT (4) - Equipment / CT Room 1-3918 | 5d | 2026-04-22 | 2026-04-28 | OFOI.PWS.1000, OFOI.PWS.1230 |  |  |  | 149d | 0d | as late as possible | NIH | NIH | EJ |
|  | 3 | **L3 - OFOI Equipment Deliveries** |  | 2026-04-15 | 2026-11-24 |  |  |  |  |  |  |  |  |  |  |
| OFOI.EQUIP.L3.1000 |  | MRI (1) - Equipment / MRI Room 3-2825 & MRI EQ Room 3-2825B | 5d | 2026-04-15 | 2026-04-21 | OFOI.PWS.1000, OFOI.PWS.1240 |  |  |  | 191d | 0d | as late as possible | NIH | NIH | EJ |
| OFOI.EQUIP.L3.1010 |  | MRI (2) - Equipment / MRI Room 3-2815 & MRI EQ Room 3-2815A | 5d | 2026-04-15 | 2026-04-21 | OFOI.PWS.1000, OFOI.PWS.1240 |  |  |  | 191d | 0d | as late as possible | NIH | NIH | EJ |
| OFOI.EQUIP.L3.1020 |  | Hybrid OR (1) - Equipment / Hybrid OR Room 3-2805 | 5d | 2026-11-04 | 2026-11-10 | OFOI.PWS.1000, OFOI.PWS.1240 |  |  |  | 49d | 0d | as late as possible | NIH | NIH | EJ |
| OFOI.EQUIP.L3.1030 |  | Hybrid OR (2) - Equipment / Hybrid OR Room 3-2845 | 5d | 2026-11-04 | 2026-11-10 | OFOI.PWS.1000, OFOI.PWS.1240 |  |  |  | 49d | 0d | as late as possible | NIH | NIH | EJ |
| OFOI.EQUIP.L3.1040 |  | Hybrid OR (3) - Equipment / Hybrid OR Room 3-2855 | 5d | 2026-11-04 | 2026-11-10 | OFOI.PWS.1000, OFOI.PWS.1240 |  |  |  | 49d | 0d | as late as possible | NIH | NIH | EJ |
| OFOI.EQUIP.L3.1050 |  | Hybrid OR (4) - Equipment / Hybrid OR Room 3-2835 | 5d | 2026-11-04 | 2026-11-10 | OFOI.PWS.1000, OFOI.PWS.1240 |  |  |  | 49d | 0d | as late as possible | NIH | NIH | EJ |
| OFOI.EQUIP.L3.1120 |  | IR Procedure (1) - Equipment / IR Procedure Room 3-2905 | 5d | 2026-11-11 | 2026-11-17 | OFOI.PWS.1000, OFOI.PWS.1240 |  |  |  | 44d | 0d | as late as possible | NIH | NIH | EJ |
| OFOI.EQUIP.L3.1130 |  | IR Procedure (2) - Equipment / IR Procedure Room 3-2915 | 5d | 2026-11-11 | 2026-11-17 | OFOI.PWS.1000, OFOI.PWS.1240 |  |  |  | 44d | 0d | as late as possible | NIH | NIH | EJ |
| OFOI.EQUIP.L3.1140 |  | IR Procedure (3) - Equipment / IR Procedure Room 3-2925 | 5d | 2026-11-11 | 2026-11-17 | OFOI.PWS.1000, OFOI.PWS.1240 |  |  |  | 44d | 0d | as late as possible | NIH | NIH | EJ |
| OFOI.EQUIP.L3.1060 |  | OR (1) - Equipment / OR Room 3-2865 | 5d | 2026-11-18 | 2026-11-24 | OFOI.PWS.1000, OFOI.PWS.1240, BP6.117.3.100, BP6.117.3.120, BP6.117.3.110 |  |  |  | 39d | 0d | as late as possible | NIH | NIH | EJ |
| OFOI.EQUIP.L3.1070 |  | OR (2) - Equipment / OR Room 3-2940 | 5d | 2026-11-18 | 2026-11-24 | OFOI.PWS.1000, OFOI.PWS.1240, BP6.117.3.100, BP6.117.3.120, BP6.117.3.110 |  |  |  | 39d | 0d | as late as possible | NIH | NIH | EJ |
| OFOI.EQUIP.L3.1080 |  | OR (3) - Equipment / OR Room 3-2950 | 5d | 2026-11-18 | 2026-11-24 | OFOI.PWS.1000, OFOI.PWS.1240, BP6.117.3.100, BP6.117.3.120, BP6.117.3.110 |  |  |  | 39d | 0d | as late as possible | NIH | NIH | EJ |
| OFOI.EQUIP.L3.1090 |  | OR (4) - Equipment / OR Room 3-3911 | 5d | 2026-11-18 | 2026-11-24 | OFOI.PWS.1000, OFOI.PWS.1240, BP6.117.3.100, BP6.117.3.120, BP6.117.3.110 |  |  |  | 39d | 0d | as late as possible | NIH | NIH | EJ |
| OFOI.EQUIP.L3.1100 |  | OR (5) - Equipment / OR Room 3-3915 | 5d | 2026-11-18 | 2026-11-24 | OFOI.PWS.1000, OFOI.PWS.1240, BP6.117.3.100, BP6.117.3.120, BP6.117.3.110 |  |  |  | 39d | 0d | as late as possible | NIH | NIH | EJ |
| OFOI.EQUIP.L3.1110 |  | OR (6) - Equipment / OR Room 3-3925 | 5d | 2026-11-18 | 2026-11-24 | OFOI.PWS.1000, OFOI.PWS.1240, BP6.117.3.100, BP6.117.3.120, BP6.117.3.110 |  |  |  | 39d | 0d | as late as possible | NIH | NIH | EJ |
| OFOI.EQUIP.L3.1150 |  | GI Minor Procedure (1) - Equipment / GR Minor Procedure Room 3-3920 | 5d | 2026-11-18 | 2026-11-24 | OFOI.PWS.1000, OFOI.PWS.1240 |  |  |  | 39d | 0d | as late as possible | NIH | NIH | EJ |
| OFOI.EQUIP.L3.1160 |  | GI Minor Procedure (2) - Equipment / GR Minor Procedure Room 3-3930 | 5d | 2026-11-18 | 2026-11-24 | OFOI.PWS.1000, OFOI.PWS.1240 |  |  |  | 39d | 0d | as late as possible | NIH | NIH | EJ |
| OFOI.EQUIP.L3.1170 |  | Minor Procedure (2) - Equipment / Minor Procedure Room 3-3910 | 5d | 2026-11-18 | 2026-11-24 | OFOI.PWS.1000, OFOI.PWS.1240 |  |  |  | 39d | 0d | as late as possible | NIH | NIH | EJ |
| OFOI.EQUIP.L3.1180 |  | Minor Procedure (3) - Equipment / Minor Procedure Room 3-3916 | 5d | 2026-11-18 | 2026-11-24 | OFOI.PWS.1000, OFOI.PWS.1240 |  |  |  | 39d | 0d | as late as possible | NIH | NIH | EJ |

| ID | WBS | Activity | Duration | Start | Finish | Predecessors | Complete | Planned start | Planned finish | Temp Orig Dur | Resp / SRLM | PHASE | CATW | SCH DEV | RESP / Trade | Init | Pick #2 | *NIH Resp Check* | Z.RESP |
| --- | --- | --- | --- | --- | --- | --- | --- | --- | --- | --- | --- | --- | --- | --- | --- | --- | --- | --- | --- |
|  | 13 | **PHASES 0, 1, 2 - CONSTRUCTION** |  | 2015-08-11 | 2028-10-03 |  |  |  |  |  |  |  |  |  |  |  |  |  |  |
|  | 1 | **Preconstruction Coordination** |  | 2023-01-25 | 2023-07-03 |  |  |  |  |  |  |  |  |  |  |  |  |  |  |
| PWS.200 |  | HP / NIH - Preconstruction Coordination Meeting - - Phase 0 | 2d | 2023-01-25 A | 2023-01-26 A | P0.MDE.140, RAP.P0.110, RAP.P0.140, PWS.190, PWS.140, PWS.170 | 100% |  |  | 16 | STAFF | P01 | GEN | PRELIM | STAFF |  |  |  |  |
| PWS.P0B.100 |  | HP / NIH - Preconstruction Coordination Meeting - Phase 0B | 1d | 2023-04-14 A | 2023-04-14 A | P0B.DES.160 | 100% |  |  | 8 | STAFF | P01 | GEN | PRELIM | STAFF | 0A |  |  |  |
| PWS.P0A.100 |  | HP / NIH - Preconstruction Coordination Meeting - Phase 0A | 1d | 2023-05-08 A | 2023-05-08 A | P0A.DES.220, P1.DEMO.2.130 | 100% |  |  | 8 | STAFF | P01 | GEN | PRELIM | STAFF | 0A | FP |  |  |
| PWS.240 |  | HP / NIH - Preconstruction Coordination Meeting - Phase 1 | 1d | 2023-06-05 A | 2023-06-05 A | P1.MDE.130, PWS.260 | 100% | 2023-07-03 | 2023-07-03 | 8 | STAFF | P01 | GEN | PRELIM | STAFF |  |  |  |  |
| PWS.P0C.100 |  | HP / NIH - Preconstruction Coordination Meeting - Phase 0C | 1d | 2023-07-03 A | 2023-07-03 A | P0C.DES.190 | 100% | 2023-07-14 | 2023-07-14 | 8 | STAFF | P01 | GEN | PRELIM | STAFF | 0A |  |  |  |
|  | 5 | **Phase 0 - Enabling Work** |  | 2022-10-24 | 2024-11-11 |  |  |  |  |  |  |  |  |  |  |  |  |  |  |
|  | 1 | **P0 - Site Prep & E&SC** |  | 2022-10-24 | 2023-06-21 |  |  |  |  |  |  |  |  |  |  |  |  |  |  |
| P0.SPM.100 |  | Site Control & Layout | 5d | 2022-10-24 A | 2022-10-28 A | PWS.200 | 100% |  |  | 40 | STAFF | P01 | CON | PRELIM | STAFF |  |  |  |  |
| P0.SPM.120 |  | Install Traffic Control Devices-Close Down SRLM Work Zone | 2d | 2023-03-06 A | 2023-03-07 A | P0.RIP.160 | 100% |  |  | 16 | HP | P01 | CON | PRELIM | HP |  |  | HP |  |
| P0.SPM.110 |  | Install ***Hard Bubble*** (Site Jersey Barriers, Fencing & Gates - SRLM Site) | 8d | 2023-05-08 A | 2023-06-21 A | P0.SUM.110 FF, P0.SPM.130 FF, P1.TVIF.100, P0.SPM.120 | 100% | 2023-05-08 | 2023-05-17 | 64 | HP | P01 | CON | PRELIM | HP |  |  | HP |  |
| P0.SPM.130 |  | Install Child Care OH Protection Pathway | 10d | 2023-05-08 A | 2023-06-21 A | P0.RIP.160, FAD.P0.200 | 100% | 2023-05-08 | 2023-05-19 | 80 | CRAFT | P01 | CON | PRELIM | CRAFT |  |  |  |  |
|  | 2 | **P0 - Road and Surface Improvements** |  | 2023-01-30 | 2023-06-12 |  |  |  |  |  |  |  |  |  |  |  |  |  |  |
| P0.RIP.100 |  | Set up Construction Work Zone/Traffic Control - Island Infills | 5d | 2023-01-30 A | 2023-01-30 A | P1.TVIF.100 SS, FAD.P0.120 | 100% | 2023-01-30 | 2023-02-03 | 40 | HP | P01 | CON | PRELIM | HP |  |  | HP |  |
| P0.RIP.110 |  | Demo Site Features/Misc Utility Relocates - Island Infills | 15d | 2023-02-06 A | 2023-05-08 A | P0.RIP.100 | 100% | 2023-02-06 | 2023-02-24 | 120 | CIVIL | P01 | CON | PRELIM | CIVIL |  |  | ! |  |
| P0.RIP.120 |  | Grading & Drainage Work - Island Infills | 4d | 2023-03-16 A | 2023-05-15 A | P0.RIP.110 | 100% | 2023-03-16 | 2023-03-21 | 32 | HP | P01 | CON | PRELIM | HP |  |  | T.MEP.UTIL |  |
| P0.RIP.130 |  | Subgrade, Base Aggregate Course | 4d | 2023-05-08 A | 2023-05-11 A | P0.RIP.120 SS+8d | 100% |  |  | 32 | HP | P01 | CON | PRELIM | HP |  |  | Pave |  |
| P0.RIP.150 |  | Final Grading, Stablize Area | 2d | 2023-05-09 A | 2023-05-11 A | P0.RIP.120 | 100% | 2023-05-09 | 2023-05-10 | 16 | HP | P01 | CON | PRELIM | HP |  |  | T.MASSEX.CIVIL |  |
| P0.RIP.140 |  | Asphalt Paving | 4d | 2023-05-11 A | 2023-05-15 A | P0.RIP.130 SS+5d | 100% | 2023-05-11 | 2023-05-16 | 32 | HP | P01 | CON | PRELIM | HP |  |  | T.MEP.UTIL |  |
| P0.RIP.160 |  | Signage, Pavement Marking, Modify Traffic Control | 5d | 2023-05-18 A | 2023-06-07 A | P0.RIP.140 | 100% | 2023-05-18 | 2023-05-24 | 40 | UTIL | P01 | CON | PRELIM | UTIL |  |  | ! |  |
| P0.RIP.170 |  | Install Fire Department/Shuttle Access Controls at Child Care Center (with Hard Bubble) | 8d | 2023-05-18 A | 2023-06-12 A | P0.RIP.140, P0.RIP.150 | 100% | 2023-05-18 | 2023-05-30 | 64 | CRAFT | P01 | CON | PRELIM | CRAFT |  |  |  |  |
|  | 3 | **P0 - Temporary Vehicle Inspection Facility (TVIF)** |  | 2023-01-30 | 2023-06-26 |  |  |  |  |  |  |  |  |  |  |  |  |  |  |
| P1.TVIF.100 |  | Set Up Construction Work Zone/Traffic Controls | 5d | 2023-01-30 A | 2023-01-30 A | P0.SPM.100 | 100% | 2023-01-30 | 2023-02-03 | 40 | HP | P01 | CON | PRELIM | HP |  |  | HP |  |
| P1.TVIF.110 |  | Site Prep/E&S Controls | 5d | 2023-02-13 A | 2023-02-17 A | P1.TVIF.100, FAD.P0.120 | 100% |  |  | 40 | HP | P01 | CON | PRELIM | HP |  |  | HP |  |
| P1.TVIF.120 |  | Underground Utility Services to Location (Water, Sewer, Power, Comm) | 20d | 2023-02-20 A | 2023-03-29 A | P1.TVIF.110 | 100% | 2023-02-20 | 2023-03-17 | 160 | UTIL | P01 | CON | PRELIM | UTIL |  |  | ! |  |
| P1.TVIF.140 |  | TVIF Foundations & Retaining Wall | 10d | 2023-02-22 A | 2023-03-17 A | P1.TVIF.120 SS+2d | 100% | 2023-02-22 | 2023-03-07 | 80 | STRCONC | P01 | CON | PRELIM | STRCONC |  |  | ! |  |
| P1.TVIF.150 |  | Set Guard booths | 5d | 2023-03-27 A | 2023-04-24 A | P1.TVIF.140, FAD.P0.150, FAD.P0.190 | 100% | 2023-03-27 | 2023-03-31 | 40 | CRAFT | P01 | CON | PRELIM | CRAFT |  |  |  |  |
| P1.TVIF.130 |  | Install TVIF Canopy Structure | 15d | 2023-04-24 A | 2023-05-19 A | P1.TVIF.150 | 100% | 2023-04-24 | 2023-05-12 | 120 | HP | P01 | CON | PRELIM | HP |  |  | HP |  |
| P1.TVIF.170 |  | Final Fencing/Vehicle Controls | 10d | 2023-04-27 A | 2023-05-22 A | P1.TVIF.150 | 100% | 2023-04-27 | 2023-05-10 | 80 | HP | P01 | CON | PRELIM | HP |  |  | T.SITE.LAND |  |
| P1.TVIF.160 |  | Final Fit Out & Connect Services to Facilities | 10d | 2023-05-18 A | 2023-05-25 A | P1.TVIF.130 | 100% | 2023-05-18 | 2023-06-01 | 80 | MEP | P01 | CON | PRELIM | MEP-2 |  |  |  | Harris |
| P1.TVIF.180 |  | Test/Commssion TVIF Systems | 2d | 2023-06-07 A | 2023-06-08 A | P1.TVIF.160, P1.TVIF.170 | 100% | 2023-07-03 | 2023-07-05 | 16 | MEP | P01 | CON | PRELIM | MEP-2 |  |  |  | Harris |
| P1.TVIF.190 |  | Open TVIF | 1d | 2023-06-26 A | 2023-06-26 A | P0.SUM.100 FF, P1.TVIF.180, P0.RIP.170, P0.SPM.110 | 100% | 2023-07-25 | 2023-07-25 | 8 | HP | P01 | CON | PRELIM | HP |  |  |  |  |

| ID | WBS | Activity | Type | Duration | Start | Finish | Predecessors | Complete | Planned start | Planned finish | Calendar | Init | Temp Orig Dur | Resp / SRLM | PHASE | RESP / Trade | *NIH Resp Check* | Pick #2 | CATW | SCH DEV | Z.RESP | Pick #1 | Progress Filters |
| --- | --- | --- | --- | --- | --- | --- | --- | --- | --- | --- | --- | --- | --- | --- | --- | --- | --- | --- | --- | --- | --- | --- | --- |
|  | 4 | **P0A - Temporary Emergency Egress** |  |  | 2023-03-09 | 2024-11-11 |  |  |  |  |  |  |  |  |  |  |  |  |  |  |  |  |  |
| P0.A.CRC.100 |  | NIH - Tennant Space Adjustment Notification - Emergency Egress - (From P0A.DES.160) |  | 5d | 2023-03-21 A | 2023-03-27 A | P0A.DES.120 SS | 100% |  |  |  | 0A | 40 | NIH | P01 | NIH |  |  |  |  |  |  |  |
|  | 3 | **P0A - Emergency Egress Stair 1-7 (North Egress)** |  |  | 2023-06-08 | 2024-11-11 |  |  |  |  |  |  |  |  |  |  |  |  |  |  |  |  |  |
| P0.CRC.110 |  | Ex. Stair S1-7 - Clear and Establish Exterior Egress |  | 10d | 2023-06-08 A | 2023-06-21 A | P0A.DES.210 | 100% |  |  |  |  | 80 | CRAFT | P01 | CRAFT | ! |  |  |  |  |  |  |
| P0.CRC.140 |  | Ex. Stair S1-7 - Install Temporary Egress Signage and Close Exterior Exit |  | 2.5d | 2023-07-14 A | 2023-07-17 A | P0.CRC.130 FF+1d | 100% | 2023-07-18 | 2023-07-20 |  |  | 20 | HP | P01 | HP | HP | FP |  |  |  |  |  |
| P0.CRC.120 |  | Ex. Stair S1-7 - Install Egress over Duct Support and SOE |  | 6.25d | 2023-07-24 A | 2023-08-14 A | P0.CRC.110, P1.SOE.270 | 100% | 2023-08-07 | 2023-08-15 |  |  | 50 | SOE | P01 | SOE | HP | FP |  |  |  |  |  |
| P0.CRC.150 |  | Ex. Stair S1-7 - Demo Existing Exterior Stairs |  | 2d | 2023-07-24 A | 2023-07-26 A | P0.CRC.140, P1.SOE.260 | 100% | 2023-07-24 | 2023-07-25 |  |  | 16 | DEMO.1 | P01 | DEMO.1 | ! | FP |  |  |  |  |  |
| P0.CRC.170 |  | Ex. Stair S1-7 - Install Scaffold Egress from Stair S1-7 Exterior Door |  | 5d | 2023-08-07 A | 2023-09-28 A | P0.CRC.150 | 100% | 2023-08-07 | 2023-08-11 |  |  | 40 | SOE | P01 | SOE | HP | FP |  |  |  |  |  |
| P0.CRC.130 |  | Ex. Stair S1-7 - Level 1 Stair S1-7 Reverse Interior Door Swing |  | 3d | 2023-08-24 A | 2023-08-25 A | P0.CRC.120 | 100% | 2023-07-13 | 2023-07-18 |  |  | 24 | HP | P01 | HP | T.FINISH.DFH | FP |  |  |  |  |  |
| P0.CRC.180 |  | Ex. Stair S1-7 - NIH AHJ Life Safety Inspection and Sign Off (Includes Any Needed Adjustments From Inspection) |  | 1d | 2023-09-26 A | 2023-09-28 A | P0.CRC.170 | 100% | 2023-10-03 | 2023-10-03 |  |  | 24 | FM | P01 | FM | ! | FP |  |  |  |  |  |
| P0.CRC.190 |  | Ex. Stair S1-7 - Exit to Exterior Reopened / New North Egress In Service |  | 1d | 2023-09-28 A | 2023-09-28 A | P0.SUM.120 FF, P0.CRC.180 | 100% | 2023-10-04 | 2023-10-04 |  | 0A | 8 | STAFF | P01 | STAFF |  | FP |  |  |  |  |  |
| P0.CRC.160 |  | Ex. Stair S1-7 - Patch/Repair Existing Waterproofing Systems |  | 2d | 2024-11-11 A | 2024-11-11 A | BP4.071.3.100, P0.CRC.150, P1.B2.03.430 | 100% | 2024-12-02 | 2024-12-03 |  |  | 24 | SOE | P01 | SOE | T.STRUCT.WTPF | FP |  |  |  |  |  |
|  | 2 | **P0A - Emergency Egress - Ex. Stair S3-9 (South Egress)** |  |  | 2023-03-09 | 2023-08-15 |  |  |  |  |  |  |  |  |  |  |  |  |  |  |  |  |  |
| P0.A.CRC.200 |  | Ex. Stair S3-9 - NIH Tenant Ready for Office Adjustments |  | 30d | 2023-03-09 A | 2023-04-05 A | P0.A.CRC.100 | 100% | 2023-03-09 | 2023-04-07 | 7D / SRLM | 0A | 240 | NIH | P01 | NIH |  |  |  |  |  |  |  |
| P0.A.CRC.210 |  | Ex. Stair S3-9 - Existing Building / Office Protections |  | 5d | 2023-05-22 A | 2023-05-23 A | BP3.024.3.110, PWS.P0A.100, P0.A.CRC.200 | 100% | 2023-05-22 | 2023-05-26 |  |  | 40 | CRAFT | P01 | CRAFT |  | FP |  |  |  |  |  |
| P0.A.CRC.230 |  | Ex. Stair S3-9 - Barrier Walls/Exiting Corridor/Stair |  | 10d | 2023-05-22 A | 2023-06-16 A | P0.A.CRC.220 SS+2d | 100% | 2023-05-22 | 2023-06-05 |  | 0A | 80 | CRAFT | P01 | CRAFT |  | FP | CON | PRELIM |  |  |  |
| P0.A.CRC.240 |  | Ex. Stair S3-9 - Demo Exterior Facade for South Egress Reroute |  | 5d | 2023-05-30 A | 2023-06-07 A | P0.A.CRC.230 SS+7d | 100% | 2023-05-30 | 2023-06-05 |  | 0A | 40 | DEMO.1 | P01 | DEMO.1 |  | FP |  |  |  |  |  |
| P0.A.CRC.220 |  | Ex. Stair S3-9 - MEP Adjustments |  | 5d | 2023-06-20 A | 2023-06-22 A | P0.A.CRC.210 | 100% | 2023-06-20 | 2023-06-26 |  | 0A | 40 | MEP | P01 | MEP-2 |  | FP |  |  | Harris |  |  |
| P0.A.CRC.250 |  | Ex. Stair S3-9 - Build Back Exterior Facade / Egress Door / Stair Structure / OH Protection |  | 15d | 2023-06-22 A | 2023-07-11 A | P0.A.CRC.240, FAD.P0.200 | 100% | 2023-06-22 | 2023-07-13 |  | 0A | 120 | CRAFT | P01 | CRAFT |  | FP | CON | PRELIM |  |  |  |
| P0.A.CRC.260 |  | Ex. Stair S3-9 - Adjust Existing Ex. Stair S3-9 Door Swing |  | 3d | 2023-07-12 A | 2023-07-14 A | P0.A.CRC.250 | 100% |  |  |  | 0A | 24 | DFH | P01 | DFH |  | FP |  |  |  |  |  |
| P0.A.CRC.270 |  | Ex. Stair S3-9 - Adjust Emergency Exit Signage / Life Safety Devices |  | 3d | 2023-07-12 A | 2023-07-14 A | P0.A.CRC.250 | 100% |  |  |  | 0A | 24 | ELEC | P01 | ELEC-2 |  |  |  |  |  |  |  |
| P0.A.CRC.280 |  | Ex. Stair S3-9 - NIH AHJ Life Safety Inspection and Sign Off (Includes Any Needed Adjustments From Inspection) |  | 3d | 2023-07-17 A | 2023-07-19 A | P0.A.CRC.260, P0.A.CRC.270 | 100% |  |  |  | 0A | 24 | NIH | P01 | NIH |  | FP |  |  |  |  |  |
| P0.A.CRC.290 |  | Ex. Stair S3-9 - Stair 15 Exit to Exterior Closed / New South Egress In Service | milestone | 0d | 2023-08-15 A | 2023-08-15 A | P0.SUM.120 FF, P0.A.CRC.280 | 100% |  |  |  | 0A | 40 | STAFF | P01 | STAFF |  | FP |  |  |  |  |  |
|  | 5 | **P0B - Interior Window Infills & Temporary Air Intake** |  |  | 2023-04-17 | 2023-07-29 |  |  |  |  |  |  |  |  |  |  |  |  |  |  |  |  |  |
|  | 1 | **P0B - Interior Window Infills** |  |  | 2023-04-17 | 2023-06-30 |  |  |  |  |  |  |  |  |  |  |  |  |  |  |  |  |  |
| P0.B.CRC.120 |  | Set Up Work Zones (Barrier Walls,Access Pathways) - North Elevation |  | 5d | 2023-04-17 A | 2023-04-21 A | P0B.DES.170 FF, PWS.P0B.100 | 100% |  |  |  | 0A | 40 | GYP | P01 | GYP-1 |  |  | CON | PRELIM |  |  |  |
| P0.B.CRC.140 |  | Prep & Infill Windows (Interior Work) - North Elevation |  | 15d | 2023-04-24 A | 2023-05-22 A | P0.B.CRC.120 | 100% | 2023-04-24 | 2023-05-12 |  | 0A | 120 | HP | P01 | HP |  |  | CON | PRELIM |  | No Succ | Succ! |
| P0.B.CRC.170 |  | Prep & Infill Windows (Interior Work) - West/South Elevations |  | 15d | 2023-06-12 A | 2023-06-30 A | P0.SUM.130 FF, P0.C.CRC.110 SS+5d | 100% |  |  |  | 0A | 120 | HP | P01 | HP |  |  | CON | PRELIM |  | No Succ | Succ! |

| ID | WBS | Activity | Type | Duration | Start | Finish | Predecessors | Complete | Planned start | Planned finish | Pick #1 | Progress Filters | Init | Temp Orig Dur | Resp / SRLM | PHASE | CATW | RESP / Trade | SCH DEV | Z.RESP | SRLM - Crew | *NIH Resp Check* | Testing Type |
| --- | --- | --- | --- | --- | --- | --- | --- | --- | --- | --- | --- | --- | --- | --- | --- | --- | --- | --- | --- | --- | --- | --- | --- |
|  | 2 | **P0B - Temporary Air Intake** |  |  | 2023-06-20 | 2023-07-29 |  |  |  |  |  |  |  |  |  |  |  |  |  |  |  |  |  |
| P0.B.CRC.130 |  | Frame Air Intake Structure - North Elevation |  | 7d | 2023-06-20 A | 2023-07-12 A | P0.B.CRC.110 | 100% | 2023-06-20 | 2023-06-28 | No Succ | Succ! | 0A | 56 | CRAFT | P01 | CON | CRAFT |  |  |  |  |  |
| P0.B.CRC.100 |  | Set Up Work Zones (Barrier Walls,Access Pathways) - North Elevation |  | 5d | 2023-07-03 A | 2023-07-10 A | P0B.DES.170 FF | 100% |  |  |  |  | 0A | 40 | CRAFT | P01 | CON | CRAFT | PRELIM |  |  |  |  |
| P0.B.CRC.110 |  | Prep Area for Air Intake Construction - North Elevation |  | 5d | 2023-07-11 A | 2023-07-17 A | P0.B.CRC.100 | 100% |  |  | No Succ | Succ! | 0A | 40 | CRAFT | P01 | CON | CRAFT |  |  |  |  |  |
| P0.B.CRC.150 |  | Sheath Air Intake Structure - North Elevation |  | 7d | 2023-07-12 A | 2023-07-18 A | P0.B.CRC.130 | 100% | 2023-07-12 | 2023-07-20 | No Succ | Succ! | 0A | 56 | CRAFT | P01 | CON | CRAFT |  |  |  |  |  |
| P0.B.CRC.160 |  | Waterproof and Finish Air Intake Structure - North Elevation |  | 7d | 2023-07-28 A | 2023-07-29 A | P0.SUM.150 FF, P0.B.CRC.150 | 100% | 2023-07-28 | 2023-08-07 | No Succ | Succ! | 0A | 56 | CRAFT | P01 | CON | CRAFT |  |  |  |  |  |
|  | F | **P0C - Facade Removal** |  |  | 2023-07-17 | 2024-06-21 |  |  |  |  |  |  |  |  |  |  |  |  |  |  |  |  |  |
|  | 2 | **P0C - North Elevation** |  |  | 2023-07-17 | 2023-08-16 |  |  |  |  |  |  |  |  |  |  |  |  |  |  |  |  |  |
| P0.C.CRC.100 |  | Set Up Work Zones (Barrier Walls,Access Pathways) - North Elevation |  | 5d | 2023-07-17 A | 2023-07-21 A | P0C.DES.200 FF, PWS.P0C.100 | 100% |  |  |  |  | 0A | 40 | CRAFT | P01 | CON | CRAFT | PRELIM |  |  |  |  |
| P0.C.CRC.120 |  | DcX Existing MEP along Facade to be Removed - North Elevation |  | 10d | 2023-07-19 A | 2023-08-01 A | P0.C.CRC.100 SS+2d | 100% |  |  |  |  | 0A | 80 | MEP | P01 | CON | MEP-2 |  | Harris |  |  |  |
| P0.C.CRC.130 |  | Demo Facade Brick & Precast - North Elevation |  | 10d | 2023-07-19 A | 2023-08-01 A | BP3.024.2.120, P0.B.CRC.140 SS+5d, P0.C.CRC.120 SS | 100% |  |  | No Succ | Succ! | 0A | 80 | DEMO.1 | P01 | CON | DEMO.1 | PRELIM |  |  |  |  |
| P0.C.CRC.170 |  | Demo Punch Windows - North Elevation |  | 6d | 2023-08-02 A | 2023-08-09 A | P0.C.CRC.130 | 100% |  |  |  |  | 0A | 48 | DEMO.1 | P01 |  | DEMO.1 |  |  |  |  |  |
| P0.C.CRC.180 |  | Install Exterior Weather Protection at New Exterior Enclosures - North Elevation |  | 5d | 2023-08-10 A | 2023-08-16 A | P0.C.CRC.170 | 100% |  |  |  |  | 0A | 40 | CRAFT | P01 |  | CRAFT |  |  |  |  |  |
|  | 1 | **P0C - West/South Elevation** |  |  | 2023-07-19 | 2024-06-21 |  |  |  |  |  |  |  |  |  |  |  |  |  |  |  |  |  |
| P0.C.CRC.110 |  | Set Up Work Zones (Barrier Walls,Access Pathways) - West/South Elevations |  | 10d | 2023-07-19 A | 2023-08-01 A | P0.C.CRC.100 | 100% |  |  |  |  | 0A | 80 | CRAFT | P01 | CON | CRAFT | PRELIM |  |  |  |  |
| P0.C.CRC.140 |  | DcX Existing MEP along Facade to be Removed - West/South Elevations |  | 10d | 2023-08-02 A | 2023-08-15 A | P0.C.CRC.110 SS+10d | 100% |  |  |  |  | 0A | 80 | MEP | P01 | CON | MEP-2 | PRELIM | Harris |  |  |  |
| P0.C.CRC.160 |  | Demo Facade Brick & Precast - West/South Elevations |  | 10d | 2023-08-09 A | 2023-08-22 A | P0.C.CRC.140 SS+5d, P0.B.CRC.170 SS+10d, P0.C.CRC.130 | 100% |  |  | No Succ | Succ! | 0A | 80 | DEMO.1 | P01 | CON | DEMO.1 | PRELIM |  |  |  |  |
| P0.C.CRC.190 |  | Demo Punch Windows - West/South Elevations West/South Elevations |  | 9d | 2023-08-23 A | 2023-09-04 A | P0.C.CRC.160, P0.C.CRC.170 | 100% | 2023-08-23 | 2023-09-05 |  |  |  | 72 | DEMO.1 | P01 |  | DEMO.1 |  |  |  |  |  |
| P0.C.CRC.150 |  | Construct Temporary Exterior Shaft Enclosure - Stair 15 |  | 10d | 2024-03-11 A | 2024-03-27 A | P0.C.CRC.110, P1.DEMO.2.140 | 100% | 2024-04-01 | 2024-04-12 |  |  | 0A | 80 | GYP | P01 |  | GYP-1 |  |  |  |  |  |
| P0.C.CRC.220 |  | Install Swing Stage at Ex. Stair 3-9 - West/South Elevations |  | 10d | 2024-04-01 A | 2024-04-12 A | P0.SUM.140 FF, P0.C.CRC.190, P0.C.CRC.150 | 100% | 2024-05-01 | 2024-05-14 |  |  | 0A | 40 | CRAFT | P01 |  | CRAFT |  |  |  |  |  |
| P0.C.CRC.210 |  | Demo Glass Enclosure - Ex. Stair S3-9 |  | 20d | 2024-04-15 A | 2024-06-14 A | P0.C.CRC.220 | 100% | 2024-05-15 | 2024-06-12 |  |  | 0A | 40 | GLAZ | P01 |  | GLAZ |  |  | G-Demo |  |  |
| P0.C.CRC.230 |  | Install Temp Weather Protection - West/South Elevations |  | 10d | 2024-05-20 A | 2024-06-21 A | P0.C.CRC.210 FF+5d | 100% | 2024-06-10 | 2024-06-21 |  |  | 0A | 40 | CRAFT | P01 |  | CRAFT |  |  |  |  |  |
|  | 10 | **Phase 1 - Construction** |  |  | 2022-12-22 | 2026-09-10 |  |  |  |  |  |  |  |  |  |  |  |  |  |  |  |  |  |
|  | 1 | **P1A - ACRF Garage Prep** |  |  | 2022-12-22 | 2024-06-06 |  |  |  |  |  |  |  |  |  |  |  |  |  |  |  |  |  |
|  | 4 | **P1A - Exterior Kiosk Work** |  |  | 2023-01-09 | 2024-06-06 |  |  |  |  |  |  |  |  |  |  |  |  |  |  |  |  |  |
| P1A.GARV.340 |  | Set up Work Zones - Isolation Fencing/Barriers @ Exterior Kiosk Work |  | 5d | 2023-01-09 A | 2023-01-10 A | P0.MDE.140 | 100% | 2023-01-09 | 2023-01-13 |  |  |  | 40 | CRAFT | P01 |  | CRAFT |  |  |  |  |  |
| P1A.GARV.330 |  | Cut/Cap Kiosk Utilities |  | 15d | 2023-02-20 A | 2023-03-06 A | P1A.GARV.440 | 100% | 2023-02-20 | 2023-03-10 | No Succ |  |  | 120 | MEP | P01 |  | MEP-2 | PH1BASE | Harris |  | ! |  |
| P1A.GARV.350 |  | Demo Surface Hardscapes & Install ES&C |  | 10d | 2023-02-20 A | 2023-03-06 A | P1A.GARV.340 | 100% | 2023-02-20 | 2023-03-03 |  |  |  | 80 | CIVIL | P01 |  | CIVIL |  |  |  | ! |  |
| P1A.GARV.360 |  | Demolish or Relocate Existing Exterior/Site Utilities to Remain |  | 10d | 2023-02-20 A | 2023-02-21 A | P1A.GARV.330, P1A.GARV.350 | 100% | 2023-02-20 | 2023-03-03 |  |  |  | 80 | CIVIL | P01 |  | CIVIL |  |  |  | ! |  |
| P1A.GARV.390 |  | Erect Precast / Caulk / Seal |  | 10d | 2023-08-30 A | 2023-09-18 A | BP2.034.3.110 | 100% | 2023-10-02 | 2023-10-13 |  |  |  | 40 | T | P01 |  | T |  |  |  |  |  |
| P1A.GARV.380 |  | Lay Metal Decking and Supports @ Kiosks |  | 7d | 2023-09-25 A | 2023-10-02 A | P1A.GARV.390 SS+4d, P1A.GARV.180, P1A.GARV.360 | 100% | 2023-10-06 | 2023-10-16 |  |  |  | 40 | MISC | P01 |  | MISC |  |  |  |  |  |
| P1A.GARV.400 |  | Install Roof Membrane |  | 7d | 2023-10-02 A | 2023-10-10 A | P1A.GARV.380 SS+2d | 100% | 2023-11-01 | 2023-11-09 |  |  |  | 40 | CRAFT | P01 |  | CRAFT |  |  |  |  |  |
| P1A.GARV.410 |  | Backfill Kiosks |  | 5d | 2023-10-06 A | 2023-10-11 A | BP4.071.3.110, P1A.GARV.380, P1A.GARV.400 | 100% | 2023-11-10 | 2023-11-16 |  |  |  | 80 | CIVIL | P01 |  | CIVIL |  |  |  | ! |  |
| P1A.GARV.470 |  | Louver Installation |  | 5d | 2023-10-12 A | 2023-10-30 A | P1A.GARV.310 FF | 100% | 2023-11-17 | 2023-11-27 |  |  |  |  | HP | P01 |  | HP |  |  |  |  |  |
| P1A.GARV.530 |  | Install Kiosk Metal Panels |  | 5d | 2023-10-30 A | 2023-11-13 A | P1A.GARV.470 | 100% | 2023-11-10 | 2023-11-16 |  |  |  | 80 | CIVIL | P01 |  | CIVIL |  |  |  | ! |  |
| P1A.GARV.480 |  | Temporarily Stabilize & Restore Surface Features |  | 5d | 2023-11-06 A | 2023-11-20 A | P1A.GARV.530 | 100% | 2023-11-06 | 2023-11-10 |  |  |  | 80 | CIVIL | P01 |  | CIVIL |  |  |  | ! | AT8 |
| P1A.GARV.500 |  | PHASE 1A Punchlist |  | 30d | 2023-11-15 A | 2024-06-06 A | P1A.GARV.530 FF, P1A.GARV.490 | 100% | 2023-11-13 | 2023-12-27 |  |  |  |  | HP | P01 |  | HP |  |  |  |  |  |
| P1A.GARV.510 |  | PHASE 1A Final Completion Inspection |  | 5d | 2023-11-15 A | 2024-06-06 A | P1A.GARV.500 | 100% | 2024-06-04 | 2024-06-10 |  |  |  |  | HP | P01 |  | HP |  |  |  |  |  |
| P1A.GARV.490 |  | PHASE 1A Substantial Completion & Warranty Start | milestone | 0d | 2023-11-15 A | 2023-11-15 A | P1A.GARV.480 FF, P1A.GARV.310 FF | 100% |  |  |  |  |  |  | HP | P01 |  | HP |  |  |  |  |  |
| P1A.GARV.520 |  | PHASE 1A Final Completion | milestone | 0d | 2024-06-06 A | 2024-06-06 A | P1A.GARV.510 | 100% |  |  |  |  |  |  | HP | P01 |  | HP |  |  |  |  |  |

| ID | WBS | Activity | Type | Duration | Start | Finish | Predecessors | Complete | Planned start | Planned finish | Temp Orig Dur | Resp / SRLM | PHASE | Z.RESP | RESP / Trade | CATW | SCH DEV | Posit |
| --- | --- | --- | --- | --- | --- | --- | --- | --- | --- | --- | --- | --- | --- | --- | --- | --- | --- | --- |
|  | 1 | **P1A - Interior Ventilation and Egress Work** |  |  | 2022-12-22 | 2023-10-31 |  |  |  |  |  |  |  |  |  |  |  |  |
| P1A.GARV.220 |  | Submit Outage Requests - MEPF Cut, Cap Activitites |  | 10d | 2022-12-22 A | 2023-01-06 A | P1A.DES.600 SS | 100% |  |  | 80 | MEP | P01 | Harris | MEP-2 |  |  |  |
| P1A.GARV.110 |  | Set up Work Zones - Isolation Fencing/Barriers/Exiting |  | 5d | 2023-01-09 A | 2023-01-11 A | P1.SS.T1A.120 | 100% | 2023-01-09 | 2023-01-13 | 40 | CRAFT | P01 |  | CRAFT | CON | PRELIM |  |
| P1A.GARV.099 |  | Clear MEP in Parking Garage P1 Demolition Zone - Level B3 |  | 10d | 2023-01-10 A | 2023-04-03 A | P1A.GARV.100 | 100% | 2023-01-10 | 2023-01-23 | 80 | MEP | P01 | Harris | MEP-2 | CON | PRELIM |  |
| P1A.GARV.420 |  | Clear MEP in Parking Garage P1 Demolition Zone - Level B2 |  | 10d | 2023-01-10 A | 2023-04-03 A | P1A.GARV.099 | 100% | 2023-01-10 | 2023-01-23 | 80 | MEP | P01 | Harris | MEP-2 | CON | PRELIM |  |
| P1A.GARV.430 |  | Clear MEP in Parking Garage P1 Demolition Zone - Level B1 |  | 10d | 2023-01-10 A | 2023-04-03 A | P1A.GARV.420 | 100% | 2023-01-10 | 2023-01-23 | 80 | MEP | P01 | Harris | MEP-2 | CON | PRELIM |  |
| P1A.GARV.120 |  | Construct Fire Rated Separation Construction Partitions |  | 15d | 2023-01-23 A | 2023-02-24 A | P1A.GARV.110 | 100% | 2023-01-23 | 2023-02-10 | 120 | CRAFT | P01 |  | CRAFT |  |  |  |
| P1A.GARV.100 |  | Cut/Cap Garage Utilities |  | 15d | 2023-01-25 A | 2023-04-03 A | P1A.GARV.110, P1A.GARV.440 | 100% | 2023-01-25 | 2023-02-14 | 120 | MEP | P01 | Harris | MEP-2 |  | PH1BASE |  |
| P1A.GARV.130 |  | Temporary Re-route existing Ductwork along garage wall for New Work |  | 15d | 2023-01-25 A | 2023-01-26 A | P1A.GARV.110 SS+10d, P1A.GARV.120 SS | 100% | 2023-01-25 | 2023-02-14 | 120 | MECH | P01 | Harris | MECH-2 | CON | PRELIM |  |
| P1A.GARV.440 |  | Outage Request Approved by NIH | milestone | 0d | 2023-01-25 A | 2023-01-25 A | P1A.GARV.220 FF | 100% |  |  | 0 | NIH | P01 |  | NIH |  |  |  |
| P1.GARV.120 |  | Plumbing - P1 Garage & West Wing Reconfiguation |  | 50d | 2023-02-13 A | 2023-02-18 A | P1A.GARV.110 | 100% | 2023-02-13 | 2023-04-21 | 400 | PLMB | P01 | Harris | PLMB | CON | PRELIM | Break up into shorter durations |
| P1A.GARV.140 |  | Demo Existing Walls & Structure |  | 5d | 2023-04-17 A | 2023-04-18 A | BP3.024.3.140, P1A.DES.650, P1A.GARV.100, P1A.GARV.120, P1A.DEMO.2.100 | 100% | 2023-04-17 | 2023-04-21 | 40 | DEMO.1A | P01 |  | DEMO.1A |  |  |  |
| P1A.GARV.150 |  | Saw Cut/Demo Garage Slab for Shafts |  | 10d | 2023-04-25 A | 2023-05-18 A | P1A.GARV.130 SS+5d, P1A.GARV.140 | 100% | 2023-04-25 | 2023-05-08 | 80 | CRAFT | P01 |  | CRAFT | CON | PRELIM |  |
| P1A.GARV.160 |  | Steel Supports and Grating at Shaft Openings |  | 10d | 2023-05-10 A | 2023-05-26 A | P1A.GARV.150 SS+5d | 100% | 2023-05-10 | 2023-05-23 | 80 | MISC | P01 |  | MISC |  |  |  |
| P1A.GARV.200 |  | Install Panelboard & Boxes |  | 2d | 2023-05-15 A | 2023-07-05 A | P1A.GARV.190 | 100% | 2023-05-15 | 2023-05-16 | 16 | ELEC | P01 |  | ELEC-2 |  | PH1BASE |  |
| P1A.GARV.180 |  | CMU Partitions - B3, B2, B1 Level |  | 20d | 2023-05-22 A | 2023-06-09 A | P1.GARV.120 SS+10d, P1A.GARV.160 SS+5d | 100% | 2023-05-22 | 2023-06-19 | 160 | MASON | P01 |  | MASON | CON | PRELIM |  |
| P1A.GARV.190 |  | Overhead Elec/FA Rough-in |  | 15d | 2023-05-22 A | 2023-07-14 A | P1A.GARV.180 SS | 100% | 2023-05-22 | 2023-06-12 | 120 | ELEC | P01 |  | ELEC-2 |  | PH1BASE |  |
| P1A.GARV.210 |  | R/I Pathways / Pull Wire / Elec/FA |  | 10d | 2023-06-05 A | 2023-07-29 A | P1A.GARV.200 | 100% | 2023-09-01 | 2023-09-15 | 80 | ELEC | P01 |  | ELEC-2 |  | PH1BASE |  |
| P1A.GARV.230 |  | Install New Garage Egress Stairs |  | 20d | 2023-06-05 A | 2023-06-28 A | P1A.GARV.180, BP1.055.3.300 | 100% | 2023-07-13 | 2023-08-09 | 160 | CRAFT | P01 |  | CRAFT | CON | PRELIM |  |
| P1A.GARV.240 |  | Garage Exhaust Fans - (Includes Set, Trim, and Controls) - B3, B2, B1 |  | 15d | 2023-06-12 A | 2023-06-30 A | BP1.233.3.200 | 100% | 2023-07-20 | 2023-08-09 | 120 | MECH | P01 | Harris | MECH-2 |  |  |  |
| P1A.GARV.450 |  | Fire Suppression Bulk Mains and Branches |  | 15d | 2023-06-14 A | 2023-07-12 A | P1A.GARV.180, BP1.210.0.100 | 100% | 2023-07-13 | 2023-08-02 | 120 | FP.1A | P01 |  | FP.1A |  |  |  |
| P1A.GARV.270 |  | Outage - Tie-in/Term/Test Panelboard Feeder and Panelboard |  | 3d | 2023-06-20 A | 2023-06-21 A | P1A.GARV.260 | 100% | 2023-09-12 | 2023-09-14 | 24 | ELEC | P01 |  | ELEC-2 |  | PH1BASE |  |
| P1A.GARV.460 |  | Fire Suppression Standpipes and Risers |  | 10d | 2023-07-08 A | 2023-07-14 A | P1A.GARV.250 FF, P1A.GARV.450, P1A.GARV.230 | 100% | 2023-08-10 | 2023-08-23 | 80 | FP.1A | P01 |  | FP.1A |  |  |  |
| P1A.GARV.260 |  | Trim Out Elec/FA |  | 5d | 2023-08-07 A | 2023-09-25 A | P1A.GARV.460 FF+2d, P1A.GARV.250, P1A.GARV.240, P1A.GARV.210 | 100% | 2023-09-18 | 2023-09-22 | 40 | ELEC | P01 |  | ELEC-2 |  | PH1BASE |  |
| P1A.GARV.250 |  | Block Fill and Paint CMU |  | 5d | 2023-10-02 A | 2023-10-06 A | P1A.GARV.180 | 100% | 2023-11-01 | 2023-11-07 | 40 | PAINT | P01 |  | PAINT-1 |  |  |  |
| P1A.GARV.290 |  | Fluid Applied Coatings at Shaft Walls |  | 10d | 2023-10-04 A | 2023-10-17 A | P1A.GARV.400 FF+5d, P1A.GARV.180 | 100% | 2023-11-01 | 2023-11-14 | 80 | WTPF | P01 |  | WTPF |  |  |  |
| P1A.GARV.280 |  | Test & Checkout Elec/FA |  | 5d | 2023-10-09 A | 2023-10-13 A | P1A.GARV.270 | 100% | 2023-11-08 | 2023-11-14 | 40 | ELEC | P01 |  | ELEC-2 |  | PH1BASE |  |
| P1A.GARV.300 |  | Final MEP Connections/Test/Commission |  | 5d | 2023-10-16 A | 2023-10-20 A | P1A.GARV.280 | 100% | 2023-11-15 | 2023-11-21 | 40 | MEP | P01 | Harris | MEP-2 | CON | PRELIM |  |
| P1A.GARV.320 |  | Stair Inspection/Open Stair/Close Stair B3Z.21 in Garage |  | 5d | 2023-10-24 A | 2023-10-30 A | P1A.GARV.470 FF, P1A.GARV.280 | 100% | 2023-11-16 | 2023-11-22 | 40 | NIH | P01 |  | NIH | CON | PRELIM |  |
| P1A.GARV.310 |  | New Ventilation Shafts Operational to allow for Demo of Existing Garage |  | 1d | 2023-10-31 A | 2023-10-31 A | P1.SUM.100 FF, P1A.GARV.410 FF, P1A.GARV.300, P1A.GARV.290 | 100% | 2023-11-22 | 2023-11-22 | 16 | MECH | P01 | Harris | MECH-2 | CON | PRELIM |  |

| ID | WBS | Activity | Type | Duration | Start | Finish | Predecessors | Complete | Planned start | Planned finish | Total float | Free float | Calendar | Temp Orig Dur | Resp / SRLM | PHASE | SCH DEV | RESP / Trade | Pick #1 | Posit | *NIH Resp Check* | CATW | Testing Type | Pick #2 | Z.RESP | RESP UPD |
| --- | --- | --- | --- | --- | --- | --- | --- | --- | --- | --- | --- | --- | --- | --- | --- | --- | --- | --- | --- | --- | --- | --- | --- | --- | --- | --- |
|  | 3 | **P1A - 15kV Work** |  |  | 2023-01-23 | 2023-07-06 |  |  |  |  |  |  |  |  |  |  |  |  |  |  |  |  |  |  |  |  |
| P1A.GARV.15K.100 |  | Fabricate/Deliver 15kV Cable, Terms, and Splices |  | 140d | 2023-01-23 A | 2023-04-11 A | P1A.DES.570 | 100% | 2023-01-23 | 2023-06-11 |  |  | 7D / SRLM | 1120 | ELEC | P01 | PH1BASE | ELEC-2 |  |  |  |  |  |  |  |  |
| P1A.GARV.15K.130 |  | Install Pathways for new Feeders from 59 per ED5001 |  | 10d | 2023-03-13 A | 2023-04-28 A | P1A.GARV.15K.110, P1A.GARV.099 | 100% | 2023-03-13 | 2023-03-24 |  |  |  | 80 | ELEC | P01 | PH1BASE | ELEC-2 |  |  |  |  |  |  |  |  |
| P1A.GARV.15K.140 |  | Submit Outage Requests - 15kV Work |  | 20d | 2023-03-21 A | 2023-03-24 A | P1A.GARV.15K.100 SS+80d | 100% | 2023-03-21 | 2023-04-17 |  |  |  | 160 | ELEC | P01 |  | ELEC-2 |  |  |  |  |  |  |  |  |
| P1A.GARV.15K.150 |  | NIH Review & Approve Outage Request - 15kV Work |  | 20d | 2023-03-25 A | 2023-05-01 A | P1A.GARV.15K.140 | 100% | 2023-03-27 | 2023-04-21 |  |  |  | 160 | NIH | P01 |  | NIH |  |  |  |  |  |  |  |  |
| P1A.GARV.15K.110 |  | Demo Sub 59 Feeders 60,61,70,71,80,81 from Sub 59 to EN-14 per ED5000 |  | 10d | 2023-05-01 A | 2023-05-12 A | P1A.GARV.110 | 100% |  |  |  |  |  | 80 | ELEC | P01 | PH1BASE | ELEC-2 |  |  |  |  |  |  |  |  |
| P1A.GARV.15K.160 |  | Install Sub 59 Feeders 60,61,70,71,80,81 from Sub 59 to EN-14 ED5001 |  | 5d | 2023-05-15 A | 2023-05-19 A | P1A.GARV.15K.150, P1A.GARV.15K.130, P1A.GARV.15K.100 | 100% |  |  |  |  |  | 40 | ELEC | P01 | PH1BASE | ELEC-2 |  |  |  |  |  |  |  |  |
| P1A.GARV.15K.170 |  | Term/Fireproof/Test Sub 59 Feeders 60,61,70,71,80,81 from Sub 59 to EN-14 ED5001 |  | 5d | 2023-05-22 A | 2023-05-26 A | P1A.GARV.15K.160 | 100% |  |  |  |  |  | 40 | ELEC | P01 | PH1BASE | ELEC-2 |  |  |  |  |  |  |  |  |
| P1A.GARV.15K.180 |  | Transfer loads from Sub 63 feeders 86,87,106,107,116,117 to Sub 59 Feeders 60,61,70,71,80,81 |  | 3d | 2023-05-30 A | 2023-06-08 A | P1A.GARV.15K.170 | 100% | 2023-05-30 | 2023-06-01 |  |  |  | 24 | ELEC | P01 | PH1BASE | ELEC-2 |  |  |  |  |  |  |  |  |
| P1A.GARV.15K.190 |  | Demo existing Sub 63 feeders 86,87,106,107,116,117 from EN-14 to EN-10E per ED50002 |  | 5d | 2023-06-12 A | 2023-06-15 A | P1A.GARV.15K.180 | 100% | 2023-07-07 | 2023-07-13 |  |  |  | 40 | ELEC | P01 | PH1BASE | ELEC-2 | No Succ |  |  |  |  |  |  |  |
| P1A.GARV.15K.120 |  | Demo Feeders 62, 72, 82, 73L1 (ESSEG Activity ID XX-XXXX) |  | 5d | 2023-06-19 A | 2023-07-06 A | P1A.GARV.15K.110 SS | 100% | 2023-07-03 | 2023-07-10 |  |  |  | 40 | ELEC | P01 |  | ELEC-2 |  |  |  |  |  |  |  |  |
|  | 3 | **P1 - Site Work** |  |  | 2023-06-14 | 2024-01-31 |  |  |  |  |  |  |  |  |  |  |  |  |  |  |  |  |  |  |  |  |
|  | 1 | **Site Preparations/Demolition** |  |  | 2023-06-14 | 2024-01-31 |  |  |  |  |  |  |  |  |  |  |  |  |  |  |  |  |  |  |  |  |
| P1.CIV.110 |  | Clear/Relocate Utilities for Excavation |  | 20d | 2023-06-23 A | 2023-09-06 A | P1.CIV.290 SS | 100% | 2023-07-07 | 2023-08-03 |  |  |  | 160 | CIVIL | P01 | PRELIM | CIVIL |  | Water line Relocate in MDE Seq 1 Above | T.MEP | CON |  |  |  |  |
| P1.CIV.130 |  | Install Temporary Utiltities to Serve Construction (Power, Water) |  | 20d | 2023-11-20 A | 2024-01-31 A | P1.CIV.320 FF, P1.CIV.170, PCO.185.16 | 100% | 2024-01-09 | 2024-02-05 |  |  |  | 160 | MEP | P01 | PRELIM | MEP-2 |  |  |  | CON | AT1 | FP | Harris |  |
|  | 5 | **MDE Phase 1 - Sequence of Construction** |  |  | 2023-06-14 | 2023-10-02 |  |  |  |  |  |  |  |  |  |  |  |  |  |  |  |  |  |  |  |  |
| P1.CIV.250 |  | Demo Existing Surface Features - Fences, Gates, Bollards, Etc |  | 5d | 2023-06-14 A | 2023-08-23 A | P1.CIV.290 | 100% | 2023-07-21 | 2023-07-27 |  |  |  | 40 | CIVIL | P01 |  | CIVIL |  |  | ! |  |  |  |  |  |
| P1.CIV.260 |  | Demo Playground |  | 10d | 2023-06-18 A | 2023-08-04 A | P1.CIV.250 | 100% | 2023-07-28 | 2023-08-10 |  |  |  | 80 | CIVIL | P01 |  | CIVIL | No Succ |  | ! |  |  |  |  |  |
| P1.CIV.290 |  | Install all E&SC Surface Features, Perimeter Dikes/Swales, and Sediment Basin |  | 10d | 2023-06-19 A | 2023-09-22 A | BP3.310.3.100, P1.UTL.220 SS+10d, PWS.240 | 100% | 2023-07-07 | 2023-07-20 |  |  |  | 80 | CIVIL | P01 |  | CIVIL |  |  | T.MEP.UTIL |  |  |  |  |  |
| P1.CIV.280 |  | Demo Site Surface Finishes (Asphalt, Concrete, Etc.) |  | 10d | 2023-07-21 A | 2023-10-02 A | P1.CIV.290 | 100% | 2023-07-21 | 2023-08-03 |  |  |  | 80 | CIVIL | P01 |  | CIVIL |  |  | ! |  |  |  |  |  |
| P1.CIV.300 |  | Clear, Grub & Rough Grade SRLM LOD |  | 10d | 2023-08-08 A | 2023-08-18 A | P1.CIV.250 SS+5d, P1.CIV.280 SS+5d, P1.CIV.260 FF, P0.B.CRC.160, P0.A.CRC.290, P1.TVIF.190 | 100% | 2023-07-28 | 2023-08-10 |  |  |  | 80 | CIVIL | P01 |  | CIVIL |  |  | ! |  |  | FP |  |  |
| P1.CIV.310 |  | Phase 1 Sequence Complete - Proceed to Phase 2 Sequence | milestone | 0d | 2023-08-18 A | 2023-08-18 A | P1.CIV.300 FF | 100% |  |  |  |  |  | 0 | HP | P01 |  | HP | No Succ |  | ! |  |  |  |  |  |
|  | 6 | **SIte Utilities** |  |  | 2023-05-12 | 2026-09-10 |  |  |  |  |  |  |  |  |  |  |  |  |  |  |  |  |  |  |  |  |
|  | 2 | **Water Line** |  |  | 2023-05-12 | 2026-09-10 |  |  |  |  |  |  |  |  |  |  |  |  |  |  |  |  |  |  |  |  |
| P1.UTL.220 |  | Water Main - STA. 0+00 to 2+00 |  | 20d | 2023-05-12 A | 2023-06-14 A | BP3.330.3.110, P1.BIM.WTR.50.100, P0.MDE.MOD2.150 | 100% | 2023-05-12 | 2023-06-09 |  |  |  | 160 | UTIL | P01 |  | UTIL |  | Could be 15d? Deep Shoring under existing duct banks. | ! |  |  |  |  |  |
| P1.UTL.240 |  | Water Main - STA. 2+00 to 4+80 |  | 10d | 2023-06-14 A | 2023-06-29 A | P1.UTL.220 | 100% | 2023-07-06 | 2023-07-19 |  |  |  | 80 | UTIL | P01 |  | UTIL |  |  | ! |  |  |  |  |  |
| P1.UTL.250 |  | Water - SRLM Hydrant - South (02/C-U301-PH1) |  | 5d | 2026-08-27 | 2026-09-02 | P1.BG.WP.100, P1.PED.150, P2.SITE.25 |  |  |  | 90d | 0d |  | 40 | UTIL | P01 |  | UTIL |  |  | ! |  | AT2 |  |  | TOAD |
| P1.UTL.230 |  | Water - SRLM Hydrant - North (07/C-U301-PH1) |  | 5d | 2026-09-03 | 2026-09-10 | P1.BG.WP.120, P1.UTL.250, P2.SITE.13 |  |  |  | 90d | 2d |  | 40 | UTIL | P01 |  | UTIL |  |  | ! |  | AT2 |  |  | TOAD |

| ID | WBS | Activity | Type | Duration | Start | Finish | Predecessors | Complete | Planned start | Planned finish | Total float | Free float | Temp Orig Dur | Testing Type | *NIH Resp Check* | Resp / SRLM | PHASE | RESP / Trade | 744 | RESP UPD | CATW | SCH DEV | Update Status | Pick #1 |
| --- | --- | --- | --- | --- | --- | --- | --- | --- | --- | --- | --- | --- | --- | --- | --- | --- | --- | --- | --- | --- | --- | --- | --- | --- |
|  | 3 | **Storm** |  |  | 2023-07-12 | 2026-08-26 |  |  |  |  |  |  |  |  |  |  |  |  |  |  |  |  |  |  |
| P1.UTL.260 |  | Install Temp Storm Piping and Pump Stations (SOE Tier 2 Excavation - P1.SOE.160) |  | 12d | 2023-11-20 A | 2024-01-31 A | PCO.185.56 | 100% | 2023-11-08 | 2023-11-27 |  |  | 40 | AT2 | ! | UTIL | P01 | UTIL |  |  |  |  |  |  |
| P1.UTL.430 |  | Install Temp Storm Pump Around to allow excavation/demo of Z3 existing storm (PCO 185) |  | 5d | 2023-12-07 A | 2023-12-15 A | PCO.185.66 SS+10d | 100% | 2024-01-08 | 2024-01-12 |  |  | 40 | AT2 | ! | UTIL | P01 | UTIL |  |  |  |  |  |  |
| P1.UTL.440 |  | Remove existing storm Z3 priority areas (PCO 185) |  | 5d | 2023-12-18 A | 2023-12-20 A | P1.UTL.430 | 100% | 2024-01-15 | 2024-01-19 |  |  | 40 |  | ! | UTIL | P01 | UTIL |  |  |  |  |  |  |
| P1.UTL.110 |  | New Storm Main Line Complete and In Service - ACRF Garage 18" Discharge | milestone | 0d | 2024-02-15 A | 2024-02-15 A | P1.UTL.130 FF | 100% |  |  |  |  | 0 |  | ! | UTIL | P01 | UTIL |  |  |  |  |  |  |
| P1.UTL.270 |  | Remove Temp Storm Piping and Pump Stations |  | 5d | 2024-03-15 A | 2024-03-20 A | P1.GARV.120, P1.UTL.110, P1.UTL.210 | 100% | 2025-08-01 | 2025-08-07 |  |  | 40 |  | ! | UTIL | P01 | UTIL | TOAD | TOAD |  |  |  |  |
| P1.UTL.210 |  | New Storm Main Complete and In Service - B10 Discharge | milestone | 0d | 2024-03-15 A | 2024-03-15 A | P1.UTL.160 FF, P1.PED.130 FF | 100% |  |  |  |  | 0 |  | ! | UTIL | P01 | UTIL | TOAD | TOAD |  |  |  |  |
|  | 1 | **Storm - Outside of SOE - Bldg 10 Discharge** |  |  | 2023-07-12 | 2025-02-14 |  |  |  |  |  |  |  |  |  |  |  |  |  |  |  |  |  |  |
| P1.UTL.100 |  | Storm - MH20-22 - MH20-23 - MH20-24 |  | 10d | 2023-07-12 A | 2023-08-19 A | P1.UTL.280 | 100% | 2023-07-28 | 2023-08-10 |  |  | 80 |  | ! | UTIL | P01 | UTIL |  |  | CON | PRELIM |  |  |
| P1.UTL.280 |  | Install Structures and Piping from MH20-22 to CB20-17 @ Center Dr/Bldg 10 Entrance |  | 10d | 2023-07-12 A | 2023-07-27 A | BP3.330.3.100, P1.CIV.290 SS+4d, P1.BIM.SU.50.100, BP3.330.3.120 FF+5d | 100% | 2023-07-14 | 2023-07-27 |  |  | 80 |  | ! | UTIL | P01 | UTIL |  |  |  |  |  |  |
| P1.UTL.140 |  | Storm - EX CB20-17 and RCP into SOE (to tie into MH20-19) |  | 7d | 2023-07-17 A | 2023-08-10 A | P1.UTL.180 FF+2d, P1.SUM.140 SS, P1.UTL.380 | 100% | 2023-10-02 | 2023-10-10 |  |  | 56 |  | ! | UTIL | P01 | UTIL |  |  | CON | PRELIM |  |  |
| P1.UTL.410 |  | Install Temp Storm Piping to Facilitate Demo of Existing CB20-17 to Ex Structure |  | 5d | 2023-07-25 A | 2023-08-02 A | P1.UTL.280 | 100% | 2023-07-28 | 2023-08-03 |  |  | 40 |  | ! | CIVIL | P01 | CIVIL |  |  |  |  |  |  |
| P1.UTL.180 |  | Demo Existing Storm - Ex CB20-17 to Ex Structure |  | 5d | 2023-08-02 A | 2023-08-07 A | P1.UTL.410 | 100% | 2023-08-04 | 2023-08-10 |  |  | 40 |  | ! | CIVIL | P01 | CIVIL |  |  |  |  |  |  |
| P1.UTL.160 |  | Storm - Ex CO20-21 - MH20-21 - MH20-20 - MH2019A |  | 10d | 2025-02-03 A | 2025-02-14 A | P1.BG.BF.170 | 100% | 2025-03-03 | 2025-03-14 |  |  | 80 | AT2 | ! | UTIL | P01 | UTIL |  |  | CON | PRELIM |  |  |
|  | 6 | **Storm - Inside SOE - ACRF Discharge** |  |  | 2023-11-30 | 2024-02-14 |  |  |  |  |  |  |  |  |  |  |  |  |  |  |  |  |  |  |
| P1.UTL.120 |  | Storm - MH20-24 - MH20-25 - MH20-25A - MH20-26 |  | 5d | 2023-11-30 A | 2024-01-25 A | P1.UTL.430 FF, PCO.185.56, P1.SOE.220 | 100% | 2023-11-08 | 2023-11-14 |  |  | 120 | AT2 | ! | UTIL | P01 | UTIL |  |  | CON | PRELIM |  |  |
| P1.UTL.170 |  | Storm - MH20-27 - MH20-27A - MH20-28 |  | 5d | 2024-02-07 A | 2024-02-09 A | P1.UTL.120, P1.SOE.520, P1.SOE.570 | 100% | 2024-03-01 | 2024-03-07 |  |  | 128 | AT2 | ! | UTIL | P01 | UTIL |  |  | CON | PRELIM |  |  |
| P1.UTL.130 |  | Storm - MH20-28 - MH 20-29 - Ex. Garage Discharge |  | 5d | 2024-02-10 A | 2024-02-14 A | P1.SUM.140 FF, P1.UTL.170 | 100% | 2024-03-08 | 2024-03-14 |  |  | 48 | AT2 | ! | UTIL | P01 | UTIL |  |  | CON | PRELIM |  |  |
|  | 2 | **Storm - Inside SOE - Bldg 10 Discharge** |  |  | 2023-12-14 | 2024-01-19 |  |  |  |  |  |  |  |  |  |  |  |  |  |  |  |  |  |  |
| P1.UTL.420 |  | Storm - MH20-18 - MH20-19 |  | 5d | 2023-12-14 A | 2024-01-19 A | P1.UTL.120 SS, P1.UTL.180 FF+2d, P1.UTL.140, PCO.185.56 | 100% | 2024-01-08 | 2024-01-12 |  |  | 56 | AT2 | ! | UTIL | P01 | UTIL |  |  | CON | PRELIM |  |  |
|  | 4 | **Storm - Catch Basin CB20-24 to MB-1 Outfall** |  |  | 2026-04-01 | 2026-04-21 |  |  |  |  |  |  |  |  |  |  |  |  |  |  |  |  |  |  |
| P1.UTL.300 |  | Storm - CB20-24 - CB20-23 - CB20-22 - CB20-21 |  | 5d | 2026-04-01 | 2026-04-07 | P1.UTL.270, P1.BGS.300 |  |  |  | 68d | 0d | 40 | AT2 | ! | UTIL | P01 | UTIL |  | TOAD |  |  | O |  |
| P1.UTL.360 |  | Storm - CB20-21 - CB20-20 - MB1 Outfall |  | 5d | 2026-04-08 | 2026-04-14 | P1.UTL.300 |  |  |  | 68d | 0d | 40 | AT2 | ! | UTIL | P01 | UTIL |  | TOAD |  |  | O |  |
| P1.UTL.290 |  | Storm - Trench Drain TD20-20 |  | 5d | 2026-04-15 | 2026-04-21 | P1.UTL.360 |  |  |  | 68d | 21d | 40 | AT2 | ! | UTIL | P01 | UTIL |  | TOAD |  |  | O | No Succ |

Notes:
- P1.UTL.100: Posit: 16'd
- P1.UTL.280: Posit: (Night work?) Before Valet Lot Closed. Outside LOD need E&SC?
- P1.UTL.140: Posit: 16'/d
- P1.UTL.160: Posit: 16'/d
- P1.UTL.120: Posit: 16'/d
- P1.UTL.170: Posit: 8'/d
- P1.UTL.130: Posit: 16'/d
- P1.UTL.420: Posit: 16'/d

| ID | WBS | Activity | Type | Duration | Start | Finish | Predecessors | Complete | Planned start | Planned finish | Total float | Free float | Temp Orig Dur | Testing Type | *NIH Resp Check* | Resp / SRLM | PHASE | RESP UPD | RESP / Trade | Pick #1 | Z.RESP |
| --- | --- | --- | --- | --- | --- | --- | --- | --- | --- | --- | --- | --- | --- | --- | --- | --- | --- | --- | --- | --- | --- |
|  | 5 | **Storm - Micro-Basin Drains** |  |  | 2026-06-05 | 2026-08-26 |  |  |  |  |  |  |  |  |  |  |  |  |  |  |  |
| P1.UTL.310 |  | Storm - MB20-22A - MB20-22 - MH20-22 |  | 5d | 2026-06-05 | 2026-06-11 | P1.BG.SD.150, P2.SITE.64, P2.SITE.6 |  |  |  | 83d | 0d | 40 | AT2 | ! | UTIL | P01 | TOAD | UTIL |  |  |
| P1.UTL.320 |  | Storm - MB20-24 - MH20-24 |  | 5d | 2026-06-12 | 2026-06-18 | P1.UTL.310, P2.SITE.124 |  |  |  | 163d | 0d | 40 | AT2 | ! | UTIL | P01 | TOAD | UTIL |  |  |
| P1.UTL.330 |  | Storm - MB20-25 - MH20-25 |  | 5d | 2026-06-19 | 2026-06-25 | P2.SITE.174, P1.UTL.320 |  |  |  | 163d | 17d | 40 | AT2 | ! | UTIL | P01 | TOAD | UTIL |  |  |
| P1.UTL.340 |  | Storm - MB20-26 - MH20-26 |  | 5d | 2026-08-06 | 2026-08-12 | P2.SITE.274, P1.UTL.330 |  |  |  | 135d | 0d | 40 | AT2 | ! | UTIL | P01 | TOAD | UTIL |  |  |
| P1.UTL.350 |  | Storm - TD20-27 - MH20-27A |  | 5d | 2026-08-13 | 2026-08-19 | P2.SITE.224, P1.UTL.340 |  |  |  | 135d | 0d | 40 | AT2 | ! | UTIL | P01 | TOAD | UTIL |  |  |
| P1.UTL.370 |  | Storm - CB10-11 - CB10-12 |  | 5d | 2026-08-20 | 2026-08-26 | P1.UTL.350 |  |  |  | 135d | 0d | 40 | AT2 | ! | UTIL | P01 | TOAD | UTIL | No Succ |  |
|  | 4 | **Sanitary** |  |  | 2023-07-10 | 2023-07-31 |  |  |  |  |  |  |  |  |  |  |  |  |  |  |  |
| P1.UTL.380 |  | Sanitary - Tunnel Discharge - SS-120 - SS-110 - EX-100 |  | 5d | 2023-07-10 A | 2023-07-31 A | BP3.330.3.100, P1.BIM.SU.50.100, BP3.330.3.120 FF+5d, P1.MDE.130 | 100% | 2023-07-21 | 2023-07-27 |  |  | 40 | AT2 | ! | UTIL | P01 |  | UTIL |  |  |
|  | 1 | **Natural Gas** |  |  | 2024-08-01 | 2024-08-07 |  |  |  |  |  |  |  |  |  |  |  |  |  |  |  |
| P1.UTL.390 |  | Natural Gas - Sleave & Connection at Gas Main to Building @ B2 South |  | 5d | 2024-08-01 A | 2024-08-07 A | P1.BG.WP.100 SS | 100% | 2024-09-24 | 2024-09-30 |  |  | 40 | AT2 |  | PLMB | P01 |  | PLMB |  | Harris |
|  | 5 | **Electrical Duct Banks** |  |  | 2024-11-11 | 2024-11-19 |  |  |  |  |  |  |  |  |  |  |  |  |  |  |  |
| P1.UTL.400 |  | Duct Bank - MH EN-10E to STUB-ELEC-1 (B1 Level) |  | 10d | 2024-11-11 A | 2024-11-19 A | P1.B2.03.150, BP1.260.3.130, P1.BG.WP.110 | 100% | 2024-12-02 | 2024-12-13 |  |  | 80 | AT9 |  | ELEC | P01 |  | ELEC-2 |  |  |
|  | 9 | **Support of Excavation - Mass Ex** |  |  | 2023-07-13 | 2024-09-26 |  |  |  |  |  |  |  |  |  |  |  |  |  |  |  |
|  | 7 | **PCO185 - Asbestos Contaminated Soils Remediation** |  |  | 2023-10-03 | 2024-09-26 |  |  |  |  |  |  |  |  |  |  |  |  |  |  |  |
| PCO.185.01 |  | ACM Telecom Ductbank Discovered In Tier 2 Excavation |  | 1d | 2023-10-03 A | 2023-10-03 A | P1.SOE.160 SS | 100% |  |  |  |  |  |  |  | NIH |  |  | NIH |  |  |
| PCO.185.02 |  | ACM Ductbank Barriacaded by NIH DEP (3d Enviro) |  | 1d | 2023-10-04 A | 2023-10-04 A | PCO.185.01 | 100% |  |  |  |  |  |  |  | NIH |  |  | NIH |  |  |
| PCO.185.03 |  | Excavation Continues in Non Impacted Areas |  | 3d | 2023-10-05 A | 2023-10-09 A | PCO.185.02 | 100% |  |  |  |  |  |  |  | NIH |  |  | NIH |  |  |
| PCO.185.04 |  | Petroleum Odor & Concrete Like Mtrl Encountered In Excavation |  | 1d | 2023-10-10 A | 2023-10-10 A | P1.SOE.160, P1.SOE.130, PCO.185.03 | 100% |  |  |  |  |  |  |  | NIH |  |  | NIH |  |  |
| PCO.185.05 |  | NIH DEP (3d Enviro) Takes Samples of Soil and Concrete Like Material |  | 1d | 2023-10-10 A | 2023-10-10 A | PCO.185.03 | 100% |  |  |  |  |  |  |  | NIH |  |  | NIH |  |  |
| PCO.185.06 |  | NIH DEP (3d Enviro) Barricades area where samples taken. |  | 1d | 2023-10-11 A | 2023-10-11 A | PCO.185.04, PCO.185.05 | 100% |  |  |  |  |  |  |  | NIH |  |  | NIH |  |  |
| PCO.185.07 |  | NIH Issues Stop Work Notice for SOE Area where Asbestos and Petroleum Discovered |  | 1d | 2023-10-12 A | 2023-10-12 A | PCO.185.06 | 100% |  |  |  |  |  |  |  | NIH |  |  | NIH |  |  |
| PCO.185.08 |  | NIH Stop Work Order In Effect Until 10/16/2023 |  | 2d | 2023-10-13 A | 2023-10-16 A | PCO.185.07 | 100% |  |  |  |  |  |  |  | NIH |  |  | NIH |  |  |
| PCO.185.09 |  | NIH Allows Access to Job on North & HP Conducts ACM Awareness For All Trades |  | 2d | 2023-10-17 A | 2023-10-18 A | PCO.185.08 | 100% |  |  |  |  |  |  |  | NIH |  |  | NIH |  |  |
| PCO.185.10 |  | Site Closed for Testing & NIH Recieved Results For Other ACM Containing Areas Stop Work Issued on South Side |  | 2d | 2023-10-19 A | 2023-10-20 A | PCO.185.09 | 100% |  |  |  |  |  |  |  | NIH |  |  | NIH |  |  |
| PCO.185.11 |  | Abatement Work Plan Development & Approval |  | 7d | 2023-10-23 A | 2023-10-31 A | PCO.185.10 | 100% |  |  |  |  |  |  |  | NIH |  |  | NIH |  |  |
| PCO.185.12 |  | DEP/3D Start Abatement | milestone | 0d | 2023-11-01 A | 2023-11-01 A | PCO.185.11 | 100% |  |  |  |  |  |  |  | NIH |  |  | NIH |  |  |
| PCO.185.26 |  | Abatement Duration - For Priority Areas 1-3 (North) |  | 3d | 2023-11-01 A | 2023-11-06 A | PCO.185.12 SS | 100% | 2023-11-01 | 2023-11-03 |  |  |  |  |  | NIH |  |  | NIH |  |  |
| PCO.185.36 |  | Air Sampling & Testing Post Abatement For Priority Areas 1-3 (North) |  | 3d | 2023-11-02 A | 2023-11-07 A | PCO.185.26 SS+1d | 100% | 2023-11-02 | 2023-11-06 |  |  |  |  |  | NIH |  |  | NIH |  |  |
| PCO.185.13 |  | Projected Abatement Duration - For Priority Areas 4 (South) |  | 10d | 2023-11-06 A | 2023-11-15 A | PCO.185.26 | 100% | 2023-11-06 | 2023-11-17 |  |  |  |  |  | NIH |  |  | NIH |  |  |
| PCO.185.14 |  | Air Sampling & Testing Post Abatement For Priority Areas 4 (South) |  | 10d | 2023-11-06 A | 2023-11-16 A | PCO.185.13 SS+1d | 100% | 2023-11-07 | 2023-11-20 |  |  |  |  |  | NIH |  |  | NIH |  |  |
| PCO.185.56 |  | Recommence Excavation For Priority Areas 1-3 (North) |  | 1d | 2023-11-07 A | 2023-11-13 A | PCO.185.46 | 100% | 2023-11-07 | 2023-11-07 |  |  |  |  |  | NIH |  |  | NIH |  |  |
| PCO.185.46 |  | Test Results Show All Clear For Priority Areas 1-3 (North) | milestone | 0d | 2023-11-07 A | 2023-11-07 A | PCO.185.36 FF | 100% |  |  |  |  |  |  |  | NIH |  |  | NIH |  |  |
| PCO.185.16 |  | Recommence Excavation For Priority Areas 4 (South) |  | 1d | 2023-11-16 A | 2023-11-20 A | PCO.185.15 | 100% | 2023-11-21 | 2023-11-21 |  |  |  |  |  | NIH |  |  | NIH |  |  |
| PCO.185.66 |  | Abatement Duration For Priority Areas 5 (South) |  | 15d | 2023-11-16 A | 2023-12-01 A | PCO.185.13 | 100% | 2023-11-20 | 2023-12-12 |  |  |  |  |  | NIH |  |  | NIH |  |  |
| PCO.185.15 |  | Test Results Show All Clear For Priority Areas 4 (South) | milestone | 0d | 2023-11-16 A | 2023-11-16 A | PCO.185.14 FF | 100% |  |  |  |  |  |  |  | NIH |  |  | NIH |  |  |
| PCO.185.76 |  | Air Sampling & Testing Post Abatement For Priority Areas 5 (South) |  | 15d | 2023-11-17 A | 2023-12-04 A | PCO.185.66 SS+1d | 100% | 2023-11-17 | 2023-12-11 |  |  |  |  |  | NIH |  |  | NIH |  |  |
| PCO.185.86 |  | Test Results Show All Clear For Priority Areas 5 (South) | milestone | 0d | 2023-12-04 A | 2023-12-04 A | PCO.185.76 FF | 100% |  |  |  |  |  |  |  | NIH |  |  | NIH |  |  |
| PCO.185.96 |  | Recommence Excavation For Priority Areas 5 (South) |  | 1d | 2023-12-05 A | 2023-12-05 A | PCO.185.86 | 100% | 2024-01-04 | 2024-01-04 |  |  |  |  |  | NIH |  |  | NIH |  |  |
| PCO.185.106 |  | Abatement Duration For Priority Areas 6 (South-Demo) |  | 3d | 2023-12-06 A | 2023-12-08 A | P1.SOE.580 | 100% | 2024-01-12 | 2024-01-16 |  |  |  |  |  | NIH |  |  | NIH |  |  |
| PCO.185.116 |  | Air Sampling & Testing Post Abatement For Priority Areas 6 (South-Demo) |  | 3d | 2023-12-06 A | 2023-12-11 A | PCO.185.106 SS+1d | 100% | 2024-01-15 | 2024-01-17 |  |  |  |  |  | NIH |  |  | NIH |  |  |
| PCO.185.126 |  | Test Results Show All Clear For Priority Areas 6 (South-Demo) | milestone | 0d | 2023-12-11 A | 2023-12-11 A | PCO.185.116 FF | 100% |  |  |  |  |  |  |  | NIH |  |  | NIH |  |  |
| PCO.185.136 |  | Recommence Excavation For Priority Areas 6 (South-Demo) |  | 1d | 2023-12-12 A | 2023-12-12 A | PCO.185.126 | 100% | 2024-01-18 | 2024-01-18 |  |  |  |  |  | NIH |  |  | NIH |  |  |
| PCO.185.146 |  | Issued MOD for PCO 185 - 45 Calendar Day Extension | milestone | 0d | 2024-09-26 A | 2024-09-26 A | PCO.185.136 FF | 100% |  |  |  |  |  |  |  | NIH |  |  | NIH |  |  |

Notes:
- P1.UTL.310: Posit: Goes in with Micro Basins - Site Finishes prior to Anti-Ram Walls
- P1.UTL.320: Posit: Goes in with Micro Basins - Site Finishes prior to Anti-Ram Walls
- P1.UTL.330: Posit: Goes in with Micro Basins - Site Finishes prior to Anti-Ram Walls
- P1.UTL.340: Posit: Goes in with Micro Basins - Site Finishes prior to Anti-Ram Walls
- P1.UTL.350: Posit: Goes in with Micro Basins - Site Finishes prior to Anti-Ram Walls
- P1.UTL.380: Posit: SS-120 to EX-100 before storm if possible. Tunnel before tunnel slab
- P1.UTL.400: Posit: After Utility Tunnel

| ID | WBS | Activity | Duration | Start | Finish | Predecessors | Complete | Planned start | Planned finish | Temp Orig Dur | Pick #2 | *NIH Resp Check* | Resp / SRLM | PHASE | CATW | SCH DEV | RESP / Trade | Testing Type | Posit |
| --- | --- | --- | --- | --- | --- | --- | --- | --- | --- | --- | --- | --- | --- | --- | --- | --- | --- | --- | --- |
|  | 6 | **Emergency Duct Bank Support** |  | 2023-07-13 | 2023-12-09 |  |  |  |  |  |  |  |  |  |  |  |  |  |  |
| P1.SOE.260 |  | Selective Excavation @ Emergency Duct Bank Support Area and PH 0A Emergency Egress Paths | 5d | 2023-07-13 A | 2023-07-21 A | P1.SOE.250 | 100% | 2023-07-13 | 2023-07-19 | 40 | FP | ! | CIVIL | P01 | CON | PRELIM | CIVIL |  |  |
| P1.SOE.250 |  | Soldier Piles @ Emergency Duct Bank Support Area and PH 0A Emergency Egress Paths | 3d | 2023-07-24 A | 2023-07-26 A | BP3.315.3.100, P1.CIV.290 | 100% |  |  | 24 | FP |  | SOE | P01 | CON | PRELIM | SOE |  |  |
| P1.SOE.270 |  | Install Emergency Duct Bank Support Steel | 15d | 2023-07-26 A | 2023-08-18 A | P1.SOE.260 SS+10d | 100% | 2023-07-26 | 2023-08-15 | 120 | FP | ! | ACP | P01 | CON | PRELIM | ACP |  |  |
| P1.SOE.280 |  | Excavate/Lag - Tiers 2-5 @ Emergency Duct Bank Support Area and PH 0A Emergency Egress Paths | 10d | 2023-08-19 A | 2023-10-31 A | P1.CIV.170 SS+5d, P0.CRC.190 FF | 100% | 2023-09-01 | 2023-09-15 | 80 | FP |  | MASS EX | P01 | CON |  | MASS EX |  |  |
| P1.SOE.530 |  | Complete Post ACM Excavate/Lag - Tiers 2-5 @ Emergency Duct Bank Support Area and PH 0A Emergency Egress Paths | 2d | 2023-11-10 A | 2023-12-01 A | P1.CIV.170 SS+5d, P0.CRC.190 FF, P1.CIV.320, P1.SOE.280, PCO.185.56 | 100% | 2024-01-26 | 2024-01-29 | 80 | FP |  | MASS EX | P01 | CON |  | MASS EX | AT5 |  |
| P1.SOE.490 |  | Underpinning - Existing Building @ Emergency Duct Bank Support Area and PH 0A Emergency Egress Paths | 10d | 2023-11-24 A | 2023-12-09 A | P1.SOE.280 SS+5d, P1.SOE.530 SS+5d | 100% | 2024-02-02 | 2024-02-15 | 80 |  | ! | SOE | P01 | CON | PRELIM | SOE | AT7 |  |
|  | 2 | **Tier 1 (Elev. 345' - 340')** |  | 2023-07-20 | 2023-12-11 |  |  |  |  |  |  |  |  |  |  |  |  |  |  |
| P1.SOE.120 |  | Install SOE Soldier Piles | 19d | 2023-07-20 A | 2023-09-29 A | P1.CIV.310, P1.UTL.240, P1.SOE.250 | 100% | 2023-09-07 | 2023-10-03 | 152 |  |  | SOE | P01 | CON |  | SOE |  |  |
| P1.SOE.130 |  | Excavate/Lag - Tier 1 | 10d | 2023-08-14 A | 2023-10-09 A | P1.SOE.120 SS+3d, P1.UTL.180, P1.UTL.100, P1.CIV.110, P1.UTL.380 | 100% | 2023-09-22 | 2023-10-05 | 80 |  |  | MASS EX | P01 |  |  | MASS EX |  | Assuming +/-750 CY/D |
| P1.SOE.500 |  | Complete Post Asbestos Abatement Excavate/Lag - Tier 1 - Priority Area 4 | 3d | 2023-11-20 A | 2023-11-22 A | PCO.185.16 | 100% | 2023-11-22 | 2023-11-28 | 80 |  |  | MASS EX | P01 |  |  | MASS EX | AT5 | Assuming +/-750 CY/D |
| P1.SOE.540 |  | Complete Post Asbestos Abatement Excavate/Lag - Tier 1 - Priority Area 5 | 3d | 2023-12-06 A | 2023-12-11 A | PCO.185.96 | 100% | 2024-01-05 | 2024-01-09 | 80 |  |  | MASS EX | P01 |  |  | MASS EX | AT5 | Assuming +/-750 CY/D |
|  | 4 | **Tier 2 (Elev. 340' - 335')** |  | 2023-09-21 | 2023-12-27 |  |  |  |  |  |  |  |  |  |  |  |  |  |  |
| P1.SOE.160 |  | Excavate/Lag - Tier 2 | 10d | 2023-09-21 A | 2023-10-09 A | P1.UTL.100 | 100% | 2023-10-09 | 2023-10-20 | 80 |  | ! | CIVIL | P01 |  |  | CIVIL |  | Assuming +/-750 CY/D |
| P1.SOE.150 |  | Tieback - Sector Z2 - Tier 2 | 5d | 2023-09-27 A | 2023-09-29 A | P1.SOE.160 SS+5d | 100% | 2023-10-26 | 2023-11-01 | 40 |  | ! | SOE | P01 |  |  | SOE |  |  |
| P1.UTL.190 |  | Demo Elec Duct Banks from ACRF Garage to EN10/11 | 5d | 2023-10-05 A | 2023-10-09 A | P1A.GARV.15K.190, P1A.GARV.15K.120 | 100% | 2023-11-01 | 2023-11-07 | 40 |  | ! | CIVIL | P01 |  |  | CIVIL |  |  |
| P1.SOE.380 |  | Tieback - Sector Z3 - Tier 2 | 5d | 2023-10-09 A | 2023-10-26 A | P1.UTL.180, P1.SOE.150, P1.UTL.380 | 100% | 2023-11-09 | 2023-11-15 | 40 |  | ! | SOE | P01 |  |  | SOE |  |  |
| P1.UTL.200 |  | Complete Demo Elec Duct Banks from ACRF Garage to EN10/11 | 10d | 2023-11-20 A | 2023-12-14 A | P1.SOE.510, P1.UTL.190 | 100% | 2023-12-06 | 2023-12-19 |  |  |  | ELEC |  |  |  | ELEC |  |  |
| P1.SOE.170 |  | Tieback - Sector Z1 - Tier 2 | 5d | 2023-11-21 A | 2023-12-27 A | P1.SOE.510 | 100% | 2023-12-06 | 2023-12-12 | 40 |  | ! | SOE | P01 |  |  | SOE | AT6 |  |
| P1.SOE.510 |  | Complete Post Asbestos Abatement Excavate/Lag - Tier 2 - Priority Area 4 | 5d | 2023-11-27 A | 2023-11-30 A | P1.SOE.500 | 100% | 2023-11-29 | 2023-12-05 | 80 |  |  | MASS EX | P01 |  |  | MASS EX | AT5 | Assuming +/-750 CY/D |
| P1.SOE.580 |  | Support SW Ductbank Inside Excavation (Was incidental to Excavation prior to PCO-185) | 10d | 2023-11-29 A | 2023-12-20 A | P1.SOE.510 | 100% | 2023-12-06 | 2023-12-19 | 80 |  |  | MASS EX | P01 |  |  | MASS EX |  | Assuming +/-750 CY/D |
| P1.SOE.550 |  | Complete Post Asbestos Abatement Excavate/Lag - Tier 2 - Priority Area 5 | 9d | 2023-12-07 A | 2023-12-19 A | P1.SOE.540 | 100% | 2024-01-10 | 2024-01-22 | 80 |  |  | MASS EX | P01 |  |  | MASS EX | AT5 | Assuming +/-750 CY/D |
|  | 1 | **Tier 3 (Elev. 335' - 330')** |  | 2023-10-04 | 2023-12-28 |  |  |  |  |  |  |  |  |  |  |  |  |  |  |
| P1.CIV.170 |  | Demo Tunnel Structure and Piping during Tier 3 Excavation | 10d | 2023-10-04 A | 2023-10-31 A | P1.CIV.230 | 100% | 2023-11-01 | 2023-11-14 | 80 |  | ! | DEMO.1 | P01 | CON | PRELIM | DEMO.1 |  |  |
| P1.SOE.200 |  | Excavate/Lag - Tier 3 | 10d | 2023-10-12 A | 2023-10-26 A | P1.SOE.150 FF+2d, P1.SOE.380 FF+2d, P1.CIV.170 FF, P1.UTL.190 FF | 100% | 2023-11-08 | 2023-11-21 | 80 |  | ! | CIVIL | P01 |  |  | CIVIL |  | Assuming +/-750 CY/D |
| P1.SOE.560 |  | Complete Post Asbestos Abatement Excavate/Lag - Tier 3 - Priority Area 5 | 5d | 2023-12-07 A | 2023-12-19 A | P1.SOE.550 | 100% | 2024-01-17 | 2024-01-23 |  |  |  | DEMO.1A |  |  |  | DEMO.1A | AT5 |  |
| P1.SOE.210 |  | Complete Post Asbestos Abatement Excavate/Lag - Tier 3 - Priority Area 4 | 5d | 2023-12-13 A | 2023-12-15 A | P1.UTL.260 SS+5d, P1.SOE.170 FF+2d, P1.SOE.200, P1.UTL.200, P1.SOE.580 | 100% | 2024-01-12 | 2024-01-18 |  |  |  | DEMO.1A |  |  |  | DEMO.1A | AT5 |  |
| P1.CIV.320 |  | Complete Post Asbestos Abatement Demo Tunnel Structure and Piping during Tier 3 Excavation | 8d | 2023-12-15 A | 2023-12-28 A | P1.CIV.170, P1.SOE.510, P1.SOE.550 | 100% | 2024-01-17 | 2024-01-26 | 80 |  | ! | DEMO.1 | P01 | CON | PRELIM | DEMO.1 |  |  |

| ID | WBS | Activity | Duration | Start | Finish | Predecessors | Complete | Planned start | Planned finish | Posit | Temp Orig Dur | *NIH Resp Check* | Resp / SRLM | PHASE | RESP / Trade | Testing Type | Pick #2 | CATW | SCH DEV | Pick | Pick #1 |
| --- | --- | --- | --- | --- | --- | --- | --- | --- | --- | --- | --- | --- | --- | --- | --- | --- | --- | --- | --- | --- | --- |
|  | 5 | **Tier 4 (Elev. 330' - 325')** |  | 2023-10-26 | 2024-01-31 |  |  |  |  |  |  |  |  |  |  |  |  |  |  |  |  |
| P1.SOE.220 |  | Excavate/Lag - Tier 4 | 10d | 2023-10-26 A | 2023-10-31 A | P1.SOE.200 | 100% | 2023-11-22 | 2023-12-07 | Assuming +/-750 CY/D | 80 | ! | CIVIL | P01 | CIVIL |  |  |  |  |  |  |
| P1.SOE.520 |  | Complete Post Asbestos Abatement Excavate/Lag - Tier 4 - Priority Area 4 | 5d | 2023-12-27 A | 2024-01-31 A | P1.SOE.210, P1.SOE.220 | 100% | 2024-01-19 | 2024-01-25 | Assuming +/-750 CY/D | 80 | ! | CIVIL | P01 | CIVIL | AT5 |  |  |  |  |  |
| P1.SOE.570 |  | Complete Post Asbestos Abatement Excavate/Lag - Tier 4 - Priority Area 5 | 5d | 2023-12-28 A | 2024-01-24 A | P1.SOE.560, P1.SOE.220 | 100% | 2024-01-24 | 2024-01-30 | Assuming +/-750 CY/D | 80 | ! | CIVIL | P01 | CIVIL | AT5 |  |  |  |  |  |
|  | 3 | **Tier 5 (Elev. 325' to 322' Subgrade)** |  | 2024-01-15 | 2024-03-13 |  |  |  |  |  |  |  |  |  |  |  |  |  |  |  |  |
| P1.SOE.390 |  | Excavate/Lag - Tier 5 to Subgrade | 3d | 2024-01-15 A | 2024-01-31 A | P1.SOE.530, P1.SOE.520, P1.SOE.570 | 100% | 2024-02-07 | 2024-02-09 | Assuming +/-750 CY/D | 24 | ! | CIVIL | P01 | CIVIL | AT5 | FP |  |  |  |  |
| P1.UTL.150 |  | Demo Existing Deep Storm and Sanitary within Excavation | 5d | 2024-02-15 A | 2024-02-16 A | P1.UTL.130, P1.UTL.260 | 100% | 2024-03-15 | 2024-03-21 |  | 40 | ! | CIVIL | P01 | CIVIL |  |  | CON | PRELIM |  |  |
| P1.SOE.440 |  | Backfill and Restore Subgrade | 5d | 2024-02-19 A | 2024-03-06 A | P1.SUM.120 FF, P1.UTL.150 | 100% | 2024-03-22 | 2024-03-28 |  | 40 | ! | CIVIL | P01 | CIVIL | AT8 |  |  |  |  |  |
| P1.SOE.330 |  | Underpinning - Existing Building | 10d | 2024-02-26 A | 2024-03-13 A | P1.CIV.320, P1.SOE.520 | 100% | 2024-03-01 | 2024-03-14 |  | 80 | ! | CIVIL | P01 | CIVIL | AT7 |  | CON | PRELIM |  |  |
| P1.SOE.460 |  | Pull North Excavation Ramp | 5d | 2024-02-27 A | 2024-02-28 A | P1.SOE.390 | 100% | 2024-03-01 | 2024-03-07 |  | 40 | ! | CIVIL | P01 | CIVIL |  |  | CON | PRELIM |  |  |
| P1.SOE.430 |  | Detailed Excavation Clean Up & Turnover | 5d | 2024-02-29 A | 2024-03-06 A | P1.UTL.150 SS, P1.SOE.440 FF, P1.SOE.490, P1.SOE.460 | 100% | 2024-03-15 | 2024-03-21 |  | 40 | ! | CIVIL | P01 | CIVIL |  |  | CON | PRELIM |  |  |
|  | 2 | **Demolition** |  | 2023-12-13 | 2024-01-25 |  |  |  |  |  |  |  |  |  |  |  |  |  |  |  |  |
|  | 2 | **ACRF Garage - Demo** |  | 2023-12-13 | 2024-01-25 |  |  |  |  |  |  |  |  |  |  |  |  |  |  |  |  |
| P1.DMO.ACRF.100 |  | Demo - MEP Systems - All Levels | 15d | 2023-12-13 A | 2024-01-25 A | P1.DMO.ACRF.120 SS, P1.DES.420, P1.UTL.260 FF+2d, P1A.GARV.310 FF, P1.DEMO.2.110 | 100% | 2024-01-02 | 2024-01-22 |  | 40 |  | DEMO.1 | P01 | DEMO.1 |  |  |  |  | * |  |
| P1.DMO.ACRF.120 |  | Demo - P1 Level Structure (Reduced by 2 work days due to PCO 185) | 8d | 2023-12-13 A | 2023-12-20 A | BP3.024.3.100, P1A.GARV.430, P1A.GARV.320, P1.SOE.510 | 100% | 2024-01-02 | 2024-01-11 |  | 64 |  | DEMO.1 | P01 | DEMO.1 |  |  |  |  | * |  |
| P1.DMO.ACRF.130 |  | Demo - P2 Level Structure | 6d | 2023-12-21 A | 2023-12-28 A | P1.SOE.210, P1.DMO.ACRF.120, PCO.185.136 | 100% | 2024-01-12 | 2024-01-19 |  | 48 |  | DEMO.1 | P01 | DEMO.1 |  |  |  |  | * |  |
| P1.DMO.ACRF.140 |  | Demo - P3 Level Structure | 6d | 2023-12-29 A | 2024-01-10 A | P1.SOE.520, P1.DMO.ACRF.130 | 100% | 2024-02-08 | 2024-02-15 |  | 48 |  | DEMO.1 | P01 | DEMO.1 |  |  |  |  | * |  |
| P1.DMO.ACRF.150 |  | Demo - Finish Detail Demolition (Reduced by 3 work days to PCO-185 Acceleration) | 7d | 2024-01-11 A | 2024-01-25 A | P1.DMO.ACRF.100 FF, P1.DMO.ACRF.140 | 100% | 2024-02-16 | 2024-02-26 |  | 80 |  | DEMO.1 | P01 | DEMO.1 |  |  |  |  | * |  |
|  | 8 | **Structure** |  | 2023-07-20 | 2026-09-03 |  |  |  |  |  |  |  |  |  |  |  |  |  |  |  |  |
|  | 10 | **Deep Foundations, Below Grade Structure & U/G Utilities** |  | 2024-01-05 | 2026-04-14 |  |  |  |  |  |  |  |  |  |  |  |  |  |  |  |  |
|  | 2 | **Auger Cast Piles** |  | 2024-01-05 | 2024-03-07 |  |  |  |  |  |  |  |  |  |  |  |  |  |  |  |  |
| P1.B3.03.430 |  | Auger Cast Piles - B2 - Z3 - Priority Areas | 5d | 2024-01-05 A | 2024-01-18 A | P1.B2.03.005, P1.B3.02.010 | 100% | 2024-03-01 | 2024-03-07 |  | 40 |  | ACP | P01 | ACP | AT10 |  |  |  | * |  |
| P1.B2.03.960 |  | Auger Cast Piles - ***East Tower Crane Foundation*** | 3d | 2024-01-08 A | 2024-01-17 A | P1.UTL.420 SS, BP3.316.3.100, P1.UTL.440, P1.SOE.390 | 100% | 2024-02-01 | 2024-02-05 |  | 120 |  | ACP | P01 | ACP | AT10 |  |  |  | * | 1 |
| P1.B2.03.005 |  | Auger Cast Piles - ***West Tower Crane Foundation*** | 3d | 2024-01-22 A | 2024-01-25 A | P1.B2.03.960 | 100% | 2024-02-08 | 2024-02-12 |  | 120 |  | ACP | P01 | ACP | AT10 |  |  |  | * | 1 |
| P1.B2.03.010 |  | Auger Cast Piles - B2 - Z1 | 5d | 2024-01-24 A | 2024-02-01 A | P1.B3.03.010 | 100% | 2024-03-15 | 2024-03-21 |  | 120 |  | ACP | P01 | ACP | AT10 |  |  |  | * | 1 |
| P1.B2.03.030 |  | Auger Cast Piles - B2 - Z2 | 5d | 2024-01-25 A | 2024-02-29 A | P1.B2.03.010 | 100% | 2024-03-22 | 2024-03-28 |  | 120 |  | ACP | P01 | ACP | AT10 |  |  |  | * | 1 |
| P1.B3.03.010 |  | Auger Cast Piles - B3 - Z1 | 5d | 2024-01-31 A | 2024-02-14 A | P1.UTL.110 FF, P1.B3.03.430 | 100% | 2024-02-08 | 2024-02-14 |  | 40 |  | ACP | P01 | ACP | AT10 |  |  |  | * |  |
| P1.B2.03.020 |  | Auger Cast Piles - B2 - Z3 | 10d | 2024-02-15 A | 2024-03-07 A | P1.B2.03.030 FF, P1.SOE.430 FF | 100% | 2024-03-29 | 2024-04-11 |  | 120 |  | ACP | P01 | ACP | AT10 |  |  |  | * | 1 |

| ID | WBS | Activity | Type | Duration | Start | Finish | Predecessors | Complete | Planned start | Planned finish | Total float | Free float | Calendar | Resp / SRLM | PHASE | RESP / Trade | Pick | Temp Orig Dur | Testing Type | Pick #2 | CATW | SCH DEV | 744 | RESP UPD | Update Status | *NIH Resp Check* | Pick #1 | Z.RESP |
| --- | --- | --- | --- | --- | --- | --- | --- | --- | --- | --- | --- | --- | --- | --- | --- | --- | --- | --- | --- | --- | --- | --- | --- | --- | --- | --- | --- | --- |
|  | 5 | **West Tower Crane** |  |  | 2024-01-19 | 2026-04-14 |  |  |  |  |  |  |  |  |  |  |  |  |  |  |  |  |  |  |  |  |  |  |
| P1.B2.03.940 |  | Electrical - West Tower Crane Foundation |  | 3d | 2024-01-19 A | 2024-01-23 A | P1.B2.03.005 | 100% | 2024-02-13 | 2024-02-15 |  |  |  | ELEC | P01 | ELEC-2 |  |  |  |  |  |  |  |  |  |  |  |  |
| P1.B2.03.910 |  | West Tower Crane Foundation |  | 5d | 2024-01-29 A | 2024-01-31 A | P1.CIV.130, PWS.280, P1.B2.03.940 | 100% | 2024-02-16 | 2024-02-22 |  |  |  | STRCONC | P01 | STRCONC | * | 40 | AT11 | FP | CON | PRELIM |  |  |  |  |  |  |
| P1.BGS.190 |  | West Tower Crane In Operation (Structure & Precast Facade) (cal days) | level of effort | 554d | 2024-02-05 A | 2025-11-15 A | P1.BGS.270 SS | 100% | 2024-03-01 | 2025-09-05 |  |  | 7D / SRLM | TOWER | P01 | TOWER | * | 4864 |  |  | CON | PRELIM |  |  |  |  |  |  |
| P1.BGS.270 |  | Erect West Tower Crane |  | 5d | 2024-02-05 A | 2024-02-06 A | P1.B2.03.910 | 100% | 2024-03-01 | 2024-03-07 |  |  |  | TOWER | P01 | TOWER | * | 40 |  |  | CON | PRELIM |  |  |  |  |  |  |
| P1.BGS.290 |  | Deconstruct West Tower Crane |  | 0d | 2025-11-14 A | 2025-11-15 A | P1.BGS.190 FF | 100% | 2025-12-12 | 2025-12-12 |  |  |  | TOWER | P01 | TOWER | * | 40 |  |  | CON | PRELIM | JH | JH |  |  |  |  |
| P1.BGS.310 |  | FRP - Hatch - West Tower Crane |  | 5d | 2025-11-24 A | 2025-12-03 A | P1.BGS.290 | 100% | 2025-12-12 | 2025-12-18 |  |  |  | TOWER | P01 | TOWER | * | 40 |  |  | CON | PRELIM |  | JH | O |  |  |  |
| P1.BGS.320 |  | Waterproof - Hatch - West Tower Crane |  | 5d | 2026-04-01 | 2026-04-07 | P1.BGS.310 |  |  |  | 135d | 0d |  | TOWER | P01 | TOWER | * | 40 |  |  | CON | PRELIM |  | JH | O |  |  |  |
| P1.BGS.330 |  | Backfill - West Tower Crane |  | 5d | 2026-04-08 | 2026-04-14 | P1.BGS.320 |  |  |  | 135d | 46d |  | TOWER | P01 | TOWER | * | 40 |  |  | CON | PRELIM |  | JH | O |  |  |  |
|  | 3 | **East Tower Crane** |  |  | 2024-01-19 | 2025-11-17 |  |  |  |  |  |  |  |  |  |  |  |  |  |  |  |  |  |  |  |  |  |  |
| P1.B2.03.970 |  | UG Electrical - East Tower Crane Foundation |  | 3d | 2024-01-19 A | 2024-01-23 A | P1.B2.03.005 | 100% | 2024-02-13 | 2024-02-15 |  |  |  | ELEC | P01 | ELEC-2 |  |  |  |  |  |  |  |  |  |  |  |  |
| P1.B2.03.920 |  | East Tower Crane Foundation |  | 5d | 2024-01-29 A | 2024-01-31 A | P1.SOE.490, P1.B2.03.970, P1.B2.03.910 | 100% | 2024-02-23 | 2024-02-29 |  |  |  | STRCONC | P01 | STRCONC | * | 80 | AT11 | FP | CON | PRELIM |  |  |  |  |  |  |
| P1.BGS.180 |  | Erect East Tower Crane |  | 5d | 2024-02-01 A | 2024-02-05 A | P1.B2.03.920 | 100% | 2024-03-01 | 2024-03-07 |  |  |  | TOWER | P01 | TOWER | * | 40 |  | FP | CON | PRELIM |  |  |  |  |  |  |
| P1.BGS.280 |  | East Tower Crane In Operation (Structure, Precast Facade, Clearstory Glass) (cal days) | level of effort | 539d | 2024-02-01 A | 2025-11-17 A | P1.BGS.180 SS | 100% | 2024-03-01 | 2025-08-21 |  |  | 7D / SRLM | TOWER | P01 | TOWER | * | 4528 |  |  | CON | PRELIM |  |  |  |  |  |  |
| P1.BGS.300 |  | Deconstruct East Tower Crane |  | 0d | 2025-11-15 A | 2025-11-17 A | P2.MR.E.230, P1.BGS.280 FF | 100% | 2025-12-12 | 2025-12-12 |  |  |  | TOWER | P01 | TOWER | * | 40 |  | FP | CON | PRELIM |  | JH |  |  |  |  |
|  | 11 | **B3 - Foundations, SOG, Walls** |  |  | 2024-01-26 | 2024-04-30 |  |  |  |  |  |  |  |  |  |  |  |  |  |  |  |  |  |  |  |  |  |  |
| P1.B3.02.010 |  | Clean Up and Excavate - B3 - Z1 |  | 3d | 2024-01-26 A | 2024-01-31 A | P1.DMO.ACRF.150 | 100% | 2024-02-27 | 2024-02-29 |  |  |  | CIVIL | P01 | CIVIL | * | 24 |  |  |  |  |  |  |  | ! |  |  |
| P1.B3.03.110 |  | Pile Caps - Z1 / Placement # B3.1 --- (**1st PH 1 Concrete Activity) |  | 5d | 2024-02-19 A | 2024-03-12 A | BP4.030.3.100, P1.BGS.270 | 100% | 2024-03-12 | 2024-03-18 |  |  |  | STRCONC | P01 | STRCONC | * | 80 | AT11 | FP |  |  |  |  |  |  | S |  |
| P1.B3.20.010 |  | Underslab Plumbing - B3 - Z1 |  | 5d | 2024-02-22 A | 2024-03-07 A | P1.BIM.UG.50.100, P1.B2.03.030 FF | 100% | 2024-03-12 | 2024-03-18 |  |  |  | PLMB | P01 | PLMB | * | 40 | AT1 |  |  |  |  |  |  |  |  | Harris |
| P1.B3.33.010 |  | Underslab Drainage System - B3 - Z1 |  | 10d | 2024-02-22 A | 2024-03-14 A | P1.B3.03.110 FF+5d, P1.B3.20.010 FF, WEATHER.TIA1010 | 100% | 2024-03-12 | 2024-03-25 |  |  |  | PLMB | P01 | PLMB | * | 40 | AT1 |  |  |  |  |  |  |  |  | Harris |
| P1.B3.07.010 |  | Underslab Waterproofing - B3 - Z1 |  | 3d | 2024-03-15 A | 2024-03-18 A | BP4.030.3.110, P1.B3.33.010 FF+1d | 100% | 2024-04-11 | 2024-04-15 |  |  |  | WTPF | P01 | WTPF | * | 40 | AT15 |  |  |  |  |  |  |  |  |  |
| P1.B3.03.420 |  | SOG Grade Beams - Z1 / Placement # B3.1 |  | 5d | 2024-03-18 A | 2024-03-21 A | P1.B3.07.010 | 100% | 2024-04-16 | 2024-04-22 |  |  |  | STRCONC | P01 | STRCONC | * | 80 | AT11 | FP |  |  |  |  |  |  | S |  |
| P1.B3.03.120 |  | Column & Walls - Z1 / Placement # B3.2 |  | 10d | 2024-03-20 A | 2024-04-01 A | P1.B3.03.420 | 100% | 2024-04-23 | 2024-05-06 |  |  |  | STRCONC | P01 | STRCONC | * | 80 | AT12 | FP |  |  |  |  |  |  |  |  |
| P1.B3.03.210 |  | Deck Slabs - Shore & Reinforce - Z1 / Placement # B3.2 |  | 10d | 2024-04-03 A | 2024-04-11 A | P2.BIM.B3.40.100, P2.BIM.B3.40.120, P2.BIM.MEPR.30.100, P2.BIM.MEPR.40.100, P1.B3.03.120 | 100% | 2024-05-03 | 2024-05-16 |  |  |  | STRCONC | P01 | STRCONC | * | 80 | AT13 | FP |  |  |  |  |  |  | 1 |  |
| P1.B3.20.210 |  | Deck Slabs - MEP Penetrations & In-Slab Pathways - B3 - Z1 (South Mech Space) |  | 3d | 2024-04-10 A | 2024-04-15 A | P1.B3.03.210 SS+7d | 100% | 2024-05-14 | 2024-05-16 |  |  |  | MEP | P01 | MEP-2 | * | 24 |  |  |  |  |  |  |  |  | 1 | Harris |
| P1.B3.07.110 |  | Waterproofing @ Exterior Basement Walls - B3 - Z1 |  | 5d | 2024-04-11 A | 2024-04-30 A | BP4.071.3.100, P1.B3.03.120 | 100% | 2024-05-03 | 2024-05-09 |  |  |  | WTPF | P01 | WTPF | * | 40 | AT15 |  |  |  |  |  |  |  |  |  |
| P1.B3.07.120 |  | Waterproofing @ Interior Basement Walls - B3 - Z1 (South Mech Space) |  | 5d | 2024-04-11 A | 2024-04-16 A | P1.B3.03.410 | 100% | 2024-05-28 | 2024-06-03 |  |  |  | WTPF | P01 | WTPF | * | 40 | AT15 | FP |  |  |  |  |  |  |  |  |
| P1.B3.02.120 |  | Backfill Interior Basement Walls - B3 - Z1 |  | 3d | 2024-04-15 A | 2024-04-23 A | P1.B3.07.120 SS+3d, P1.B3.02.110 | 100% | 2024-05-31 | 2024-06-04 |  |  |  | CIVIL | P01 | CIVIL | * | 24 | AT8 | FP |  |  |  |  |  | ! |  |  |
| P1.B3.03.310 |  | Decks Slabs - Inspect & Place - Z1 / Placement # B3.2 |  | 2d | 2024-04-15 A | 2024-04-16 A | P1.B3.03.210, P1.B3.20.210 | 100% | 2024-05-17 | 2024-05-20 |  |  |  | STRCONC | P01 | STRCONC | * | 16 | AT14 | FP |  |  |  |  |  |  | 1 |  |
| P1.B3.03.410 |  | Decks Slabs - **CURE** - Z1 / Placement # B3.2 |  | 7d | 2024-04-16 A | 2024-04-22 A | P1.B3.03.310 | 100% | 2024-05-21 | 2024-05-27 |  |  | 7D / SRLM | CURE | P01 | CURE | * | 56 |  | FP |  |  |  |  |  |  | 1 |  |
| P1.B3.02.110 |  | Backfill Exterior Basement Walls - B3 - Z1 |  | 5d | 2024-04-25 A | 2024-04-30 A | P1.B3.07.110 | 100% | 2024-05-10 | 2024-05-16 |  |  |  | CIVIL | P01 | CIVIL | * | 40 | AT8 |  |  |  |  |  |  | ! |  |  |

| ID | WBS | Activity | Duration | Start | Finish | Predecessors | Complete | Planned start | Planned finish | Calendar | Pick #1 | Pick | Temp Orig Dur | Testing Type | Resp / SRLM | PHASE | RESP / Trade | Pick #2 | Z.RESP | *NIH Resp Check* | CATW | SCH DEV | Progress Filters | Init |
| --- | --- | --- | --- | --- | --- | --- | --- | --- | --- | --- | --- | --- | --- | --- | --- | --- | --- | --- | --- | --- | --- | --- | --- | --- |
|  | 1 | **B2 - Pile Caps, Grade Beams, Pits** |  | 2024-01-31 | 2024-06-11 |  |  |  |  |  |  |  |  |  |  |  |  |  |  |  |  |  |  |  |
| P1.B2.03.980 |  | Pile Caps & Grade Beams - Z3 (Priority) | 5d | 2024-01-31 A | 2024-02-12 A | P1.B3.03.430 | 100% | 2024-02-27 | 2024-03-04 |  | 1 | * | 120 | AT11 | STRCONC | P01 | STRCONC |  |  |  |  |  |  |  |
| P1.B2.03.110 |  | Pile Caps & Grade Beams - Z1 | 15d | 2024-02-28 A | 2024-03-11 A | P1.B3.03.110 FF, P1.SOE.330 FF, P1.B2.03.980, WEATHER.TIA1010 | 100% | 2024-03-19 | 2024-04-08 |  | 1 | * | 120 | AT11 | STRCONC | P01 | STRCONC | FP |  |  |  |  |  |  |
| P1.B2.03.130 |  | Pile Caps & Grade Beams - Z3 | 10d | 2024-03-11 A | 2024-04-01 A | P1.BGS.180, P1.B2.03.110 | 100% | 2024-04-11 | 2024-04-24 |  | 1 | * | 120 | AT11 | STRCONC | P01 | STRCONC |  |  |  |  |  |  |  |
| P1.B2.03.040 |  | Elevator Pits - Z1 | 5d | 2024-03-28 A | 2024-04-15 A | P1.B2.07.010 SS, BP1.142.1.500 | 100% | 2024-04-15 | 2024-04-19 |  | 1 | * | 40 | AT11 | STRCONC | P01 | STRCONC |  |  |  |  |  |  |  |
| P1.B2.03.120 |  | Pile Caps & Grade Beams - Z2 | 15d | 2024-03-28 A | 2024-06-11 A | P1.SUM.105 FF, P1.B2.03.130 FF, P1.B2.03.020 | 100% | 2024-04-08 | 2024-04-26 |  | 1 | * | 120 | AT11 | STRCONC | P01 | STRCONC |  |  |  |  |  |  |  |
| P1.B2.07.010 |  | Waterproofing @ Elev Pits - B2 - Z1 | 10d | 2024-03-28 A | 2024-04-16 A | P1.B2.03.110 SS+5d, BP4.071.3.100 | 100% | 2024-04-01 | 2024-04-12 |  | 1 | * | 80 | AT15 | WTPF | P01 | WTPF |  |  |  |  |  |  |  |
| P1.B2.03.050 |  | Elevator Pits - Z3 | 5d | 2024-04-22 A | 2024-04-22 A | P1.B2.03.130 SS+10d, P1.B2.07.020, P1.B2.03.040 | 100% | 2024-05-17 | 2024-05-23 |  | 1 | * | 40 | AT11 | STRCONC | P01 | STRCONC |  |  |  |  |  |  |  |
| P1.B2.07.020 |  | Waterproofing @ Elev Pits - B2 - Z3 | 2d | 2024-04-22 A | 2024-04-29 A | P1.B2.03.130 SS, P1.B2.07.010 | 100% | 2024-05-15 | 2024-05-16 |  | 1 | * | 16 | AT15 | WTPF | P01 | WTPF |  |  |  |  |  |  |  |
|  | 8 | **B2 - U/S Utilities** |  | 2024-03-27 | 2024-06-20 |  |  |  |  |  |  |  |  |  |  |  |  |  |  |  |  |  |  |  |
| P1.B2.20.030 |  | MEP - Deep Underground Plumbing - B2 - Z3 | 15d | 2024-03-27 A | 2024-05-07 A | P1.B2.03.130 FF, P1.B2.03.980 | 100% | 2024-04-08 | 2024-04-26 |  | 1 | * | 120 | AT1 | PLMB | P01 | PLMB |  | Harris |  |  |  |  |  |
| P1.B2.20.010 |  | MEP - Deep Underground Plumbing - B2 - Z1 | 12d | 2024-04-08 A | 2024-05-14 A | P1.B2.20.030 FF+5d, P1.B2.03.020, P1.B2.03.110 | 100% | 2024-05-08 | 2024-05-23 |  | 1 | * | 120 | AT1 | PLMB | P01 | PLMB | FP | Harris |  |  |  |  |  |
| P1.B2.20.140 |  | MEP - Deep Underground Electrical - B2 - Z3 | 5d | 2024-04-09 A | 2024-05-07 A | P1.B2.03.130, P1.B2.03.980 | 100% | 2024-05-01 | 2024-05-07 |  | 1 | * | 120 | AT1 | ELEC | P01 | ELEC-2 |  |  |  |  |  |  |  |
| P1.B2.20.040 |  | MEP - Deep Underground Electrical - B2 - Z1 | 12d | 2024-04-10 A | 2024-04-30 A | P1.B3.07.110 FF, P1.B2.03.020, P1.B2.03.110, P1.B3.07.110 | 100% | 2024-05-01 | 2024-05-16 |  | 1 | * | 120 | AT1 | ELEC | P01 | ELEC-2 |  |  |  |  |  |  |  |
| P1.B2.20.150 |  | MEP - Deep Underground Electrical - B2 - Z1 (After B3 Backfill) | 5d | 2024-04-17 A | 2024-04-30 A | P1.B3.02.110 | 100% | 2024-05-01 | 2024-05-07 |  | 1 | * | 120 | AT1 | ELEC | P01 | ELEC-2 |  |  |  |  |  |  |  |
| P1.B2.20.160 |  | MEP - Deep Underground Plumbing - B2 - Z1 (After B3 Backfill) | 5d | 2024-04-17 A | 2024-04-23 A | P1.B3.02.110 | 100% | 2024-05-01 | 2024-05-07 |  | 1 | * | 120 | AT1 | PLMB | P01 | PLMB | FP | Harris |  |  |  |  |  |
| P1.B2.20.180 |  | Underslab Drainage System - B2 - Z3 | 13d | 2024-04-17 A | 2024-05-14 A | P1.B2.03.120 SS+2d | 100% | 2024-05-01 | 2024-05-17 |  |  | * | 40 | AT1 | PLMB | P01 | PLMB |  | Harris |  |  |  |  |  |
| P1.B2.20.10 |  | Underslab Drainage System - B2 - Z1 | 2d | 2024-04-22 A | 2024-04-26 A | P1.B2.03.110 | 100% | 2024-05-20 | 2024-05-21 |  |  | * | 40 | AT1 | PLMB | P01 | PLMB |  | Harris |  |  |  |  |  |
| P1.B2.20.020 |  | MEP - Deep Underground Plumbing - B2 - Z2 | 10d | 2024-04-24 A | 2024-06-20 A | P1.B2.03.120 FF+3d, P1.B2.20.010 FF+3d | 100% | 2024-05-24 | 2024-06-07 |  | 1 | * | 80 | AT1 | PLMB | P01 | PLMB |  | Harris |  |  |  |  |  |
| P1.B2.20.050 |  | MEP - Deep Underground Electrical - B2 - Z2 | 15d | 2024-04-26 A | 2024-06-20 A | P1.B2.03.120 FF+3d, P1.B2.20.040 FF+3d | 100% | 2024-05-17 | 2024-06-07 |  | 1 | * | 120 | AT1 | ELEC | P01 | ELEC-2 |  |  |  |  |  |  |  |
| P1.B2.20.170 |  | Underslab Drainage System - B2 - Z2 | 8d | 2024-05-03 A | 2024-05-14 A | P1.B2.20.10, P1.B2.03.120 SS+2d | 100% | 2024-06-05 | 2024-06-14 |  |  | * | 40 | AT1 | PLMB | P01 | PLMB |  | Harris |  |  |  |  |  |
|  | 4 | **B2 to L1 - SOG, Decks, Overbuild/Topping Slabs** |  | 2024-04-22 | 2025-03-19 |  |  |  |  |  |  |  |  |  |  |  |  |  |  |  |  |  |  |  |
|  | 1 | **Z1** |  | 2024-05-01 | 2025-03-19 |  |  |  |  |  |  |  |  |  |  |  |  |  |  |  |  |  |  |  |
| P1.B2.03.210 |  | SOG - Prep & Reinforce - Z1 / Placement # B2.1 | 20d | 2024-05-01 A | 2024-05-15 A | P1.B2.07.110 FF, P1.B2.03.040 FF, P1.B3.02.120 FF, P1.B2.20.150, P1.B2.20.160 | 100% | 2024-06-03 | 2024-06-28 |  | S | * | 160 | AT16 | STRCONC | P01 | STRCONC | FP |  |  |  |  |  |  |
| P1.B2.07.110 |  | Underslab Waterproofing - Z1 / Placement # B2.1 | 5d | 2024-05-01 A | 2024-05-14 A | P1.B2.20.150, P1.B2.20.160, P1.B2.20.10 | 100% | 2024-06-03 | 2024-06-07 |  | S | * | 40 | AT15 | WTPF | P01 | WTPF | FP |  |  |  |  |  |  |
| P1.B2.03.310 |  | SOG - Inspect & Place - Z1 / Placement # B2.1 | 3d | 2024-05-02 A | 2024-05-14 A | P1.B2.03.210 FF, P1.B2.20.110 | 100% | 2024-06-26 | 2024-06-28 |  | S | * | 24 | AT17 | STRCONC | P01 | STRCONC |  |  |  |  |  |  |  |
| P1.B2.20.110 |  | MEP - Sub Slab / In Slab Pathways - Z1 / Placement # B2.1 | 10d | 2024-05-02 A | 2024-05-15 A | P1.B2.03.210 SS+5d, P2.BIM.B2.40.120 | 100% | 2024-06-10 | 2024-06-21 |  | S | * | 80 | AT1 | ELEC | P01 | ELEC-2 |  |  |  |  |  |  |  |
| P1.B2.03.410 |  | SOG - **CURE** - Z1 / Placement # B2.1 | 3d | 2024-05-03 A | 2024-05-19 A | P1.B2.03.310, WEATHER.TIA1030 | 100% | 2024-06-29 | 2024-07-01 | 7D / SRLM | S | * | 56 |  | CURE | P01 | CURE |  |  |  |  |  |  |  |
| P1.B2.XXX |  | US MEP/Fine Grade/Mudmat - Utility Tunnel - Z1 | 15d | 2024-06-12 A | 2024-06-17 A | P1.B2.03.310 SS+5d, P1.B2.03.410 SS+5d, WEATHER.TIA1030 | 100% | 2024-06-03 | 2024-06-21 |  | S | * | 120 | AT1 | MEP | P01 | MEP-2 |  | Harris | T.MEP | CON | PRELIM |  |  |
| P1.B2.03.240 |  | SOG - Prep & Reinforce - Utility Tunnel - Z1 | 15d | 2024-06-17 A | 2024-06-19 A | P1.B2.03.310 SS+5d, P1.B2.XXX SS+5d, P1.B2.03.410 SS+5d, WEATHER.TIA1030 | 100% | 2024-06-10 | 2024-06-28 |  | S | * | 120 | AT11 | STRCONC | P01 | STRCONC |  |  |  | CON | PRELIM |  |  |
| P1.B2.03.340 |  | SOG - Inspect & Place - Utility Tunnel - Z1 / Placement # B2.4 | 2d | 2024-06-20 A | 2024-06-20 A | P1.B2.03.240 | 100% | 2024-07-01 | 2024-07-02 |  | S | * | 16 | AT11 | STRCONC | P01 | STRCONC |  |  |  |  |  |  |  |
| P1.B2.03.440 |  | SOG - **CURE** - Utility Tunnel - Z1 / Placement # B2.4 | 7d | 2024-06-20 A | 2024-06-27 A | P1.B2.03.340 | 100% | 2024-07-03 | 2024-07-09 | 7D / SRLM | S | * | 56 |  | CURE | P01 | CURE |  |  |  |  |  |  |  |
| P1.B2.03.270 |  | Overbuild & Topping Slabs - B2 - Z1 | 5d | 2025-03-03 A | 2025-03-19 A | P1.1.03.610, P1.B2.03.290 | 100% | 2025-03-03 | 2025-03-07 |  | S | * | 40 | AT11 | STRCONC | P01 | STRCONC |  |  |  |  |  | Succ! | SUCC! |

| ID | WBS | Activity | Duration | Start | Finish | Predecessors | Complete | Planned start | Planned finish | Calendar | Pick #1 | Pick | Temp Orig Dur | Testing Type | Pick #2 | Resp / SRLM | PHASE | RESP / Trade | CATW | SCH DEV | *NIH Resp Check* | Z.RESP | Progress Filters | Init |
| --- | --- | --- | --- | --- | --- | --- | --- | --- | --- | --- | --- | --- | --- | --- | --- | --- | --- | --- | --- | --- | --- | --- | --- | --- |
|  | 3 | **Z2** |  | 2024-05-06 | 2024-11-13 |  |  |  |  |  |  |  |  |  |  |  |  |  |  |  |  |  |  |  |
| P1.B2.20.120 |  | MEP - Sub Slab / In Slab Pathways - Z2 / Placement # B2.2 | 10d | 2024-05-06 A | 2024-06-26 A | P1.B2.03.220 SS, P2.BIM.B2.40.120 | 100% | 2024-05-06 | 2024-05-17 |  | S | * | 80 | AT1 | FP | ELEC | P01 | ELEC-2 |  |  |  |  |  |  |
| P1.B2.03.220 |  | SOG - Prep & Reinforce - Z2 / Placement # B2.2 | 20d | 2024-05-26 A | 2024-07-04 A | P1.B2.03.210 SS+10d, P1.B2.20.020 SS+2d, P1.B2.20.050 SS+2d, P1.B2.07.120 SS | 100% | 2024-05-20 | 2024-06-17 |  | S | * | 160 | AT16 | FP | STRCONC | P01 | STRCONC |  |  |  |  |  |  |
| P1.B2.07.120 |  | Underslab Waterproofing - Z2 / Placement # B2.2 | 5d | 2024-05-29 A | 2024-06-28 A | P1.B2.20.050 FF, P1.B2.20.020 FF, P1.B2.20.170 | 100% | 2024-06-10 | 2024-06-14 |  | S | * | 40 | AT15 |  | WTPF | P01 | WTPF |  |  |  |  |  |  |
| P1.B2.03.320 |  | SOG - Inspect & Place - Z2 / Placement # B2.2 | 8d | 2024-06-03 A | 2024-07-09 A | P1.B2.03.220 SS, P1.B2.20.120 SS, WEATHER.TIA1050 | 100% | 2024-07-03 | 2024-07-15 |  | S | * | 24 | AT17 | FP | STRCONC | P01 | STRCONC |  |  |  |  |  |  |
| P1.B2.03.250 |  | SOG - Prep & Reinforce - Utility Tunnel - Z2 | 15d | 2024-06-18 A | 2024-07-09 A | P1.Z2.200 SS+5d | 100% | 2024-07-22 | 2024-08-09 |  | S | * | 120 | AT11 |  | STRCONC | P01 | STRCONC | CON | PRELIM |  |  |  |  |
| P1.Z2.200 |  | US MEP/Fine Grade/Mudmat - Utility Tunnel - Z2 | 15d | 2024-06-19 A | 2024-07-03 A | P1.B2.03.320 SS | 100% | 2024-07-15 | 2024-08-02 |  | S | * | 120 | AT1 |  | MEP | P01 | MEP-2 | CON | PRELIM | T.MEP | Harris |  |  |
| P1.B2.03.350 |  | SOG - Inspect & Place - Utility Tunnel - Z2 / Placement # B2.5 | 2d | 2024-06-20 A | 2024-07-03 A | P1.B2.03.250 SS | 100% | 2024-08-12 | 2024-08-13 |  | S | * | 16 | AT11 |  | STRCONC | P01 | STRCONC |  |  |  |  |  |  |
| P1.B2.03.450 |  | SOG - **CURE** - Utility Tunnel - Z2 / Placement # B2.5 | 7d | 2024-07-03 A | 2024-07-10 A | P1.B2.03.350 | 100% | 2024-08-09 | 2024-08-15 | 7D / SRLM | S | * | 56 |  |  | CURE | P01 | CURE |  |  |  |  |  |  |
| P1.B2.03.420 |  | SOG - **CURE** - Z2 / Placement # B2.2 | 10d | 2024-07-09 A | 2024-07-16 A | P1.B2.03.320 | 100% | 2024-08-03 | 2024-08-12 | 7D / SRLM | S | * | 56 |  | FP | CURE | P01 | CURE |  |  |  |  |  |  |
| P1.B2.03.280 |  | Overbuild & Topping Slabs - B2 - Z2 | 5d | 2024-11-11 A | 2024-11-13 A | P1.1.03.610 | 100% | 2024-12-02 | 2024-12-06 |  | S | * | 40 | AT11 |  | STRCONC | P01 | STRCONC |  |  |  |  | Succ! | SUCC! |
|  | 2 | **Z3** |  | 2024-04-22 | 2024-11-15 |  |  |  |  |  |  |  |  |  |  |  |  |  |  |  |  |  |  |  |
| P1.B2.03.230 |  | SOG - Prep & Reinforce - Z3 / Placement # B2.3 | 20d | 2024-04-22 A | 2024-07-08 A | P1.B2.07.130 SS, P1.B2.03.050, P1.B2.20.030 SS+2d, P1.B2.20.140 SS+2d | 100% | 2024-05-10 | 2024-06-07 |  | S | * | 160 | AT16 |  | STRCONC | P01 | STRCONC |  |  |  |  |  |  |
| P1.B2.07.130 |  | Underslab Waterproofing - Z3 / Placement # B2.3 | 5d | 2024-04-25 A | 2024-07-08 A | P1.B2.20.180 FF+1d, P1.B2.20.140 FF+1d, P1.B2.20.030 FF+1d | 100% | 2024-05-15 | 2024-05-21 |  | S | * | 40 | AT15 |  | WTPF | P01 | WTPF |  |  |  |  |  |  |
| P1.B2.20.130 |  | MEP - Sub Slab / In Slab Pathways - Z3 / Placement # B2.3 | 10d | 2024-04-26 A | 2024-06-26 A | P1.B2.03.230 SS+5d, P2.BIM.B2.40.120 | 100% | 2024-05-17 | 2024-05-31 |  | S | * | 80 | AT1 |  | ELEC | P01 | ELEC-2 |  |  |  |  |  |  |
| P1.B2.03.330 |  | SOG - Inspect & Place - Z3 / Placement # B2.3 | 3d | 2024-05-02 A | 2024-07-09 A | P1.B2.03.230 SS, P1.SUM.135 FF, P1.B2.20.130 FF | 100% | 2024-06-19 | 2024-06-21 |  | S | * | 24 | AT17 |  | STRCONC | P01 | STRCONC |  |  |  |  |  |  |
| P1.B2.03.430 |  | SOG - **CURE** - Z3 / Placement # B2.3 | 3d | 2024-05-02 A | 2024-07-16 A | P1.B2.03.330 SS+1d | 100% | 2024-06-22 | 2024-06-24 | 7D / SRLM | S | * | 56 |  |  | CURE | P01 | CURE |  |  |  |  |  |  |
| P1.Z3.120 |  | US MEP/Fine Grade/Mudmat - Utility Tunnel - Z3 | 15d | 2024-05-14 A | 2024-06-27 A | P1.B2.03.430 SS | 100% | 2024-06-25 | 2024-07-16 |  | S | * | 120 | AT1 |  | MEP | P01 | MEP-2 | CON | PRELIM | T.MEP | Harris |  |  |
| P1.B2.03.260 |  | SOG - Prep & Reinforce - Utility Tunnel - Z3 | 15d | 2024-05-21 A | 2024-07-09 A | P1.Z3.120, P1.B2.03.330 SS+4d, P1.B2.03.430 SS+4d | 100% | 2024-07-02 | 2024-07-23 |  | S | * | 120 | AT11 |  | STRCONC | P01 | STRCONC | CON | PRELIM |  |  |  |  |
| P1.B2.03.360 |  | SOG - Inspect & Place - Utility Tunnel - Z3 / Placement # B2.6 | 2d | 2024-05-28 A | 2024-07-09 A | P1.B2.03.260 FF, P1.B2.03.260 SS | 100% | 2024-07-24 | 2024-07-25 |  | S | * | 16 | AT11 |  | STRCONC | P01 | STRCONC |  |  |  |  |  |  |
| P1.B2.03.460 |  | SOG - **CURE** - Utility Tunnel - Z3 / Placement # B2.6 | 7d | 2024-05-28 A | 2024-07-16 A | P1.B2.03.360 FF+3d | 100% | 2024-08-08 | 2024-08-14 | 7D / SRLM | S | * | 56 |  |  | CURE | P01 | CURE |  |  |  |  |  |  |
| P1.B2.03.290 |  | Overbuild & Topping Slabs - B2 - Z3 | 5d | 2024-11-13 A | 2024-11-15 A | P1.B2.03.280 FF | 100% | 2024-12-02 | 2024-12-06 |  | S | * | 40 | AT11 |  | STRCONC | P01 | STRCONC |  |  |  |  | Succ! | SUCC! |
|  | 7 | **B2 to L1 - Columns, Walls, Decks** |  | 2024-04-15 | 2024-10-22 |  |  |  |  |  |  |  |  |  |  |  |  |  |  |  |  |  |  |  |
|  | 1 | **Z1** |  | 2024-04-22 | 2024-09-30 |  |  |  |  |  |  |  |  |  |  |  |  |  |  |  |  |  |  |  |
| P1.1.03.110 |  | Columns & Walls - Z1 / Placement # L1.1 | 15d | 2024-04-22 A | 2024-06-20 A | P1.B2.03.110 | 100% | 2024-05-01 | 2024-05-21 |  | S | * | 120 | AT12 |  | STRCONC | P01 | STRCONC |  |  |  |  |  |  |
| P1.1.03.210 |  | Deck Slabs - Shore & Reinforce - Z1 / Placement # L1.1 | 20d | 2024-05-20 A | 2024-06-20 A | P2.FAD.PC.250, P2.FAD.PC.140, P2.FAD.GG.260, P1.1.03.110 FF, P1.B2.03.410 FF, P1.B2.03.410 | 100% | 2024-06-17 | 2024-07-15 |  | S | * | 160 | AT13 |  | STRCONC | P01 | STRCONC |  |  |  |  |  |  |
| P1.B2.03.140 |  | Tunnel/Basement Walls - Utility Tunnel - Z1 / Placement # L1.4 | 15d | 2024-06-03 A | 2024-06-11 A | P1.B2.03.440 SS+2d | 100% | 2024-07-01 | 2024-07-22 |  | S | * | 120 | AT11 |  | STRCONC | P01 | STRCONC | CON | PRELIM |  |  |  |  |
| Z1.L1.210 |  | Deck Slabs - MEP Penetrations & In-Slab Pathways - L1 - Z1 | 5d | 2024-06-05 A | 2024-06-25 A | P1.1.03.210 SS+2d, P2.BIM.L1.40.120 | 100% | 2024-06-03 | 2024-06-07 |  | S | * | 40 |  |  | MEP | P01 | MEP-2 |  |  |  | Harris |  |  |
| P1.B2.03.170 |  | FRP Deck Slab - Utility Tunnel - Z1 | 5d | 2024-06-06 A | 2024-06-12 A | P1.B2.03.140, P1.BIM.UT.50.100 | 100% | 2024-08-06 | 2024-08-12 |  | S | * | 40 | AT14 |  | STRCONC | P01 | STRCONC |  |  |  |  |  |  |
| P1.1.03.310 |  | Decks Slabs - Inspect & Place - Z1 / Placement # L1.1 | 2d | 2024-06-12 A | 2024-06-26 A | Z1.L1.210, Z1.L1.220, P1.1.03.210 FF | 100% | 2024-06-11 | 2024-06-12 |  | S | * | 16 | AT14 |  | STRCONC | P01 | STRCONC |  |  |  |  |  |  |
| P1.1.03.410 |  | Decks Slabs - **CURE to Strip** - Z1 / Placement # L1.1 | 5d | 2024-06-13 A | 2024-06-28 A | P1.1.03.310 | 100% | 2024-06-13 | 2024-06-17 | 7D / SRLM | S | * | 56 |  |  | CURE | P01 | CURE |  |  |  |  |  |  |
| P1.1.03.670 |  | Decks Slabs - **FULL CURE to Strip** - Z1 / Placement # L1.1 | 28d | 2024-06-13 A | 2024-07-11 A | P1.1.03.310 | 100% | 2024-06-13 | 2024-07-10 | 7D / SRLM | S | * | 56 |  |  | CURE | P01 | CURE |  |  |  |  |  |  |
| Z1.L1.220 |  | Embeds - Catwalks - L1 - Z1 | 5d | 2024-06-20 A | 2024-06-20 A | P1.1.03.210 SS+7d, BP4.055.3.510 | 100% | 2024-06-03 | 2024-06-07 |  | S | * | 40 |  |  | MEP | P01 | MEP-2 |  |  |  | Harris |  |  |
| P1.1.03.510 |  | Deck Slabs - Strip & Reshore - Z1 / Placement # L1.1 | 5d | 2024-07-01 A | 2024-07-08 A | P1.1.03.410 | 100% | 2024-08-01 | 2024-08-07 |  | S1 | DD | 40 | RE |  | STRCONC | P01 | STRCONC |  |  |  |  |  |  |
| P1.1.03.610 |  | Remove Reshores @ Concrete Decks Above (After #L1.1 100% Strength & L3.1 Reshore) - Z1 / Placement # L1.1 | 4d | 2024-09-30 A | 2024-09-30 A | P1.1.03.510, P1.1.03.670, P2.3.03.510 SS+3d | 100% | 2024-10-17 | 2024-10-22 |  | S1 | DD | 32 | REM |  | STRCONC | P01 | STRCONC |  |  |  |  |  |  |
| P1.1.03.640 |  | Remove Reshores @ Interst SOMD Above (After #L1.1 100% Strength & #L3.1 Reshore) - Z1 / Placement # L1.1 | 4d | 2024-09-30 A | 2024-09-30 A | P1.1.03.670, P2.3.03.510 SS | 100% | 2024-10-23 | 2024-10-28 |  | S1 | DD | 32 | REM |  | STRCONC | P01 | STRCONC |  |  |  |  |  |  |

| ID | WBS | Activity | Duration | Start | Finish | Predecessors | Complete | Planned start | Planned finish | Calendar | Pick #1 | Pick | Temp Orig Dur | Testing Type | Pick #2 | Resp / SRLM | PHASE | RESP / Trade | CATW | SCH DEV | Z.RESP |
| --- | --- | --- | --- | --- | --- | --- | --- | --- | --- | --- | --- | --- | --- | --- | --- | --- | --- | --- | --- | --- | --- |
|  | 3 | **Z2** |  | 2024-05-15 | 2024-10-03 |  |  |  |  |  |  |  |  |  |  |  |  |  |  |  |  |
| P1.1.03.120 |  | Columns & Walls - Z2 / Placement # L1.2 | 15d | 2024-05-15 A | 2024-07-23 A | P1.1.03.130 SS, P1.B2.03.120 FF | 100% | 2024-06-10 | 2024-06-28 |  | S | * | 120 | AT12 | FP | STRCONC | P01 | STRCONC |  |  |  |
| P1.1.03.220 |  | Deck Slabs - Shore & Reinforce - Z2 / Placement # L1.2 | 20d | 2024-06-24 A | 2024-08-01 A | P1.1.03.120 SS+5d, P2.FAD.PC.140, P1.B2.03.420 | 100% | 2024-06-28 | 2024-07-26 |  | S | * | 160 | AT13 | FP | STRCONC | P01 | STRCONC |  |  |  |
| P1.B2.03.150 |  | Tunnel/Basement Walls - Utility Tunnel - Z2 / Placement # L1.5 | 15d | 2024-07-16 A | 2024-08-12 A | P1.B2.03.450 | 100% | 2024-08-01 | 2024-08-21 |  | S | * | 120 | AT11 |  | STRCONC | P01 | STRCONC | CON | PRELIM |  |
| Z2.L1.200 |  | Deck Slabs - MEP Penetrations & In-Slab Pathways - L1 - Z2 | 20d | 2024-07-30 A | 2024-07-31 A | P1.1.03.220 SS+2d, P2.BIM.L1.40.120 | 100% | 2024-08-01 | 2024-08-28 |  | S | * | 40 |  |  | MEP | P01 | MEP-2 |  |  | Harris |
| P1.1.03.320 |  | Decks Slabs - Inspect & Place - Z2 / Placement # L1.2 | 2d | 2024-08-05 A | 2024-08-06 A | Z2.L1.200 SS, P1.1.03.220 | 100% | 2024-09-03 | 2024-09-04 |  | S | * | 16 | AT14 | FP | STRCONC | P01 | STRCONC |  |  |  |
| P1.1.03.420 |  | Decks Slabs - **CURE to Strip** - Z2 / Placement # L1.2 | 5d | 2024-08-07 A | 2024-08-12 A | P1.1.03.320 | 100% | 2024-09-05 | 2024-09-09 | 7D / SRLM | S | * | 56 |  | FP | CURE | P01 | CURE |  |  |  |
| P1.1.03.680 |  | Decks Slabs - **FULL CURE** - Z2 / Placement # L1.2 | 28d | 2024-08-07 A | 2024-09-04 A | P1.1.03.320 | 100% | 2024-09-05 | 2024-10-02 | 7D / SRLM | S | * | 56 |  | FP | CURE | P01 | CURE |  |  |  |
| P1.1.03.520 |  | Deck Slabs - Strip & Reshore - Z2 / Placement # L1.2 | 5d | 2024-08-09 A | 2024-08-12 A | P1.1.03.420 | 100% | 2024-09-10 | 2024-09-16 |  | S1 | DD | 40 | RE |  | STRCONC | P01 | STRCONC |  |  |  |
| P1.B2.03.1000 |  | Steel Angle for Tunnel Lid - Utility Tunnel - Z2 | 10d | 2024-08-15 A | 2024-09-06 A | P1.B2.03.150 | 100% | 2024-09-03 | 2024-09-16 |  | S | * | 120 | AT11 |  | STEEL | P01 | STEEL | CON | PRELIM |  |
| P1.B2.03.180 |  | FRP Deck Slab - Utility Tunnel - Z2 | 5d | 2024-08-21 A | 2024-10-03 A | P1.UT.Z2.100 FF, P1.B2.03.1000 FF | 100% | 2024-11-18 | 2024-11-22 |  | S | * | 40 | AT14 |  | STRCONC | P01 | STRCONC |  |  |  |
| P1.1.03.620 |  | Remove Reshores @ Concrete Decks Above (After #L1.2 100% Strength & L3.2 Reshore) - Z2 / Placement # L1.2 | 4d | 2024-09-30 A | 2024-09-30 A | P1.1.03.520, P1.1.03.680, P2.3.03.520 SS | 100% | 2024-10-25 | 2024-10-30 |  | S1 | DD | 32 | REM |  | STRCONC | P01 | STRCONC |  |  |  |
| P1.1.03.650 |  | Remove Reshores @ Interst SOMD Above (After #L1.2 100% Strength & #L3.2 Reshore) - Z2 / Placement # L1.2 | 4d | 2024-09-30 A | 2024-09-30 A | P1.1.03.520, P1.1.03.680, P1.1.03.640 FF, P2.3.03.520 SS | 100% | 2024-10-25 | 2024-10-30 |  | S1 | DD | 32 | REM |  | STRCONC | P01 | STRCONC |  |  |  |
|  | 2 | **Z3** |  | 2024-04-15 | 2024-10-22 |  |  |  |  |  |  |  |  |  |  |  |  |  |  |  |  |
| P1.1.03.130 |  | Columns & Walls - Z3 / Placement # L1.3 | 15d | 2024-04-15 A | 2024-07-31 A | P1.1.03.110 FF, P1.B2.03.130 | 100% | 2024-05-15 | 2024-06-05 |  | S | * | 120 | AT12 |  | STRCONC | P01 | STRCONC |  |  |  |
| P1.B2.03.160 |  | Tunnel/Basement Walls - Utility Tunnel - Z3 / Placement # L1.6 | 15d | 2024-06-24 A | 2024-08-21 A | P1.B2.03.460 FF+2d, P1.SUM.145 | 100% | 2024-07-01 | 2024-07-22 |  | S | * | 120 | AT11 |  | STRCONC | P01 | STRCONC | CON | PRELIM |  |
| P1.1.03.230 |  | Deck Slabs - Shore & Reinforce - Z3 / Placement # L1.3 | 20d | 2024-07-29 A | 2024-08-06 A | P1.1.03.130 SS+5d, P1.B2.03.430 SS+2d, P2.FAD.PC.140 | 100% | 2024-08-01 | 2024-08-28 |  | S | * | 160 | AT13 |  | STRCONC | P01 | STRCONC |  |  |  |
| Z3.L1.230 |  | Deck Slabs - MEP Penetrations & In-Slab Pathways - L1 - Z3 | 15d | 2024-07-29 A | 2024-08-13 A | P1.1.03.230 SS+2d, P2.BIM.L1.40.120 | 100% | 2024-08-01 | 2024-08-21 |  | S | * | 40 |  |  | MEP | P01 | MEP-2 |  |  | Harris |
| Z3.L1.240 |  | Embeds - Catwalks - L1 - Z3 | 5d | 2024-08-07 A | 2024-08-13 A | P1.1.03.230 SS+7d, BP4.055.3.510 | 100% | 2024-09-03 | 2024-09-09 |  | S | * | 40 |  |  | MEP | P01 | MEP-2 |  |  | Harris |
| P1.1.03.330 |  | Decks Slabs - Inspect & Place - Z3 / Placement # L1.3 | 2d | 2024-08-12 A | 2024-08-15 A | P1.1.03.230, Z3.L1.230, Z3.L1.240 | 100% | 2024-09-16 | 2024-09-17 |  | S | * | 16 | AT14 |  | STRCONC | P01 | STRCONC |  |  |  |
| P1.1.03.430 |  | Decks Slabs - **CURE to Strip** - Z3 / Placement # L1.3 | 5d | 2024-08-16 A | 2024-08-20 A | P1.1.03.330 | 100% | 2024-09-18 | 2024-09-22 | 7D / SRLM | S | * | 56 |  |  | CURE | P01 | CURE |  |  |  |
| P1.1.03.690 |  | Decks Slabs - **FULL CURE** - Z3 / Placement # L1.3 | 28d | 2024-08-16 A | 2024-09-12 A | P1.1.03.330 | 100% | 2024-09-18 | 2024-10-15 | 7D / SRLM | S | * | 56 |  |  | CURE | P01 | CURE |  |  |  |
| P1.B2.03.530 |  | Deck Slabs - Strip & Reshore - Z3 / Placement # L1.3 | 5d | 2024-08-23 A | 2024-08-27 A | P1.1.03.430 | 100% | 2024-09-23 | 2024-09-27 |  | S1 | DD | 40 | RE |  | STRCONC | P01 | STRCONC |  |  |  |
| P1.B2.03.1010 |  | Steel Angle for Tunnel Lid - Utility Tunnel - Z3 | 10d | 2024-09-05 A | 2024-09-19 A | P1.B2.03.160 | 100% | 2024-10-01 | 2024-10-14 |  | S | * | 120 | AT11 |  | STEEL | P01 | STEEL | CON | PRELIM |  |
| P1.B2.03.190 |  | FRP Deck Slab - Utility Tunnel - Z3 | 5d | 2024-09-16 A | 2024-10-10 A | P1.B2.03.1010, P1.UT.Z3.100 | 100% | 2024-10-15 | 2024-10-21 |  | S | * | 40 | AT11 |  | STRCONC | P01 | STRCONC |  |  |  |
| P1.1.03.630 |  | Remove Reshores @ Concrete Decks Above (After #L1.3 100% Strength & #L3.3 Reshore) - Z3 / Placement # L1.3 | 5d | 2024-10-09 A | 2024-10-22 A | P1.B2.03.530, P1.1.03.690, P2.3.03.330 | 100% | 2024-11-13 | 2024-11-19 |  | S1 | DD | 32 | REM |  | STRCONC | P01 | STRCONC |  |  |  |
| P1.1.03.660 |  | Remove Reshores @ Interst SOMD Above (After #L1.3 100% Strength & #L3.3 Reshore) - Z3 / Placement # L1.3 | 5d | 2024-10-09 A | 2024-10-22 A | P1.1.03.650, P1.B2.03.530, P1.1.03.690, P2.3.03.330 | 100% | 2024-11-13 | 2024-11-19 |  | S1 | DD | 32 | REM |  | STRCONC | P01 | STRCONC |  |  |  |

| ID | WBS | Activity | Duration | Start | Finish | Predecessors | Complete | Planned start | Planned finish | Calendar | Pick | Temp Orig Dur | Testing Type | Resp / SRLM | PHASE | RESP / Trade | *NIH Resp Check* | CATW | SCH DEV | Pick #1 | Progress Filters | Init | Z.RESP | 744 | RESP UPD |
| --- | --- | --- | --- | --- | --- | --- | --- | --- | --- | --- | --- | --- | --- | --- | --- | --- | --- | --- | --- | --- | --- | --- | --- | --- | --- |
|  | 9 | **Exterior Waterproofing and Backfill** |  | 2024-07-16 | 2025-01-15 |  |  |  |  |  |  |  |  |  |  |  |  |  |  |  |  |  |  |  |  |
| P1.BG.WP.100 |  | Waterproofing @ Tunnel/Basement Walls - Z1 | 10d | 2024-07-16 A | 2024-10-31 A | P1.UT.Z1.110 FF | 100% | 2024-08-30 | 2024-09-13 |  | * | 80 | AT15 | WTPF | P01 | WTPF |  |  |  |  |  |  |  |  |  |
| P1.BG.WP.110 |  | Waterproofing @ Tunnel/Basement Walls - Z2 | 3d | 2024-08-07 A | 2024-10-29 A | P1.UT.Z2.110 SS | 100% | 2024-12-02 | 2024-12-04 |  | * | 80 | AT15 | WTPF | P01 | WTPF |  |  |  |  |  |  |  |  |  |
| P1.BG.WP.120 |  | Waterproofing @ Tunnel/Basement Walls - Z3 | 10d | 2024-09-23 A | 2024-11-21 A | P1.B2.03.190 SS | 100% | 2024-10-25 | 2024-11-07 |  | * | 80 | AT15 | WTPF | P01 | WTPF |  |  |  |  |  |  |  |  |  |
| P1.BG.SD.150 |  | Install Upper Zone Storm Manholes & Piping | 10d | 2024-10-10 A | 2024-11-15 A | P1.BG.WP.120 SS | 100% | 2024-11-06 | 2024-11-19 |  | * | 80 | AT2 | UTIL | P01 | UTIL | ! | CON | PRELIM |  |  |  |  |  |  |
| P1.BG.BF.130 |  | Backfill Tunnel/Basement Walls - Z2 | 10d | 2024-10-21 A | 2024-11-22 A | P1.1.03.680, P1.BG.BF.100 SS, P1.BG.WP.110, P1.UTL.400 FF | 100% | 2024-11-15 | 2024-12-02 |  | * | 80 | AT8 | CIVIL | P01 | CIVIL | ! |  |  |  |  |  |  |  |  |
| P1.BG.BF.170 |  | Backfill Tunnel/Basement Walls - Z3 | 5d | 2024-10-23 A | 2024-12-31 A | P1.BG.WP.120 SS, P1.BG.BF.130 SS, P0.CRC.160 FF | 100% | 2024-12-03 | 2024-12-09 |  | * | 40 | AT8 | CIVIL | P01 | CIVIL | ! |  |  |  |  |  |  |  |  |
| P1.BG.BF.100 |  | Backfill Tunnel/Basement Walls - Z1 | 10d | 2024-10-29 A | 2024-11-27 A | P1.1.03.670, P1.BG.WP.100 | 100% | 2024-11-01 | 2024-11-14 |  | * | 80 | AT8 | CIVIL | P01 | CIVIL | ! |  |  |  |  |  |  |  |  |
| P1.BG.BF.160 |  | Complete Backfill to Grade | 10d | 2024-11-25 A | 2025-01-15 A | P1.BG.BF.100, P1.BG.BF.130, P1.BG.SD.150, P1.BG.BF.170 FF | 100% | 2024-12-17 | 2024-12-31 |  | * | 80 | AT8 | CIVIL | P01 | CIVIL | ! | CON | PRELIM | No Succ | Succ! | SUCC! |  |  |  |
|  | 4 | **Tunnels** |  | 2023-07-20 | 2026-09-03 |  |  |  |  |  |  |  |  |  |  |  |  |  |  |  |  |  |  |  |  |
|  | 2 | **Utility** |  | 2023-07-20 | 2026-08-06 |  |  |  |  |  |  |  |  |  |  |  |  |  |  |  |  |  |  |  |  |
| P1.CIV.160 |  | Close Isolation Valves in Tunnel/Mech Room/Cut Cap & Safe - Tunnel MEP | 20d | 2023-07-20 A | 2023-08-28 A | P1.DEMO.2.100 | 100% | 2023-08-10 | 2023-09-07 |  |  | 160 |  | MEP | P01 | MEP-2 |  | CON |  |  |  |  | Harris |  |  |
| P1.CIV.230 |  | Build Separation Barriers at Tunnel Ends | 15d | 2023-09-01 A | 2023-09-11 A | P1.CIV.160 | 100% | 2023-10-02 | 2023-10-20 |  |  | 120 |  | CRAFT | P01 | CRAFT |  |  |  |  |  |  |  |  |  |
|  | 4 | **Procurement & Fabrication** |  | 2024-06-03 | 2024-09-10 |  |  |  |  |  |  |  |  |  |  |  |  |  |  |  |  |  |  |  |  |
| P1.UT.3.140 |  | Fabricate MEP Racks - Utility Tunnel - Z3 | 20d | 2024-06-03 A | 2024-09-02 A | P1.DES.420, P1.BIM.UT.50.100, BP1.232.3.100 | 100% | 2024-06-03 | 2024-06-28 |  |  | 320 |  | MECH | P01 | MECH-2 |  |  |  |  |  |  | Harris |  |  |
| P1.UT.3.150 |  | MEP Rack Delivery - Utility Tunnel - Z3 | 2d | 2024-07-29 A | 2024-09-02 A | P1.UT.3.140 SS | 100% | 2024-08-08 | 2024-08-09 |  |  | 16 |  | MECH | P01 | MECH-2 |  |  |  |  |  |  | Harris |  |  |
| P1.UT.3.100 |  | Fabricate MEP Racks - Utility Tunnel - Z1 | 20d | 2024-08-16 A | 2024-09-02 A | P1.DES.420, P1.UT.3.140 FF | 100% | 2024-09-10 | 2024-10-07 |  |  | 320 |  | MECH | P01 | MECH-2 |  |  |  |  |  |  | Harris |  |  |
| P1.UT.3.110 |  | MEP Rack Delivery - Utility Tunnel - Z1 | 2d | 2024-08-16 A | 2024-09-02 A | P1.UT.3.100 SS+5d | 100% | 2024-09-17 | 2024-09-18 |  |  | 16 |  | MECH | P01 | MECH-2 |  |  |  |  |  |  | Harris |  |  |
| P1.UT.3.120 |  | Fabricate MEP Racks - Utility Tunnel - Z2 | 20d | 2024-09-02 A | 2024-09-06 A | P1.UT.3.100, P1.DES.420 | 100% | 2024-10-02 | 2024-10-29 |  |  | 320 |  | MECH | P01 | MECH-2 |  |  |  |  |  |  | Harris |  |  |
| P1.UT.3.130 |  | MEP Rack Delivery - Utility Tunnel - Z2 | 2d | 2024-09-09 A | 2024-09-10 A | P1.UT.3.120 | 100% | 2024-10-01 | 2024-10-02 |  |  | 16 |  | MECH | P01 | MECH-2 |  |  |  |  |  |  | Harris |  |  |
|  | 2 | **Piping & Precast** |  | 2024-06-12 | 2025-06-18 |  |  |  |  |  |  |  |  |  |  |  |  |  |  |  |  |  |  |  |  |
|  | 1 | **Z1** |  | 2024-06-12 | 2025-06-18 |  |  |  |  |  |  |  |  |  |  |  |  |  |  |  |  |  |  |  |  |
| P1.UT.Z1.110 |  | Deck Slabs - **CURE** - Utility Tunnel - Z1 | 7d | 2024-06-12 A | 2024-06-19 A | P1.B2.03.170 | 100% | 2024-09-11 | 2024-09-17 | 7D / SRLM |  | 56 |  | CURE | P01 | CURE |  |  |  |  |  |  |  |  |  |
| P1.UT.Z1.100 |  | Lift and Place Rack - Utility Tunnel - Z1 | 4d | 2024-09-04 A | 2024-09-19 A | P1.B2.03.140, P1.UT.3.110 | 100% | 2024-10-02 | 2024-10-07 |  |  | 32 |  | FIT | P01 | FIT-2 |  |  |  |  |  |  | Harris |  |  |
| P1.UT.Z1.120 |  | Fit Racks - Utility Tunnel - Z1 | 4d | 2024-09-04 A | 2024-09-19 A | P1.UT.Z1.110 | 100% | 2024-10-01 | 2024-10-04 |  |  | 32 |  | FIT | P01 | FIT-2 |  |  |  |  |  |  | Harris |  |  |
| P1.UT.Z1.130 |  | Rack CHWS / CHWR and Balance Piping - Utility Tunnel - Z1 | 10d | 2024-09-10 A | 2024-10-11 A | P1.UT.Z1.120, P1.SUM.175 FF, P1.UT.Z1.100 | 100% | 2024-11-01 | 2024-11-14 |  |  | 80 | AT18 | FIT | P01 | FIT-2 |  |  |  |  |  |  | Harris |  |  |
| P1.UT.Z1.140 |  | Weld CHWS and CHWR Piping - Utility Tunnel - Z1.B | 20d | 2024-10-14 A | 2024-11-29 A | P1.UT.Z1.130 | 100% | 2024-11-14 | 2024-12-13 |  |  | 80 | AT18 | FIT | P01 | FIT-2 |  |  |  |  |  |  | Harris |  |  |
| P1.UT.Z1.150 |  | Weld CHWS and CHWR Piping - Utility Tunnel - Z1.A | 20d | 2024-11-11 A | 2025-01-20 A | P1.UT.Z1.140 | 100% | 2024-12-10 | 2025-01-08 |  |  | 80 | AT18 | FIT | P01 | FIT-2 |  |  |  |  |  |  | Harris |  |  |
| P1.UT.Z1.160 |  | Weld Balance Piping - Utility Tunnel - Z1 | 20d | 2025-02-18 A | 2025-06-18 A | P1.SUM.185 FF, P1.UT.Z1.150 | 100% | 2025-03-18 | 2025-04-14 |  |  | 80 | AT18 | FIT | P01 | FIT-2 |  |  |  |  |  |  | Harris | SS | SS |

| ID | WBS | Activity | Type | Duration | Start | Finish | Predecessors | Complete | Remaining | Planned start | Planned finish | Total float | Free float | Calendar | Temp Orig Dur | Resp / SRLM | PHASE | RESP / Trade | Z.RESP | Testing Type | CATW | SCH DEV | Progress Filters | *NIH Resp Check* | 744 | RESP UPD | Update Status |
| --- | --- | --- | --- | --- | --- | --- | --- | --- | --- | --- | --- | --- | --- | --- | --- | --- | --- | --- | --- | --- | --- | --- | --- | --- | --- | --- | --- |
|  | 2 | **Z2** |  |  | 2024-08-22 | 2025-06-18 |  |  |  |  |  |  |  |  |  |  |  |  |  |  |  |  |  |  |  |  |  |
| P1.UT.Z2.110 |  | Deck Slabs - **CURE** - Utility Tunnel - Z2 |  | 7d | 2024-08-22 A | 2024-09-11 A | P1.B2.03.180 SS | 100% |  | 2024-10-16 | 2024-10-22 |  |  | 7D / SRLM | 56 | CURE | P01 | CURE |  |  |  |  |  |  |  |  |  |
| P1.UT.Z2.100 |  | Lift and Place Rack - Utility Tunnel - Z2 |  | 7d | 2024-09-10 A | 2024-09-12 A | P1.B2.03.150, P1.UT.3.130 | 100% |  | 2024-10-03 | 2024-10-11 |  |  |  | 56 | FIT | P01 | FIT-2 | Harris |  |  |  |  |  |  |  |  |
| P1.UT.Z2.120 |  | Fit Racks - Utility Tunnel - Z2 |  | 7d | 2024-09-10 A | 2024-09-12 A | P1.UT.Z2.110 | 100% |  | 2024-10-14 | 2024-10-22 |  |  |  | 56 | FIT | P01 | FIT-2 | Harris |  |  |  |  |  |  |  |  |
| P1.UT.Z2.130 |  | Rack CHWS / CHWR and Balance Piping - Utility Tunnel - Z2 |  | 10d | 2024-09-12 A | 2024-10-14 A | P1.UT.Z2.120, P1.SUM.175 FF | 100% |  | 2025-01-15 | 2025-01-28 |  |  |  | 80 | FIT | P01 | FIT-2 | Harris | AT18 |  |  |  |  |  |  |  |
| P1.UT.Z2.150 |  | Weld CHWS and CHWR Piping - Utility Tunnel - Z2.C |  | 18d | 2024-12-11 A | 2025-01-20 A | P1.UT.Z1.150 SS, P1.UT.Z2.130 | 100% |  | 2025-01-16 | 2025-02-10 |  |  |  | 80 | FIT | P01 | FIT-2 | Harris | AT18 |  |  |  |  |  |  |  |
| P1.UT.Z2.140 |  | Weld CHWS and CHWR Piping - Utility Tunnel - Z2.B |  | 6d | 2025-01-13 A | 2025-01-20 A | P1.UT.Z3.150, P1.UT.Z2.130 | 100% |  | 2025-02-12 | 2025-02-19 |  |  |  | 72 | FIT | P01 | FIT-2 | Harris | AT18 |  |  |  |  |  |  |  |
| P1.UT.Z2.160 |  | Weld CHWS and CHWR Piping - Utility Tunnel - Z2.A |  | 10d | 2025-01-21 A | 2025-02-21 A | P1.UT.Z2.140, P1.UT.Z2.150 | 100% |  | 2025-02-20 | 2025-03-05 |  |  |  | 64 | STRCONC | P01 | STRCONC |  | AT14 | CON | PRELIM |  |  |  |  |  |
| P1.UT.Z2.170 |  | Weld Balance Piping - Utility Tunnel - Z2 |  | 20d | 2025-02-18 A | 2025-06-18 A | P1.SUM.185 FF, P1.UT.Z2.140 | 100% |  | 2025-03-18 | 2025-04-14 |  |  |  | 0 | HP | P01 | HP |  |  |  |  | Succ! | ! | SS | SS |  |
|  | 3 | **Z3** |  |  | 2024-07-31 | 2025-06-18 |  |  |  |  |  |  |  |  |  |  |  |  |  |  |  |  |  |  |  |  |  |
| P1.UT.Z3.100 |  | Lift and Place Rack - Utility Tunnel - Z3 |  | 10d | 2024-07-31 A | 2024-09-20 A | P1.B2.03.160 SS+2d, P1.UT.3.150 SS | 100% |  | 2024-08-14 | 2024-08-27 |  |  |  | 80 | FIT | P01 | FIT-2 | Harris |  |  |  |  |  |  |  |  |
| P1.UT.Z3.110 |  | Deck Slabs - **CURE** - Utility Tunnel - Z3 |  | 7d | 2024-09-17 A | 2024-09-24 A | P1.B2.03.190 SS, P1.UT.Z1.110 | 100% |  | 2024-10-18 | 2024-10-24 |  |  | 7D / SRLM | 56 | CURE | P01 | CURE |  |  |  |  |  |  |  |  |  |
| P1.UT.Z3.120 |  | Fit Racks - Utility Tunnel - Z3 |  | 10d | 2024-09-17 A | 2024-09-20 A | P1.UT.Z3.110 SS | 100% |  | 2024-10-07 | 2024-10-18 |  |  |  | 80 | FIT | P01 | FIT-2 | Harris |  |  |  |  |  |  |  |  |
| P1.UT.Z3.130 |  | Rack CHWS / CHWR and Balance Piping - Utility Tunnel - Z3 |  | 12d | 2024-09-23 A | 2024-10-22 A | P1.UT.Z3.120, P1.SUM.175 FF | 100% |  | 2024-11-06 | 2024-11-21 |  |  |  | 96 | FIT | P01 | FIT-2 | Harris | AT18 |  |  |  |  |  |  |  |
| P1.UT.Z3.140 |  | Weld CHWS and CHWR Piping - Utility Tunnel - Z3.C |  | 12d | 2024-10-23 A | 2024-11-29 A | P1.UT.Z3.130 | 100% |  | 2024-10-21 | 2024-11-05 |  |  |  | 96 | FIT | P01 | FIT-2 | Harris | AT18 |  |  |  |  |  |  |  |
| P1.UT.Z3.150 |  | Weld CHWS and CHWR Piping - Utility Tunnel - Z3.B |  | 20d | 2024-11-20 A | 2025-01-10 A | P1.UT.Z3.140 | 100% |  | 2024-12-19 | 2025-01-17 |  |  |  | 40 | STRCONC | P01 | STRCONC |  | AT14 | CON | PRELIM |  |  |  |  |  |
| P1.UT.Z3.160 |  | Weld Balance Piping - Utility Tunnel - Z3 |  | 20d | 2025-01-07 A | 2025-06-18 A | P1.UT.Z3.140, P1.SUM.185 FF | 100% |  | 2025-02-03 | 2025-02-28 |  |  |  | 0 | HP | P01 | HP |  |  |  |  | Succ! | ! | SS | SS |  |
|  | 6 | **Mechanical Fit Out & Finishes** |  |  | 2025-02-22 | 2026-08-06 |  |  |  |  |  |  |  |  |  |  |  |  |  |  |  |  |  |  |  |  |  |
| P2.UTT.390 |  | Painting - CHWS and CHWR - Utility Tunnel |  | 15d | 2025-02-22 A | 2025-03-21 A | P1.UT.Z2.160 | 100% |  | 2025-03-14 | 2025-04-03 |  |  |  | 120 | INSUL | P2-5 | INSUL-3 | Harris |  |  |  | Succ! |  |  |  |  |
| P2.UTT.400 |  | Insulate CHWS and CHWR - Utility Tunnel |  | 15d | 2025-02-22 A | 2025-04-25 A | P2.UTT.390 SS+5d | 100% |  | 2025-03-21 | 2025-04-10 |  |  |  | 120 | INSUL | P2-5 | INSUL-3 | Harris |  |  |  | Succ! |  |  |  |  |
| P2.UTT.120 |  | Pressure Testing - CHWS and CHWR - Utility Tunnel |  | 10d | 2025-02-28 A | 2025-04-21 A | P1.UT.Z2.160, P1.B2.03.270 FF | 100% |  | 2025-03-04 | 2025-03-17 |  |  |  | 360 | ELEC | P2-5 | ELEC-2 |  |  | CON | PRELIM |  |  |  |  |  |
| P2.UTT.130 |  | Flushing - CHWS and CHWR - Utility Tunnel |  | 5d | 2025-04-22 A | 2025-04-25 A | P2.UTT.120 | 100% |  | 2025-05-02 | 2025-05-08 |  |  |  | 200 | BAS | P2-5 | BAS-1 | Harris |  | CON | PRELIM |  |  |  |  |  |
| P2.UTT.110 |  | Chemical Treatment - CHWS and CHWR - Utility Tunnel |  | 5d | 2025-04-25 A | 2025-04-25 A | P2.UTT.130 | 100% |  | 2025-05-09 | 2025-05-15 |  |  |  | 320 | MEP | P2-5 | MEP-2 | Harris |  | CON | PRELIM |  |  |  |  |  |
| P2.UTT.410 |  | Reinstate CHWS and CHWR Loop - Utility Tunnel | milestone | 0d | 2025-04-28 A | 2025-04-28 A | P2.UTT.400, P2.UTT.390, P2.UTT.110 | 100% |  |  |  |  |  |  | 120 | INSUL | P2-5 | INSUL-3 | Harris |  |  |  | Succ! |  |  |  |  |
| P2.UTT.380 |  | Testing and Insualtion of Balance Piping - Utility Tunnel |  | 20d | 2025-07-22 A | 2026-04-07 | P1.UT.Z1.160, P1.UT.Z3.160, P1.UT.Z2.170 | 75% | 5d | 2025-08-01 | 2025-08-28 | 9d | 0d |  | 360 | ELEC | P2-5 | ELEC-2 |  |  | CON | PRELIM |  |  | SS | DG | O |
| P2.UTT.420 |  | Fire Suppression - Utility Tunnel |  | 10d | 2025-09-22 A | 2025-09-29 A | P1.UTL.390 | 100% |  | 2025-10-15 | 2025-10-28 |  |  |  | 120 | INSUL | P2-5 | INSUL-3 | Harris |  |  |  | Succ! |  | SS | SS | O |
| P2.UTT.430 |  | Lighting, Power, Comm, Fire Alarm - Utility Tunnel |  | 15d | 2026-03-09 A | 2026-04-28 | P2.UTT.380 |  | 15d | 2026-03-09 | 2026-03-27 | 9d | 0d |  | 120 | INSUL | P2-5 | INSUL-3 | Harris |  |  |  | Succ! |  | SS | DG | O |
| P2.UTT.140 |  | Test/Outages/Restore Services - Utility Tunnel |  | 10d | 2026-04-29 | 2026-05-12 | P2.UTT.430, P2.UTT.410, P2.UTT.380, P2.UTT.420, P2SUM.218 FF |  |  |  |  | 9d | 0d |  | 80 | MEP | P2-5 | MEP-2 | Harris |  | CON | PRELIM |  |  | SS | DG | O |
| P2.UTT.300 |  | Interior Finishes - Pipe ID - Utility Tunnel |  | 10d | 2026-05-13 | 2026-05-27 | P2.UTT.140 |  |  |  |  | 9d | 0d |  | 720 | T | P2-5 | T |  |  |  | PRELIM |  |  | SS | DG |  |
| P2.UTT.340 |  | Interior Finishes, Ceiling & Walls - Utility Tunnel |  | 20d | 2026-05-28 | 2026-06-24 | P2.UTT.300, P1.BGS.300 |  |  |  |  | 9d | 0d |  | 720 | T | P2-5 | T |  |  |  | PRELIM |  |  |  | DG |  |
| P2.UTT.350 |  | Interior Finishes - Paint - Utility Tunnel |  | 10d | 2026-06-25 | 2026-07-09 | P2.UTT.340 |  |  |  |  | 9d | 0d |  | 720 | T | P2-5 | T |  |  |  | PRELIM |  |  |  | DG |  |
| P2.UTT.360 |  | Interior Finishes - Flooring - Utility Tunnel |  | 10d | 2026-07-10 | 2026-07-23 | P2.UTT.350 |  |  |  |  | 9d | 0d |  | 720 | T | P2-5 | T |  |  |  | PRELIM |  |  |  | DG |  |
| P2.UTT.370 |  | Interior Finishes - Device Trim-Out - Utility Tunnel |  | 10d | 2026-07-24 | 2026-08-06 | P2.UTT.360 |  |  |  |  | 9d | 0d |  | 720 | T | P2-5 | T |  |  |  | PRELIM |  |  |  | DG |  |

| ID | WBS | Activity | Duration | Start | Finish | Predecessors | Complete | Planned start | Planned finish | Calendar | Pick | Temp Orig Dur | Testing Type | Resp / SRLM | PHASE | CATW | SCH DEV | RESP / Trade | Pick #1 | *NIH Resp Check* |
| --- | --- | --- | --- | --- | --- | --- | --- | --- | --- | --- | --- | --- | --- | --- | --- | --- | --- | --- | --- | --- |
|  | 1 | **Pedestrian** |  | 2024-09-09 | 2026-09-03 |  |  |  |  |  |  |  |  |  |  |  |  |  |  |  |
|  | 1 | **Structure - East** |  | 2024-09-09 | 2024-12-13 |  |  |  |  |  |  |  |  |  |  |  |  |  |  |  |
| P1.PED.210 |  | Slab on Grade - Pedestrian Tunnel - East Half | 5d | 2024-09-09 A | 2024-09-17 A | P1.PED.310 | 100% | 2024-10-03 | 2024-10-09 |  | * | 40 | AT17 | STRCONC | P01 | CON | PRELIM | STRCONC |  |  |
| P1.PED.310 |  | Prep Subgrade & Under Slab Waterproofing - Pedestrian Tunnel - East Half | 2d | 2024-09-09 A | 2024-09-10 A | P1.B2.03.160, P1.B3.07.120, P1.B3.07.110 | 100% | 2024-10-01 | 2024-10-02 |  | * | 40 | AT15 | WTPF | P01 |  |  | WTPF |  |  |
| P1.PED.220 |  | FRP Walls - Pedestrian Tunnel - East Half | 5d | 2024-09-26 A | 2024-10-02 A | P1.PED.210 | 100% | 2024-10-10 | 2024-10-16 |  | * | 80 | AT11 | STRCONC | P01 | CON | PRELIM | STRCONC | S |  |
| P1.PED.290 |  | Walls - **CURE** - Pedestrian Tunnel - East Half | 7d | 2024-10-02 A | 2024-10-09 A | P1.PED.220 | 100% | 2024-11-05 | 2024-11-11 | 7D / SRLM | * | 56 |  | CURE | P01 |  |  | CURE |  |  |
| P1.PED.230 |  | Decks Slabs - Pedestrian Tunnel - East Half | 7d | 2024-10-10 A | 2024-10-18 A | P1.PED.290 | 100% | 2024-11-12 | 2024-11-20 |  | * | 80 | AT14 | STRCONC | P01 | CON | PRELIM | STRCONC |  |  |
| P1.PED.320 |  | Deck Slabs - **CURE** - Pedestrian Tunnel - East Half | 7d | 2024-10-18 A | 2024-10-31 A | P1.PED.230 | 100% | 2024-11-21 | 2024-11-27 | 7D / SRLM | * | 56 |  | CURE | P01 |  |  | CURE |  |  |
| P1.PED.240 |  | Waterproofing/Backfill - Pedestrian Tunnel - East Half | 15d | 2024-10-22 A | 2024-12-02 A | P1.PED.320 | 100% | 2024-12-02 | 2024-12-20 |  | * | 40 | AT8 | CIVIL | P01 | CON | PRELIM | CIVIL |  | ! |
| P1.PED.250 |  | Construct Fire Dept Access Lane through East Half Work Zone | 4d | 2024-12-09 A | 2024-12-13 A | P1.PED.240 | 100% | 2025-01-03 | 2025-01-08 |  | * | 120 | AT53 | CIVIL | P01 | CON | PRELIM | CIVIL |  | HP |
| P1.PED.260 |  | Signage/Shift/Close Convent Road | 1d | 2024-12-13 A | 2024-12-13 A | P1.PED.250 | 100% | 2025-01-09 | 2025-01-09 |  | * | 40 |  | CRAFT | P01 | CON | PRELIM | CRAFT |  |  |
|  | 2 | **Structure - West** |  | 2024-12-16 | 2025-05-30 |  |  |  |  |  |  |  |  |  |  |  |  |  |  |  |
| P1.PED.110 |  | Clear Utilities at Pedestrian Tunnel Work Zone | 3d | 2024-12-16 A | 2024-12-20 A | P1.PED.260, P1.CIV.110 SS | 100% | 2025-01-10 | 2025-01-14 |  | * | 80 |  | UTIL | P01 | CON | PRELIM | UTIL |  | T.MEP |
| P1.PED.160 |  | Soldier Piles - Pedestrian Tunnel - West Half | 3d | 2024-12-16 A | 2024-12-19 A | P1.PED.110 | 100% | 2025-01-15 | 2025-01-17 |  | * | 24 | AT19 | SOE | P01 | CON | PRELIM | SOE |  |  |
| P1.PED.100 |  | Excavate/Lag - Pedestrian Tunnel - West Half - Tiers 1 & 2 | 4d | 2024-12-20 A | 2024-12-31 A | P1.PED.160 | 100% | 2025-01-20 | 2025-01-23 |  | * | 32 | AT5 | CIVIL | P01 | CON | PRELIM | CIVIL |  | ! |
| P1.PED.170 |  | Whaler/Support Beams - Pedestrian Tunnel - West Half | 5d | 2024-12-31 A | 2025-01-10 A | P1.PED.100 | 100% | 2025-01-24 | 2025-01-30 |  | * | 40 | AT6 | SOE | P01 |  |  | SOE |  | ! |
| P1.PED.340 |  | Excavate/Lag - Pedestrian Tunnel - West Half - Tiers 3 & 4 to Subgrade | 4d | 2025-02-05 A | 2025-02-21 A | P1.PED.170 | 100% | 2025-03-03 | 2025-03-06 |  | * | 32 | AT5 | CIVIL | P01 |  |  | CIVIL |  | ! |
| P1.PED.280 |  | Prep Subgrade & Under Slab Waterproofing - Pedestrian Tunnel - West Half | 2d | 2025-02-24 A | 2025-02-25 A | P1.PED.340 | 100% | 2025-03-07 | 2025-03-10 |  | * | 40 | AT15 | WTPF | P01 |  |  | WTPF |  |  |
| P1.PED.120 |  | Slab on Grade - Pedestrian Tunnel - West Half | 5d | 2025-02-25 A | 2025-02-27 A | P1.PED.280 | 100% | 2025-03-11 | 2025-03-17 |  | * | 80 | AT17 | STRCONC | P01 | CON | PRELIM | STRCONC |  |  |
| P1.PED.135 |  | Walls - **CURE** - Pedestrian Tunnel - West Half | 5d | 2025-03-06 A | 2025-03-25 A | P1.PED.130 | 100% | 2025-03-06 | 2025-03-10 | 7D / SRLM | * | 56 |  | CURE | P01 |  |  | CURE |  |  |
| P1.PED.140 |  | Deck Slabs - Pedestrian Tunnel - West Half | 3d | 2025-03-11 A | 2025-03-27 A | P1.PED.135 | 100% | 2025-03-11 | 2025-03-13 |  | * | 40 | AT14 | STRCONC | P01 | CON | PRELIM | STRCONC |  |  |
| P1.PED.130 |  | FRP Walls - Pedestrian Tunnel - West Half | 5d | 2025-03-17 A | 2025-03-20 A | P1.PED.120 | 100% | 2025-03-18 | 2025-03-24 |  | * | 80 | AT11 | STRCONC | P01 | CON | PRELIM | STRCONC | S |  |
| P1.PED.330 |  | Deck Slabs - **CURE** - Pedestrian Tunnel - West Half | 10d | 2025-03-28 A | 2025-04-25 A | P1.PED.140 | 100% | 2025-03-14 | 2025-03-23 | 7D / SRLM | * | 56 |  | CURE | P01 |  |  | CURE |  |  |
| P1.PED.150 |  | Waterproofing/Backfill - Pedestrian Tunnel - West Half | 3d | 2025-04-15 A | 2025-04-30 A | P1.PED.330 SS+14d | 100% | 2025-05-01 | 2025-05-05 |  | * | 80 | AT8 | CIVIL | P01 | CON | PRELIM | CIVIL |  | ! |
| P1.PED.180 |  | Signage/Shift/Reconfigure Fire Dept Access on Convent Drive | 8d | 2025-05-26 A | 2025-05-30 A | P1.PED.150, P1.SUM.115 FF | 100% | 2025-06-02 | 2025-06-11 |  | * | 40 |  | CRAFT | P01 | CON | PRELIM | CRAFT |  |  |

| ID | WBS | Activity | Type | Duration | Start | Finish | Predecessors | Complete | Planned start | Planned finish | Total float | Free float | Calendar | Temp Orig Dur | Resp / SRLM | PHASE | CATW | SCH DEV | Z.RESP | RESP UPD | RESP / Trade | Pick #1 | Pick | Testing Type | Pick #2 |
| --- | --- | --- | --- | --- | --- | --- | --- | --- | --- | --- | --- | --- | --- | --- | --- | --- | --- | --- | --- | --- | --- | --- | --- | --- | --- |
|  | 3 | **Finishes** |  |  | 2026-07-10 | 2026-09-03 |  |  |  |  |  |  |  |  |  |  |  |  |  |  |  |  |  |  |  |
| P2.UTT.310 |  | Pedestrian Tunnel MEP Rough in Tunnel |  | 20d | 2026-07-10 | 2026-08-06 | P1.PED.180, P2.UTT.350 |  |  |  | 116d | 0d |  | 560 | MEP | P2-5 | CON | PRELIM | Harris | DG | MEP-2 |  |  |  |  |
| P2.UTT.320 |  | Pedestrian Tunnel Interior Finishes, Pipe ID, Painting |  | 20d | 2026-08-07 | 2026-09-03 | P2.UTT.310 |  |  |  | 116d | 128d |  | 720 | T | P2-5 |  | PRELIM |  | DG | T |  |  |  |  |
| P2.UTT.330 |  | Pedestrian Tunnel MEP Rough in PPG |  | 20d | 2026-08-07 | 2026-09-03 | P2.UTT.310 |  |  |  | 119d | 64d |  | 560 | MEP | P2-5 | CON | PRELIM | Harris | DG | MEP-2 |  |  |  |  |
|  | 15 | **Phase 2 - Construction** |  |  | 2015-08-11 | 2028-10-03 |  |  |  |  |  |  |  |  |  |  |  |  |  |  |  |  |  |  |  |
|  | 2 | **PH 2 STRUCTURE** |  |  | 2024-06-27 | 2025-07-30 |  |  |  |  |  |  |  |  |  |  |  |  |  |  |  |  |  |  |  |
|  | 1 | **L2 - Columns, Walls, Decks (Working from L1)** |  |  | 2024-06-27 | 2025-07-22 |  |  |  |  |  |  |  |  |  |  |  |  |  |  |  |  |  |  |  |
|  | 1 | **Z1 - Placement # L2.1** |  |  | 2024-06-27 | 2024-11-04 |  |  |  |  |  |  |  |  |  |  |  |  |  |  |  |  |  |  |  |
| P2.2.03.840 |  | Demo Facade Brick, Glazing, and Precast - Z1 / L2 |  | 2d | 2024-06-27 A | 2024-08-09 A | P1.1.03.410 SS+1d | 100% | 2024-06-03 | 2024-06-04 |  |  |  | 40 | DEMO.1 | P2-5 |  |  |  |  | DEMO.1 | S1 | DD | RE |  |
| P2.2.03.110 |  | Columns & Walls - Z1 / Placement # L2.1 --- (**1st Phase 2 Activity**) |  | 5d | 2024-07-24 A | 2024-08-05 A | P1.1.03.310, P0.C.CRC.180, P2A.NIH.130 | 100% | 2024-08-01 | 2024-08-07 |  |  |  | 40 | STRCONC | P2-5 |  |  |  |  | STRCONC | S1 | DD | AT12 |  |
| P2.2.03.210 |  | Deck Slabs - Shore & Reinforce - Z1 / Placement # L2.1 |  | 7d | 2024-07-30 A | 2024-08-12 A | P0.C.CRC.230, P2.2.03.110 FF, P2.2.03.840 FF+2d, P2.2.03.000 SS | 100% | 2024-08-09 | 2024-08-19 |  |  |  | 56 | STRCONC | P2-5 |  |  |  |  | STRCONC | S1 | DD | AT13 |  |
| P2.2.03.000 |  | Structural Handoff - Phase 1 to Phase 2 | milestone | 0d | 2024-07-31 A | 2024-07-31 A | P1.1.03.410, BP4.030.2.140, P2.2.03.110 SS | 100% | 2024-08-06 | 2024-08-06 |  |  |  | 0 | STRCONC | P2-5 |  |  |  |  | STRCONC | S1 | DD | CW |  |
| P2.2.20.210 |  | Deck Slabs - MEP Penetrations & In-Slab Pathways - Z1 / L2.1 |  | 5d | 2024-08-01 A | 2024-08-07 A | P2.BIM.L2.40.120 SS, P2.BIM.L2.40.100, WEATHER.TIA1070, P2.2.03.210 SS+2d | 100% | 2024-09-03 | 2024-09-09 |  |  |  | 40 | MEP | P2-5 |  |  | Harris |  | MEP-2 | S1 | DD | MEP |  |
| P2.2.03.310 |  | Decks Slabs - Inspect & Place - Z1 / Placement # L2.1 |  | 2d | 2024-08-14 A | 2024-08-15 A | P2.2.20.210, P2.2.03.210, WEATHER.TIA1070 | 100% | 2024-09-16 | 2024-09-17 |  |  |  | 16 | STRCONC | P2-5 |  |  |  |  | STRCONC | S1 | DD | AT14 |  |
| P2.2.03.410 |  | Deck Slabs - **CURE** - Z1 / Placement # L2.1 |  | 28d | 2024-08-16 A | 2024-09-02 A | P2.2.03.310 | 100% | 2024-09-18 | 2024-10-15 |  |  | 7D / SRLM | 56 | CURE | P2-5 |  |  |  |  | CURE | S1 | DD | C |  |
| P2.2.03.510 |  | Deck Slabs - Strip & Reshore - Z1 / Placement # L2.1 |  | 5d | 2024-08-16 A | 2024-08-22 A | P2.2.03.310 | 100% | 2024-09-18 | 2024-09-24 |  |  |  | 40 | STRCONC | P2-5 |  |  |  |  | STRCONC | S1 | DD | RE |  |
| P2.2.03.1040 |  | Steel Column Bracing - Column-to-Slab Edge at interstial floor - Z1 / L2 |  | 5d | 2024-08-23 A | 2024-08-26 A | P2.2.03.310 | 100% | 2024-09-18 | 2024-09-24 |  |  |  | 40 | STEEL | P2-5 |  |  |  |  | STEEL | S1 | DD | AT12 |  |
| P2.2.03.990 |  | Steel Column Bracing - Column-to-Column at interstial floor - Z1 / L2 |  | 5d | 2024-08-23 A | 2024-09-06 A | P2.2.03.110, P2.2.03.000 SS | 100% | 2024-09-09 | 2024-09-13 |  |  |  | 40 | STEEL | P2-5 |  |  |  |  | STEEL | S1 | DD | AT12 |  |
| P2.2.03.610 |  | Remove Reshores @ Concrete Decks Above (After #L2.1 100% Strength & #L4.1 Reshore) - Z1 / Placement # L2.1 |  | 2d | 2024-11-01 A | 2024-11-04 A | P2.2.03.410, P2.2.03.510, P2.4.03.510 SS+3d | 100% | 2024-12-02 | 2024-12-03 |  |  |  | 32 | STRCONC | P2-5 |  |  |  |  | STRCONC | S1 | DD | REM |  |
|  | 2 | **Z2 - Placement # L2.2** |  |  | 2024-08-05 | 2024-11-11 |  |  |  |  |  |  |  |  |  |  |  |  |  |  |  |  |  |  |  |
| P2.2.03.850 |  | Demo Facade Brick, Glazing, and Precast - Z2 / L2 |  | 2d | 2024-08-05 A | 2024-08-06 A | P1.1.03.420 SS+1d | 100% | 2024-09-03 | 2024-09-04 |  |  |  | 40 | DEMO.1 | P2-5 |  |  |  |  | DEMO.1 | S1 | DD | RE |  |
| P2.2.03.120 |  | Columns & Walls - Z2 / Placement # L2.2 |  | 5d | 2024-08-06 A | 2024-08-12 A | P1.1.03.320, P1.1.03.310, P2.2.03.110 | 100% | 2024-09-03 | 2024-09-09 |  |  |  | 40 | STRCONC | P2-5 |  |  |  |  | STRCONC | S1 | DD | AT12 | FP |
| P2.2.03.220 |  | Deck Slabs - Shore & Reinforce - Z2 / Placement # L2.2 |  | 6d | 2024-08-09 A | 2024-08-16 A | P2.2.03.850 FF+2d, P2.2.03.120 SS+3d | 100% | 2024-09-06 | 2024-09-13 |  |  |  | 48 | STRCONC | P2-5 |  |  |  |  | STRCONC | S1 | DD | AT13 |  |
| P2.2.20.220 |  | Deck Slabs - MEP Penetrations & In-Slab Pathways - Z2 / L2.2 |  | 4d | 2024-08-13 A | 2024-08-16 A | P2.BIM.L2.40.120, P2.BIM.L2.40.100, P2.2.03.220 SS+2d | 100% | 2024-09-10 | 2024-09-13 |  |  |  | 32 | MEP | P2-5 |  |  | Harris |  | MEP-2 | S1 | DD | MEP |  |
| P2.2.03.320 |  | Decks Slabs - Inspect & Place - Z2 / Placement # L2.2 |  | 2d | 2024-08-19 A | 2024-08-20 A | P2.2.03.220, P2.2.20.220 | 100% | 2024-09-16 | 2024-09-17 |  |  |  | 16 | STRCONC | P2-5 |  |  |  |  | STRCONC | S1 | DD | AT14 |  |
| P2.2.03.420 |  | Deck Slabs - **CURE** - Z2 / Placement # L2.2 |  | 28d | 2024-08-21 A | 2024-09-11 A | P2.2.03.320 | 100% | 2024-09-18 | 2024-10-15 |  |  | 7D / SRLM | 56 | CURE | P2-5 |  |  |  |  | CURE | S1 | DD | C |  |
| P2.2.03.520 |  | Deck Slabs - Strip & Reshore - Z2 / Placement # L2.2 |  | 5d | 2024-08-21 A | 2024-08-27 A | P2.2.03.320 | 100% | 2024-09-18 | 2024-09-24 |  |  |  | 40 | STRCONC | P2-5 |  |  |  |  | STRCONC | S1 | DD | RE |  |
| P2.2.03.1000 |  | Steel Column Bracing - Column-to-Column at interstial floor - Z2 / L2 |  | 5d | 2024-08-23 A | 2024-09-12 A | P2.2.03.120 | 100% | 2024-09-11 | 2024-09-17 |  |  |  | 40 | STEEL | P2-5 |  |  |  |  | STEEL | S1 | DD | AT12 |  |
| P2.2.03.1030 |  | Steel Column Bracing - Column-to-Slab Edge at interstial floor - Z2 / L2 |  | 5d | 2024-08-26 A | 2024-08-26 A | P2.2.03.320 | 100% | 2024-09-18 | 2024-09-24 |  |  |  | 40 | STEEL | P2-5 |  |  |  |  | STEEL | S1 | DD | AT12 |  |
| P2.2.03.620 |  | Remove Reshores @ Concrete Decks Above (After #L2.2 100% Strength & #L4.2 Reshore) - Z2 / Placement # L2.2 |  | 2d | 2024-11-05 A | 2024-11-11 A | P2.2.03.610, P2.2.03.420, P2.2.03.520, P2.4.03.520 SS+3d | 100% | 2024-12-04 | 2024-12-05 |  |  |  | 24 | STRCONC | P2-5 |  |  |  |  | STRCONC | S1 | DD | REM |  |

| ID | WBS | Activity | Duration | Start | Finish | Predecessors | Complete | Planned start | Planned finish | Calendar | Pick #1 | Pick | Temp Orig Dur | Testing Type | Resp / SRLM | PHASE | RESP / Trade | Pick #2 | Z.RESP | 744 | RESP UPD |
| --- | --- | --- | --- | --- | --- | --- | --- | --- | --- | --- | --- | --- | --- | --- | --- | --- | --- | --- | --- | --- | --- |
|  | 3 | **Z3 - Placement # L2.3** |  | 2024-08-15 | 2025-07-22 |  |  |  |  |  |  |  |  |  |  |  |  |  |  |  |  |
| P2.2.03.860 |  | Demo Facade Brick, Glazing, and Precast - Z3 / L2 | 2d | 2024-08-15 A | 2024-08-16 A | P1.1.03.430 SS+1d | 100% | 2024-09-03 | 2024-09-04 |  | S1 | DD | 40 | RE | DEMO.1 | P2-5 | DEMO.1 |  |  |  |  |
| P2.2.03.130 |  | Columns & Walls - Z3 / Placement # L2.3 | 5d | 2024-08-16 A | 2024-08-22 A | P1.1.03.330, P2.2.03.120 | 100% | 2024-09-03 | 2024-09-09 |  | S1 | DD | 40 | AT12 | STRCONC | P2-5 | STRCONC | FP |  |  |  |
| P2.2.03.230 |  | Deck Slabs - Shore & Reinforce - Z3 / Placement # L2.3 | 7d | 2024-08-21 A | 2024-08-26 A | P2.2.03.860 FF+2d, P2.2.03.130 SS+3d | 100% | 2024-09-06 | 2024-09-16 |  | S1 | DD | 56 | AT13 | STRCONC | P2-5 | STRCONC | FP |  |  |  |
| P2.2.03.830 |  | Deck Slabs - MEP Penetrations & In-Slab Pathways - Z3 / L2.3 | 5d | 2024-08-23 A | 2024-09-11 A | P2.BIM.L2.40.120, P2.BIM.L2.40.100, P2.2.03.230 SS+2d | 100% | 2024-09-10 | 2024-09-16 |  | S1 | DD | 40 | MEP | MEP | P2-5 | MEP-2 |  | Harris |  |  |
| P2.2.03.330 |  | Decks Slabs - Inspect & Place - Z3 / Placement # L2.3 | 2d | 2024-08-26 A | 2024-09-12 A | P2.2.03.230, P2.2.03.830 FF | 100% | 2024-09-17 | 2024-09-18 |  | S1 | DD | 16 | AT14 | STRCONC | P2-5 | STRCONC | FP |  |  |  |
| P2.2.03.1010 |  | Steel Column Bracing - Column-to-Column at interstial floor - Z3 / L2 | 5d | 2024-09-12 A | 2024-09-17 A | P2.2.03.130 | 100% | 2024-10-01 | 2024-10-07 |  | S1 | DD | 40 | AT12 | STEEL | P2-5 | STEEL |  |  |  |  |
| P2.2.03.430 |  | Deck Slabs - **CURE** - Z3 / Placement # L2.3 | 28d | 2024-09-12 A | 2024-10-11 A | P2.2.03.330 | 100% | 2024-10-03 | 2024-10-30 | 7D / SRLM | S1 | DD | 56 | C | CURE | P2-5 | CURE | FP |  |  |  |
| P2.2.03.1020 |  | Steel Column Bracing - Column-to-Slab Edge at interstial floor - Z3 / L2 | 5d | 2024-09-17 A | 2024-09-20 A | P2.2.03.330 | 100% | 2024-10-01 | 2024-10-07 |  | S1 | DD | 40 | AT12 | STEEL | P2-5 | STEEL |  |  |  |  |
| P2.2.03.530 |  | Deck Slabs - Strip & Reshore - Z3 / Placement # L2.3 | 5d | 2024-10-01 A | 2024-10-04 A | P2.2.03.330 | 100% | 2024-11-01 | 2024-11-07 |  | S1 | DD | 40 | RE | STRCONC | P2-5 | STRCONC |  |  |  |  |
| P2.2.03.630 |  | Remove Reshores @ Concrete Decks Above (After #L2.3 100% Strength & #L4.3 Reshore) - Z3 / Placement # L2.3 | 3d | 2024-11-20 A | 2024-11-26 A | P2.2.I.03.010, P2.2.03.530, P2.2.03.430, P2.4.03.530 SS+3d | 100% | 2024-12-10 | 2024-12-12 |  | S1 | DD | 24 | REM | STRCONC | P2-5 | STRCONC |  |  |  |  |
| P2.2.03.730 |  | Erect - Stair 2-8 Steel (Working Off L1 Slab) / After #L2.3 100% Strength | 5d | 2025-07-14 A | 2025-07-22 A | P2.8.03.330 | 100% | 2025-08-01 | 2025-08-07 |  | S1 | DD | 80 | AT20 | STEEL | P2-5 | STEEL |  |  | JH | JH |
|  | 12 | **Level 2 - Interstitial** |  | 2024-11-13 | 2025-02-06 |  |  |  |  |  |  |  |  |  |  |  |  |  |  |  |  |
| P2.2.I.03.010 |  | Remove Reshores - L1 to L3 Slab @ Interst Areas (After #L3.1 100% Strength & #L5.1 Reshore) / Placement # L2.INT.1 | 3d | 2024-11-13 A | 2024-11-18 A | P2.5.03.420 SS+14d, P2.5.03.410 SS+14d | 100% | 2024-12-05 | 2024-12-09 |  | S1 | DD | 24 | REM | STRCONC | P2-5 | STRCONC |  |  |  |  |
| P2.2.I.03.020 |  | Remove Reshores - L1 to L3 Slab @ Interst Areas (After #L3.3 100% Strength & #L5.3 Reshore) / Placement # L2.INT.2 | 3d | 2024-11-19 A | 2024-11-21 A | P2.5.03.430 SS+14d | 100% | 2025-01-02 | 2025-01-06 |  | S1 | DD | 24 | REM | STRCONC | P2-5 | STRCONC |  |  |  |  |
| P2.2.I.05.110 |  | Erect - Interstitial Steel - Hangers (Working Off L1 Slab) / Placement # L2.INT.1 | 10d | 2024-11-20 A | 2024-12-20 A | P2.2.I.03.010, BP7.051.3.100 | 100% | 2024-12-10 | 2024-12-23 |  | S1 | DD | 80 | AT20 | STEEL | P2-5 | STEEL |  |  |  |  |
| P2.2.I.05.120 |  | Erect - Interstitial Steel - Hangers (Working Off L1 Slab) / Placement # L2.INT.2 | 10d | 2024-11-25 A | 2025-01-22 A | P2.2.I.03.020, P2.2.I.03.020 FF | 100% | 2025-01-07 | 2025-01-20 |  | S1 | DD | 80 | AT20 | STEEL | P2-5 | STEEL |  |  |  |  |
| P2.2.I.05.210 |  | Erect - Interstitial Steel - Framing and Decking/Detailing (Working Off L1 Slab) / Placement # L2.INT.1 | 20d | 2024-11-25 A | 2024-12-20 A | BP7.053.3.100, P2.2.I.05.110 SS+5d | 100% | 2024-12-05 | 2025-01-03 |  | S1 | DD | 160 | AT21 | STEEL | P2-5 | STEEL |  |  |  |  |
| P2.2.I.05.220 |  | Erect - Interstitial Steel - Framing and Decking/Detailing (Working Off L1 Slab) / Placement # L2.INT.2 | 20d | 2024-12-23 A | 2025-01-22 A | P2.2.I.05.120 SS | 100% | 2025-01-14 | 2025-02-10 |  | S1 | DD | 160 | AT21 | STEEL | P2-5 | STEEL |  |  |  |  |
| P2.2.I.20.210 |  | SOMD - MEP Penetrations & Block Outs / Placement # L2.INT.1 | 5d | 2025-01-02 A | 2025-01-09 A | P2.2.I.05.210 | 100% | 2025-02-03 | 2025-02-07 |  | S1 | DD | 40 | MEP | MEP | P2-5 | MEP-2 |  | Harris |  |  |
| P2.2.I.03.210 |  | SOMD - Prep & Reinforce / Placement # L2.INT.1 | 5d | 2025-01-10 A | 2025-01-15 A | P2.2.I.05.210 | 100% | 2025-02-03 | 2025-02-07 |  | S1 | DD | 40 | AT22 | STRCONC | P2-5 | STRCONC |  |  |  |  |
| P2.2.I.20.220 |  | SOMD - MEP Penetrations & Block Outs / Placement # L2.INT.2 | 5d | 2025-01-22 A | 2025-01-30 A | P2.2.I.05.220 | 100% | 2025-02-10 | 2025-02-14 |  | S1 | DD | 40 | MEP | MEP | P2-5 | MEP-2 |  | Harris |  |  |
| P2.2.I.03.310 |  | SOMD - Inspect & Place / Placement # L2.INT.1 | 2d | 2025-01-29 A | 2025-01-29 A | P2.2.I.03.210, P2.2.I.20.210 | 100% | 2025-02-10 | 2025-02-11 |  | S1 | DD | 16 | AT23 | STRCONC | P2-5 | STRCONC |  |  |  |  |
| P2.2.I.03.220 |  | SOMD - Prep & Reinforce / Placement # L2.INT.2 | 5d | 2025-02-03 A | 2025-02-05 A | P2.2.I.05.220 | 100% | 2025-03-03 | 2025-03-07 |  | S1 | DD | 40 | AT22 | STRCONC | P2-5 | STRCONC |  |  |  |  |
| P2.2.I.03.320 |  | SOMD - Inspect & Place / Placement # L2.INT.2 | 2d | 2025-02-05 A | 2025-02-06 A | P2.2.I.03.220, P2.2.I.20.220 | 100% | 2025-03-10 | 2025-03-11 |  | S1 | DD | 16 | AT23 | STRCONC | P2-5 | STRCONC |  |  |  |  |

| ID | WBS | Activity | Duration | Start | Finish | Predecessors | Complete | Planned start | Planned finish | Calendar | Pick #1 | Pick | Temp Orig Dur | Testing Type | Resp / SRLM | PHASE | RESP / Trade | Z.RESP | Pick #2 | 744 | RESP UPD |
| --- | --- | --- | --- | --- | --- | --- | --- | --- | --- | --- | --- | --- | --- | --- | --- | --- | --- | --- | --- | --- | --- |
|  | 5 | **L3 - Columns, Walls, Decks (Working from L2)** |  | 2024-08-19 | 2025-07-24 |  |  |  |  |  |  |  |  |  |  |  |  |  |  |  |  |
|  | 1 | **Z1 - Placement # L3.1** |  | 2024-08-19 | 2024-11-20 |  |  |  |  |  |  |  |  |  |  |  |  |  |  |  |  |
| P2.3.03.110 |  | Columns & Walls - Z1 / Placement # L3.1 | 5d | 2024-08-19 A | 2024-08-23 A | P2.2.03.310 | 100% | 2024-09-18 | 2024-09-24 |  | S1 | DD | 40 | AT12 | STRCONC | P2-5 | STRCONC |  |  |  |  |
| P2.3.03.210 |  | Deck Slabs - Shore & Reinforce - Z1 / Placement # L3.1 | 9d | 2024-08-21 A | 2024-09-17 A | P2.2.03.870 FF+2d, P2.3.03.110 SS+2d, P2.2.03.990 FF, P2.2.03.1040 FF | 100% | 2024-09-20 | 2024-10-02 |  | S1 | DD | 72 | AT13 | STRCONC | P2-5 | STRCONC |  |  |  |  |
| P2.2.03.870 |  | Demo Facade Brick, Glazing, and Precast - Z1 / L3 | 2d | 2024-08-22 A | 2024-08-23 A | P1.1.03.310 | 100% | 2024-09-09 | 2024-09-10 |  | S1 | DD | 40 | RE | DEMO.1 | P2-5 | DEMO.1 |  |  |  |  |
| P2.3.20.210 |  | Deck Slabs - MEP Penetrations & In-Slab Pathways - Z1 / L3.1 | 7d | 2024-08-23 A | 2024-09-16 A | P2.BIM.L3.40.120 FF, P2.BIM.L3.40.100, P2.3.03.210 SS+2d | 100% | 2024-09-24 | 2024-10-02 |  | S1 | DD | 56 | MEP | MEP | P2-5 | MEP-2 | Harris |  |  |  |
| P2.3.03.310 |  | Decks Slabs - Inspect & Place - Z1 / Placement # L3.1 | 2d | 2024-09-10 A | 2024-09-24 A | P2.3.03.210, P2.3.20.210 | 100% | 2024-10-08 | 2024-10-09 |  | S1 | DD | 16 | AT14 | STRCONC | P2-5 | STRCONC |  |  |  |  |
| P2.3.03.410 |  | Deck Slabs - **CURE** - Z1 / Placement # L3.1 | 28d | 2024-09-11 A | 2024-10-10 A | P2.3.03.310 | 100% | 2024-10-10 | 2024-11-06 | 7D / SRLM | S1 | DD | 56 | C | CURE | P2-5 | CURE |  |  |  |  |
| P2.3.03.510 |  | Deck Slabs - Strip & Reshore - Z1 / Placement # L3.1 | 7d | 2024-09-27 A | 2024-10-09 A | P2.3.03.310 | 100% | 2024-10-01 | 2024-10-09 |  | S1 | DD | 56 | RE | STRCONC | P2-5 | STRCONC |  |  |  |  |
| P2.3.03.610 |  | Remove Reshores @ Concrete Decks Above (After #L3.1 100% Strength & #L5.1 Reshore) - Z1 / Placement # L3.1 | 4d | 2024-11-14 A | 2024-11-19 A | P2.3.03.410, P2.3.03.510, P2.5.03.510 SS+3d | 100% | 2024-12-05 | 2024-12-10 |  | S1 | DD | 32 | REM | STRCONC | P2-5 | STRCONC |  |  |  |  |
| P2.3.03.630 |  | Remove Reshores @ Interst SOMD Area (After #L3.1 100% Strength & #L5.1 Reshore) - Z1 / Placement # L3.1 | 4d | 2024-11-14 A | 2024-11-20 A | P2.3.03.610, P2.5.03.510 SS+3d | 100% | 2024-12-11 | 2024-12-16 |  | S1 | DD | 32 | REM | STRCONC | P2-5 | STRCONC |  |  |  |  |
|  | 2 | **Z2 - Placement # L3.2** |  | 2024-08-22 | 2024-11-27 |  |  |  |  |  |  |  |  |  |  |  |  |  |  |  |  |
| P2.2.03.880 |  | Demo Facade Brick, Glazing, and Precast - Z2 / L3 | 2d | 2024-08-22 A | 2024-08-23 A | P1.1.03.320 | 100% | 2024-09-09 | 2024-09-10 |  | S1 | DD | 40 | RE | DEMO.1 | P2-5 | DEMO.1 |  |  |  |  |
| P2.3.03.120 |  | Columns & Walls - Z2 / Placement # L3.2 | 5d | 2024-08-28 A | 2024-09-23 A | P2.2.03.320, P2.3.03.110 | 100% | 2024-09-03 | 2024-09-09 |  | S1 | DD | 40 | AT12 | STRCONC | P2-5 | STRCONC |  |  |  |  |
| P2.3.03.220 |  | Deck Slabs - Shore & Reinforce - Z2 / Placement # L3.2 | 7d | 2024-09-05 A | 2024-09-17 A | P2.2.03.1030, P2.2.03.880 FF+2d, P2.2.03.1000 FF, P2.3.03.120 SS+3d | 100% | 2024-10-01 | 2024-10-09 |  | S1 | DD | 56 | AT13 | STRCONC | P2-5 | STRCONC |  |  |  |  |
| P2.3.20.220 |  | Deck Slabs - MEP Penetrations & In-Slab Pathways - Z2 / L3.2 | 5d | 2024-09-10 A | 2024-09-17 A | P2.BIM.L3.40.100, P2.BIM.L3.40.120, P2.3.03.220 SS+2d, WEATHER.TIA1080 | 100% | 2024-10-03 | 2024-10-09 |  | S1 | DD | 40 | MEP | MEP | P2-5 | MEP-2 | Harris |  |  |  |
| P2.3.03.320 |  | Decks Slabs - Inspect & Place - Z2 / Placement # L3.2 | 2d | 2024-09-19 A | 2024-09-26 A | P2.3.03.220, P2.3.20.220, WEATHER.TIA1080 | 100% | 2024-10-10 | 2024-10-11 |  | S1 | DD | 16 | AT14 | STRCONC | P2-5 | STRCONC |  |  |  |  |
| P2.3.03.420 |  | Deck Slabs - **CURE** - Z2 / Placement # L3.2 | 28d | 2024-09-19 A | 2024-10-17 A | P2.3.03.320 | 100% | 2024-10-12 | 2024-11-08 | 7D / SRLM | S1 | DD | 56 | C | CURE | P2-5 | CURE |  |  |  |  |
| P2.3.03.520 |  | Deck Slabs - Strip & Reshore - Z2 / Placement # L3.2 | 7d | 2024-09-27 A | 2024-10-09 A | P2.3.03.320 | 100% | 2024-10-01 | 2024-10-09 |  | S1 | DD | 48 | RE | STRCONC | P2-5 | STRCONC |  |  |  |  |
| P2.3.03.640 |  | Remove Reshores @ Interst SOMD Area (After #L3.2 100% Strength & #L5.2 Reshore) - Z2 / Placement # L3.2 | 3d | 2024-11-14 A | 2024-11-21 A | P2.3.03.660, P2.5.03.520 SS+3d | 100% | 2024-12-20 | 2024-12-24 |  | S1 | DD | 24 | REM | STRCONC | P2-5 | STRCONC |  |  |  |  |
| P2.3.03.660 |  | Remove Reshores@ Concrete Decks Above (After #L3.2 100% Strength & #L5.2 Reshore) - Z2 / Placement # L3.2 | 3d | 2024-11-14 A | 2024-11-27 A | P2.3.03.520, P2.3.03.420, P2.3.03.630, P2.5.03.520 SS+3d | 100% | 2024-12-17 | 2024-12-19 |  | S1 | DD | 24 | REM | STRCONC | P2-5 | STRCONC |  |  |  |  |
|  | 3 | **Z3 - Placement # L3.3** |  | 2024-08-22 | 2025-07-24 |  |  |  |  |  |  |  |  |  |  |  |  |  |  |  |  |
| P2.2.03.890 |  | Demo Facade Brick, Glazing, and Precast - Z3 / L3 | 2d | 2024-08-22 A | 2024-08-23 A | P1.1.03.430, P1.1.03.330 | 100% | 2024-09-09 | 2024-09-10 |  | S1 | DD | 40 | RE | DEMO.1 | P2-5 | DEMO.1 |  |  |  |  |
| P2.3.03.230 |  | Deck Slabs - Shore & Reinforce - Z3 / Placement # L3.3 | 9d | 2024-09-05 A | 2024-09-24 A | P2.2.03.890 FF+2d, P2.2.03.1020 FF+2d, P2.2.03.1010 FF, P2.3.03.130 SS+3d | 100% | 2024-10-01 | 2024-10-11 |  | S1 | DD | 72 | AT13 | STRCONC | P2-5 | STRCONC |  | FP |  |  |
| P2.3.20.230 |  | Deck Slabs - MEP Penetrations & In-Slab Pathways - Z3 / L3.3 | 7d | 2024-09-10 A | 2024-09-23 A | P2.BIM.L3.40.100, P2.BIM.L3.40.120, P2.3.03.230 SS+2d | 100% | 2024-10-03 | 2024-10-11 |  | S1 | DD | 56 | MEP | MEP | P2-5 | MEP-2 | Harris |  |  |  |
| P2.3.03.130 |  | Columns & Walls - Z3 / Placement # L3.3 | 5d | 2024-09-23 A | 2024-10-01 A | P2.2.03.330, P2.3.03.120 | 100% | 2024-10-01 | 2024-10-07 |  | S1 | DD | 40 | AT12 | STRCONC | P2-5 | STRCONC |  | FP |  |  |
| P2.3.03.330 |  | Decks Slabs - Inspect & Place - Z3 / Placement # L3.3 | 2d | 2024-09-25 A | 2024-10-10 A | P2.3.03.230, P2.3.20.230 | 100% | 2024-10-14 | 2024-10-15 |  | S1 | DD | 16 | AT14 | STRCONC | P2-5 | STRCONC |  | FP |  |  |
| P2.3.03.430 |  | Deck Slabs - **CURE** - Z3 / Placement # L3.3 | 28d | 2024-09-26 A | 2024-10-10 A | P2.3.03.330 SS | 100% | 2024-10-03 | 2024-10-30 | 7D / SRLM | S1 | DD | 56 | C | CURE | P2-5 | CURE |  | FP |  |  |
| P2.3.03.530 |  | Deck Slabs - Strip & Reshore - Z3 / Placement # L3.3 | 7d | 2024-10-15 A | 2024-10-22 A | P2.3.03.330 | 100% | 2024-11-01 | 2024-11-11 |  | S1 | DD | 56 | RE | STRCONC | P2-5 | STRCONC |  |  |  |  |
| P2.3.03.620 |  | Remove Reshores @ Concrete Decks Above (After #L3.3 100% Strength & #L5.3 Reshore) - Z3 / Placement # L3.3 | 3d | 2024-11-14 A | 2024-11-26 A | P2.3.03.530, P2.3.03.430, P2.3.03.640, P2.5.03.530 SS+3d | 100% | 2024-12-02 | 2024-12-04 |  | S1 | DD | 24 | REM | STRCONC | P2-5 | STRCONC |  |  |  |  |
| P2.3.03.650 |  | Remove Reshores @ Interst SOMD Area (After #L3.3 100% Strength & #L5.3 Reshore) - Z3 / Placement # L3.3 | 3d | 2024-11-14 A | 2024-11-21 A | P2.3.03.620, P2.5.03.530 SS+3d | 100% | 2025-01-02 | 2025-01-06 |  | S1 | DD | 24 | REM | STRCONC | P2-5 | STRCONC |  |  |  |  |
| P2.3.03.730 |  | Erect - Stair 2-8 Steel / After #L3.3 100% Strength | 5d | 2025-07-23 A | 2025-07-24 A | P2.2.03.730 | 100% | 2025-08-08 | 2025-08-14 |  | S1 | DD | 80 | AT20 | STEEL | P2-5 | STEEL |  |  | JH | JH |

| ID | WBS | Activity | Duration | Start | Finish | Predecessors | Complete | Planned start | Planned finish | Calendar | Pick #1 | Pick | Temp Orig Dur | Testing Type | Resp / SRLM | PHASE | RESP / Trade | Z.RESP | Pick #2 | 744 | RESP UPD |
| --- | --- | --- | --- | --- | --- | --- | --- | --- | --- | --- | --- | --- | --- | --- | --- | --- | --- | --- | --- | --- | --- |
|  | 2 | **L4 - Columns, Walls, Decks (Working from L3)** |  | 2024-09-18 | 2025-07-25 |  |  |  |  |  |  |  |  |  |  |  |  |  |  |  |  |
|  | 1 | **Z1 - Placement # L4.1** |  | 2024-09-18 | 2024-12-06 |  |  |  |  |  |  |  |  |  |  |  |  |  |  |  |  |
| P2.4.03.110 |  | Columns & Walls - Z1 / Placement # L4.1 | 5d | 2024-09-18 A | 2024-09-30 A | P2.3.03.310 | 100% | 2024-10-01 | 2024-10-07 |  | S1 | DD | 40 | AT12 | STRCONC | P2-5 | STRCONC |  |  |  |  |
| P2.4.03.900 |  | Demo Facade Brick, Glazing, and Precast - Z1 / L4 | 2d | 2024-09-23 A | 2024-09-30 A | P2.3.03.310 | 100% | 2024-10-01 | 2024-10-02 |  | S1 | DD | 40 | RE | DEMO.1 | P2-5 | DEMO.1 |  |  |  |  |
| P2.4.03.210 |  | Deck Slabs - Shore & Reinforce - Z1 / Placement # L4.1 | 7d | 2024-09-24 A | 2024-10-14 A | P2.4.03.900 FF+2d, P2.4.03.110 SS+3d | 100% | 2024-10-04 | 2024-10-14 |  | S1 | DD | 56 | AT13 | STRCONC | P2-5 | STRCONC |  |  |  |  |
| P2.4.20.210 |  | Deck Slabs - MEP Penetrations & In-Slab Pathways - Z1 / L4.1 | 5d | 2024-10-01 A | 2024-10-14 A | P2.BIM.L4.40.120 FF, P2.BIM.L4.40.100, P2.4.03.210 FF | 100% | 2024-11-01 | 2024-11-07 |  | S1 | DD | 40 | MEP | MEP | P2-5 | MEP-2 | Harris |  |  |  |
| P2.4.03.310 |  | Decks Slabs - Inspect & Place - Z1 / Placement # L4.1 | 2d | 2024-10-07 A | 2024-10-15 A | P2.4.20.210, P2.4.03.210 | 100% | 2024-11-08 | 2024-11-11 |  | S1 | DD | 16 | AT14 | STRCONC | P2-5 | STRCONC |  |  |  |  |
| P2.4.03.410 |  | Deck Slabs - **CURE** - Z1 / Placement # L4.1 | 28d | 2024-10-15 A | 2024-11-12 A | P2.4.03.310 | 100% | 2024-11-12 | 2024-12-09 | 7D / SRLM | S1 | DD | 56 | C | CURE | P2-5 | CURE |  |  |  |  |
| P2.4.03.740 |  | Steel Column Bracing - Column-to-Column at Interstial Floor - Z1 / L4 | 5d | 2024-10-17 A | 2024-10-23 A | P2.4.03.110 | 100% | 2024-11-01 | 2024-11-07 |  | S1 | DD | 40 | AT12 | STEEL | P2-5 | STEEL |  |  |  |  |
| P2.4.03.750 |  | Steel Column Bracing - Column-to-Slab Edge at Interstial Floor - Z1 / L4 | 5d | 2024-10-17 A | 2024-10-23 A | P2.4.03.510 FF+1d | 100% | 2024-11-08 | 2024-11-14 |  | S1 | DD | 40 | AT12 | STEEL | P2-5 | STEEL |  |  |  |  |
| P2.4.03.510 |  | Deck Slabs - Strip & Reshore - Z1 / Placement # L4.1 | 5d | 2024-10-22 A | 2024-10-30 A | P2.4.03.310 FF+2d | 100% | 2024-11-07 | 2024-11-13 |  | S1 | DD | 40 | RE | STRCONC | P2-5 | STRCONC |  |  |  |  |
| P2.4.03.610 |  | Remove Reshores @ Concrete Decks Above (After #L4.1 100% Strength & #L6.1 Reshore) - Z1 / Placement # L4.1 | 4d | 2024-12-02 A | 2024-12-06 A | P2.4.03.510, P2.4.03.410, P2.6.03.510 SS+3d | 100% | 2025-01-02 | 2025-01-07 |  | S1 | DD | 32 | REM | STRCONC | P2-5 | STRCONC |  |  |  |  |
|  | 2 | **Z2 - Placement # L4.2** |  | 2024-09-24 | 2024-12-28 |  |  |  |  |  |  |  |  |  |  |  |  |  |  |  |  |
| P2.4.03.120 |  | Columns & Walls - Z2 / Placement # L4.2 | 5d | 2024-09-24 A | 2024-09-30 A | P2.3.03.320, P2.4.03.110 SS | 100% | 2024-10-01 | 2024-10-07 |  | S1 | DD | 40 | AT12 | STRCONC | P2-5 | STRCONC |  |  |  |  |
| P2.4.03.910 |  | Demo Facade Brick, Glazing, and Precast - Z2 / L4 | 2d | 2024-09-30 A | 2024-10-11 A | P2.3.03.320, WEATHER.TIA1090 | 100% | 2024-10-01 | 2024-10-02 |  | S1 | DD | 40 | RE | DEMO.1 | P2-5 | DEMO.1 |  |  |  |  |
| P2.4.03.220 |  | Deck Slabs - Shore & Reinforce - Z2 / Placement # L4.2 | 6d | 2024-10-01 A | 2024-10-14 A | P2.4.03.910 FF+2d, P2.4.03.120 SS+3d, WEATHER.TIA1090 | 100% | 2024-11-01 | 2024-11-08 |  | S1 | DD | 48 | AT13 | STRCONC | P2-5 | STRCONC |  |  |  |  |
| P2.4.20.220 |  | Deck Slabs - MEP Penetrations & In-Slab Pathways - Z2 / L4.2 | 4d | 2024-10-07 A | 2024-10-14 A | P2.BIM.L4.40.120 FF, P2.BIM.L4.40.100, P2.4.03.220 SS+2d, WEATHER.TIA1090 | 100% | 2024-11-05 | 2024-11-08 |  | S1 | DD | 32 | MEP | MEP | P2-5 | MEP-2 | Harris |  |  |  |
| P2.4.03.320 |  | Decks Slabs - Inspect & Place - Z2 / Placement # L4.2 | 2d | 2024-10-09 A | 2024-10-15 A | P2.4.03.220, P2.4.20.220, WEATHER.TIA1090 | 100% | 2024-11-11 | 2024-11-12 |  | S1 | DD | 16 | AT14 | STRCONC | P2-5 | STRCONC |  |  |  |  |
| P2.4.03.420 |  | Deck Slabs - **CURE** - Z2 / Placement # L4.2 | 28d | 2024-10-15 A | 2024-11-12 A | P2.4.03.320 | 100% | 2024-11-13 | 2024-12-10 | 7D / SRLM | S1 | DD | 56 | C | CURE | P2-5 | CURE |  |  |  |  |
| P2.4.03.760 |  | Steel Column Bracing - Column-to-Column at Interstial Floor - Z2 / L4 | 5d | 2024-10-17 A | 2024-10-23 A | P2.4.03.120 | 100% | 2024-11-07 | 2024-11-13 |  | S1 | DD | 40 | AT12 | STEEL | P2-5 | STEEL |  |  |  |  |
| P2.4.03.770 |  | Steel Column Bracing - Column-to-Slab Edge at Interstial Floor - Z2 / L4 | 5d | 2024-10-17 A | 2024-10-23 A | P2.4.03.320 | 100% | 2024-11-18 | 2024-11-22 |  | S1 | DD | 40 | AT12 | STEEL | P2-5 | STEEL |  |  |  |  |
| P2.4.03.520 |  | Deck Slabs - Strip & Reshore - Z2 / Placement # L4.2 | 5d | 2024-10-22 A | 2024-11-06 A | P2.4.03.320 | 100% | 2024-11-15 | 2024-11-21 |  | S1 | DD | 40 | RE | STRCONC | P2-5 | STRCONC |  |  |  |  |
| P2.4.03.620 |  | Remove Reshores @ Concrete Decks Above (After #L4.2 100% Strength & #L6.2 Reshore) - Z2 / Placement # L4.2 | 3d | 2024-12-23 A | 2024-12-28 A | P2.4.03.520, P2.4.03.420, P2.4.03.610, P2.6.03.520 SS+3d | 100% | 2025-01-08 | 2025-01-10 |  | S1 | DD | 24 | REM | STRCONC | P2-5 | STRCONC |  |  |  |  |
|  | 3 | **Z3 - Placement # L4.3** |  | 2024-09-24 | 2025-07-25 |  |  |  |  |  |  |  |  |  |  |  |  |  |  |  |  |
| P2.4.03.130 |  | Columns & Walls - Z3 / Placement # L4.3 | 5d | 2024-09-24 A | 2024-10-17 A | P2.3.03.330 SS, P2.4.03.120 SS | 100% | 2024-10-11 | 2024-10-17 |  | S1 | DD | 40 | AT12 | STRCONC | P2-5 | STRCONC |  | FP |  |  |
| P2.4.03.920 |  | Demo Facade Brick, Glazing, and Precast - Z3 / L4 | 2d | 2024-09-30 A | 2024-10-11 A | P2.3.03.330 SS | 100% | 2024-10-11 | 2024-10-14 |  | S1 | DD | 40 | RE | DEMO.1 | P2-5 | DEMO.1 |  |  |  |  |
| P2.4.03.230 |  | Deck Slabs - Shore & Reinforce - Z3 / Placement # L4.3 | 7d | 2024-10-01 A | 2024-10-17 A | P2.4.03.920 FF+2d, P2.4.03.130 SS+3d | 100% | 2024-11-01 | 2024-11-11 |  | S1 | DD | 56 | AT13 | STRCONC | P2-5 | STRCONC |  | FP |  |  |
| P2.4.20.230 |  | Deck Slabs - MEP Penetrations & In-Slab Pathways - Z3 / L4.3 | 5d | 2024-10-03 A | 2024-10-21 A | P2.BIM.L4.40.120 FF, P2.BIM.L4.40.100, P2.4.03.230 SS+2d | 100% | 2024-11-05 | 2024-11-11 |  | S1 | DD | 40 | MEP | MEP | P2-5 | MEP-2 | Harris |  |  |  |
| P2.4.03.330 |  | Decks Slabs - Inspect & Place - Z3 / Placement # L4.3 | 2d | 2024-10-14 A | 2024-10-22 A | P2.4.20.230, P2.4.03.230 | 100% | 2024-11-12 | 2024-11-13 |  | S1 | DD | 16 | AT14 | STRCONC | P2-5 | STRCONC |  | FP |  |  |
| P2.4.03.430 |  | Deck Slabs - **CURE** - Z3 / Placement # L4.3 | 28d | 2024-10-22 A | 2024-11-19 A | P2.4.03.330 | 100% | 2024-11-14 | 2024-12-11 | 7D / SRLM | S1 | DD | 56 | C | CURE | P2-5 | CURE |  | FP |  |  |
| P2.4.03.780 |  | Steel Column Bracing - Column-to-Column at Interstial Floor - Z3 / L4 | 5d | 2024-10-24 A | 2024-10-29 A | P2.4.03.130 | 100% | 2024-11-08 | 2024-11-14 |  | S1 | DD | 40 | AT12 | STEEL | P2-5 | STEEL |  | FP |  |  |
| P2.4.03.790 |  | Steel Column Bracing - Column-to-Slab Edge at Interstial Floor - Z3 / L4 | 5d | 2024-10-24 A | 2024-10-29 A | P2.4.03.330 | 100% | 2024-11-19 | 2024-11-25 |  | S1 | DD | 40 | AT12 | STEEL | P2-5 | STEEL |  | FP |  |  |
| P2.4.03.530 |  | Deck Slabs - Strip & Reshore - Z3 / Placement # L4.3 | 5d | 2024-10-30 A | 2024-11-12 A | P2.4.03.330 | 100% | 2024-11-18 | 2024-11-22 |  | S1 | DD | 40 | RE | STRCONC | P2-5 | STRCONC |  |  |  |  |
| P2.4.03.630 |  | Remove Reshores @ Concrete Decks Above (After #L4.3 100% Strength & #L6.3 Reshore) - Z3 / Placement # L4.3 | 3d | 2025-01-13 A | 2025-01-15 A | P2.4.03.430, P2.4.03.530, P2.6.03.530 SS+3d, P2.4.I.03.010 SS | 100% | 2025-02-03 | 2025-02-05 |  | S1 | DD | 24 | REM | STRCONC | P2-5 | STRCONC |  |  |  |  |
| P2.4.03.730 |  | Erect - Stair 2-8 Steel / After #L4.3 100% Strength | 5d | 2025-07-24 A | 2025-07-25 A | P2.3.03.730 | 100% | 2025-08-15 | 2025-08-21 |  | S1 | DD | 80 | AT20 | STEEL | P2-5 | STEEL |  |  | JH | JH |

| ID | WBS | Activity | Duration | Start | Finish | Predecessors | Complete | Planned start | Planned finish | Calendar | Pick #1 | Pick | Temp Orig Dur | Resp / SRLM | PHASE | RESP / Trade | Testing Type | Z.RESP |
| --- | --- | --- | --- | --- | --- | --- | --- | --- | --- | --- | --- | --- | --- | --- | --- | --- | --- | --- |
|  | 4 | **Level 4 - Interstitial** |  | 2024-12-23 | 2025-03-05 |  |  |  |  |  |  |  |  |  |  |  |  |  |
| P2.4.I.03.010 |  | Remove Reshores - L3 to L5 Slab @ Interst Areas (After #L5.1 100% Strength & #L7.1 Reshore) / Placement # L4.INT.1 | 3d | 2024-12-23 A | 2025-01-14 A | P2.7.03.410 SS+14d, P2.7.03.420 SS+14d | 100% | 2025-01-29 | 2025-01-31 |  | S | DD | 24 | STRCONC | P2-5 | STRCONC |  |  |
| P2.4.I.03.020 |  | Remove Reshores - L3 to L5 Slab @ Interst Areas (After #L5.3 100% Strength & #L7.3 Reshore) / Placement # L4.INT.2 | 3d | 2024-12-23 A | 2025-01-14 A | P2.7.03.430 SS+14d | 100% | 2025-02-03 | 2025-02-05 |  | S | DD | 24 | STRCONC | P2-5 | STRCONC |  |  |
| P2.4.I.05.110 |  | Erect - Interstitial Steel - Hangers (Working Off L3 Slab) / Placement # L4.INT.1 | 10d | 2025-01-20 A | 2025-02-17 A | P2.4.I.03.010 | 100% | 2025-02-03 | 2025-02-14 |  | S1 | DD | 80 | STEEL | P2-5 | STEEL | AT20 |  |
| P2.4.I.05.120 |  | Erect - Interstitial Steel - Hangers (Working Off L3 Slab) / Placement # L4.INT.2 | 10d | 2025-01-20 A | 2025-02-17 A | P2.4.I.03.020 | 100% | 2025-02-03 | 2025-02-14 |  | S1 | DD | 80 | STEEL | P2-5 | STEEL | AT20 |  |
| P2.4.I.05.210 |  | Erect - Interstitial Steel - Framing and Decking/Detailing (Working Off L3 Slab) / Placement # L4.INT.1 | 20d | 2025-01-27 A | 2025-02-10 A | P2.4.I.05.110 SS+5d | 100% | 2025-03-03 | 2025-03-28 |  | S1 | DD | 160 | STEEL | P2-5 | STEEL | AT21 |  |
| P2.4.I.05.220 |  | Erect - Interstitial Steel - Framing and Decking/Detailing (Working Off L3 Slab) / Placement # L4.INT.2 | 20d | 2025-01-27 A | 2025-02-10 A | P2.4.I.05.120 | 100% | 2025-03-05 | 2025-04-01 |  | S1 | DD | 160 | STEEL | P2-5 | STEEL | AT21 |  |
| P2.4.I.20.210 |  | SOMD - MEP Penetrations & Block Outs / Placement # L4.INT.1 | 5d | 2025-02-18 A | 2025-02-25 A | P2.4.I.05.210 | 100% | 2025-03-03 | 2025-03-07 |  | S1 | DD | 40 | MEP | P2-5 | MEP-2 | MEP | Harris |
| P2.4.I.03.210 |  | SOMD - Prep & Reinforce / Placement # L4.INT.1 | 5d | 2025-02-19 A | 2025-02-26 A | P2.4.I.05.210 | 100% | 2025-03-31 | 2025-04-04 |  | S1 | DD | 40 | STRCONC | P2-5 | STRCONC | AT22 |  |
| P2.4.I.20.220 |  | SOMD - MEP Penetrations & Block Outs / Placement # L4.INT.2 | 5d | 2025-02-19 A | 2025-02-24 A | P2.4.I.05.220 | 100% | 2025-03-10 | 2025-03-14 |  | S1 | DD | 40 | MEP | P2-5 | MEP-2 | MEP | Harris |
| P2.4.I.03.220 |  | SOMD - Prep & Reinforce / Placement # L4.INT.2 | 5d | 2025-02-24 A | 2025-03-04 A | P2.4.I.05.220 | 100% | 2025-03-10 | 2025-03-14 |  | S1 | DD | 40 | STRCONC | P2-5 | STRCONC | AT22 |  |
| P2.4.I.03.310 |  | SOMD - Inspect & Place / Placement # L4.INT.1 | 2d | 2025-02-25 A | 2025-02-26 A | P2.4.I.20.210, P2.4.I.03.210 | 100% | 2025-03-03 | 2025-03-04 |  | S1 | DD | 16 | STRCONC | P2-5 | STRCONC | AT23 |  |
| P2.4.I.03.320 |  | SOMD - Inspect & Place / Placement # L4.INT.2 | 2d | 2025-03-05 A | 2025-03-05 A | P2.4.I.03.220, P2.4.I.20.220 | 100% | 2025-03-05 | 2025-03-06 |  | S1 | DD | 16 | STRCONC | P2-5 | STRCONC | AT23 |  |
|  | 6 | **L5 - Columns, Walls, Decks (Working from L4)** |  | 2024-09-23 | 2025-07-28 |  |  |  |  |  |  |  |  |  |  |  |  |  |
|  | 1 | **Z1 - Placement # L5.1** |  | 2024-09-23 | 2025-01-25 |  |  |  |  |  |  |  |  |  |  |  |  |  |
| P2.2.03.930 |  | Demo Facade Brick, Glazing, and Precast - Z1 / L5 | 2d | 2024-09-23 A | 2024-09-26 A | P2.3.03.310 | 100% | 2024-10-01 | 2024-10-02 |  | S1 | DD | 40 | DEMO.1 | P2-5 | DEMO.1 | RE |  |
| P2.5.20.210 |  | Deck Slabs - MEP Penetrations & In-Slab Pathways - Z1 / L5.1 | 7d | 2024-10-11 A | 2024-10-23 A | P2.BIM.L5.40.100, P2.5.03.210 SS+2d, P2.BIM.L5.40.120 SS | 100% | 2024-11-19 | 2024-11-27 |  | S1 | DD | 56 | MEP | P2-5 | MEP-2 | MEP | Harris |
| P2.5.03.210 |  | Deck Slabs - Shore & Reinforce - Z1 / Placement # L5.1 | 9d | 2024-10-16 A | 2024-10-28 A | P2.2.03.930 FF+2d, P2.5.03.110 FF+1d, P2.4.03.740 FF+3d, P2.4.03.750 FF+2d | 100% | 2024-11-01 | 2024-11-13 |  | S1 | DD | 72 | STRCONC | P2-5 | STRCONC | AT13 |  |
| P2.5.03.110 |  | Columns & Walls - Z1 / Placement # L5.1 | 5d | 2024-10-18 A | 2024-10-28 A | P2.4.03.310 | 100% | 2024-11-01 | 2024-11-07 |  | S1 | DD | 40 | STRCONC | P2-5 | STRCONC | AT12 |  |
| P2.5.03.310 |  | Decks Slabs - Inspect & Place - Z1 / Placement # L5.1 | 2d | 2024-10-22 A | 2024-10-29 A | P2.5.03.210, P2.5.20.210 | 100% | 2024-12-02 | 2024-12-03 |  | S1 | DD | 16 | STRCONC | P2-5 | STRCONC | AT14 |  |
| P2.5.03.410 |  | Deck Slabs - **CURE** - Z1 / Placement # L5.1 | 28d | 2024-10-29 A | 2024-11-26 A | P2.5.03.310 | 100% | 2024-12-04 | 2024-12-31 | 7D / SRLM | S1 | DD | 56 | CURE | P2-5 | CURE | C |  |
| P2.5.03.510 |  | Deck Slabs - Strip & Reshore - Z1 / Placement # L5.1 | 7d | 2024-11-06 A | 2024-11-12 A | P2.5.03.310 | 100% | 2024-12-02 | 2024-12-10 |  | S1 | DD | 56 | STRCONC | P2-5 | STRCONC | RE |  |
| P2.5.03.640 |  | Remove Reshores @ Interst SOMD Area (After #L5.1 100% Strength & #L7.1 Reshore) - Z1 / Placement # L5.1 | 4d | 2024-12-23 A | 2025-01-25 A | P2.5.03.610, P2.7.03.510 SS+3d | 100% | 2025-02-12 | 2025-02-17 |  | S1 | DD | 32 | STRCONC | P2-5 | STRCONC | REM |  |
| P2.5.03.610 |  | Remove Reshores @ Concrete Decks Above (After #L5.1 100% Strength & #L7.1 Reshore) - Z1 / Placement # L5.1 | 4d | 2025-01-02 A | 2025-01-08 A | P2.5.03.410, P2.5.03.510, P2.7.03.510 SS+3d | 100% | 2025-02-06 | 2025-02-11 |  | S1 | DD | 32 | STRCONC | P2-5 | STRCONC | REM |  |

| ID | WBS | Activity | Duration | Start | Finish | Predecessors | Complete | Planned start | Planned finish | Calendar | Pick #1 | Pick | Temp Orig Dur | Testing Type | Resp / SRLM | PHASE | RESP / Trade | Z.RESP | Pick #2 | 744 | RESP UPD |
| --- | --- | --- | --- | --- | --- | --- | --- | --- | --- | --- | --- | --- | --- | --- | --- | --- | --- | --- | --- | --- | --- |
|  | 2 | **Z2 - Placement # L5.2** |  | 2024-09-30 | 2025-01-29 |  |  |  |  |  |  |  |  |  |  |  |  |  |  |  |  |
| P2.2.03.940 |  | Demo Facade Brick, Glazing, and Precast - Z2 / L5 | 2d | 2024-09-30 A | 2024-10-21 A | P2.3.03.320 | 100% | 2024-10-01 | 2024-10-02 |  | S1 | DD | 40 | RE | DEMO.1 | P2-5 | DEMO.1 |  |  |  |  |
| P2.5.03.120 |  | Columns & Walls - Z2 / Placement # L5.2 | 5d | 2024-10-08 A | 2024-10-24 A | P2.3.03.320, P2.4.03.320 FF+1d | 100% | 2024-11-01 | 2024-11-07 |  | S1 | DD | 40 | AT12 | STRCONC | P2-5 | STRCONC |  |  |  |  |
| P2.5.03.220 |  | Deck Slabs - Shore & Reinforce - Z2 / Placement # L5.2 | 7d | 2024-10-23 A | 2024-11-04 A | P2.4.03.760, P2.2.03.940 FF+2d, P2.4.03.770 FF+2d, P2.5.03.120 SS+3d | 100% | 2024-11-06 | 2024-11-14 |  | S1 | DD | 56 | AT13 | STRCONC | P2-5 | STRCONC |  |  |  |  |
| P2.5.20.220 |  | Deck Slabs - MEP Penetrations & In-Slab Pathways - Z2 / L5.2 | 5d | 2024-10-29 A | 2024-11-06 A | P2.BIM.L5.40.120 SS, P2.BIM.L5.40.100, P2.5.03.220 SS+2d | 100% | 2024-11-21 | 2024-11-27 |  | S1 | DD | 40 | MEP | MEP | P2-5 | MEP-2 | Harris |  |  |  |
| P2.5.03.320 |  | Decks Slabs - Inspect & Place - Z2 / Placement # L5.2 | 2d | 2024-10-31 A | 2024-11-07 A | P2.5.03.220 FF, P2.5.20.220 FF+2d | 100% | 2024-12-02 | 2024-12-03 |  | S1 | DD | 16 | AT14 | STRCONC | P2-5 | STRCONC |  |  |  |  |
| P2.5.03.420 |  | Deck Slabs - **CURE** - Z2 / Placement # L5.2 | 28d | 2024-10-31 A | 2024-11-12 A | P2.5.03.320 SS+1d | 100% | 2024-11-08 | 2024-12-05 | 7D / SRLM | S1 | DD | 56 | C | CURE | P2-5 | CURE |  |  |  |  |
| P2.5.03.520 |  | Deck Slabs - Strip & Reshore - Z2 / Placement # L5.2 | 6d | 2024-11-06 A | 2024-11-14 A | P2.5.03.320 | 100% | 2024-12-02 | 2024-12-09 |  | S1 | DD | 48 | RE | STRCONC | P2-5 | STRCONC |  |  |  |  |
| P2.5.03.650 |  | Remove Reshores @ Interst SOMD Area (After #L5.2 100% Strength & #L7.2 Reshore) - Z2 / Placement # L5.2 | 4d | 2025-01-07 A | 2025-01-09 A | P2.5.03.620, P2.7.03.420 | 100% | 2025-02-21 | 2025-02-26 |  | S1 | DD | 32 | REM | STRCONC | P2-5 | STRCONC |  |  |  |  |
| P2.5.03.620 |  | Remove Reshores @ Concrete Decks Above (After #L5.2 100% Strength & #L7.2 Reshore) - Z2 / Placement # L5.2 | 3d | 2025-01-13 A | 2025-01-29 A | P2.5.03.420, P2.5.03.520, P2.5.03.640 | 100% | 2025-02-18 | 2025-02-20 |  | S1 | DD | 24 | REM | STRCONC | P2-5 | STRCONC |  |  |  |  |
|  | 3 | **Z3 - Placement # L5.3** |  | 2024-10-07 | 2025-07-28 |  |  |  |  |  |  |  |  |  |  |  |  |  |  |  |  |
| P2.2.03.950 |  | Demo Facade Brick, Glazing, and Precast - Z3 / L5 | 2d | 2024-10-07 A | 2024-10-21 A | P2.3.03.330 SS | 100% | 2024-11-01 | 2024-11-04 |  | S1 | DD | 40 | RE | DEMO.1 | P2-5 | DEMO.1 |  |  |  |  |
| P2.5.03.130 |  | Columns & Walls - Z3 / Placement # L5.3 | 5d | 2024-10-18 A | 2024-10-31 A | P2.4.03.330, P2.5.03.120 | 100% | 2024-11-01 | 2024-11-07 |  | S1 | DD | 40 | AT12 | STRCONC | P2-5 | STRCONC |  | FP |  |  |
| P2.5.03.230 |  | Deck Slabs - Shore & Reinforce - Z3 / Placement # L5.3 | 9d | 2024-10-31 A | 2024-11-12 A | P2.4.03.780, P2.2.03.950 FF+2d, P2.4.03.790 FF+2d, P2.5.03.130 SS+3d | 100% | 2024-11-06 | 2024-11-18 |  | S1 | DD | 72 | AT13 | STRCONC | P2-5 | STRCONC |  | FP |  |  |
| P2.5.20.230 |  | Deck Slabs - MEP Penetrations & In-Slab Pathways - Z3 / L5.3 | 7d | 2024-11-01 A | 2024-11-13 A | P2.BIM.L5.40.120 FF, P2.BIM.L5.40.100, P2.5.03.230 SS+1d | 100% | 2024-12-06 | 2024-12-16 |  | S1 | DD | 56 | MEP | MEP | P2-5 | MEP-2 | Harris |  |  |  |
| P2.5.03.330 |  | Decks Slabs - Inspect & Place - Z3 / Placement # L5.3 | 2d | 2024-11-06 A | 2024-11-14 A | P2.5.03.230, P2.5.20.230 | 100% | 2024-12-17 | 2024-12-18 |  | S1 | DD | 16 | AT14 | STRCONC | P2-5 | STRCONC |  | FP |  |  |
| P2.5.03.430 |  | Deck Slabs - **CURE** - Z3 / Placement # L5.3 | 28d | 2024-11-07 A | 2024-11-18 A | P2.5.03.330 | 100% | 2024-12-19 | 2025-01-15 | 7D / SRLM | S1 | DD | 56 | C | CURE | P2-5 | CURE |  | FP |  |  |
| P2.5.03.530 |  | Deck Slabs - Strip & Reshore - Z3 / Placement # L5.3 | 7d | 2024-11-13 A | 2024-11-22 A | P2.5.03.330 | 100% | 2024-12-23 | 2025-01-02 |  | S1 | DD | 56 | RE | STRCONC | P2-5 | STRCONC |  |  |  |  |
| P2.5.03.660 |  | Remove Reshores @ Interst SOMD Area (After #L5.3 100% Strength & #L7.3 Reshore) - Z3 / Placement # L5.3 | 3d | 2025-01-13 A | 2025-01-29 A | P2.5.03.530, P2.5.03.430, P2.5.03.650, P2.7.03.430 | 100% | 2025-02-27 | 2025-03-03 |  | S1 | DD | 24 | REM | STRCONC | P2-5 | STRCONC |  |  |  |  |
| P2.5.03.630 |  | Remove Reshores @ Concrete Decks Above (After #L5.3 100% Strength & #L7.3 Reshore) - Z3 / Placement # L5.3 | 3d | 2025-01-14 A | 2025-02-28 A | P2.5.03.660 | 100% | 2025-03-04 | 2025-03-06 |  | S1 | DD | 24 | REM | STRCONC | P2-5 | STRCONC |  |  |  |  |
| P2.5.03.730 |  | Erect - Stair 2-8 Steel / After #L5.3 100% Strength | 5d | 2025-07-25 A | 2025-07-28 A | P2.4.03.730 | 100% | 2025-08-22 | 2025-08-28 |  | S1 | DD | 80 | AT20 | STEEL | P2-5 | STEEL |  |  | JH | JH |
|  | 3 | **L6 - Columns, Walls, Decks (Working from L5)** |  | 2024-10-28 | 2025-07-29 |  |  |  |  |  |  |  |  |  |  |  |  |  |  |  |  |
|  | 1 | **Z1 - Placement # L6.1** |  | 2024-10-28 | 2025-02-05 |  |  |  |  |  |  |  |  |  |  |  |  |  |  |  |  |
| P2.6.03.110 |  | Columns & Walls - Z1 / Placement # L6.1 | 5d | 2024-10-28 A | 2024-11-04 A | P2.5.03.310 FF+2d | 100% | 2024-12-02 | 2024-12-06 |  | S1 | DD | 40 | AT12 | STRCONC | P2-5 | STRCONC |  |  |  |  |
| P2.6.03.960 |  | Demo Facade Brick, Glazing, and Precast - Z1 / L6 | 2d | 2024-10-30 A | 2024-11-07 A | P2.5.03.310 | 100% | 2024-12-02 | 2024-12-03 |  | S1 | DD | 40 | RE | DEMO.1 | P2-5 | DEMO.1 |  |  |  |  |
| P2.6.03.210 |  | Deck Slabs - Shore & Reinforce - Z1 / Placement # L6.1 | 7d | 2024-11-04 A | 2024-11-12 A | P2.6.03.110 SS+3d, P2.6.03.960 SS+2d | 100% | 2024-12-02 | 2024-12-10 |  | S1 | DD | 56 | AT13 | STRCONC | P2-5 | STRCONC |  |  |  |  |
| P2.6.20.210 |  | Deck Slabs - MEP Penetrations & In-Slab Pathways - Z1 / L6.1 | 5d | 2024-11-11 A | 2024-11-19 A | P2.BIM.L6.40.120 FF, P2.BIM.L6.40.100, P2.6.03.210 SS+2d | 100% | 2024-12-04 | 2024-12-10 |  | S1 | DD | 40 | MEP | MEP | P2-5 | MEP-2 | Harris |  |  |  |
| P2.6.03.310 |  | Decks Slabs - Inspect & Place - Z1 / Placement # L6.1 | 2d | 2024-11-19 A | 2024-11-20 A | P2.6.03.210, P2.6.20.210 | 100% | 2024-12-11 | 2024-12-12 |  | S1 | DD | 16 | AT14 | STRCONC | P2-5 | STRCONC |  |  |  |  |
| P2.6.03.410 |  | Deck Slabs - **CURE** - Z1 / Placement # L6.1 | 28d | 2024-11-20 A | 2024-11-27 A | P2.6.03.310 | 100% | 2024-12-13 | 2025-01-09 | 7D / SRLM | S1 | DD | 56 | C | CURE | P2-5 | CURE |  |  |  |  |
| P2.6.03.740 |  | Steel Column Bracing - Column-to-Column at Interstial Floor - Z1 / L6 | 5d | 2024-11-22 A | 2024-11-27 A | P2.6.03.110 | 100% | 2024-12-04 | 2024-12-10 |  | S1 | DD | 40 | AT12 | STEEL | P2-5 | STEEL |  |  |  |  |
| P2.6.03.510 |  | Deck Slabs - Strip & Reshore - Z1 / Placement # L6.1 | 2d | 2024-11-25 A | 2024-12-20 A | P2.6.03.310 | 100% | 2024-12-17 | 2024-12-18 |  | S1 | DD | 40 | RE | STRCONC | P2-5 | STRCONC |  |  |  |  |
| P2.6.03.750 |  | Steel Column Bracing - Column-to-Slab Edge at Interstial Floor - Z1 / L6 | 5d | 2024-11-25 A | 2024-11-27 A | P2.6.03.510 SS | 100% | 2024-12-18 | 2024-12-24 |  | S1 | DD | 40 | AT12 | STEEL | P2-5 | STEEL |  |  |  |  |
| P2.6.03.610 |  | Remove Reshores @ All Areas (After #L6.1 100% Strength & #L8.1 Reshore) - Z1 / Placement # L6.1 | 4d | 2025-02-03 A | 2025-02-05 A | P2.6.03.410, P2.6.03.510, P2.8.03.510 SS+3d | 100% | 2025-03-03 | 2025-03-06 |  | S1 | DD | 32 | REM | STRCONC | P2-5 | STRCONC |  |  |  |  |

| ID | WBS | Activity | Duration | Start | Finish | Predecessors | Complete | Planned start | Planned finish | Calendar | Pick #1 | Pick | Temp Orig Dur | Testing Type | Resp / SRLM | PHASE | RESP / Trade | Z.RESP | Pick #2 | 744 | RESP UPD |
| --- | --- | --- | --- | --- | --- | --- | --- | --- | --- | --- | --- | --- | --- | --- | --- | --- | --- | --- | --- | --- | --- |
|  | 2 | **Z2 - Placement # L6.2** |  | 2024-11-06 | 2025-02-14 |  |  |  |  |  |  |  |  |  |  |  |  |  |  |  |  |
| P2.6.03.120 |  | Columns & Walls - Z2 / Placement # L6.2 | 5d | 2024-11-06 A | 2024-11-21 A | P2.5.03.320 FF+2d, P2.6.03.110 SS | 100% | 2024-12-02 | 2024-12-06 |  | S1 | DD | 40 | AT12 | STRCONC | P2-5 | STRCONC |  |  |  |  |
| P2.6.03.970 |  | Demo Facade Brick, Glazing, and Precast - Z2 / L6 | 2d | 2024-11-06 A | 2024-11-15 A | P2.5.03.320 SS+1d | 100% | 2024-12-02 | 2024-12-03 |  | S1 | DD | 40 | RE | DEMO.1 | P2-5 | DEMO.1 |  |  |  |  |
| P2.6.03.220 |  | Deck Slabs - Shore & Reinforce - Z2 / Placement # L6.2 | 7d | 2024-11-12 A | 2024-11-19 A | P2.6.03.970 FF+2d, P2.6.03.120 SS+3d | 100% | 2024-12-05 | 2024-12-13 |  | S1 | DD | 48 | AT13 | STRCONC | P2-5 | STRCONC |  |  |  |  |
| P2.6.20.220 |  | Deck Slabs - MEP Penetrations & In-Slab Pathways - Z2 / L6.2 | 5d | 2024-11-14 A | 2024-11-21 A | P2.BIM.L6.40.120 FF, P2.BIM.L6.40.100, P2.6.03.220 SS+2d | 100% | 2024-12-09 | 2024-12-13 |  | S1 | DD | 32 | MEP | MEP | P2-5 | MEP-2 | Harris |  |  |  |
| P2.6.03.320 |  | Decks Slabs - Inspect & Place - Z2 / Placement # L6.2 | 2d | 2024-11-21 A | 2024-11-26 A | P2.6.03.220, P2.6.20.220 | 100% | 2024-12-16 | 2024-12-17 |  | S1 | DD | 16 | AT14 | STRCONC | P2-5 | STRCONC |  |  |  |  |
| P2.6.03.420 |  | Deck Slabs - **CURE** - Z2 / Placement # L6.2 | 28d | 2024-11-22 A | 2024-12-02 A | P2.6.03.320 | 100% | 2024-12-18 | 2025-01-14 | 7D / SRLM | S1 | DD | 56 | C | CURE | P2-5 | CURE |  |  |  |  |
| P2.6.03.760 |  | Steel Column Bracing - Column-to-Column at Interstial Floor - Z2 / L6 | 5d | 2024-11-22 A | 2024-11-27 A | P2.6.03.120 | 100% | 2024-12-09 | 2024-12-13 |  | S1 | DD | 40 | AT12 | STEEL | P2-5 | STEEL |  |  |  |  |
| P2.6.03.770 |  | Steel Column Bracing - Column-to-Slab Edge at Interstial Floor - Z2 / L6 | 5d | 2024-11-22 A | 2024-11-27 A | P2.6.03.520 SS | 100% | 2024-12-30 | 2025-01-06 |  | S1 | DD | 40 | AT12 | STEEL | P2-5 | STEEL |  |  |  |  |
| P2.6.03.520 |  | Deck Slabs - Strip & Reshore - Z2 / Placement # L6.2 | 5d | 2024-11-29 A | 2024-12-20 A | P2.6.03.320 | 100% | 2024-12-03 | 2024-12-09 |  | S1 | DD | 40 | RE | STRCONC | P2-5 | STRCONC |  |  |  |  |
| P2.6.03.620 |  | Remove Reshores @ All Areas (After #L6.2 100% Strength & #L8.2 Reshore) - Z2 / Placement # L6.2 | 3d | 2025-02-10 A | 2025-02-14 A | P2.6.03.520, P2.6.03.420, P2.6.03.610, P2.8.03.520 SS+3d | 100% | 2025-03-07 | 2025-03-11 |  | S1 | DD | 24 | REM | STRCONC | P2-5 | STRCONC |  |  |  |  |
|  | 3 | **Z3 - Placement # L6.3** |  | 2024-11-13 | 2025-07-29 |  |  |  |  |  |  |  |  |  |  |  |  |  |  |  |  |
| P2.6.03.130 |  | Columns & Walls - Z3 / Placement # L6.3 | 5d | 2024-11-13 A | 2024-11-27 A | P2.5.03.330 FF+2d, P2.6.03.120 SS | 100% | 2024-12-10 | 2024-12-16 |  | S1 | DD | 40 | AT12 | STRCONC | P2-5 | STRCONC |  | FP |  |  |
| P2.6.03.230 |  | Deck Slabs - Shore & Reinforce - Z3 / Placement # L6.3 | 7d | 2024-11-14 A | 2024-11-27 A | P2.6.03.980 FF+2d, P2.6.03.130 SS+3d | 100% | 2024-12-13 | 2024-12-23 |  | S1 | DD | 56 | AT13 | STRCONC | P2-5 | STRCONC |  | FP |  |  |
| P2.6.03.980 |  | Demo Facade Brick, Glazing, and Precast - Z3 / L6 | 2d | 2024-11-18 A | 2024-11-22 A | P2.5.03.330 | 100% | 2024-12-17 | 2024-12-18 |  | S1 | DD | 40 | RE | DEMO.1 | P2-5 | DEMO.1 |  |  |  |  |
| P2.6.20.230 |  | Deck Slabs - Deck Slabs - MEP Penetrations & In-Slab Pathways - Z3 / L6.3 | 5d | 2024-11-20 A | 2024-12-04 A | P2.BIM.L6.40.120 FF, P2.BIM.L6.40.100, P2.6.03.230 SS+2d | 100% | 2024-12-17 | 2024-12-23 |  | S1 | DD | 40 | MEP | MEP | P2-5 | MEP-2 | Harris |  |  |  |
| P2.6.03.330 |  | Decks Slabs - Inspect & Place - Z3 / Placement # L6.3 | 3d | 2024-12-03 A | 2024-12-05 A | P2.6.03.230, P2.6.20.230 | 100% | 2025-01-03 | 2025-01-07 |  | S1 | DD | 16 | AT14 | STRCONC | P2-5 | STRCONC |  | FP |  |  |
| P2.6.03.430 |  | Deck Slabs - **CURE** - Z3 / Placement # L6.3 | 28d | 2024-12-06 A | 2025-01-02 A | P2.6.03.330 | 100% | 2025-01-08 | 2025-02-04 | 7D / SRLM | S1 | DD | 56 | C | CURE | P2-5 | CURE |  | FP |  |  |
| P2.6.03.780 |  | Steel Column Bracing - Column-to-Column at Interstial Floor - Z3 / L6 | 5d | 2024-12-09 A | 2024-12-12 A | P2.6.03.130 FF | 100% | 2025-01-02 | 2025-01-08 |  | S1 | DD | 40 | AT12 | STEEL | P2-5 | STEEL |  | FP |  |  |
| P2.6.03.790 |  | Steel Column Bracing - Column-to-Slab Edge at Interstial Floor - Z3 / L6 | 5d | 2024-12-09 A | 2024-12-12 A | P2.6.03.530 SS+1d | 100% | 2025-01-13 | 2025-01-17 |  | S1 | DD | 40 | AT12 | STEEL | P2-5 | STEEL |  | FP |  |  |
| P2.6.03.530 |  | Deck Slabs - Strip & Reshore - Z3 / Placement # L6.3 | 5d | 2024-12-11 A | 2024-12-18 A | P2.6.03.330 | 100% | 2025-01-10 | 2025-01-16 |  | S1 | DD | 40 | RE | STRCONC | P2-5 | STRCONC |  |  |  |  |
| P2.6.03.630 |  | Remove Reshores @ All Areas (After #L6.3 100% Strength & #L8.3 Reshore) - Z3 / Placement # L6.3 | 3d | 2025-02-12 A | 2025-02-28 A | P2.6.03.430, P2.6.03.530, P2.6.03.620, P2.8.03.530 SS+3d | 100% | 2025-03-12 | 2025-03-14 |  | S1 | DD | 24 | REM | STRCONC | P2-5 | STRCONC |  |  |  |  |
| P2.6.03.730 |  | Erect - Stair 2-8 Steel / After #L6.3 100% Strength | 5d | 2025-07-28 A | 2025-07-29 A | P2.5.03.730 | 100% | 2025-08-29 | 2025-09-05 |  | S1 | DD | 80 | AT20 | STEEL | P2-5 | STEEL |  |  | JH | JH |
|  | 4 | **Level 6 - Interstitial** |  | 2025-03-10 | 2025-04-24 |  |  |  |  |  |  |  |  |  |  |  |  |  |  |  |  |
| P2.6.I.03.010 |  | Remove Reshores - L5 to L7 Slab @ Interst Areas (After #L7.1 100% Strength & #MR/PS.1 Reshore) / Placement # L6.INT.1 | 10d | 2025-03-10 A | 2025-03-11 A | P2.MR/PS.03.420 SS+14d, P2.MR/PS.03.410 SS+14d | 100% | 2025-03-10 | 2025-03-21 |  | S1 | DD | 24 | REM | STRCONC | P2-5 | STRCONC |  |  |  |  |
| P2.6.I.05.210 |  | Erect - Interstitial Steel - Framing and Decking/Detailing (Working Off L5 Slab) / Placement # L6.INT.1 | 10d | 2025-03-13 A | 2025-03-28 A | P2.6.I.03.010 | 100% | 2025-03-24 | 2025-04-04 |  | S1 | DD | 80 | AT21 | STEEL | P2-5 | STEEL |  |  |  |  |
| P2.6.I.03.020 |  | Remove Reshores - L5 to L7 Slab @ Interst Areas (After #L7.3 100% Strength & #MR/PS.3 Reshore) / Placement # L6.INT.2 | 3d | 2025-03-24 A | 2025-03-31 A | P2.6.I.03.010 | 100% | 2025-03-24 | 2025-03-26 |  | S1 | DD | 24 | REM | STRCONC | P2-5 | STRCONC |  | FP |  |  |
| P2.6.I.05.110 |  | Erect - Interstitial Steel - Hangers (Working Off L5 Slab) / Placement # L6.INT.1 | 8d | 2025-03-31 A | 2025-04-07 A | P2.6.I.05.210, P2.6.I.03.010 SS+5d | 100% | 2025-03-17 | 2025-03-26 |  | S1 | DD | 64 | AT20 | STEEL | P2-5 | STEEL |  |  |  |  |
| P2.6.I.05.220 |  | Erect - Interstitial Steel - Framing and Decking/Detailing (Working Off L5 Slab) / Placement # L6.INT.2 | 10d | 2025-03-31 A | 2025-04-15 A | P2.6.I.03.020 | 100% | 2025-04-07 | 2025-04-18 |  | S1 | DD | 80 | AT21 | STEEL | P2-5 | STEEL |  | FP |  |  |
| P2.6.I.20.210 |  | SOMD - MEP Penetrations & Block Outs / Placement # L6.INT.1 | 5d | 2025-04-08 A | 2025-04-14 A | P2.6.I.05.210, P2.6.I.05.110 | 100% | 2025-05-08 | 2025-05-14 |  | S1 | DD | 40 | MEP | MEP | P2-5 | MEP-2 | Harris |  |  |  |
| P2.6.I.05.120 |  | Erect - Interstitial Steel - Hangers (Working Off L5 Slab) / Placement # L6.INT.2 | 10d | 2025-04-10 A | 2025-04-14 A | P2.6.I.05.220, P2.6.I.03.020 SS+5d | 100% | 2025-05-12 | 2025-05-23 |  | S1 | DD | 56 | AT20 | STEEL | P2-5 | STEEL |  | FP |  |  |
| P2.6.I.20.220 |  | SOMD - MEP Penetrations & Block Outs / Placement # L6.INT.2 | 3d | 2025-04-15 A | 2025-04-16 A | P2.6.I.05.120 FF | 100% | 2025-05-21 | 2025-05-23 |  | S1 | DD | 24 | MEP | MEP | P2-5 | MEP-2 | Harris |  |  |  |
| P2.6.I.03.210 |  | SOMD - Prep & Reinforce / Placement # L6.INT.1 | 5d | 2025-04-16 A | 2025-04-21 A | P2.6.I.05.210, P2.6.I.20.210 | 100% | 2025-05-15 | 2025-05-21 |  | S1 | DD | 40 | AT22 | STRCONC | P2-5 | STRCONC |  |  |  |  |
| P2.6.I.03.310 |  | SOMD - Inspect & Place / Placement # L6.INT.1 | 2d | 2025-04-21 A | 2025-04-22 A | P2.6.I.03.210, P2.6.I.20.210 | 100% | 2025-05-22 | 2025-05-23 |  | S1 | DD | 16 | AT23 | STRCONC | P2-5 | STRCONC |  |  |  |  |
| P2.6.I.03.220 |  | SOMD - Prep & Reinforce / Placement # L6.INT.2 | 2d | 2025-04-22 A | 2025-04-23 A | P2.6.I.20.220 | 100% | 2025-05-27 | 2025-05-28 |  | S1 | DD | 24 | AT22 | STRCONC | P2-5 | STRCONC |  | FP |  |  |
| P2.6.I.03.320 |  | SOMD - Inspect & Place / Placement # L6.INT.2 | 2d | 2025-04-23 A | 2025-04-24 A | P2.6.I.03.220 | 100% | 2025-05-29 | 2025-05-30 |  | S1 | DD | 16 | AT23 | STRCONC | P2-5 | STRCONC |  | FP |  |  |

| ID | WBS | Activity | Duration | Start | Finish | Predecessors | Complete | Planned start | Planned finish | Calendar | Pick #1 | Pick | Temp Orig Dur | Testing Type | Resp / SRLM | PHASE | RESP / Trade | Z.RESP | Pick #2 | 744 | RESP UPD |
| --- | --- | --- | --- | --- | --- | --- | --- | --- | --- | --- | --- | --- | --- | --- | --- | --- | --- | --- | --- | --- | --- |
|  | 7 | **L7 - Columns, Walls, Decks (Working from L6)** |  | 2024-11-20 | 2025-07-30 |  |  |  |  |  |  |  |  |  |  |  |  |  |  |  |  |
|  | 1 | **Z1 - Placement # L7.1** |  | 2024-11-20 | 2025-03-11 |  |  |  |  |  |  |  |  |  |  |  |  |  |  |  |  |
| P2.7.03.110 |  | Columns & Walls - Z1 / Placement # L7.1 | 5d | 2024-11-20 A | 2024-11-27 A | P2.6.03.310 FF+2d | 100% | 2024-12-02 | 2024-12-06 |  | S1 | DD | 40 | AT12 | STRCONC | P2-5 | STRCONC |  |  |  |  |
| P2.7.03.210 |  | Deck Slabs - Shore & Reinforce - Z1 / Placement # L7.1 | 9d | 2024-11-21 A | 2024-12-06 A | P2.6.03.750, P2.6.03.740, P2.7.03.110 SS+3d | 100% | 2024-12-05 | 2024-12-17 |  | S1 | DD | 72 | AT13 | STRCONC | P2-5 | STRCONC |  |  |  |  |
| P2.7.20.210 |  | Deck Slabs - MEP Penetrations & In-Slab Pathways - Z1 / L7.1 | 7d | 2024-12-02 A | 2024-12-06 A | P2.BIM.L7.40.120 FF, P2.BIM.L7.40.100, P2.7.03.210 SS+2d | 100% | 2025-01-02 | 2025-01-10 |  | S1 | DD | 56 | MEP | MEP | P2-5 | MEP-2 | Harris |  |  |  |
| P2.7.03.310 |  | Decks Slabs - Inspect & Place - Z1 / Placement # L7.1 | 2d | 2024-12-10 A | 2024-12-11 A | P2.7.20.210 FF, P2.7.03.210, P2.FAD.FM.200 FF, WEATHER.TIA1110 | 100% | 2025-01-09 | 2025-01-10 |  | S1 | DD | 16 | AT14 | STRCONC | P2-5 | STRCONC |  |  |  |  |
| P2.7.03.410 |  | Deck Slabs - **CURE** - Z1 / Placement # L7.1 | 28d | 2024-12-11 A | 2025-01-07 A | P2.7.03.310 | 100% | 2025-01-11 | 2025-02-07 | 7D / SRLM | S1 | DD | 56 | C | CURE | P2-5 | CURE |  |  |  |  |
| P2.7.03.510 |  | Deck Slabs - Strip & Reshore - Z1 / Placement # L7.1 | 7d | 2025-01-22 A | 2025-01-30 A | P2.7.03.310 | 100% | 2025-02-03 | 2025-02-11 |  | S1 | DD | 56 | RE | STRCONC | P2-5 | STRCONC |  |  |  |  |
| P2.7.03.610 |  | Remove Reshores @ All Areas (After #L7.1 100% Strength & #MR/PS.1 Reshore) - Z1 / Placement # L7.1 | 4d | 2025-03-03 A | 2025-03-11 A | P2.7.03.510, P2.7.03.410, P2.MR/PS.03.510 SS | 100% | 2025-03-03 | 2025-03-06 |  | S1 | DD | 32 | REM | STRCONC | P2-5 | STRCONC |  |  |  |  |
|  | 2 | **Z2 - Placement # L7.2** |  | 2024-11-26 | 2025-03-20 |  |  |  |  |  |  |  |  |  |  |  |  |  |  |  |  |
| P2.7.03.120 |  | Columns & Walls - Z2 / Placement # L7.2 | 5d | 2024-11-26 A | 2024-12-05 A | P2.6.03.320, P2.7.03.110 | 100% | 2024-12-02 | 2024-12-06 |  | S1 | DD | 40 | AT12 | STRCONC | P2-5 | STRCONC |  |  |  |  |
| P2.7.03.220 |  | Deck Slabs - Shore & Reinforce - Z2 / Placement # L7.2 | 7d | 2024-12-02 A | 2024-12-16 A | P2.6.03.770 FF, P2.6.03.760, P2.7.03.120 SS+3d | 100% | 2025-01-02 | 2025-01-10 |  | S1 | DD | 56 | AT13 | STRCONC | P2-5 | STRCONC |  |  |  |  |
| P2.7.20.220 |  | Deck Slabs - MEP Penetrations & In-Slab Pathways - Z2 / L7.2 | 5d | 2024-12-12 A | 2024-12-24 A | P2.BIM.L7.40.120 FF, P2.BIM.L7.40.100, P2.7.03.220 SS+2d | 100% | 2025-01-06 | 2025-01-10 |  | S1 | DD | 40 | MEP | MEP | P2-5 | MEP-2 | Harris |  |  |  |
| P2.7.03.320 |  | Decks Slabs - Inspect & Place - Z2 / Placement # L7.2 | 2d | 2024-12-17 A | 2024-12-26 A | P2.7.03.220, P2.7.20.220 | 100% | 2025-01-13 | 2025-01-14 |  | S1 | DD | 16 | AT14 | STRCONC | P2-5 | STRCONC |  |  |  |  |
| P2.7.03.420 |  | Deck Slabs - **CURE** - Z2 / Placement # L7.2 | 28d | 2024-12-27 A | 2025-01-25 A | P2.7.03.320 | 100% | 2025-01-15 | 2025-02-11 | 7D / SRLM | S1 | DD | 56 | C | CURE | P2-5 | CURE |  |  |  |  |
| P2.7.03.520 |  | Deck Slabs - Strip & Reshore - Z2 / Placement # L7.2 | 6d | 2025-02-10 A | 2025-02-25 A | P2.7.03.320 | 100% | 2025-03-03 | 2025-03-10 |  | S1 | DD | 48 | RE | STRCONC | P2-5 | STRCONC |  |  |  |  |
| P2.7.03.620 |  | Remove Reshores @ All Areas (After #L7.2 100% Strength & #MR/PS.2 Reshore) - Z2 / Placement # L7.2 | 3d | 2025-03-07 A | 2025-03-20 A | P2.7.03.520, P2.7.03.420, P2.7.03.610, P2.MR/PS.03.520 SS+3d | 100% | 2025-03-07 | 2025-03-11 |  | S1 | DD | 24 | REM | STRCONC | P2-5 | STRCONC |  |  |  |  |
|  | 3 | **Z3 - Placement # L7.3** |  | 2024-12-04 | 2025-07-30 |  |  |  |  |  |  |  |  |  |  |  |  |  |  |  |  |
| P2.7.03.130 |  | Columns & Walls - Z3 / Placement # L7.3 | 5d | 2024-12-04 A | 2024-12-19 A | P2.6.03.330 FF+2d, P2.7.03.120 SS | 100% | 2025-01-02 | 2025-01-08 |  | S1 | DD | 40 | AT12 | STRCONC | P2-5 | STRCONC |  | FP |  |  |
| P2.7.03.230 |  | Deck Slabs - Shore & Reinforce - Z3 / Placement # L7.3 | 9d | 2024-12-10 A | 2024-12-24 A | P2.6.03.790 FF+2d, P2.7.03.130, P2.6.03.780, P1.DEMO.2.120 | 100% | 2025-01-10 | 2025-01-22 |  | S1 | DD | 72 | AT13 | STRCONC | P2-5 | STRCONC |  | FP |  |  |
| P2.7.20.230 |  | Deck Slabs - MEP Penetrations & In-Slab Pathways - Z3 / L7.3 | 7d | 2024-12-17 A | 2024-12-30 A | P2.BIM.L7.40.120 FF, P2.BIM.L7.40.100, P2.7.03.230 SS+2d | 100% | 2025-01-14 | 2025-01-22 |  | S1 | DD | 56 | MEP | MEP | P2-5 | MEP-2 | Harris |  |  |  |
| P2.7.03.330 |  | Decks Slabs - Inspect & Place - Z3 / Placement # L7.3 | 2d | 2024-12-24 A | 2025-01-02 A | P2.7.20.230, P2.7.03.230 | 100% | 2025-01-23 | 2025-01-24 |  | S1 | DD | 16 | AT14 | STRCONC | P2-5 | STRCONC |  | FP |  |  |
| P2.7.03.430 |  | Deck Slabs - **CURE** - Z3 / Placement # L7.3 | 28d | 2024-12-24 A | 2025-01-30 A | P2.7.03.330 SS | 100% | 2025-01-25 | 2025-02-21 | 7D / SRLM | S1 | DD | 56 | C | CURE | P2-5 | CURE |  | FP |  |  |
| P2.7.03.530 |  | Deck Slabs - Strip & Reshore - Z3 / Placement # L7.3 | 7d | 2025-02-17 A | 2025-02-28 A | P2.7.03.330 | 100% | 2025-03-03 | 2025-03-11 |  | S1 | DD | 56 | RE | STRCONC | P2-5 | STRCONC |  |  |  |  |
| P2.7.03.630 |  | Remove Reshores @ All Areas (After #L7.3 100% Strength & #MR/PS.3 Reshore) - Z3 / Placement # L7.3 | 3d | 2025-03-19 A | 2025-03-28 A | P2.7.03.530, P2.7.03.620, P2.7.03.430, P2.MR/PS.03.530 SS+3d | 100% | 2025-03-19 | 2025-03-21 |  | S1 | DD | 24 | REM | STRCONC | P2-5 | STRCONC |  |  |  |  |
| P2.7.03.730 |  | Erect - Stair 2-8 Steel / After #L7.3 100% Strength | 5d | 2025-07-29 A | 2025-07-30 A | P2.6.03.730 | 100% | 2025-09-08 | 2025-09-12 |  | S1 | DD | 80 | AT20 | STEEL | P2-5 | STEEL |  |  | JH | JH |

| ID | WBS | Activity | Duration | Start | Finish | Predecessors | Complete | Planned start | Planned finish | Calendar | Pick #1 | Pick | Temp Orig Dur | Testing Type | Resp / SRLM | PHASE | RESP / Trade | Z.RESP | Pick #2 |
| --- | --- | --- | --- | --- | --- | --- | --- | --- | --- | --- | --- | --- | --- | --- | --- | --- | --- | --- | --- |
|  | 4 | **L8 - Columns, Walls, Decks (Working from L7)** |  | 2024-12-12 | 2025-06-05 |  |  |  |  |  |  |  |  |  |  |  |  |  |  |
|  | 4 | **Z1 - Placement # L8.1** |  | 2024-12-12 | 2025-04-17 |  |  |  |  |  |  |  |  |  |  |  |  |  |  |
| P2.8.03.110 |  | Columns & Walls - Z1 / Placement # L8.1 | 5d | 2024-12-12 A | 2025-01-02 A | P2.7.03.310 FF+1d, WEATHER.TIA1120 | 100% | 2025-01-02 | 2025-01-08 |  | S1 | DD | 40 | AT12 | STRCONC | P2-5 | STRCONC |  |  |
| P2.8.03.210 |  | Deck Slabs - Shore & Reinforce - Z1 / Placement # L8.1 | 7d | 2024-12-23 A | 2025-01-09 A | P2.8.03.110 FF+2d | 100% | 2025-01-13 | 2025-01-21 |  | S1 | DD | 56 | AT13 | STRCONC | P2-5 | STRCONC |  |  |
| P2.8.20.210 |  | Deck Slabs - MEP Penetrations & In-Slab Pathways - Z1 / Placement # L8.1 | 5d | 2024-12-31 A | 2025-01-13 A | P2.BIM.L8.40.120 FF, P2.BIM.L8.40.100 FF, P2.8.03.210 SS+2d | 100% | 2025-01-15 | 2025-01-21 |  | S1 | DD | 40 | MEP | MEP | P2-5 | MEP-2 | Harris |  |
| P2.8.03.310 |  | Decks Slabs - Inspect & Place - Z1 / Placement # L8.1 | 2d | 2025-01-10 A | 2025-01-14 A | P2.8.20.210, P2.8.03.210 | 100% | 2025-02-10 | 2025-02-11 |  | S1 | DD | 16 | AT14 | STRCONC | P2-5 | STRCONC |  |  |
| P2.8.03.410 |  | Deck Slabs - **CURE** - Z1 / Placement # L8.1 | 28d | 2025-01-10 A | 2025-02-15 A | P2.8.03.310 SS+1d | 100% | 2025-02-11 | 2025-03-10 | 7D / SRLM | S1 | DD | 56 | C | CURE | P2-5 | CURE |  |  |
| P2.8.03.510 |  | Deck Slabs - Strip & Reshore - Z1 / Placement # L8.1 | 5d | 2025-01-27 A | 2025-02-17 A | P2.8.03.310 | 100% | 2025-02-14 | 2025-02-20 |  | S1 | DD | 40 | RE | STRCONC | P2-5 | STRCONC |  |  |
| P2.8.03.740 |  | Steel Column Bracing - Column-to-Column at Interstial Floor - Z1 / L8 | 5d | 2025-02-10 A | 2025-02-13 A | P2.8.03.110 | 100% | 2025-03-03 | 2025-03-07 |  | S1 | DD | 40 | AT12 | STEEL | P2-5 | STEEL |  |  |
| P2.8.03.750 |  | Steel Column Bracing - Column-to-Slab Edge at Interstial Floor - Z1 / L8 | 5d | 2025-02-10 A | 2025-02-13 A | P2.8.03.510 FF+1d | 100% | 2025-03-03 | 2025-03-07 |  | S1 | DD | 40 | AT12 | STEEL | P2-5 | STEEL |  |  |
| P2.8.03.610 |  | Remove Reshores @ All Areas (After #L8.1 100% Strength & #PR.1 Reshore) - Z1 / Placement # L8.1 | 3d | 2025-04-15 A | 2025-04-17 A | P2.8.03.410, P2.8.03.510, P2.PR.03.510 SS+1d, P2.PR.03.410 SS+21d | 100% | 2025-05-01 | 2025-05-05 |  | S1 | DD | 32 | REM | STRCONC | P2-5 | STRCONC |  |  |
|  | 5 | **Z2 - Placement # L8.2** |  | 2024-12-19 | 2025-04-03 |  |  |  |  |  |  |  |  |  |  |  |  |  |  |
| P2.8.03.120 |  | Columns & Walls - Z2 / Placement # L8.2 | 5d | 2024-12-19 A | 2025-01-10 A | P2.7.03.320 FF+2d, P2.8.03.110 SS | 100% | 2025-01-09 | 2025-01-15 |  | S1 | DD | 40 | AT12 | STRCONC | P2-5 | STRCONC |  |  |
| P2.8.03.220 |  | Deck Slabs - Shore & Reinforce - Z2 / Placement # L8.2 | 6d | 2024-12-31 A | 2025-01-16 A | P2.8.03.120 FF+4d, WEATHER.TIA1160 | 100% | 2025-01-20 | 2025-01-27 |  | S1 | DD | 48 | AT13 | STRCONC | P2-5 | STRCONC |  |  |
| P2.8.20.220 |  | Deck Slabs - MEP Penetrations & In-Slab Pathways - Z2 / Placement # L8.2 | 4d | 2025-01-14 A | 2025-01-23 A | P2.BIM.L8.40.100 FF, P2.BIM.L8.40.120 FF, P2.8.03.220 SS+2d | 100% | 2025-02-06 | 2025-02-11 |  | S1 | DD | 32 | MEP | MEP | P2-5 | MEP-2 | Harris |  |
| P2.8.03.320 |  | Decks Slabs - Inspect & Place - Z2 / Placement # L8.2 | 2d | 2025-01-16 A | 2025-01-27 A | P2.8.03.220, P2.8.20.220 | 100% | 2025-02-14 | 2025-02-17 |  | S1 | DD | 16 | AT14 | STRCONC | P2-5 | STRCONC |  |  |
| P2.8.03.420 |  | Deck Slabs - **CURE** - Z2 / Placement # L8.2 | 28d | 2025-01-17 A | 2025-02-21 A | P2.8.03.320 SS+1d | 100% | 2025-02-15 | 2025-03-14 | 7D / SRLM | S1 | DD | 56 | C | CURE | P2-5 | CURE |  |  |
| P2.8.03.520 |  | Deck Slabs - Strip & Reshore - Z2 / Placement # L8.2 | 5d | 2025-02-10 A | 2025-03-14 A | P2.8.03.320 | 100% | 2025-03-03 | 2025-03-07 |  | S1 | DD | 40 | RE | STRCONC | P2-5 | STRCONC |  |  |
| P2.8.03.760 |  | Steel Column Bracing - Column-to-Column at Interstial Floor - Z2 / L8 | 5d | 2025-02-10 A | 2025-02-13 A | P2.8.03.120, WEATHER.TIA1160 | 100% | 2025-03-03 | 2025-03-07 |  | S1 | DD | 40 | AT12 | STEEL | P2-5 | STEEL |  |  |
| P2.8.03.770 |  | Steel Column Bracing - Column-to-Slab Edge at Interstial Floor - Z2 / L8 | 5d | 2025-02-10 A | 2025-02-13 A | P2.8.03.520 SS | 100% | 2025-03-06 | 2025-03-12 |  | S1 | DD | 40 | AT12 | STEEL | P2-5 | STEEL |  |  |
| P2.8.03.620 |  | Remove Reshores @ All Areas (After #L8.2 100% Strength & #PR.2 Reshore) - Z2 / Placement # L8.2 | 3d | 2025-04-01 A | 2025-04-03 A | P2.8.03.520, P2.8.03.420, P2.PR.03.520 SS+3d, P2.8.03.610 SS+2d | 100% | 2025-05-20 | 2025-05-22 |  | S1 | DD | 24 | REM | STRCONC | P2-5 | STRCONC |  |  |
|  | 6 | **Z3 - Placement # L8.3** |  | 2024-12-26 | 2025-05-09 |  |  |  |  |  |  |  |  |  |  |  |  |  |  |
| P2.8.03.130 |  | Columns & Walls - Z3 / Placement # L8.3 | 5d | 2024-12-26 A | 2025-01-29 A | P2.7.03.330 FF+2d, P2.8.03.120 SS, WEATHER.TIA1160 | 100% | 2025-01-09 | 2025-01-15 |  | S1 | DD | 40 | AT12 | STRCONC | P2-5 | STRCONC |  | FP |
| P2.8.03.230 |  | Deck Slabs - Shore & Reinforce - Z3 / Placement # L8.3 | 7d | 2025-01-15 A | 2025-01-27 A | P2.8.03.130 | 100% | 2025-02-10 | 2025-02-18 |  | S1 | DD | 56 | AT13 | STRCONC | P2-5 | STRCONC |  | FP |
| P2.8.20.230 |  | Deck Slabs - MEP Penetrations & In-Slab Pathways - Z3 / Placement # L8.3 | 5d | 2025-01-28 A | 2025-01-31 A | P2.BIM.L8.40.100 FF, P2.BIM.L8.40.120 FF, P2.8.03.230 SS+2d | 100% | 2025-02-12 | 2025-02-18 |  | S1 | DD | 40 | MEP | MEP | P2-5 | MEP-2 | Harris |  |
| P2.8.03.330 |  | Decks Slabs - Inspect & Place - Z3 / Placement # L8.3 | 2d | 2025-01-30 A | 2025-02-04 A | P2.8.03.230, P2.8.20.230, WEATHER.TIA1190 | 100% | 2025-02-19 | 2025-02-20 |  | S1 | DD | 16 | AT14 | STRCONC | P2-5 | STRCONC |  | FP |
| P2.8.03.430 |  | Deck Slabs - **CURE** - Z3 / Placement # L8.3 | 28d | 2025-01-31 A | 2025-02-28 A | P2.8.03.330 SS | 100% | 2025-02-21 | 2025-03-20 | 7D / SRLM | S1 | DD | 56 | C | CURE | P2-5 | CURE |  | FP |
| P2.8.03.780 |  | Steel Column Bracing - Column-to-Column at Interstial Floor - Z3 / L8 | 5d | 2025-02-10 A | 2025-02-13 A | P2.8.03.130 | 100% | 2025-03-03 | 2025-03-07 |  | S1 | DD | 40 | AT12 | STEEL | P2-5 | STEEL |  | FP |
| P2.8.03.790 |  | Steel Column Bracing - Column-to-Slab Edge at Interstial Floor - Z3 / L8 | 5d | 2025-02-10 A | 2025-02-13 A | P2.8.03.780 | 100% | 2025-03-04 | 2025-03-10 |  | S1 | DD | 40 | AT12 | STEEL | P2-5 | STEEL |  | FP |
| P2.8.03.530 |  | Deck Slabs - Strip & Reshore - Z3 / Placement # L8.3 | 5d | 2025-02-12 A | 2025-03-28 A | P2.8.03.330, P2.8.03.790 | 100% | 2025-03-07 | 2025-03-13 |  | S1 | DD | 40 | RE | STRCONC | P2-5 | STRCONC |  |  |
| P2.8.03.730 |  | Erect - Stair 2-8 Steel / After #L8.3 100% Strength | 5d | 2025-02-17 A | 2025-02-24 A | P2.8.03.330 | 100% | 2025-03-03 | 2025-03-07 |  | S1 | DD | 80 | AT20 | STEEL | P2-5 | STEEL |  |  |
| P2.8.03.630 |  | Remove Reshores @ All Areas (After #L8.3 100% Strength & #PR.2 Reshore) - Z3 / Placement # L8.3 | 3d | 2025-05-01 A | 2025-05-09 A | P2.8.03.530, P2.8.03.430, P2.8.03.620, P2.PR.03.520 SS+3d | 100% | 2025-06-02 | 2025-06-04 |  | S1 | DD | 24 | REM | STRCONC | P2-5 | STRCONC |  |  |

| ID | WBS | Activity | Duration | Start | Finish | Predecessors | Complete | Planned start | Planned finish | Calendar | Pick #1 | Pick | Temp Orig Dur | Testing Type | Resp / SRLM | PHASE | RESP / Trade | Z.RESP | 744 | RESP UPD |
| --- | --- | --- | --- | --- | --- | --- | --- | --- | --- | --- | --- | --- | --- | --- | --- | --- | --- | --- | --- | --- |
|  | 1 | **Level 8 - Interstitial** |  | 2025-04-23 | 2025-06-05 |  |  |  |  |  |  |  |  |  |  |  |  |  |  |  |
| P2.8.I.03.010 |  | Remove Reshores - L7 to Main Roof @ Interst Areas (After #MR/PS.1 100% Strength & #PR.1 Reshore) / Placement # L8.INT.1 | 3d | 2025-04-23 A | 2025-04-30 A | P2.PR.03.410 | 100% | 2025-05-15 | 2025-05-19 |  | S1 | DD | 24 | REM | STRCONC | P2-5 | STRCONC |  |  |  |
| P2.8.I.03.020 |  | Remove Reshores - L7 to Main Roof @ Interst Areas (After #MR/PS.3 100% Strength & #PR.3 Reshore) / Placement # L8.INT.2 | 5d | 2025-05-01 A | 2025-05-02 A | P2.PR.03.420 | 100% | 2025-06-02 | 2025-06-06 |  | S1 | DD | 24 | REM | STRCONC | P2-5 | STRCONC |  |  |  |
| P2.8.I.05.210 |  | Erect - Interstitial Steel - Framing and Decking/Detailing (Working Off L7 Slab) / Placement # L8.INT.1 | 10d | 2025-05-01 A | 2025-05-12 A | P2.8.I.03.010 | 100% | 2025-06-02 | 2025-06-13 |  | S1 | DD | 80 | AT21 | STEEL | P2-5 | STEEL |  |  |  |
| P2.8.I.05.110 |  | Erect - Interstitial Steel - Hangers (Working Off L7 Slab) / Placement # L8.INT.1 | 8d | 2025-05-12 A | 2025-05-19 A | P2.8.I.03.010, P2.8.I.05.210 FF+5d | 100% | 2025-06-11 | 2025-06-20 |  | S1 | DD | 64 | AT20 | STEEL | P2-5 | STEEL |  |  |  |
| P2.8.I.05.220 |  | Erect - Interstitial Steel - Framing and Decking/Detailing (Working Off L7 Slab) / Placement # L8.INT.2 | 15d | 2025-05-13 A | 2025-05-16 A | P2.8.I.03.020 | 100% | 2025-06-09 | 2025-06-27 |  | S1 | DD | 80 | AT21 | STEEL | P2-5 | STEEL |  |  |  |
| P2.8.I.20.210 |  | SOMD - MEP Penetrations & Block Outs / Placement # L8.INT.1 | 3d | 2025-05-13 A | 2025-05-28 A | P2.8.I.05.110 FF+1d | 100% | 2025-06-19 | 2025-06-23 |  | S1 | DD | 24 | MEP | MEP | P2-5 | MEP-2 | Harris |  |  |
| P2.8.I.05.120 |  | Erect - Interstitial Steel - Hangers (Working Off L7 Slab) / Placement # L8.INT.2 | 7d | 2025-05-16 A | 2025-05-27 A | P2.8.I.05.220 FF+3d | 100% | 2025-06-24 | 2025-07-02 |  | S1 | DD | 56 | AT20 | STEEL | P2-5 | STEEL |  |  |  |
| P2.8.I.20.220 |  | SOMD - MEP Penetrations & Block Outs / Placement # L8.INT.2 | 3d | 2025-05-21 A | 2025-05-30 A | P2.8.I.05.120 FF+1d | 100% | 2025-07-01 | 2025-07-03 |  | S1 | DD | 24 | MEP | MEP | P2-5 | MEP-2 | Harris |  |  |
| P2.8.I.03.210 |  | SOMD - Prep & Reinforce / Placement # L8.INT.1 | 3d | 2025-05-27 A | 2025-05-28 A | P2.8.I.20.210 FF+1d | 100% | 2025-06-20 | 2025-06-24 |  | S1 | DD | 24 | AT22 | STRCONC | P2-5 | STRCONC |  |  |  |
| P2.8.I.03.310 |  | SOMD - Inspect & Place / Placement # L8.INT.1 | 2d | 2025-05-29 A | 2025-05-29 A | P2.8.I.03.210 | 100% | 2025-06-25 | 2025-06-26 |  | S1 | DD | 16 | AT23 | STRCONC | P2-5 | STRCONC |  |  |  |
| P2.8.I.03.220 |  | SOMD - Prep & Reinforce / Placement # L8.INT.2 | 3d | 2025-06-02 A | 2025-06-04 A | P2.8.I.20.220 FF+1d | 100% | 2025-07-01 | 2025-07-03 |  | S1 | DD | 24 | AT22 | STRCONC | P2-5 | STRCONC |  | JH | JH |
| P2.8.I.03.320 |  | SOMD - Inspect & Place / Placement # L8.INT.2 | 2d | 2025-06-04 A | 2025-06-05 A | P2.8.I.03.220 | 100% | 2025-07-07 | 2025-07-08 |  | S1 | DD | 16 | AT23 | STRCONC | P2-5 | STRCONC |  | JH | JH |
|  | 8 | **Main Roof / Penthouse Slab (MR/PS) - Columns, Walls, Decks (Working from L8)** |  | 2025-01-22 | 2025-04-28 |  |  |  |  |  |  |  |  |  |  |  |  |  |  |  |
|  | 1 | **Z1 - Placement # MR/PS.1** |  | 2025-01-22 | 2025-04-28 |  |  |  |  |  |  |  |  |  |  |  |  |  |  |  |
| P2.MR/PS.03.110 |  | Columns & Walls - Z1 / Placement # MR/PS.1 | 5d | 2025-01-22 A | 2025-02-13 A | P2.8.03.310 FF+2d | 100% | 2025-02-07 | 2025-02-13 |  | S1 | DD | 40 | AT12 | STRCONC | P2-5 | STRCONC |  |  |  |
| P2.MR/PS.03.210 |  | Deck Slabs - Shore & Reinforce - Z1 / Placement # MR/PS.1 | 9d | 2025-01-29 A | 2025-02-03 A | P2.8.03.750 FF, P2.MR/PS.03.110 FF+1d, P2.8.03.740 FF | 100% | 2025-02-14 | 2025-02-26 |  | S1 | DD | 72 | AT13 | STRCONC | P2-5 | STRCONC |  |  |  |
| P2.MR/PH.20.210 |  | Deck Slabs - MEP Penetrations & In-Slab Pathways - Z1 / MR/PS.1 | 7d | 2025-01-31 A | 2025-02-11 A | P2.BIM.MRPH.40.120 FF, P2.BIM.MRPH.40.100 FF, P2.MR/PS.03.210 FF | 100% | 2025-02-03 | 2025-02-11 |  | S1 | DD | 56 | MEP | MEP | P2-5 | MEP-2 | Harris |  |  |
| P2.MR/PS.03.310 |  | Decks Slabs - Inspect & Place - Z1 / Placement # MR/PS.1 | 2d | 2025-02-14 A | 2025-02-17 A | P2.MR/PH.20.210, P2.MR/PS.03.210 | 100% | 2025-03-10 | 2025-03-11 |  | S1 | DD | 16 | AT14 | STRCONC | P2-5 | STRCONC |  |  |  |
| P2.MR/PS.03.410 |  | Deck Slabs - **CURE** - Z1 / Placement # MR/PS.1 | 28d | 2025-02-14 A | 2025-03-15 A | P2.MR/PS.03.310 | 100% | 2025-03-08 | 2025-04-04 | 7D / SRLM | S1 | DD | 56 | C | CURE | P2-5 | CURE |  |  |  |
| P2.MR/PS.03.510 |  | Deck Slabs - Strip & Reshore - Z1 / Placement # MR/PS.1 | 7d | 2025-03-15 A | 2025-03-15 A | P2.MR/PS.03.310 | 100% | 2025-04-01 | 2025-04-09 |  | S1 | DD | 56 | RE | STRCONC | P2-5 | STRCONC |  |  |  |
| P2.MR/PS.03.610 |  | Remove Reshores - (After #PR.1 100% Strength) - Z1 / Placement # MR/PS.1 | 4d | 2025-04-16 A | 2025-04-28 A | P2.MR/PS.03.510, P2.PR.03.410 SS+14d | 100% | 2025-05-01 | 2025-05-06 |  | S1 | DD | 32 | REM | STRCONC | P2-5 | STRCONC |  |  |  |
|  | 2 | **Z2 - Placement # MR/PS.2** |  | 2025-01-30 | 2025-04-10 |  |  |  |  |  |  |  |  |  |  |  |  |  |  |  |
| P2.MR/PS.03.120 |  | Columns & Walls - Z2 / Placement # MR/PS.2 | 5d | 2025-01-30 A | 2025-02-20 A | P2.8.03.320 FF+2d, P2.MR/PS.03.110 SS+2d | 100% | 2025-02-13 | 2025-02-19 |  | S1 | DD | 40 | AT12 | STRCONC | P2-5 | STRCONC |  |  |  |
| P2.MR/PS.03.220 |  | Deck Slabs - Shore & Reinforce - Z2 / Placement # MR/PS.2 | 7d | 2025-02-04 A | 2025-02-25 A | P2.MR/PS.03.120 FF+1d, P2.8.03.760 FF+1d | 100% | 2025-03-03 | 2025-03-11 |  | S1 | DD | 56 | AT13 | STRCONC | P2-5 | STRCONC |  |  |  |
| P2.MR/PH.20.220 |  | Deck Slabs - MEP Penetrations & In-Slab Pathways - Z2 / MR/PS.2 | 5d | 2025-02-17 A | 2025-02-26 A | P2.BIM.MRPH.40.120 FF, P2.BIM.MRPH.40.100 FF, P2.MR/PS.03.220 SS+2d | 100% | 2025-03-05 | 2025-03-11 |  | S1 | DD | 40 | MEP | MEP | P2-5 | MEP-2 | Harris |  |  |
| P2.MR/PS.03.320 |  | Decks Slabs - Inspect & Place - Z2 / Placement # MR/PS.2 | 2d | 2025-02-21 A | 2025-02-27 A | P2.MR/PS.03.220, P2.MR/PH.20.220 | 100% | 2025-03-12 | 2025-03-13 |  | S1 | DD | 16 | AT14 | STRCONC | P2-5 | STRCONC |  |  |  |
| P2.MR/PS.03.420 |  | Deck Slabs - **CURE** - Z2 / Placement # MR/PS.2 | 28d | 2025-02-22 A | 2025-03-25 A | P2.MR/PS.03.320 | 100% | 2025-03-14 | 2025-04-10 | 7D / SRLM | S1 | DD | 56 | C | CURE | P2-5 | CURE |  |  |  |
| P2.MR/PS.03.520 |  | Deck Slabs - Strip & Reshore - Z2 / Placement # MR/PS.2 | 6d | 2025-03-03 A | 2025-03-28 A | P2.8.03.770, P2.MR/PS.03.320 | 100% | 2025-03-03 | 2025-03-10 |  | S1 | DD | 48 | RE | STRCONC | P2-5 | STRCONC |  |  |  |
| P2.MR/PS.03.620 |  | Remove Reshores - (After #PR.1 100% Strength) - Z2 / Placement # MR/PS.2 | 3d | 2025-04-02 A | 2025-04-10 A | P2.MR/PS.03.520, P2.MR/PS.03.610 | 100% | 2025-05-07 | 2025-05-09 |  | S1 | DD | 24 | REM | STRCONC | P2-5 | STRCONC |  |  |  |

| ID | WBS | Activity | Duration | Start | Finish | Predecessors | Complete | Planned start | Planned finish | Calendar | Pick #1 | Pick | Temp Orig Dur | Testing Type | Pick #2 | Resp / SRLM | PHASE | RESP / Trade | Z.RESP |
| --- | --- | --- | --- | --- | --- | --- | --- | --- | --- | --- | --- | --- | --- | --- | --- | --- | --- | --- | --- |
|  | 3 | **Z3 - Placement # MR/PS.3** |  | 2025-02-03 | 2025-04-17 |  |  |  |  |  |  |  |  |  |  |  |  |  |  |
| P2.MR/PS.03.130 |  | Columns & Walls - Z3 / Placement # MR/PS.3 | 5d | 2025-02-03 A | 2025-02-27 A | P2.8.03.330 FF+2d, P2.MR/PS.03.120 SS+2d | 100% | 2025-03-03 | 2025-03-07 |  | S1 | DD | 40 | AT12 | FP | STRCONC | P2-5 | STRCONC |  |
| P2.MR/PS.03.230 |  | Deck Slabs - Shore & Reinforce - Z3 / Placement # MR/PS.3 | 9d | 2025-02-20 A | 2025-02-28 A | P2.8.03.790 FF+2d, WEATHER.TIA1200, P2.MR/PS.03.130 FF+1d, P2.8.03.780 FF | 100% | 2025-03-03 | 2025-03-13 |  | S1 | DD | 72 | AT13 | FP | STRCONC | P2-5 | STRCONC |  |
| P2.MR/PH.20.230 |  | Deck Slabs - MEP Penetrations & In-Slab Pathways - Z3 / MR/PS.3 | 7d | 2025-02-24 A | 2025-03-18 A | P2.MR/PS.03.230 FF, P2.BIM.MRPH.40.120 FF, P2.BIM.MRPH.40.100 FF, WEATHER.TIA1200 | 100% | 2025-03-05 | 2025-03-13 |  | S1 | DD | 56 | MEP |  | MEP | P2-5 | MEP-2 | Harris |
| P2.MR/PS.03.330 |  | Decks Slabs - Inspect & Place - Z3 / Placement # MR/PS.3 | 2d | 2025-02-26 A | 2025-03-19 A | P2.MR/PS.03.230, P2.MR/PH.20.230, WEATHER.TIA1200 | 100% | 2025-03-13 | 2025-03-14 |  | S1 | DD | 16 | AT14 | FP | STRCONC | P2-5 | STRCONC |  |
| P2.MR/PS.03.430 |  | Deck Slabs - **CURE** - Z3 / Placement # MR/PS.3 | 28d | 2025-02-27 A | 2025-04-16 A | P2.MR/PS.03.330 SS | 100% | 2025-03-13 | 2025-04-09 | 7D / SRLM | S1 | DD | 56 | C | FP | CURE | P2-5 | CURE |  |
| P2.MR/PS.03.530 |  | Deck Slabs - Strip & Reshore - Z3 / Placement # MR/PS.3 | 7d | 2025-03-19 A | 2025-03-19 A | P2.MR/PS.03.330 | 100% | 2025-04-01 | 2025-04-09 |  | S1 | DD | 56 | RE |  | STRCONC | P2-5 | STRCONC |  |
| P2.MR/PS.03.630 |  | Remove Reshores - (After #PR.2 100% Strength) - Z3 / Placement # MR/PS.3 | 3d | 2025-04-14 A | 2025-04-17 A | P2.MR/PS.03.530, P2.MR/PS.03.620, P2.MR/PS.03.430, P2.PR.03.420 SS+21d | 100% | 2025-05-29 | 2025-06-02 |  | S1 | DD | 24 | REM |  | STRCONC | P2-5 | STRCONC |  |
|  | 9 | **Penthouse Roof(PR) - Columns, Walls, Decks (Working from MR/PS)** |  | 2025-02-19 | 2025-05-05 |  |  |  |  |  |  |  |  |  |  |  |  |  |  |
|  | 4 | **Z1 - Placement # PR.1** |  | 2025-02-19 | 2025-04-28 |  |  |  |  |  |  |  |  |  |  |  |  |  |  |
| P2.PR.03.110 |  | Columns & Walls - Z1 / Placement # PR.1 | 5d | 2025-02-19 A | 2025-03-20 A | P2.MR/PS.03.310 FF | 100% | 2025-03-03 | 2025-03-07 |  | S1 | DD | 40 | AT12 |  | STRCONC | P2-5 | STRCONC |  |
| P2.PR.20.210 |  | Deck Slabs - MEP Penetrations & In-Slab Pathways - Z1 / PR.1 | 5d | 2025-03-06 A | 2025-03-31 A | P2.BIM.PHR.40.100 FF, P2.BIM.PHR.40.110 SS+2d, P2.PR.03.210 FF+1d | 100% | 2025-03-06 | 2025-03-12 |  | S1 | DD | 40 | MEP |  | MEP | P2-5 | MEP-2 | Harris |
| P2.PR.03.210 |  | Deck Slabs - Shore & Reinforce - Z1 / Placement # PR.1 | 7d | 2025-03-10 A | 2025-03-28 A | P2.PR.03.110 SS+2d | 100% | 2025-03-03 | 2025-03-11 |  | S1 | DD | 64 | AT13 |  | STRCONC | P2-5 | STRCONC |  |
| P2.PR.03.310 |  | Decks Slabs - Inspect & Place - Z1 / Placement # PR.1 | 6d | 2025-03-20 A | 2025-03-31 A | P2.PR.03.210, P2.PR.20.210 | 100% | 2025-03-13 | 2025-03-20 |  | S1 | DD | 16 | AT14 |  | STRCONC | P2-5 | STRCONC |  |
| P2.PR.03.510 |  | Deck Slabs - Strip & Reshore - Z1 / Placement # PR.1 | 5d | 2025-03-31 A | 2025-03-31 A | P2.PR.03.310 | 100% | 2025-03-25 | 2025-03-31 |  | S1 | DD | 40 | RE |  | STRCONC | P2-5 | STRCONC |  |
| P2.PR.03.410 |  | Deck Slabs - **CURE** - Z1 / Placement # PR.1 | 28d | 2025-03-31 A | 2025-04-28 A | P2.PR.03.310 | 100% | 2025-03-21 | 2025-04-17 | 7D / SRLM | S1 | DD | 56 | C |  | CURE | P2-5 | CURE |  |
| P2.PR.03.610 |  | Remove Reshores - (After #PR.1 100% Strength) - Z1 / Placement # PR.1 | 3d | 2025-04-23 A | 2025-04-25 A | P2.PR.03.410 SS+12d | 100% | 2025-05-01 | 2025-05-05 |  | S1 | DD | 32 | REM |  | STRCONC | P2-5 | STRCONC |  |
|  | 6 | **Z3 - Placement # PR.2** |  | 2025-02-27 | 2025-05-05 |  |  |  |  |  |  |  |  |  |  |  |  |  |  |
| P2.PR.03.120 |  | Columns & Walls - Z3 / Placement # PR.2 | 5d | 2025-02-27 A | 2025-03-31 A | P2.MR/PS.03.330 FF, P2.MR/PS.03.320, P2.PR.03.110 | 100% | 2025-03-11 | 2025-03-17 |  | S1 | DD | 40 | AT12 | FP | STRCONC | P2-5 | STRCONC |  |
| P2.PR.03.220 |  | Deck Slabs - Shore & Reinforce - Z3 / Placement # PR.2 | 7d | 2025-03-13 A | 2025-04-01 A | P2.PR.03.120 FF+2d | 100% | 2025-03-13 | 2025-03-21 |  | S1 | DD | 56 | AT13 | FP | STRCONC | P2-5 | STRCONC |  |
| P2.PR.03.320 |  | Decks Slabs - Inspect & Place - Z3 / Placement # PR.2 | 4d | 2025-04-01 A | 2025-04-08 A | P2.PR.20.220, P2.PR.03.220 | 100% | 2025-05-07 | 2025-05-12 |  | S1 | DD | 16 | AT14 | FP | STRCONC | P2-5 | STRCONC |  |
| P2.PR.03.520 |  | Deck Slabs - Strip & Reshore - Z3 / Placement # PR.2 | 5d | 2025-04-01 A | 2025-04-03 A | P2.SUM.155, P2.PR.03.320 | 100% | 2025-05-01 | 2025-05-07 |  | S1 | DD | 40 | RE |  | STRCONC | P2-5 | STRCONC |  |
| P2.PR.20.220 |  | Deck Slabs - MEP Penetrations & In-Slab Pathways - Z3 / PR.2 | 3d | 2025-04-01 A | 2025-04-03 A | P2.BIM.PHR.40.110 FF, P2.BIM.PHR.40.100 FF, P2.PR.03.220 FF | 100% | 2025-03-19 | 2025-03-21 |  | S1 | DD | 40 | MEP |  | MEP | P2-5 | MEP-2 | Harris |
| P2.PR.03.420 |  | Deck Slabs - **CURE** - Z3 / Placement # PR.2 | 28d | 2025-04-09 A | 2025-04-23 A | P2.PR.03.320 SS+1d | 100% | 2025-05-08 | 2025-06-04 | 7D / SRLM | S1 | DD | 56 | C | FP | CURE | P2-5 | CURE |  |
| P2.PR.03.620 |  | Remove Reshores - (After #PR.2 100% Strength) - Z3 / Placement # PR.2 | 4d | 2025-05-01 A | 2025-05-05 A | P2.PR.03.610, P2.PR.03.420 SS+15d | 100% | 2025-06-02 | 2025-06-05 |  | S1 | DD | 24 | REM |  | STRCONC | P2-5 | STRCONC |  |

| ID | WBS | Activity | Duration | Start | Finish | Predecessors | Complete | Planned start | Planned finish | Calendar | Pick #1 | Pick | Temp Orig Dur | Testing Type | Resp / SRLM | PHASE | RESP / Trade | Z.RESP | *NIH Resp Check* | Trade Review Notes | 744 | RESP UPD | Update Status | Act ID Temp |
| --- | --- | --- | --- | --- | --- | --- | --- | --- | --- | --- | --- | --- | --- | --- | --- | --- | --- | --- | --- | --- | --- | --- | --- | --- |
|  | 10 | **Stair Roof / Elev Mach Rm (EMR) - Columns, Walls, Decks (Working from PR)** |  | 2025-03-27 | 2025-05-29 |  |  |  |  |  |  |  |  |  |  |  |  |  |  |  |  |  |  |  |
|  | 4 | **Z1 - Placement # EMR.1** |  | 2025-03-27 | 2025-05-29 |  |  |  |  |  |  |  |  |  |  |  |  |  |  |  |  |  |  |  |
| P2.EMR.03.110 |  | Columns & Walls - Z1 / Placement # EMR.1 | 4d | 2025-03-27 A | 2025-03-31 A | P2.PR.03.410 SS+2d | 100% | 2025-04-02 | 2025-04-07 |  | S1 | DD | 32 | AT12 | STRCONC | P2-5 | STRCONC |  |  |  |  |  |  |  |
| P2.EMR.03.210 |  | Deck Slabs - Shore & Reinforce - Z1 / Placement # EMR.1 | 4d | 2025-04-15 A | 2025-04-16 A | P2.EMR.03.110 FF+2d | 100% | 2025-05-01 | 2025-05-06 |  | S1 | DD | 32 | AT13 | STRCONC | P2-5 | STRCONC |  |  |  |  |  |  |  |
| P2.EMR.20.210 |  | Deck Slabs - MEP Penetrations & In-Slab Pathways - Z1 / EMR.1 | 2d | 2025-04-16 A | 2025-04-16 A | P2.BIM.PHR.40.100 FF, P2.BIM.PHR.40.110 FF, P2.EMR.03.210 FF | 100% | 2025-05-05 | 2025-05-06 |  | S1 | DD | 16 | MEP | MEP | P2-5 | MEP-2 | Harris |  |  |  |  |  |  |
| P2.EMR.03.310 |  | Decks Slabs - Inspect & Place - Z1 / Placement # EMR.1 | 2d | 2025-04-17 A | 2025-04-17 A | P2.EMR.03.210, P2.EMR.20.210 | 100% | 2025-05-07 | 2025-05-08 |  | S1 | DD | 16 | AT14 | STRCONC | P2-5 | STRCONC |  |  |  |  |  |  |  |
| P2.EMR.03.410 |  | Deck Slabs - **CURE** - Z1 / Placement # EMR.1 | 28d | 2025-04-17 A | 2025-05-15 A | P2.EMR.03.310 | 100% | 2025-05-09 | 2025-06-05 | 7D / SRLM | S1 | DD | 56 | C | CURE | P2-5 | CURE |  |  |  |  |  |  |  |
| P2.EMR.03.510 |  | Deck Slabs - Strip & Reshore - Z1 / Placement # EMR.1 | 2d | 2025-04-18 A | 2025-04-18 A | P2.EMR.03.410 SS+2d | 100% | 2025-05-12 | 2025-05-13 |  | S1 | DD | 16 | RE | STRCONC | P2-5 | STRCONC |  |  |  |  |  |  |  |
| P2.EMR.03.610 |  | Remove Reshores - (After #EMR.1 100% Strength) - Z1 / Placement # EMR.1 | 2d | 2025-05-28 A | 2025-05-29 A | P2.EMR.03.410 | 100% | 2025-06-16 | 2025-06-17 |  | S1 | DD | 16 | REM | STRCONC | P2-5 | STRCONC |  |  |  |  |  |  |  |
|  | 11 | **Elev Mach Rm Roof (EMRR) (Working from EMR)** |  | 2025-04-21 | 2025-05-30 |  |  |  |  |  |  |  |  |  |  |  |  |  |  |  |  |  |  |  |
|  | 4 | **Z1 - Placement # EMRR.1** |  | 2025-04-21 | 2025-05-30 |  |  |  |  |  |  |  |  |  |  |  |  |  |  |  |  |  |  |  |
| P2.EMRR.03.110 |  | Columns & Walls - Z1 / Placement # EMRR.1 | 4d | 2025-04-21 A | 2025-04-21 A | P2.EMR.03.410 SS+2d | 100% | 2025-05-12 | 2025-05-15 |  | S1 | DD | 32 | AT12 | STRCONC | P2-5 | STRCONC |  |  |  |  |  |  |  |
| P2.EMRR.03.210 |  | Deck Slabs - Shore & Reinforce - Z1 / Placement # EMRR.1 | 4d | 2025-04-21 A | 2025-04-22 A | P2.EMRR.03.110 | 100% | 2025-05-16 | 2025-05-21 |  | S1 | DD | 32 | AT13 | STRCONC | P2-5 | STRCONC |  |  |  |  |  |  |  |
| P2.EMRR.20.210 |  | Deck Slabs - MEP Penetrations & In-Slab Pathways - Z1 / EMRR.1 | 2d | 2025-04-23 A | 2025-04-23 A | P2.BIM.PHR.40.100 FF, P2.BIM.PHR.40.110 FF, P2.EMRR.03.210 SS | 100% | 2025-05-16 | 2025-05-19 |  | S1 | DD | 16 | MEP | MEP | P2-5 | MEP-2 | Harris |  |  |  |  |  |  |
| P2.EMRR.03.310 |  | Decks Slabs - Inspect & Place - Z1 / Placement # EMRR.1 | 2d | 2025-04-24 A | 2025-04-24 A | P2.EMRR.03.210, P2.EMRR.20.210 | 100% | 2025-05-22 | 2025-05-23 |  | S1 | DD | 16 | AT14 | STRCONC | P2-5 | STRCONC |  |  |  |  |  |  |  |
| P2.EMRR.03.410 |  | Deck Slabs - **CURE** - Z1 / Placement # EMRR.1 ---(***Last PH 2 Structure Activity***) | 28d | 2025-04-24 A | 2025-05-22 A | P2.EMRR.03.310 | 100% | 2025-06-01 | 2025-06-28 | 7D / SRLM | S1 | DD | 56 | C | CURE | P2-5 | CURE |  |  |  |  |  |  |  |
| P2.EMRR.03.510 |  | Deck Slabs - Strip & Reshore - Z1 / Placement # EMRR.1 | 2d | 2025-05-28 A | 2025-05-30 A | P2.EMRR.03.410 SS+2d | 100% | 2025-06-03 | 2025-06-04 |  | S1 | DD | 16 | RE | STRCONC | P2-5 | STRCONC |  |  |  |  |  |  |  |
| P2.EMRR.03.610 |  | Remove Reshores - (After #EMRR.1 CURE +10D) - Z1 / Placement # EMRR.1 | 2d | 2025-05-28 A | 2025-05-30 A | P2.EMRR.03.510, P2.EMRR.03.410 | 100% | 2025-06-30 | 2025-07-01 |  | S1 | DD | 16 | REM | STRCONC | P2-5 | STRCONC |  |  |  |  |  |  |  |
|  | 3 | **PH 2 BUILDING ENVELOPE** |  | 2024-07-29 | 2026-11-05 |  |  |  |  |  |  |  |  |  |  |  |  |  |  |  |  |  |  |  |
|  | 9 | **PH2 Facade by Sectors** |  | 2024-07-29 | 2026-11-05 |  |  |  |  |  |  |  |  |  |  |  |  |  |  |  |  |  |  |  |
|  | 5 | **Sector F** |  | 2025-02-19 | 2026-09-17 |  |  |  |  |  |  |  |  |  |  |  |  |  |  |  |  |  |  |  |
|  | 1 | **Substrate Prep Work - Sector F** |  | 2025-02-19 | 2025-10-30 |  |  |  |  |  |  |  |  |  |  |  |  |  |  |  |  |  |  |  |
| P2.FAC.1.F.230 |  | Exterior Framing - Level 3 / Sector F | 5d | 2025-02-19 A | 2025-02-25 A | P2.3.03.620 | 100% | 2025-03-03 | 2025-03-07 |  |  |  | 40 |  | GYP | P2-5 | GYP-1 |  | ! | 54,63,94 |  |  |  |  |
| P2.FAC.1.F.240 |  | Exterior Framing - Level 4 / Sector F | 5d | 2025-02-24 A | 2025-02-28 A | P2.4.03.630, P2.FAC.1.F.230 | 100% | 2025-03-10 | 2025-03-14 |  |  |  | 40 |  | GYP | P2-5 | GYP-1 |  | ! | 54,63,94 |  |  |  |  |
| P2.FAC.1.F.120 |  | Waterproofing (WP-01) at Foundation Wall / Sector F | 5d | 2025-03-03 A | 2025-03-14 A | P1.BG.BF.100 | 100% | 2025-03-27 | 2025-04-02 |  |  |  | 40 | AT15 | WTPF | P2-5 | WTPF |  | ! |  |  |  |  |  |
| P2.FAC.1.F.250 |  | Exterior Framing - Level 5 / Sector F | 5d | 2025-05-01 A | 2025-05-07 A | P2.5.03.630, P2.FAC.1.F.240, P2.5.03.660 | 100% | 2025-06-02 | 2025-06-06 |  |  |  | 40 |  | GYP | P2-5 | GYP-1 |  | ! | 54,63,94 |  |  |  |  |
| P2.FAC.1.F.260 |  | Exterior Framing - Level 6 / Sector F | 5d | 2025-05-08 A | 2025-05-14 A | P2.6.03.630, P2.FAC.1.F.250 | 100% | 2025-06-09 | 2025-06-13 |  |  |  | 40 |  | GYP | P2-5 | GYP-1 |  | ! | 54,63,94 |  |  |  |  |
| P2.FAC.1.F.180 |  | Exterior Framing - Level 7 / Sector F | 5d | 2025-05-15 A | 2025-05-21 A | P2.7.03.630, P2.FAC.1.F.260 | 100% | 2025-06-16 | 2025-06-20 |  |  |  | 40 |  | GYP | P2-5 | GYP-1 |  | ! | 54,63,94 |  |  |  |  |
| P2.FAC.1.F.190 |  | Exterior Framing - Level 8 / Sector F | 5d | 2025-07-01 A | 2025-08-07 A | P2.8.03.630, P2.FAC.1.F.180 | 100% | 2025-08-01 | 2025-08-07 |  |  |  | 40 |  | GYP | P2-5 | GYP-1 |  | ! | 54,63,94 | KD | KD |  |  |
| P2.FAC.1.F.200 |  | Exterior Framing - Main Roof / Sector F | 5d | 2025-07-09 A | 2025-08-12 A | P2.MR/PS.03.630, P2.FAC.1.F.190 | 100% | 2025-08-08 | 2025-08-14 |  |  |  | 40 |  | GYP | P2-5 | GYP-1 |  | ! | 54,63,94 | KD | KD |  |  |
| P2.FAC.1.F.220 |  | Sheathing - All Levels / Sector F | 20d | 2025-07-14 A | 2025-09-30 A | P2.FAC.1.F.210 FF | 100% | 2025-08-01 | 2025-08-28 |  |  |  | 40 |  | GYP | P2-5 | GYP-1 |  | ! | 54,63,94 | KD | KD | O |  |
| P2.FAC.1.F.210 |  | Exterior Framing - Pent House / Sector F | 5d | 2025-07-16 A | 2025-09-20 A | P2.EMR.03.610, P2.PR.03.620, P2.FAC.1.F.200 | 100% | 2025-08-15 | 2025-08-21 |  |  |  | 40 |  | GYP | P2-5 | GYP-1 |  | ! | 54,63,94 | KD | KD | O |  |
| P2.FAC.1.F.160 |  | Air_Vapor Barrier / Sector F | 10d | 2025-07-30 A | 2025-10-30 A | P2.FAC.1.F.220, P2.3-9.1070 | 100% | 2025-08-29 | 2025-09-12 |  |  |  | 40 |  | AVB | P2-5 | AVB |  |  |  | KD | KD |  | P2.FAC.E.07.25.120 |

| ID | WBS | Activity | Duration | Start | Finish | Predecessors | Complete | Remaining | Planned start | Planned finish | Total float | Free float | Temp Orig Dur | Testing Type | SRLM - Crew | *NIH Resp Check* | Trade Review Notes | Resp / SRLM | PHASE | RESP / Trade | Posit | 744 | RESP UPD | Act ID Temp | Update Status |
| --- | --- | --- | --- | --- | --- | --- | --- | --- | --- | --- | --- | --- | --- | --- | --- | --- | --- | --- | --- | --- | --- | --- | --- | --- | --- |
|  | 6 | **Precast Panels - Sector F** |  | 2025-05-01 | 2025-05-07 |  |  |  |  |  |  |  |  |  |  |  |  |  |  |  |  |  |  |  |  |
| P2.FAC.2.Z1.170 |  | Precast - South East Elevation Between ZJ.5 & ZK.2 / Sector F | 5d | 2025-05-01 A | 2025-05-07 A | P2.FAC.2.Z1.110 | 100% |  | 2025-06-02 | 2025-06-06 |  |  | 80 | AT30 | P1 | ! | 108 | PRECAST | P2-5 | PRECAST |  |  |  |  |  |
|  | 3 | **Glass & Glazing - Sector F** |  | 2025-05-21 | 2026-08-12 |  |  |  |  |  |  |  |  |  |  |  |  |  |  |  |  |  |  |  |  |
| P2.FAC.3.F.110 |  | Curtainwall _ CW-02A (CL Z5.3 - Z6.1 @ ZJ.5) / Sector F | 15d | 2025-05-21 A | 2025-06-02 A | P2.FAD.GG.420, P2.FAC.2.Z1.170, P2.DES.PMU.300, P2.DES.VMU.650 | 100% |  | 2025-06-09 | 2025-06-27 |  |  | 120 | AT26 | G1 | ! |  | GLAZ | P2-5 | GLAZ | AVB and Mtl Panel go first adjacent at F2 | KD | KD |  |  |
| P2.FAC.3.F.120 |  | Curtainwall _ Storefront Door (CL Z5.3 - Z6.1 @ ZJ.5) / Sector F | 2d | 2026-07-30 | 2026-07-31 | P2.HZ.W.101 SS, P2.FAC.4.Z1.150, P2.FAD.GG.310 |  |  |  |  | 85d | 0d | 120 | AT26 | G4 | ! |  | GLAZ | P2-5 | GLAZ | AVB and Mtl Panel go first adjacent at F2 |  | TCASP |  |  |
| P2.FAC.3.F.130 |  | Curtainwall _ Storefront Door (CL ZA.7 - ZB @ Z9.5) / Sector Z3 (Stair 2-8) | 2d | 2026-08-11 | 2026-08-12 | P2.FAC.3.Z3.260 |  |  |  |  | 85d | 0d | 120 | AT26 | G4 | ! |  | GLAZ | P2-5 | GLAZ | AVB and Mtl Panel go first adjacent at F2 |  | TCASP |  |  |
|  | 4 | **Metal Panels & Louvers - Sector F** |  | 2025-10-22 | 2026-05-05 |  |  |  |  |  |  |  |  |  |  |  |  |  |  |  |  |  |  |  |  |
| P2.FAC.4.F.110 |  | Metal Panels @ SRLM/CRC Connection (CL Z9.1/ZF to Z5.8/ZG.5) / Sector F | 20d | 2025-10-22 A | 2025-12-31 A | P2.FAD.MP.600, P2.FAD.MP.700, P2.FAC.1.F.160 | 100% |  | 2025-10-23 | 2025-11-19 |  |  | 160 | AT27 | MP1 |  | 20,98 | MPANEL | P2-5 | MPANEL |  | KD | TCASP | P2.FAC.E.07.42.130 |  |
| P2.FAC.4.F.120 |  | Metal Panels @ SRLM/CRC Connection (CL Z5.8/ZG.5 to Z5.3/ZJ.5 and east face at Z6.3/ZJ.5 to ZH.8) / Sector F | 20d | 2025-12-08 A | 2026-04-28 | P2.FAC.4.F.110 |  | 20d | 2026-02-12 | 2026-03-11 | 159d | 0d | 160 | AT27 | MP1 |  | 20,98 | MPANEL | P2-5 | MPANEL |  | KD | JW | P2.FAC.E.07.42.130 |  |
| P2.FAC.4.F.200 |  | C3 - Metal Panels @ Group 3 EMR / Sector F | 5d | 2026-04-29 | 2026-05-05 | P2.FAC.4.F.120 |  |  |  |  | 164d | 74d | 40 | AT27 |  | ! | 20,98 | MPANEL | P2-5 | MPANEL |  | KD | JW |  |  |
|  | 5 | **Facade Finish Work - Sector F** |  | 2025-06-30 | 2026-08-19 |  |  |  |  |  |  |  |  |  |  |  |  |  |  |  |  |  |  |  |  |
| P2.FAC.5.Z1.270 |  | Precast Caulk & Seal / Sector F | 5d | 2025-06-30 A | 2025-07-09 A | P2.FAC.2.Z1.170, P2.FAC.2.Z1.150 | 100% |  | 2025-07-30 | 2025-08-05 |  |  | 40 |  |  | T.FACADE.GLAZ | 81 | Sealant | P2-5 | Sealant |  | KD | KD |  |  |
| P2.FAC.5.F.140 |  | Doors, Frames, Hardware / Sector F | 5d | 2025-07-01 A | 2025-07-08 A | P2.FAC.3.F.110 | 100% |  | 2025-08-01 | 2025-08-07 |  |  | 40 | AT29 |  | ! |  | DFH | P2-5 | DFH |  | KD | KD |  |  |
| P2.FAC.1.F.170 |  | Stone Cladding _ST-01 / Sector F | 10d | 2025-07-28 A | 2025-08-28 A | P2.FAD.ST.160, P2.FAC.1.F.120, P2.FAC.3.F.110 | 100% |  | 2025-08-21 | 2025-09-04 |  |  | 40 | AT28 |  | ! |  | EXTCLAD | P2-5 | EXTCLAD |  | KD | KD |  |  |
| P2.FAC.5.F.210 |  | Brick Tie-in at Existing Building (South-Tie In) / Sector F | 10d | 2026-04-01 | 2026-04-14 | P2.FAC.3.F.110 |  |  |  |  | 154d | 0d | 40 |  |  | EXP JT? | 93,95 | CMU | P2-5 | CMU |  | KD | JW |  | O |
| P2.FAC.5.F.200 |  | Brick Tie-in at Existing Building (East - Level 2 Roof) / Sector F | 10d | 2026-04-15 | 2026-04-28 | P2.FAC.2.Z3.120, P2.FAC.5.F.210, P2.FAC.5.Z1.270 |  |  |  |  | 154d | 0d | 40 |  |  | EXP JT? | 93,95 | CMU | P2-5 | CMU |  | KD | JW |  | O |
| P2.FAC.5.F.110 |  | Expansion Joint _ EJ-08 / Sector F | 5d | 2026-04-29 | 2026-05-05 | P2.FAC.1.F.160, P2.FAC.3.F.110, BP2.079.3.200, BP2.079.3.230, P2.FAC.5.F.200 |  |  |  |  | 154d | 0d | 40 |  |  | EXP JT? | 93,95 | EJ | P2-5 | EJ |  | KD | JW |  | O |
| P2.FAC.5.F.150 |  | Caulk & Seal / Sector F | 5d | 2026-05-06 | 2026-05-12 | P2.FAC.4.F.120, P2.FAC.5.F.110 |  |  |  |  | 154d | 0d | 40 |  |  | T.FACADE.GLAZ |  | Sealant | P2-5 | Sealant |  | KD | JW |  |  |
| P2.FAC.5.F.130 |  | Exterior Receptacles & Lights / Sector F | 5d | 2026-05-13 | 2026-05-19 | P2.FAC.3.F.110, P2.FAC.5.F.150 |  |  |  |  | 154d | 64d | 40 |  |  | ! |  | ELEC | P2-5 | ELEC-2 |  | KD | TCASP |  |  |
| P2.FAC.5.F.120 |  | Exterior Signage / Sector F | 5d | 2026-08-13 | 2026-08-19 | P2.FAC.3.F.110, P2.FAC.5.Z1.270, P2.FAC.3.F.130 |  |  |  |  | 90d | 0d | 40 |  |  | ! |  | SIGN | P2-5 | SIGN |  | KD | TCASP |  |  |
| P2.FAC.5.F.160 |  | Exterior LV Systems / Sector F | 5d | 2026-08-13 | 2026-08-19 | P2.FAC.5.F.140, P2.FAC.3.F.130 |  |  |  |  | 90d | 0d | 40 |  |  | ! |  | LOWVOLT | P2-5 | LOWVOLT-1 |  | KD | TCASP |  |  |
|  | 2 | **Quality Control Inspections - Sector F** |  | 2026-08-20 | 2026-09-17 |  |  |  |  |  |  |  |  |  |  |  |  |  |  |  |  |  |  |  |  |
| P2.FAC.F.9000 |  | Trades Inspect & Verify Work Completed to Specs - Sector F | 5d | 2026-08-20 | 2026-08-26 | P2.FAC.5.F.130, P2.FAC.5.F.150, P2.FAC.5.F.160, P2.FAC.4.F.200, P2.FAC.1.F.170, P2.FAC.5.F.120, P2.FAC.5.Z1.270 |  |  |  |  | 90d | 0d | 40 |  |  | ! |  | T | P2-5 | T |  |  | JW |  |  |
| P2.FAC.F.9010 |  | Inspect & Prepare Punchlist - Sector F | 5d | 2026-08-27 | 2026-09-02 | P2.FAC.F.9000 |  |  |  |  | 90d | 0d | 40 |  |  | ! |  | ARCH | P2-5 | ARCH |  |  | JW |  |  |
| P2.FAC.F.9020 |  | Correct Punchlist - Sector F | 5d | 2026-09-03 | 2026-09-10 | P2.FAC.F.9010 |  |  |  |  | 90d | 0d | 40 |  |  | ! |  | T | P2-5 | T |  |  | JW |  |  |
| P2.FAC.F.9030 |  | NIH Acceptance of Facade - Sector F | 5d | 2026-09-11 | 2026-09-17 | P2.FAC.F.9020, P2.DES.VMU.670 FF |  |  |  |  | 90d | 35d | 40 |  |  | ! |  | NIH | P2-5 | NIH |  |  | JW |  |  |

| ID | WBS | Activity | Duration | Start | Finish | Predecessors | Complete | Planned start | Planned finish | Total float | Free float | Temp Orig Dur | Act ID Temp | Trade Review Notes | Resp / SRLM | PHASE | RESP / Trade | Testing Type | *NIH Resp Check* | 744 | RESP UPD | Update Status | SRLM - Crew |
| --- | --- | --- | --- | --- | --- | --- | --- | --- | --- | --- | --- | --- | --- | --- | --- | --- | --- | --- | --- | --- | --- | --- | --- |
|  | 6 | **Sector Z1** |  | 2024-07-29 | 2026-11-05 |  |  |  |  |  |  |  |  |  |  |  |  |  |  |  |  |  |  |
|  | 1 | **Substrate Prep Work - Sector Z1** |  | 2024-07-29 | 2025-09-02 |  |  |  |  |  |  |  |  |  |  |  |  |  |  |  |  |  |  |
| P2.FAC.1.Z1.130 |  | Canopy Embeds to Precast Shop @ Stair Entrance / Sector Z1 | 5d | 2024-07-29 A | 2024-07-30 A | P2.FAD.PC.250, BP4.055.3.100 FF+30d | 100% | 2024-09-23 | 2024-09-27 |  |  | 40 | P2.FAC.S.05.45.110 | 69,70 | MISCMTL | P2-5 | MISCMTL |  |  |  |  |  |  |
| P2.FAC.1.Z1.120 |  | Waterproofing (WP-01) at Foundation Wall / Sector Z1 | 5d | 2025-02-17 A | 2025-02-28 A | P1.BG.BF.100, P1.BG.BF.160 | 100% | 2025-03-03 | 2025-03-07 |  |  | 40 |  |  | WTPF | P2-5 | WTPF | AT15 | ! |  |  |  |  |
| P2.FAC.1.Z1.200 |  | Canopy Supports / South - Mech Tower / Sector Z1 | 5d | 2025-02-24 A | 2025-03-07 A | P2.2.03.610, P2.2.I.05.120, BP4.055.1.100 | 100% | 2025-02-10 | 2025-02-14 |  |  | 40 | P2.FAC.S.05.45.110 | 69 | MISCMTL | P2-5 | MISCMTL | AT33 |  |  |  |  |  |
| P2.FAC.1.Z1.140 |  | Structural Steel Posts for Precast & Glazing Parapets / Sector Z1 | 10d | 2025-03-10 A | 2025-03-20 A | P2.MR/PS.03.510, P2.PR.03.310 | 100% | 2025-03-21 | 2025-04-03 |  |  | 40 |  | 50 | STEEL | P2-5 | STEEL | AT25 | ! |  |  |  |  |
| P2.FAC.1.Z1.230 |  | Framing & Sheathing behind parapets (Penthouse Roof) / Sector Z1 | 5d | 2025-03-17 A | 2025-03-28 A | P2.FAC.1.Z1.140 | 100% | 2025-04-04 | 2025-04-10 |  |  | 40 |  | 54,63,94 | GYP | P2-5 | GYP-1 |  | ! |  |  |  |  |
| P2.FAC.1.Z1.260 |  | Air_Vapor Barrier - Inside Parapets / Sector Z1 | 5d | 2025-03-26 A | 2025-03-31 A | P2.FAC.1.Z1.230 | 100% | 2025-04-11 | 2025-04-17 |  |  | 40 | P2.FAC.E.07.25.120 |  | AVB | P2-5 | AVB |  |  |  |  |  |  |
| P2.FAC.1.Z1.240 |  | Framing & Sheathing behind parapets (High Roof) / Sector Z1 | 5d | 2025-05-01 A | 2025-05-07 A | P2.EMR.03.510 | 100% | 2025-06-02 | 2025-06-06 |  |  | 40 |  | 54,63,94 | GYP | P2-5 | GYP-1 |  | ! |  |  |  |  |
| P2.FAC.1.Z1.150 |  | Structural Steel Supports for Glass Cube Curtain Wall / Sector Z1 | 5d | 2025-05-27 A | 2025-05-30 A | P2.FAC.1.Z1.200 | 100% | 2025-05-27 | 2025-06-02 |  |  | 40 |  |  | STEEL | P2-5 | STEEL | AT25 | ! |  |  |  |  |
| P2.FAC.1.Z1.250 |  | CMU & AVB Above Curtain Wall ZH.5 to ZJ / Sector Z1 | 10d | 2025-05-27 A | 2025-07-09 A | P2.MR/PS.03.610 | 100% | 2025-06-02 | 2025-06-13 |  |  | 40 |  | 54,63,94 | GYP | P2-5 | GYP-1 |  | ! | KD | KD |  |  |
| P2.FAC.1.Z1.210 |  | Framing & Sheathing at Glass Cube / Sector Z1 | 10d | 2025-06-25 A | 2025-07-24 A | P2.FAC.1.Z1.150, P2.L8.S.1000 | 100% | 2025-07-09 | 2025-07-22 |  |  | 40 |  | 54,63,94 | GYP | P2-5 | GYP-1 |  | ! | KD | KD |  |  |
| P2.FAC.1.Z1.190 |  | Air_Vapor Barrier - Exterior Facade / Sector Z1 | 5d | 2025-07-21 A | 2025-08-04 A | P2.FAC.2.Z1.160, P2.FAC.1.Z1.210, P2.PR.S.2070 | 100% | 2025-08-14 | 2025-08-20 |  |  | 40 | P2.FAC.E.07.25.120 |  | AVB | P2-5 | AVB |  |  | KD | KD |  |  |
| P2.FAC.1.Z1.220 |  | Remaining Sheathing & Insulation behind parapets / Sector Z1 | 5d | 2025-07-22 A | 2025-08-21 A | P2.FAC.4.Z1.120, P2.FAC.4.Z1.130 | 100% | 2025-08-14 | 2025-08-20 |  |  | 40 |  | 54,63,94 | GYP | P2-5 | GYP-1 |  | ! | KD | KD |  |  |
| P2.FAC.1.Z1.270 |  | Air_Vapor Barrier - Patch Back / Sector Z1 | 5d | 2025-07-28 A | 2025-09-02 A | P2.FAC.1.Z1.220 | 100% | 2025-08-21 | 2025-08-27 |  |  | 40 | P2.FAC.E.07.25.120 |  | AVB | P2-5 | AVB |  |  | KD | KD | O |  |
|  | 2 | **Precast Panels - Sector Z1** |  | 2025-04-07 | 2025-07-11 |  |  |  |  |  |  |  |  |  |  |  |  |  |  |  |  |  |  |
| P2.FAC.2.Z1.110 |  | Precast - Inset Panels (PCP-02) @ South Mech Tower_ L1 / Sector Z1 | 5d | 2025-04-07 A | 2025-04-11 A | P1.1.03.640, P1.BG.BF.160, P2.EMR.03.510, P2.FAC.1.Z1.140 SS, P2.FAC.2.Z2.190, P2.8.03.520 | 100% | 2025-05-14 | 2025-05-20 |  |  | 80 |  | 108 | PRECAST | P2-5 | PRECAST | AT30 | ! |  |  |  | P1 |
| P2.FAC.2.Z1.180 |  | Precast - Elevations at Stair 5-9 & Electrical Room 5959 / Sector Z1 | 5d | 2025-04-21 A | 2025-04-30 A | P2.FAC.2.Z1.110 | 100% | 2025-05-29 | 2025-06-04 |  |  | 40 | P2.FAC.E.03.40.130 |  | PRECAST | P2-5 | PRECAST | AT30 |  |  |  |  | P1 |
| P2.FAC.2.Z1.120 |  | Precast _ L2 / Sector Z1 | 5d | 2025-05-01 A | 2025-05-07 A | P2.4.03.610, P2.FAC.1.Z1.130, P2.FAC.2.Z1.110, P2.FAC.2.Z1.180, P2.FAC.1.Z1.200 | 100% | 2025-06-02 | 2025-06-06 |  |  | 40 | P2.FAC.E.03.40.130 |  | PRECAST | P2-5 | PRECAST | AT30 |  |  |  |  | P1 |
| P2.FAC.2.Z1.130 |  | Precast _ L3 & L4 / Sector Z1 | 10d | 2025-05-01 A | 2025-05-23 A | DDD3260, DDD2810, P2.FAC.2.Z2.110 | 100% | 2025-06-02 | 2025-06-13 |  |  | 80 | P2.FAC.E.03.40.140 |  | PRECAST | P2-5 | PRECAST | AT30 |  |  |  |  | P1 |
| P2.FAC.2.Z1.140 |  | Precast _ L5 & L6 / Sector Z1 | 9d | 2025-05-27 A | 2025-06-06 A | P2.6.03.610, P2.FAC.2.Z2.120 | 100% | 2025-06-23 | 2025-07-03 |  |  | 80 | P2.FAC.E.03.40.150 |  | PRECAST | P2-5 | PRECAST | AT30 |  | KD | KD |  | P1 |
| P2.FAC.2.Z1.150 |  | Precast _ L7 & L8 / Sector Z1 | 10d | 2025-06-16 A | 2025-06-27 A | P2.8.03.610, P2.FAC.1.Z1.230, P2.FAC.1.Z1.250, P2.FAC.2.Z2.130 | 100% | 2025-07-16 | 2025-07-29 |  |  | 80 | P2.FAC.E.03.40.160 |  | PRECAST | P2-5 | PRECAST | AT30 |  | KD | KD |  | P1 |
| P2.FAC.2.Z1.160 |  | Precast _ L9 & Penthouse / Sector Z1 | 5d | 2025-06-30 A | 2025-07-11 A | P2.PR.03.610, P2.FAC.2.Z1.180, P2.FAC.2.Z1.150 | 100% | 2025-07-30 | 2025-08-05 |  |  | 40 | P2.FAC.E.03.40.150 |  | PRECAST | P2-5 | PRECAST | AT30 |  | KD | KD |  | P1 |
|  | 4 | **Metal Panels & Louvers - Sector Z1** |  | 2025-07-30 | 2026-04-14 |  |  |  |  |  |  |  |  |  |  |  |  |  |  |  |  |  |  |
| P2.FAC.3.Z1.140 |  | Louvers @ CL Z0.7/ / Sector Z1 | 10d | 2025-07-30 A | 2025-09-22 A | BP2.089.3.100, P2.FAC.4.Z1.110, P2.FAC.3.Z1.120 | 100% | 2025-08-18 | 2025-08-29 |  |  | 80 | P2.FAC.S..08.91.110 |  | MPANEL | P2-5 | MPANEL | AT31 |  | KD | KD | O | L1 |
| P2.FAC.3.Z1.130 |  | Louvers @ CL Z5.3 / Sector Z1 | 10d | 2025-08-11 A | 2025-10-01 A | BP2.089.3.100, P2.FAD.MP.800, P2.FAC.3.Z1.110 | 100% | 2025-09-23 | 2025-10-06 |  |  | 80 | P2.FAC.S..08.91.110 |  | MPANEL | P2-5 | MPANEL | AT31 |  | KD | KD |  | L1 |
| P2.FAC.3.Z1.110 |  | Metal Panels @ South Mech Tower (Z5.3/ZH.8 to CL Z.3) / Sector Z1 | 10d | 2025-09-11 A | 2025-10-27 A | P2.FAC.1.Z1.190, P2.PR.S.9040 | 100% | 2025-10-23 | 2025-11-05 |  |  | 80 | P2.FAC.E.07.42.130 | 20,98 | MPANEL | P2-5 | MPANEL | AT27 |  | KD | KD |  | MP3 |
| P2.FAC.3.Z1.120 |  | Metal Panels @ South Mech Tower (CLZ.3 west to Z1/ZH.5 Stair 5.9 Tie In) / Sector Z1 | 10d | 2025-09-29 A | 2025-10-31 A | P2.FAC.1.Z1.250, P2.FAC.2.Z1.150 | 100% | 2025-10-01 | 2025-10-14 |  |  | 80 | P2.FAC.E.07.42.130 | 20,98 | MPANEL | P2-5 | MPANEL | AT27 |  | KD | KD |  | MP3 |
| P2.FAC.3.Z1.150 |  | Metal Panels behind parapets / Sector Z1 | 10d | 2026-04-01 | 2026-04-14 | P2.MR.5-8.200, P2.PR.EMRR.2.200, P2.PR.S.2000 |  |  |  | 179d | 124d | 80 | P2.FAC.E.07.42.130 | 20,98 | MPANEL | P2-5 | MPANEL | AT27 |  | KD | JW | O | MP3 |

| ID | WBS | Activity | Duration | Start | Finish | Predecessors | Complete | Planned start | Planned finish | Total float | Free float | Posit | Temp Orig Dur | Testing Type | SRLM - Crew | *NIH Resp Check* | Resp / SRLM | 744 | PHASE | RESP UPD | RESP / Trade | Trade Review Notes | Act ID Temp | Update Status | Z.RESP |
| --- | --- | --- | --- | --- | --- | --- | --- | --- | --- | --- | --- | --- | --- | --- | --- | --- | --- | --- | --- | --- | --- | --- | --- | --- | --- |
|  | 3 | **Glass & Glazing - Sector Z1** |  | 2025-05-01 | 2026-08-04 |  |  |  |  |  |  |  |  |  |  |  |  |  |  |  |  |  |  |  |  |
| P2.FAC.4.Z1.130 |  | Curtainwall _ CW-01/GL-01 (West Glass Cube) (CL ZG.3/Z0.2 to ZF.2/Z1.5) / Sector Z1 | 20d | 2025-05-01 A | 2025-06-30 A | P2.FAC.1.Z1.150 FF | 100% | 2025-06-02 | 2025-06-27 |  |  | AVB and Mtl Panel go first adjacent at F2 | 160 | AT26 | G2 | ! | GLAZ | KD | P2-5 | KD | GLAZ |  |  |  |  |
| P2.FAC.4.Z1.150 |  | Storefronts - L1 - West Glass Cube / Sector Z1 | 10d | 2025-05-08 A | 2025-06-25 A | P2.FAC.4.Z1.110 | 100% | 2025-08-18 | 2025-08-29 |  |  |  | 80 | AT32 | G3 | ! | GLAZ | KD | P2-5 | KD | GLAZ | 99 |  |  |  |
| P2.FAC.4.Z1.110 |  | Storefronts - L1 - Main Entrance / Sector Z1 | 10d | 2025-05-22 A | 2025-07-10 A | P2.FAC.2.Z1.160 | 100% | 2025-08-04 | 2025-08-15 |  |  |  | 80 | AT32 | G3 | ! | GLAZ | KD | P2-5 | KD | GLAZ | 99 |  |  |  |
| P2.FAC.4.Z1.120 |  | Curtain Wall _ CW-02 (CL ZH.5 - ZJ) / Sector Z1 | 10d | 2025-07-24 A | 2025-08-13 A | P2.FAC.3.F.110, P2.FAC.2.Z1.180, P2.FAC.1.Z1.150 | 100% | 2025-07-02 | 2025-07-16 |  |  |  | 80 | AT26 | G1 |  | GLAZ | KD | P2-5 | KD | GLAZ |  | P2.FAC.S.08.44.110 |  |  |
| P2.FAC.3.Z1.160 |  | Curtainwall _ Storefront Door (CL ZJ.5 - ZK @ Z0.5) / Sector Z1 (Vestibule 6900) | 2d | 2026-08-03 | 2026-08-04 | P2.FAC.3.F.120, P2.FAD.GG.310 |  |  |  | 85d | 0d | AVB and Mtl Panel go first adjacent at F2 | 120 | AT26 | G4 | ! | GLAZ |  | P2-5 |  | GLAZ |  |  |  |  |
|  | 5 | **Facade Finish Work - Sector Z1** |  | 2025-02-24 | 2026-10-01 |  |  |  |  |  |  |  |  |  |  |  |  |  |  |  |  |  |  |  |  |
| P2.FAC.5.Z1.200 |  | Canopy Structure @ South - Mech Tower / Sector Z1 | 5d | 2025-02-24 A | 2025-03-28 A | P2.FAC.1.Z1.200 | 100% | 2025-03-10 | 2025-03-14 |  |  |  | 40 | AT33 |  |  | MISCMTL |  | P2-5 |  | MISCMTL |  | P2.FAC.S.08.44.110 |  |  |
| P2.FAC.5.Z1.220 |  | Precast Caulk & Seal / Sector Z1 | 20d | 2025-06-02 A | 2025-09-02 A | P2.FAC.2.Z1.180, P2.FAC.2.Z1.150 | 100% | 2025-07-30 | 2025-08-26 |  |  |  | 40 |  |  | T.FACADE.GLAZ | Sealant | KD | P2-5 | KD | Sealant | 81 |  | O |  |
| P2.FAC.5.Z1.210 |  | Stone Cladding _ST-01 / Sector Z1 | 10d | 2025-08-01 A | 2025-09-02 A | P2.FAC.1.Z1.120, P2.FAC.1.F.170, P2.FAC.4.Z1.150 | 100% | 2025-08-12 | 2025-08-25 |  |  |  | 40 | AT28 |  | ! | EXTCLAD | KD | P2-5 | KD | EXTCLAD |  |  | O |  |
| P2.FAC.5.Z1.190 |  | Caulk & Seal / Sector Z1 | 5d | 2025-12-15 A | 2025-12-19 A | P2.FAC.4.Z1.130, P2.FAC.3.Z1.130, P2.FAC.4.Z1.120, P2.FAC.3.Z1.140 | 100% | 2026-02-05 | 2026-02-11 |  |  |  | 40 |  |  | T.FACADE.GLAZ | Sealant | KD | P2-5 | TCASP | Sealant | 81 |  |  |  |
| P2.FAC.5.Z1.230 |  | Canopy Structure @ Entrance Stair / Sector Z1 | 5d | 2025-12-29 A | 2026-01-19 A | P2.FAC.1.Z1.130, P2.FAC.4.Z1.120 | 100% | 2026-01-02 | 2026-01-08 |  |  |  | 40 | AT33 |  |  | MISCMTL | KD | P2-5 | TCASP | MISCMTL |  | P2.FAC.S.08.44.110 | O |  |
| P2.FAC.5.Z1.110 |  | Expansion Joints / Sector Z1 | 5d | 2026-04-29 | 2026-05-05 | P2.FAC.3.F.110, P2.FAC.2.Z1.160, BP2.079.3.200, BP2.079.3.230 |  |  |  | 139d | 79d |  | 40 |  |  | EXP JT? | EJ | KD | P2-5 | JW | EJ | 93,95 |  | O |  |
| P2.FAC.5.Z1.120 |  | Soffit Framing / Sector Z1 | 5d | 2026-08-27 | 2026-09-02 | P2.FAC.4.Z1.150, P2.SITE.25 |  |  |  | 65d | 5d |  | 40 |  |  | ! | GYP | KD | P2-5 | TCASP | GYP-1 |  |  |  |  |
| P2.FAC.5.Z1.140 |  | Metal Panel Facade Columns / Sector Z1 | 5d | 2026-08-27 | 2026-09-02 | P2.SITE.25, P2.FAC.5.Z1.110 |  |  |  | 60d | 0d |  | 40 | AT27 |  |  | MPANEL |  | P2-5 | JW | MPANEL | 20,102,103,104 |  |  |  |
| P2.FAC.5.Z1.170 |  | Canopy Glass @ South - Mech Tower / Sector Z1 | 5d | 2026-08-27 | 2026-09-02 | P2.FAC.3.F.130, BP2.088.3.100, P2.FAC.4.Z3.240, P2.SITE.25 |  |  |  | 75d | 0d |  | 40 | AT34 | G4 |  | GLAZ |  | P2-5 | TCASP | GLAZ |  | P2.FAC.S.08.44.110 |  |  |
| P2.FAC.5.Z1.150 |  | Soffit Finish Panels / Sector Z1 | 5d | 2026-09-03 | 2026-09-10 | P2.FAC.5.Z1.140 |  |  |  | 60d | 0d |  | 40 | AT27 |  | ! | MPANEL |  | P2-5 | TCASP | MPANEL | 20,83,102,103 |  |  |  |
| P2.FAC.5.Z1.240 |  | Canopy Glass @ Entrance Stair / Sector Z1 | 5d | 2026-09-03 | 2026-09-10 | P2.FAC.5.Z1.170, P2.FAC.5.Z1.230 |  |  |  | 75d | 20d |  | 40 | AT34 | G4 |  | GLAZ |  | P2-5 | TCASP | GLAZ |  | P2.FAC.S.08.44.110 |  |  |
| P2.FAC.5.Z1.130 |  | R/I MEP @ Soffit / Sector Z1 | 5d | 2026-09-11 | 2026-09-17 | P2.FAC.5.Z1.120, P2.FAC.5.Z1.150 |  |  |  | 60d | 0d |  | 40 |  |  | ! | MEP |  | P2-5 | TCASP | MEP |  |  |  | Harris |
| P2.FAC.5.Z1.160 |  | Exterior Lights & Receptacles / Sector Z1 | 5d | 2026-09-18 | 2026-09-24 | P2.FAC.5.Z1.200, P2.FAC.5.Z1.150, P2.FAC.5.Z1.130 |  |  |  | 60d | 0d |  | 40 |  |  | ! | ELEC |  | P2-5 | TCASP | ELEC-2 |  |  |  |  |
| P2.FAC.5.Z1.165 |  | Exterior LV Systems / Sector Z1 | 5d | 2026-09-18 | 2026-09-24 | P2.FAC.5.Z1.150, P2.FAC.5.Z1.130 |  |  |  | 65d | 10d |  | 40 |  |  | ! | LOWVOLT |  | P2-5 | TCASP | LOWVOLT-1 |  |  |  |  |
| P2.FAC.5.Z1.180 |  | Exterior Signage / Sector Z1 | 5d | 2026-09-25 | 2026-10-01 | P2.FAC.5.Z1.160, P2.FAC.5.Z1.190 |  |  |  | 60d | 5d |  | 40 |  |  | ! | SIGN |  | P2-5 | TCASP | SIGN |  |  |  |  |
|  | 6 | **Quality Control Inspections - Sector Z1** |  | 2026-10-09 | 2026-11-05 |  |  |  |  |  |  |  |  |  |  |  |  |  |  |  |  |  |  |  |  |
| P2.FAC.Z1.9000 |  | Trades Inspect & Verify Work Completed to Specs / Sector Z1 | 5d | 2026-10-09 | 2026-10-15 | P2.FAC.5.Z1.180, P2.FAC.3.Z1.150, P2.FAC.5.Z1.240, P2.FAC.5.Z1.165, P2.FAC.5.Z1.190, P2.HZ.W.131, P2.FAC.5.Z1.220 |  |  |  | 55d | 0d |  | 40 |  |  | ! | T |  | P2-5 | TCASP | T |  |  |  |  |
| P2.FAC.Z1.9010 |  | Inspect & Prepare Punchlist / Sector Z1 | 5d | 2026-10-16 | 2026-10-22 | P2.FAC.Z1.9000 |  |  |  | 55d | 0d |  | 40 |  |  | ! | ARCH |  | P2-5 | TCASP | ARCH |  |  |  |  |
| P2.FAC.Z1.9020 |  | Correct Punchlist / Sector Z1 | 5d | 2026-10-23 | 2026-10-29 | P2.FAC.Z1.9010 |  |  |  | 55d | 0d |  | 40 |  |  | ! | T |  | P2-5 | TCASP | T |  |  |  |  |
| P2.FAC.Z1.9030 |  | NIH Acceptance of Facade / Sector Z1 | 5d | 2026-10-30 | 2026-11-05 | P2.SUM.165, P2.DES.VMU.670 FF, P2.FAC.Z1.9020 |  |  |  | 55d | 0d |  | 40 |  |  | ! | NIH |  | P2-5 | TCASP | NIH |  |  |  |  |

| ID | WBS | Activity | Duration | Start | Finish | Predecessors | Complete | Planned start | Planned finish | Total float | Free float | Temp Orig Dur | Testing Type | *NIH Resp Check* | Resp / SRLM | PHASE | RESP / Trade | Trade Review Notes | Act ID Temp | 744 | RESP UPD | Update Status | SRLM - Crew |
| --- | --- | --- | --- | --- | --- | --- | --- | --- | --- | --- | --- | --- | --- | --- | --- | --- | --- | --- | --- | --- | --- | --- | --- |
|  | 7 | **Sector Z2** |  | 2025-01-06 | 2026-09-18 |  |  |  |  |  |  |  |  |  |  |  |  |  |  |  |  |  |  |
|  | 1 | **Substrate Prep Work - Sector Z2** |  | 2025-01-06 | 2025-09-25 |  |  |  |  |  |  |  |  |  |  |  |  |  |  |  |  |  |  |
| P2.FAC.1.Z2.130 |  | Waterproofing (WP-01) at Foundation Wall / Sector Z2 | 5d | 2025-01-06 A | 2025-02-07 A | P1.BG.BF.130, P1.PED.240 | 100% | 2025-02-03 | 2025-02-07 |  |  | 40 | AT15 | ! | WTPF | P2-5 | WTPF |  |  |  |  |  |  |
| P2.FAC.1.Z2.180 |  | Structural Steel Supports at parapets for Precast & Curtainwall / Sector Z2 | 5d | 2025-02-24 A | 2025-03-20 A | P2.MR/PS.03.520 SS | 100% | 2025-03-13 | 2025-03-19 |  |  | 40 | AT25 | ! | STEEL | P2-5 | STEEL | 50 |  |  |  |  |  |
| P2.FAC.1.Z2.220 |  | Framing & Sheathing behind parapets / Sector Z2 | 5d | 2025-03-11 A | 2025-03-31 A | P2.FAC.1.Z1.150 | 100% | 2025-03-11 | 2025-03-17 |  |  | 40 |  | ! | GYP | P2-5 | GYP-1 | 54,63,94 |  |  |  |  |  |
| P2.FAC.1.Z2.240 |  | Air_Vapor Barrier (Behind Parapets) / Sector Z2 | 5d | 2025-03-18 A | 2025-03-31 A | P2.FAC.1.Z2.220 | 100% | 2025-03-18 | 2025-03-24 |  |  | 40 |  |  | AVB | P2-5 | AVB |  | P2.FAC.E.07.25.120 |  |  |  |  |
| P2.FAC.1.Z2.170 |  | Structural Steel Supports at parapets and Support for Clerestory for Curtain Wall / Sector Z2 | 10d | 2025-03-31 A | 2025-04-11 A | P2.FAC.1.Z2.180 | 100% | 2025-03-20 | 2025-04-02 |  |  | 40 | AT25 | ! | STEEL | P2-5 | STEEL |  |  |  |  |  |  |
| P2.FAC.1.Z2.200 |  | Framing & Sheathing at Clerestories / Sector Z2 | 5d | 2025-06-16 A | 2025-08-29 A | P2.FAC.1.Z2.170 | 100% | 2025-07-01 | 2025-07-08 |  |  | 40 |  | ! | GYP | P2-5 | GYP-1 | 54,63,94 |  | KD | KD |  |  |
| P2.FAC.1.Z2.120 |  | Air_Vapor Barrier / Sector Z2 | 5d | 2025-07-14 A | 2025-07-18 A | P2.PH.S.1050, P2.FAC.1.Z2.200, P2.PH.N.1050 | 100% | 2025-08-13 | 2025-08-19 |  |  | 40 |  |  | AVB | P2-5 | AVB |  | P2.FAC.E.07.25.120 | KD | KD |  |  |
| P2.FAC.1.Z2.230 |  | Remaining Sheathing & Insulation behind parapets / Sector Z2 | 5d | 2025-07-30 A | 2025-08-28 A | P2.FAC.4.Z2.140, P2.FAC.4.Z2.190 | 100% | 2025-09-22 | 2025-09-26 |  |  | 40 |  | ! | GYP | P2-5 | GYP-1 | 54,63,94 |  | KD | KD |  |  |
| P2.FAC.1.Z2.250 |  | Air_Vapor Barrier Patch Back / Sector Z2 | 5d | 2025-09-02 A | 2025-09-25 A | P2.FAC.1.Z2.230 | 100% | 2025-10-01 | 2025-10-07 |  |  | 40 |  |  | AVB | P2-5 | AVB |  | P2.FAC.E.07.25.120 | KD | KD | O |  |
|  | 2 | **Precast Panels - Sector Z2** |  | 2025-03-24 | 2025-07-10 |  |  |  |  |  |  |  |  |  |  |  |  |  |  |  |  |  |  |
| P2.FAC.2.Z2.190 |  | Precast _ Heavy Panel / Sector Z2 (Mobile Crane) | 10d | 2025-03-24 A | 2025-04-04 A | P2.7.03.620 | 100% | 2025-04-01 | 2025-04-14 |  |  |  |  |  | PRECAST |  | PRECAST |  |  |  |  |  |  |
| P2.FAC.2.Z2.110 |  | Precast _ L1 & L2 / Sector Z2 (West Crane) | 5d | 2025-04-21 A | 2025-04-30 A | P2.4.03.620, P2.FAC.2.Z1.180 | 100% | 2025-06-12 | 2025-06-18 |  |  | 40 | AT30 |  | PRECAST | P2-5 | PRECAST |  | P2.FAC.E.03.40.130 |  |  |  | P1 |
| P2.FAC.2.Z2.150 |  | Precast _ L2 / Sector Z2 (East Crane) | 5d | 2025-05-05 A | 2025-05-09 A | P2.4.03.620, P2.FAC.1.Z2.180, P2.FAC.2.Z1.190, P2.FAD.PC.270 | 100% | 2025-06-04 | 2025-06-10 |  |  | 40 | AT30 |  | PRECAST | P2-5 | PRECAST |  | P2.FAC.E.03.40.130 |  |  |  | P2 |
| P2.FAC.2.Z2.120 |  | Precast _ L3 & L4 / Sector Z2 (West Crane) | 5d | 2025-05-15 A | 2025-05-21 A | P2.FAC.2.Z1.130 | 100% | 2025-06-16 | 2025-06-20 |  |  | 40 | AT30 |  | PRECAST | P2-5 | PRECAST |  | P2.FAC.E.03.40.140 |  |  |  | P1 |
| P2.FAC.2.Z2.160 |  | Precast _ L3 & L4 / Sector Z2 (East Crane) | 5d | 2025-05-19 A | 2025-05-23 A | P2.FAC.2.Z3.120 | 100% | 2025-06-18 | 2025-06-24 |  |  | 40 | AT30 |  | PRECAST | P2-5 | PRECAST |  | P2.FAC.E.03.40.140 |  |  |  | P2 |
| P2.FAC.2.Z2.170 |  | Precast _ L5 & L6 / Sector Z2 (East Crane) | 5d | 2025-06-04 A | 2025-06-10 A | P2.6.03.620, P2.FAC.2.Z3.130 | 100% | 2025-07-03 | 2025-07-10 |  |  | 40 | AT30 |  | PRECAST | P2-5 | PRECAST |  | P2.FAC.E.03.40.150 | KD | KD |  | P2 |
| P2.FAC.2.Z2.130 |  | Precast _ L5 & L6 / Sector Z2 (West Crane) | 5d | 2025-06-09 A | 2025-06-13 A | P2.6.03.620, P2.FAC.2.Z1.140 | 100% | 2025-07-09 | 2025-07-15 |  |  | 40 | AT30 |  | PRECAST | P2-5 | PRECAST |  | P2.FAC.E.03.40.150 | KD | KD |  | P1 |
| P2.FAC.2.Z2.180 |  | Precast _ L7 & L8 / Sector Z2 (East Crane) | 5d | 2025-06-25 A | 2025-07-03 A | P2.8.03.620, P2.FAC.1.Z2.220, P2.FAC.2.Z3.140 | 100% | 2025-07-25 | 2025-07-31 |  |  | 40 | AT30 |  | PRECAST | P2-5 | PRECAST |  | P2.FAC.E.03.40.160 | KD | KD |  | P2 |
| P2.FAC.2.Z2.140 |  | Precast _ L7 & L8 / Sector Z2 (West Crane) | 5d | 2025-06-30 A | 2025-07-10 A | P2.8.03.620, P2.FAC.2.Z1.160, P2.FAC.1.Z2.220, P2.FAC.2.Z1.150 | 100% | 2025-08-06 | 2025-08-12 |  |  | 40 | AT30 |  | PRECAST | P2-5 | PRECAST |  | P2.FAC.E.03.40.160 | KD | KD |  | P1 |
|  | 4 | **Metal Panels & Louvers - Sector Z2** |  | 2025-11-17 | 2026-05-12 |  |  |  |  |  |  |  |  |  |  |  |  |  |  |  |  |  |  |
| P2.FAC.3.Z2.120 |  | Metal Panels Soffits @ Level 4 West & Center Hockey Sticks / Sector Z2 | 10d | 2025-11-17 A | 2025-12-05 A | P2.FAC.4.Z2.190 | 100% | 2025-12-01 | 2025-12-12 |  |  | 40 | AT27 |  | MPANEL | P2-5 | MPANEL | 20,98 | P2.FAC.E.07.42.130 | KD | TCASP | O | MP3 |
| P2.FAC.3.Z2.200 |  | Metal Roof @ Clerestories / Sector Z2 | 5d | 2025-12-15 A | 2025-12-22 A | P2.FAC.4.Z2.140 | 100% | 2026-01-15 | 2026-01-22 |  |  | 40 | AT56 |  | ROOF | P2-5 | ROOF | 25 |  |  | TCASP | O |  |
| P2.FAC.3.Z2.110 |  | Metal Panels @ West Clerestory / Sector Z2 | 5d | 2026-04-29 | 2026-05-05 | P2.FAC.1.Z2.120, P2.FAC.3.Z3.140, P2.FAC.4.Z3.210 |  |  |  | 144d | 0d | 40 | AT27 |  | MPANEL | P2-5 | MPANEL | 20,98 | P2.FAC.E.07.42.130 | KD | JW | O | MP3 |
| P2.FAC.3.Z2.140 |  | Metal Panels behind parapets / Sector Z2 | 5d | 2026-05-06 | 2026-05-12 | P2.FAC.1.Z2.250, P2.FAC.1.Z2.120, P2.FAC.3.Z2.110 |  |  |  | 159d | 70d | 40 | AT27 |  | MPANEL | P2-5 | MPANEL | 20,98 | P2.FAC.E.07.42.130 | KD | JW | O | MP3 |

| ID | WBS | Activity | Duration | Start | Finish | Predecessors | Complete | Planned start | Planned finish | Total float | Free float | Temp Orig Dur | Testing Type | SRLM - Crew | *NIH Resp Check* | Trade Review Notes | Resp / SRLM | 744 | PHASE | RESP UPD | RESP / Trade | Posit | Update Status | Z.RESP |
| --- | --- | --- | --- | --- | --- | --- | --- | --- | --- | --- | --- | --- | --- | --- | --- | --- | --- | --- | --- | --- | --- | --- | --- | --- |
|  | 3 | **Glass & Glazing - Sector Z2** |  | 2025-05-15 | 2026-08-06 |  |  |  |  |  |  |  |  |  |  |  |  |  |  |  |  |  |  |  |
| P2.FAC.4.Z2.110 |  | Storefront - L1 - West Tower / Sector Z2 | 10d | 2025-05-15 A | 2025-06-30 A | P2.FAC.4.Z1.150 | 100% | 2025-09-02 | 2025-09-15 |  |  | 80 | AT32 | G3 | ! | 99 | GLAZ | KD | P2-5 | KD | GLAZ |  |  |  |
| P2.FAC.4.Z2.120 |  | Curtainwall _ CW-01/GL-01 (West Hockey Stick) (CL Z2) / Sector Z2 | 10d | 2025-06-18 A | 2025-07-30 A | P2.FAC.4.Z1.120, P2.FAC.4.Z1.130 FF, P2.FAC.2.Z2.180 FF | 100% | 2025-07-18 | 2025-07-31 |  |  | 80 | AT26 | G2 | ! |  | GLAZ | KD | P2-5 | KD | GLAZ | AVB and Mtl Panel go first adjacent at F2 |  |  |
| P2.FAC.4.Z2.190 |  | Curtainwall _ CW-01/GL-01 (Center Hockey Stick) (CL Z4) / Sector Z2 | 10d | 2025-06-19 A | 2025-07-28 A | P2.FAC.4.Z2.120 | 100% | 2025-08-01 | 2025-08-14 |  |  | 80 | AT26 | G2 | ! |  | GLAZ | KD | P2-5 | KD | GLAZ | AVB and Mtl Panel go first adjacent at F2 |  |  |
| P2.FAC.4.Z2.170 |  | Storefront - L1 - Center Tower / Sector Z2 | 10d | 2025-06-25 A | 2025-07-17 A | P2.FAC.4.Z2.110 | 100% | 2025-08-12 | 2025-08-25 |  |  | 80 | AT32 | G3 | ! | 99 | GLAZ | KD | P2-5 | KD | GLAZ |  |  |  |
| P2.FAC.4.Z2.130 |  | Curtainwall _ CW-01/GL-01 (CL Z3.7) / Sector Z2 | 5d | 2025-07-16 A | 2025-08-04 A | P2.FAD.GG.300, P2.FAC.4.Z1.120 SS, P2.FAC.2.Z2.140 | 100% | 2025-08-15 | 2025-08-21 |  |  | 40 | AT26 | G1 | ! |  | GLAZ | KD | P2-5 | KD | GLAZ | AVB and Mtl Panel go first adjacent at F2 |  |  |
| P2.FAC.4.Z2.160 |  | Curtainwall _ CW-02/GL-02 (CL Z3.7-Z4) / Sector Z2 | 10d | 2025-07-23 A | 2025-08-18 A | P2.FAC.4.Z2.130 | 100% | 2025-08-22 | 2025-09-05 |  |  | 80 | AT26 | G1 | ! |  | GLAZ | KD | P2-5 | KD | GLAZ | AVB and Mtl Panel go first adjacent at F2 |  |  |
| P2.FAC.4.Z2.140 |  | Clerestory Glazing _ GL-02 (West Skylight) / Sector Z2 | 5d | 2025-08-01 A | 2025-08-14 A | P2.FAC.1.Z2.210, P2.MR.W.160, P2.FAC.1.Z3.200 | 100% | 2025-08-01 | 2025-08-07 |  |  | 40 | AT26 | G1 | ! |  | GLAZ | KD | P2-5 | KD | GLAZ |  |  |  |
| P2.FAC.4.Z2.200 |  | Glass-Glazing _ Stick-Built Windows/GL-02 (Level 8) / Sector Z2 | 15d | 2025-09-08 A | 2025-09-30 A | P2.FAC.2.Z2.180 | 100% | 2025-08-20 | 2025-09-10 |  |  | 40 | AT26 | G3 | ! |  | GLAZ | KD | P2-5 | KD | GLAZ | AVB and Mtl Panel go first adjacent at F2 | O |  |
| P2.FAC.3.Z2.210 |  | Curtainwall _ Storefront Door (CL ZD - ZE @ Z2) / Sector Z2 (Stair 2-10) | 2d | 2026-08-05 | 2026-08-06 | P2.FAC.3.Z1.160 |  |  |  | 85d | 0d | 120 | AT26 | G4 | ! |  | GLAZ |  | P2-5 | TCASP | GLAZ | AVB and Mtl Panel go first adjacent at F2 |  |  |
|  | 5 | **Facade Finish Work - Sector Z2** |  | 2025-07-16 | 2026-08-20 |  |  |  |  |  |  |  |  |  |  |  |  |  |  |  |  |  |  |  |
| P2.FAC.5.Z2.210 |  | Precast Caulk & Seal / Sector Z2 | 20d | 2025-07-16 A | 2025-08-22 A | P2.FAC.2.Z2.180 FF, P2.FAC.2.Z2.140 | 100% | 2025-08-15 | 2025-09-12 |  |  | 40 | AT30 |  | T.FACADE.GLAZ | 81 | Sealant | KD | P2-5 | KD | Sealant |  |  |  |
| P2.FAC.1.Z2.160 |  | Stone Cladding _ST-01 / Sector Z2 | 10d | 2025-08-06 A | 2025-09-11 A | P2.FAC.5.Z1.210, P2.FAC.1.Z2.130, P2.FAC.4.Z2.110 | 100% | 2025-08-26 | 2025-09-09 |  |  | 40 | AT28 |  | ! |  | EXTCLAD | KD | P2-5 | KD | EXTCLAD |  | O |  |
| P2.FAC.5.Z2.220 |  | Caulk & Seal / Sector Z2 | 5d | 2025-12-08 A | 2025-12-19 A | P2.FAC.4.Z2.170, P2.FAC.3.Z2.120 | 100% | 2026-02-06 | 2026-02-12 |  |  | 40 |  |  | T.FACADE.GLAZ | 81 | Sealant | KD | P2-5 | TCASP | Sealant |  |  |  |
| P2.FAC.5.Z2.110 |  | Soffit Framing @ West Tower / Sector Z2 | 5d | 2026-07-10 | 2026-07-16 | P2.FAC.4.Z2.110, P2.SITE.20 |  |  |  | 89d | 0d | 40 |  |  | ! |  | GYP | KD | P2-5 | TCASP | GYP-1 |  |  |  |
| P2.FAC.5.Z2.120 |  | R/I MEP _ Soffit @ West Tower / Sector Z2 | 5d | 2026-07-17 | 2026-07-23 | P2.FAC.5.Z2.110 |  |  |  | 89d | 0d | 40 |  |  | ! |  | MEP | KD | P2-5 | TCASP | MEP |  |  | Harris |
| P2.FAC.5.Z2.140 |  | Soffit Framing @ Center Tower / Sector Z2 | 5d | 2026-07-17 | 2026-07-23 | P2.FAC.5.Z2.110 |  |  |  | 89d | 0d | 40 |  |  | ! |  | GYP | KD | P2-5 | TCASP | GYP-1 |  |  |  |
| P2.FAC.5.Z2.130 |  | Metal Panel Facade Columns @ West Tower / Sector Z2 | 5d | 2026-07-24 | 2026-07-30 | P2.FAC.5.Z2.120, P2.SITE.20 |  |  |  | 89d | 0d | 40 | AT27 |  |  | 20,102,103,104 | MPANEL |  | P2-5 | TCASP | MPANEL |  |  |  |
| P2.FAC.5.Z2.160 |  | R/I MEP _ Soffit @ Center Tower / Sector Z2 | 5d | 2026-07-24 | 2026-07-30 | P2.FAC.5.Z2.140, P2.FAC.5.Z2.120 |  |  |  | 89d | 0d | 40 |  |  | ! |  | MEP | KD | P2-5 | TCASP | MEP |  |  | Harris |
| P2.FAC.5.Z2.150 |  | Soffit Finish Panels @ West Tower / Sector Z2 | 5d | 2026-07-31 | 2026-08-06 | P2.FAC.5.Z2.130 |  |  |  | 89d | 0d | 40 | AT27 |  | ! | 20,83,102,103 | MPANEL |  | P2-5 | TCASP | MPANEL |  |  |  |
| P2.FAC.5.Z2.170 |  | Metal Panel Facade Columns @ Center Tower / Sector Z2 | 5d | 2026-07-31 | 2026-08-06 | P2.FAC.5.Z2.160, P2.FAC.5.Z2.130, P2.SITE.20 |  |  |  | 89d | 0d | 40 | AT27 |  |  | 20,102,103,104 | MPANEL |  | P2-5 | TCASP | MPANEL |  |  |  |
| P2.FAC.5.Z2.180 |  | Soffit Finish Panels @ Center Tower / Sector Z2 | 5d | 2026-08-07 | 2026-08-13 | P2.FAC.5.Z2.150, P2.FAC.5.Z2.170 |  |  |  | 89d | 0d | 40 | AT27 |  | ! | 20,83,102,103 | MPANEL |  | P2-5 | TCASP | MPANEL |  |  |  |
| P2.FAC.5.F.180 |  | Exterior LV Systems / Sector Z2 | 5d | 2026-08-14 | 2026-08-20 | P2.FAC.5.Z2.180, P2.FAC.5.Z2.150 |  |  |  | 89d | 0d | 40 |  |  | ! |  | LOWVOLT |  | P2-5 | TCASP | LOWVOLT-1 |  |  |  |
| P2.FAC.5.Z2.190 |  | Exterior Lights& Receptacles / Sector Z2 | 5d | 2026-08-14 | 2026-08-20 | P2.FAC.5.Z2.180, P2.FAC.5.Z2.150 |  |  |  | 89d | 0d | 40 |  |  | ! |  | ELEC |  | P2-5 | TCASP | ELEC-2 |  |  |  |
| P2.FAC.5.Z2.200 |  | Exterior Signage / Sector Z2 | 5d | 2026-08-14 | 2026-08-20 | P2.FAC.5.Z2.180, P2.FAC.5.Z2.220 |  |  |  | 89d | 0d | 40 |  |  | ! |  | SIGN |  | P2-5 | TCASP | SIGN |  |  |  |

| ID | WBS | Activity | Duration | Start | Finish | Predecessors | Complete | Planned start | Planned finish | Total float | Free float | Temp Orig Dur | *NIH Resp Check* | Resp / SRLM | PHASE | RESP UPD | RESP / Trade | Testing Type | Trade Review Notes | 744 | Act ID Temp | Update Status |
| --- | --- | --- | --- | --- | --- | --- | --- | --- | --- | --- | --- | --- | --- | --- | --- | --- | --- | --- | --- | --- | --- | --- |
|  | 6 | **Quality Control Inspections - Sector Z2** |  | 2026-08-21 | 2026-09-18 |  |  |  |  |  |  |  |  |  |  |  |  |  |  |  |  |  |
| P2.FAC.Z2.9000 |  | Trades Inspect & Verify Work Completed to Specs / Sector Z2 | 5d | 2026-08-21 | 2026-08-27 | P2.FAC.5.F.180, P2.FAC.5.Z2.220, P2.FAC.5.Z2.190, P2.FAC.1.Z2.160, P2.FAC.5.Z2.200, P2.FAC.3.Z2.140, P2.FAC.3.Z2.200, P2.HZ.E.111, P2.FAC.5.Z2.210 |  |  |  | 89d | 0d | 40 | ! | T | P2-5 | TCASP | T |  |  |  |  |  |
| P2.FAC.Z2.9010 |  | Inspect & Prepare Punchlist / Sector Z2 | 5d | 2026-08-28 | 2026-09-03 | P2.FAC.Z2.9000 |  |  |  | 89d | 0d | 40 | ! | ARCH | P2-5 | TCASP | ARCH |  |  |  |  |  |
| P2.FAC.Z2.9020 |  | Correct Punchlist / Sector Z2 | 5d | 2026-09-04 | 2026-09-11 | P2.FAC.Z2.9010 |  |  |  | 89d | 0d | 40 | ! | T | P2-5 | TCASP | T |  |  |  |  |  |
| P2.FAC.Z2.9030 |  | NIH Acceptance of Facade / Sector Z2 | 5d | 2026-09-14 | 2026-09-18 | P2.DES.VMU.670 FF, P2.FAC.Z2.9020 |  |  |  | 89d | 34d | 40 | ! | NIH | P2-5 | TCASP | NIH |  |  |  |  |  |
|  | 8 | **Sector Z3** |  | 2025-02-25 | 2026-09-09 |  |  |  |  |  |  |  |  |  |  |  |  |  |  |  |  |  |
|  | 1 | **Substrate Prep Work - Sector Z3** |  | 2025-02-25 | 2025-11-26 |  |  |  |  |  |  |  |  |  |  |  |  |  |  |  |  |  |
| P2.FAC.1.Z3.210 |  | Structural Steel Supports for LVL3 Quench Vents at Precast / Sector Z3 | 5d | 2025-02-25 A | 2025-03-11 A | P2.3.03.620 | 100% | 2025-03-10 | 2025-03-14 |  |  | 40 | ! | STEEL | P2-5 |  | STEEL | AT25 | 50 |  |  |  |
| P2.FAC.1.Z3.140 |  | Waterproofing (WP-01) at Foundation Wall / Sector Z3 | 5d | 2025-03-03 A | 2025-03-31 A | P1.BG.BF.170, P2.3.03.620, P2.3.03.650 | 100% | 2025-03-03 | 2025-03-07 |  |  | 40 | ! | WTPF | P2-5 |  | WTPF | AT15 |  |  |  |  |
| P2.FAC.1.Z3.170 |  | Structural Steel Supports for Curtain Wall / Sector Z3 | 5d | 2025-03-25 A | 2025-04-04 A | P2.FAC.1.Z3.180 SS | 100% | 2025-04-01 | 2025-04-07 |  |  | 40 | ! | STEEL | P2-5 |  | STEEL | AT25 |  |  |  |  |
| P2.FAC.1.Z3.180 |  | Structural Steel Supports for Precast Panels / Sector Z3 | 5d | 2025-03-25 A | 2025-04-01 A | P2.MR/PS.03.530 | 100% | 2025-03-25 | 2025-03-31 |  |  | 40 | ! | STEEL | P2-5 |  | STEEL | AT25 | 50 |  |  |  |
| P2.FAC.1.Z3.220 |  | Structural Steel Supports for LVL5 Quench Vents at Precast / Sector Z3 | 5d | 2025-04-21 A | 2025-04-25 A | P2.5.03.630 | 100% | 2025-05-01 | 2025-05-07 |  |  | 40 | ! | STEEL | P2-5 |  | STEEL | AT25 | 50 |  |  |  |
| P2.FAC.1.Z3.280 |  | Framing & Sheathing behind parapets (Level 7, Stair 2.8 Roof ) / Sector Z3 | 5d | 2025-05-07 A | 2025-05-13 A | P2.FAC.1.Z3.170, P2.PR.03.620 | 100% | 2025-06-02 | 2025-06-06 |  |  | 40 | ! | GYP | P2-5 |  | GYP-1 |  | 54,63,94 |  |  |  |
| P2.FAC.1.Z3.250 |  | Framing & Sheathing behind parapets (Penthouse Roof) / Sector Z3 | 5d | 2025-05-20 A | 2025-05-23 A | P2.PR.03.520 | 100% | 2025-06-02 | 2025-06-06 |  |  | 40 | ! | GYP | P2-5 |  | GYP-1 |  | 54,63,94 |  |  |  |
| P2.FAC.1.Z3.200 |  | Framing & Sheathing / Sector Z3 | 10d | 2025-05-26 A | 2025-07-09 A | P2.L8.N.1000 | 100% | 2025-06-09 | 2025-06-20 |  |  | 40 | ! | GYP | P2-5 | KD | GYP-1 |  | 54,63,94 | KD |  |  |
| P2.FAC.1.Z3.260 |  | Install Relief Angle L2 Roof / Sector Z3 | 5d | 2025-05-27 A | 2025-05-30 A | P2.LR.L2.120 | 100% | 2025-06-04 | 2025-06-10 |  |  | 40 | ! | MASON | P2-5 |  | MASON | AT25 | 50 |  |  |  |
| P2.FAC.1.Z2.210 |  | Steel - HSS Roof Framing @ All Clerestories / Sector Z3 | 5d | 2025-06-16 A | 2025-06-30 A | P2.PR.03.610, P2.2-8.03.11.130 | 100% | 2025-08-13 | 2025-08-19 |  |  | 40 | ! | MISCMTL | P2-5 | KD | MISCMTL | AT25 |  | KD |  |  |
| P2.2-8.03.11.130 |  | Steel - HSS Posts/Beams for Curtain Wall at Stair 2-8 _ All Levels Finalization / Sector Z3 | 5d | 2025-07-15 A | 2025-07-31 A | P2.7.03.730 FF, P2.8.03.730 | 100% | 2025-09-08 | 2025-09-12 |  |  | 40 | ! | MISCMTL | P2-5 | KD | MISCMTL | AT25 |  | KD |  |  |
| P2.FAC.1.Z3.120 |  | Air Vapor Barrier / Sector Z3 | 5d | 2025-07-23 A | 2025-10-30 A | P2.L8.EMT.1010, P2.FAC.1.Z3.200 | 100% | 2025-08-22 | 2025-08-28 |  |  | 40 |  | AVB | P2-5 | KD | AVB |  |  | KD | P2.FAC.E.07.25.120 |  |
| P2.FAC.1.Z3.230 |  | Remaining Sheathing behind parapets / Sector Z3 | 5d | 2025-07-30 A | 2025-08-21 A | P2.FAC.1.Z3.120 | 100% | 2025-08-29 | 2025-09-05 |  |  | 40 | ! | GYP | P2-5 | KD | GYP-1 |  | 54,63,94 | KD |  |  |
| P2.FAC.1.Z3.270 |  | Demo Remaining Facade below L2 Roof / Sector Z3 | 5d | 2025-07-31 A | 2025-09-27 A | P2.FAC.1.Z3.260 | 100% | 2025-07-01 | 2025-07-08 |  |  | 40 | ! | DEMO.1 | P2-5 | KD | DEMO.1 | AT25 | 50 | KD |  | O |
| P2.FAC.1.Z3.240 |  | Framing & Sheathing behind parapets (Main Roof) / Sector Z3 | 5d | 2025-08-01 A | 2025-08-21 A | P2.FAC.1.Z3.170, P2.2-8.03.11.130 | 100% | 2025-08-01 | 2025-08-07 |  |  | 40 | ! | GYP | P2-5 | KD | GYP-1 |  | 54,63,94 | KD |  |  |
| P2.FAC.1.Z3.300 |  | Air Vapor Barrier (behing Main Roof Parapets) / Sector Z3 | 5d | 2025-08-08 A | 2025-08-14 A | P2.FAC.1.Z3.240 | 100% |  |  |  |  | 40 |  | AVB | P2-5 | KD | AVB |  |  | KD | P2.FAC.E.07.25.120 |  |
| P2.FAC.1.Z3.310 |  | Air Vapor Barrier Patch Back / Sector Z3 | 5d | 2025-08-22 A | 2025-11-26 A | P2.FAC.1.Z3.230 | 100% | 2025-08-22 | 2025-08-28 |  |  | 40 |  | AVB | P2-5 | TCASP | AVB |  |  | KD | P2.FAC.E.07.25.120 |  |
| P2.FAC.1.Z3.190 |  | Fireproofing - Intumescent Paint - HSS Roof Framing @ All Clerestories / Sector Z3 | 5d | 2025-09-02 A | 2025-09-30 A | P2.PR.03.620, P2.FAC.1.Z2.210 | 100% | 2025-10-01 | 2025-10-07 |  |  | 40 | ! | SPRAY | P2-5 | KD | SPRAY | AT35 |  | KD |  | O |
| P2.FAC.1.Z3.290 |  | Air Vapor Barrier (Level 7 Roof Parapets) / Sector Z3 | 5d | 2025-09-02 A | 2025-09-15 A | P2.FAC.1.Z3.280 | 100% | 2025-10-01 | 2025-10-07 |  |  | 40 |  | AVB | P2-5 | KD | AVB |  |  | KD | P2.FAC.E.07.25.120 | O |

| ID | WBS | Activity | Duration | Start | Finish | Predecessors | Complete | Planned start | Planned finish | Total float | Free float | Temp Orig Dur | Testing Type | SRLM - Crew | *NIH Resp Check* | Trade Review Notes | Resp / SRLM | PHASE | RESP / Trade | Act ID Temp | 744 | RESP UPD | Update Status | Posit |
| --- | --- | --- | --- | --- | --- | --- | --- | --- | --- | --- | --- | --- | --- | --- | --- | --- | --- | --- | --- | --- | --- | --- | --- | --- |
|  | 2 | **Precast Panels - Sector Z3** |  | 2025-04-21 | 2025-07-10 |  |  |  |  |  |  |  |  |  |  |  |  |  |  |  |  |  |  |  |
| P2.FAC.2.Z3.110 |  | Precast - Inset Panels (PCP-02) @ East Mech Tower_L1 / Sector Z3 | 10d | 2025-04-21 A | 2025-04-25 A | P2.7.03.630, P2.MR/PS.03.610 | 100% | 2025-05-07 | 2025-05-20 |  |  | 80 | AT30 | P2 | ! | 108 | PRECAST | P2-5 | PRECAST |  |  |  |  |  |
| P2.FAC.2.Z1.190 |  | Precast - Elevations at Electrical Room 2803 / Sector Z3 | 5d | 2025-04-28 A | 2025-05-07 A | P2.FAC.1.Z3.180, P2.L1.N.1090 | 100% | 2025-05-02 | 2025-05-08 |  |  | 40 | AT30 | P1 |  |  | PRECAST | P2-5 | PRECAST | P2.FAC.E.03.40.130 |  |  |  |  |
| P2.FAC.2.Z3.120 |  | Precast _ L2 / Sector Z3 | 5d | 2025-05-08 A | 2025-05-20 A | DDD2610, P2.4.03.630, P2.FAC.2.Z2.150, P2.FAC.2.Z3.110, P2.LR.L2.100 | 100% | 2025-06-11 | 2025-06-17 |  |  | 40 | AT30 | P2 |  |  | PRECAST | P2-5 | PRECAST | P2.FAC.E.03.40.130 |  |  |  |  |
| P2.FAC.2.Z3.130 |  | Precast _ L3 & L4 / Sector Z3 | 10d | 2025-05-15 A | 2025-07-02 A | P2.FAC.2.Z2.160, P2.FAC.1.Z3.210 | 100% | 2025-06-25 | 2025-07-09 |  |  | 80 | AT30 | P2 |  |  | PRECAST | P2-5 | PRECAST | P2.FAC.E.03.40.140 | KD | KD |  |  |
| P2.FAC.2.Z3.140 |  | Precast _ L5 & L6 / Sector Z3 | 10d | 2025-06-16 A | 2025-07-10 A | P2.6.03.630, P2.FAC.2.Z2.170, P2.FAC.1.Z3.220 | 100% | 2025-08-05 | 2025-08-18 |  |  | 80 | AT30 | P2 |  |  | PRECAST | P2-5 | PRECAST | P2.FAC.E.03.40.150 | KD | KD |  |  |
| P2.FAC.2.Z3.150 |  | Precast _ L7 & L8 & Elevator Tower / Sector Z3 | 10d | 2025-06-16 A | 2025-07-03 A | P2.8.03.630, P2.FAC.2.Z2.180, P2.FAC.1.Z3.180 | 100% | 2025-08-20 | 2025-09-03 |  |  | 80 | AT30 | P2 |  |  | PRECAST | P2-5 | PRECAST | P2.FAC.E.03.40.160 | KD | KD |  |  |
|  | 4 | **Metal Panels & Louvers - Sector Z3** |  | 2025-07-22 | 2026-06-03 |  |  |  |  |  |  |  |  |  |  |  |  |  |  |  |  |  |  |  |
| P2.FAC.3.Z3.110 |  | Metal Louver Canopy & Supports / Sector Z3 | 6d | 2025-07-22 A | 2025-07-22 A | P2.FAC.3.Z3.230 | 100% | 2025-08-29 | 2025-09-08 |  |  | 48 | AT25 |  |  | 69 | MISCMTL | P2-5 | MISCMTL | P2.FAC.E.05.45.120 |  |  |  |  |
| P2.FAC.3.Z3.180 |  | Louvers @ CL ZF / Sector Z3 | 10d | 2025-07-22 A | 2025-08-28 A | BP2.089.3.100, P2.FAC.3.Z3.110 | 100% | 2025-09-09 | 2025-09-22 |  |  | 80 | AT31 | L1 |  |  | MPANEL | P2-5 | MPANEL | P2.FAC.S..08.91.110 |  |  |  |  |
| P2.FAC.3.Z3.230 |  | Quench Vent Louvers at Level 3 / Sector Z3 | 10d | 2025-07-22 A | 2025-07-28 A | P2.FAC.2.Z3.130 | 100% | 2025-08-15 | 2025-08-28 |  |  | 80 | AT31 | L1 |  |  | MPANEL | P2-5 | MPANEL | P2.FAC.S..08.91.110 | KD | KD |  |  |
| P2.FAC.3.Z3.240 |  | Quench Vent Louvers at Level 5 / Sector Z3 | 10d | 2025-07-28 A | 2025-07-31 A | P2.FAC.2.Z3.140, P2.FAC.3.Z3.230 | 100% | 2025-08-29 | 2025-09-12 |  |  | 80 | AT31 | L1 |  |  | MPANEL | P2-5 | MPANEL | P2.FAC.S..08.91.110 | KD | KD |  |  |
| P2.FAC.3.Z3.220 |  | Metal Roof @ Clerestories / Sector Z3 | 5d | 2025-10-06 A | 2025-11-21 A | P2.FAC.4.Z3.210 | 100% | 2025-10-15 | 2025-10-21 |  |  | 40 | AT56 |  |  | 25 | ROOF | P2-5 | ROOF |  |  | TCASP |  |  |
| P2.FAC.3.Z3.120 |  | Metal Panels @ East Mech Tower (Z10.2/ZD.5 to Z9.1/ZF ) / Sector Z3 | 10d | 2025-10-27 A | 2026-01-23 A | P2.FAC.3.Z3.170 | 100% | 2025-11-24 | 2025-12-09 |  |  | 80 | AT27 | MP3 |  | 20,98 | MPANEL | P2-5 | MPANEL | P2.FAC.E.07.42.130 | KD | TCASP |  |  |
| P2.FAC.3.Z3.170 |  | Metal Panels @ East Mech Tower (Z9/ZC to Z10.2/ZD.5) / Sector Z3 | 10d | 2025-11-12 A | 2026-01-30 A | P2.FAC.1.Z3.120 | 100% | 2025-12-01 | 2025-12-12 |  |  | 80 | AT27 | MP3 |  | 20,98 | MPANEL | P2-5 | MPANEL | P2.FAC.E.07.42.130 | KD | TCASP | O |  |
| P2.FAC.3.Z3.130 |  | Metal Panels Soffits @ Level 4 East Hockey Sticks / Sector Z3 | 5d | 2025-11-19 A | 2025-12-03 A | P2.FAC.3.Z2.120, P2.FAC.4.Z3.160 | 100% | 2025-12-15 | 2025-12-19 |  |  | 40 | AT27 | MP3 |  | 20,98 | MPANEL | P2-5 | MPANEL | P2.FAC.E.07.42.130 | KD | TCASP | O |  |
| P2.FAC.3.Z3.150 |  | Metal Panels @ North Penthouse Perimeter (Z4/ZF.3 to Z6/ZB.9) / Sector Z3 | 10d | 2026-04-01 | 2026-04-14 | P2.FAC.1.Z3.120 |  |  |  | 144d | 0d | 80 | AT27 | MP2 |  | 20,98 | MPANEL | P2-5 | MPANEL | P2.FAC.E.07.42.130 | KD | JW | O |  |
| P2.FAC.3.Z3.140 |  | Metal Panels @ North Penthouse Perimeter (Z6/ZB.9 to Z7.7/ZF.4) / Sector Z3 | 10d | 2026-04-15 | 2026-04-28 | P2.FAC.3.Z3.150 |  |  |  | 144d | 0d | 80 | AT27 | MP2 |  | 20,98 | MPANEL | P2-5 | MPANEL | P2.FAC.E.07.42.130 | KD | JW | O |  |
| P2.FAC.3.Z3.160 |  | Metal Panels @ Group 2 EMR / Sector Z3 | 10d | 2026-04-29 | 2026-05-12 | P2.FAC.3.Z3.140, P2.MR.EMT.9040 |  |  |  | 159d | 63d | 80 | AT27 | MP2 |  | 20,98 | MPANEL | P2-5 | MPANEL | P2.FAC.E.07.42.130 | KD | JW | O |  |
| P2.FAC.3.Z3.190 |  | Metal Panels @ Center & East Clerestories / Sector Z3 | 10d | 2026-05-06 | 2026-05-19 | P2.FAC.3.Z2.110 |  |  |  | 144d | 0d | 80 | AT27 | MP3 |  | 20,98 | MPANEL | P2-5 | MPANEL | P2.FAC.E.07.42.130 | KD | JW |  |  |
| P2.FAC.3.Z3.250 |  | Metal Panels behind parapet / Sector Z3 | 10d | 2026-05-20 | 2026-06-03 | P2.FAC.3.Z3.190, P2.FAC.1.Z3.310 |  |  |  | 144d | 48d | 80 | AT27 | MP2 |  | 20,98 | MPANEL | P2-5 | MPANEL | P2.FAC.E.07.42.130 | KD | JW |  |  |
|  | 3 | **Glass & Glazing - Sector Z3** |  | 2025-07-03 | 2026-08-10 |  |  |  |  |  |  |  |  |  |  |  |  |  |  |  |  |  |  |  |
| P2.FAC.4.Z3.160 |  | Curtainwall _ CW-01/GL-01 (East Hockey Stick) (CL Z6) / Sector Z3 | 10d | 2025-07-03 A | 2025-07-10 A | P2.FAC.4.Z2.190, P2.FAC.2.Z3.150, P2.FAC.1.Z3.170 | 100% | 2025-09-18 | 2025-10-01 |  |  | 80 | AT26 | G2 | ! |  | GLAZ | P2-5 | GLAZ |  | KD | KD |  | AVB and Mtl Panel go first adjacent at F2 |
| P2.FAC.4.Z3.110 |  | Storefronts - L1 - West Tower / Sector Z3 | 10d | 2025-07-10 A | 2025-07-14 A | P2.FAC.4.Z2.170 | 100% | 2025-08-19 | 2025-09-02 |  |  | 80 | AT32 | G3 | ! | 99 | GLAZ | P2-5 | GLAZ |  | KD | KD |  |  |
| P2.FAC.4.Z3.230 |  | Storefronts - L1 - Group 2 Elevator Tower / Sector Z3 | 10d | 2025-07-14 A | 2025-07-18 A | P2.FAC.4.Z3.110 | 100% | 2025-09-03 | 2025-09-16 |  |  | 80 | AT32 | G3 | ! | 99 | GLAZ | P2-5 | GLAZ |  | KD | KD |  |  |
| P2.FAC.4.Z3.170 |  | Curtainwall _ CW-01/GL-01 (CL Z7.7-ZA.7) / Sector Z3 | 5d | 2025-08-07 A | 2025-08-19 A | P2.FAC.4.Z3.200, P2.FAC.4.Z3.160 | 100% | 2025-08-29 | 2025-09-05 |  |  | 80 | AT26 | G1 | ! |  | GLAZ | P2-5 | GLAZ |  | KD | KD |  | AVB and Mtl Panel go first adjacent at F2 |
| P2.FAC.4.Z3.140 |  | Curtainwall _ CW-02/GL-02 (CL Z5.7-Z6) / Sector Z3 | 5d | 2025-08-08 A | 2025-08-14 A | P2.FAC.4.Z2.140 | 100% |  |  |  |  | 80 | AT26 | G1 | ! |  | GLAZ | P2-5 | GLAZ |  | KD | KD |  | AVB and Mtl Panel go first adjacent at F2 |
| P2.FAC.4.Z3.150 |  | Curtainwall _ CW-01/GL-01 (Corner @ CL Z5.7) / Sector Z3 | 5d | 2025-08-11 A | 2025-08-21 A | P2.FAC.4.Z3.160, P2.FAC.4.Z2.160 | 100% | 2025-08-29 | 2025-09-05 |  |  | 40 | AT26 | G2 | ! |  | GLAZ | P2-5 | GLAZ |  | KD | KD |  | AVB and Mtl Panel go first adjacent at F2 |
| P2.FAC.4.Z3.190 |  | Curtainwall _ CW-02/GL-02 (CL ZB.5-ZC) / Sector Z3 | 5d | 2025-08-18 A | 2025-08-21 A | P2.FAC.4.Z3.220, P2.FAC.4.Z3.180, P2.FAC.2.Z3.150 | 100% | 2025-09-08 | 2025-09-12 |  |  | 80 | AT26 | G2 | ! |  | GLAZ | P2-5 | GLAZ |  | KD | KD |  | AVB and Mtl Panel go first adjacent at F2 |
| P2.FAC.4.Z3.220 |  | Glass-Glazing _ Stick-Built Windows/GL-02 (Level 8) / Sector Z3 | 5d | 2025-09-22 A | 2025-09-30 A | P2.FAC.4.Z2.200, P2.FAC.2.Z3.150 | 100% | 2025-10-21 | 2025-10-27 |  |  | 40 | AT26 | G3 | ! |  | GLAZ | P2-5 | GLAZ |  | KD | KD | O | AVB and Mtl Panel go first adjacent at F2 |
| P2.FAC.4.Z3.200 |  | Clerestory Glazing _ GL-02 (Center Skylight) / Sector Z3 | 5d | 2025-10-06 A | 2025-10-09 A | P2.FAC.1.Z3.190, P2.MR.C.160, P2.FAC.4.Z2.140 | 100% | 2025-10-01 | 2025-10-07 |  |  | 80 | AT26 | G1 | ! |  | GLAZ | P2-5 | GLAZ |  | KD | KD |  |  |
| P2.FAC.4.Z3.210 |  | Clerestory Glazing _ GL-02 (East Skylight) / Sector Z3 | 5d | 2025-10-13 A | 2025-10-16 A | P2.MR.E.160, P2.FAC.4.Z3.200 | 100% | 2025-10-08 | 2025-10-14 |  |  | 120 | AT26 | G1 | ! |  | GLAZ | P2-5 | GLAZ |  | KD | KD |  |  |
| P2.FAC.4.Z3.180 |  | Curtainwall _ CW-02/GL-02 (Stair 2-8) (CL Z9.1-ZA.9) / Sector Z3 | 10d | 2025-10-27 A | 2025-11-06 A | P2.FAC.4.Z1.120, P2.FAC.2.Z1.190, P2.2-8.03.11.130 | 100% | 2025-10-01 | 2025-10-14 |  |  | 120 | AT26 | G2 | ! |  | GLAZ | P2-5 | GLAZ |  | KD | TCASP |  | AVB and Mtl Panel go first adjacent at F2 |
| P2.FAC.4.Z3.240 |  | Aluminum Folding Doors _ Levels 1 & 3 (CL ZB.5-ZC) / Sector Z3 | 10d | 2026-04-01 | 2026-04-14 | P2.FAC.4.Z3.190 |  |  |  | 169d | 94d | 80 | AT26 | G4 | ! |  | GLAZ | P2-5 | GLAZ |  | KD | TCASP | O | AVB and Mtl Panel go first adjacent at F2 |
| P2.FAC.3.Z3.260 |  | Curtainwall _ Storefront Door (CL ZA - ZA.7 @ Z7.7) / Sector Z3 (Stair 2-9) | 2d | 2026-08-07 | 2026-08-10 | P2.FAC.3.Z2.210 |  |  |  | 85d | 0d | 120 | AT26 | G4 | ! |  | GLAZ | P2-5 | GLAZ |  |  | TCASP |  | AVB and Mtl Panel go first adjacent at F2 |

| ID | WBS | Activity | Duration | Start | Finish | Predecessors | Complete | Planned start | Planned finish | Total float | Free float | Temp Orig Dur | *NIH Resp Check* | Trade Review Notes | Resp / SRLM | 744 | PHASE | RESP UPD | RESP / Trade | Testing Type | Update Status | Z.RESP | Act ID Temp | SRLM - Crew |
| --- | --- | --- | --- | --- | --- | --- | --- | --- | --- | --- | --- | --- | --- | --- | --- | --- | --- | --- | --- | --- | --- | --- | --- | --- |
|  | 5 | **Facade Finish Work - Sector Z3** |  | 2025-06-09 | 2026-08-11 |  |  |  |  |  |  |  |  |  |  |  |  |  |  |  |  |  |  |  |
| P2.FAC.5.Z3.250 |  | Precast Caulk & Seal / Sector Z3 | 20d | 2025-06-09 A | 2025-08-28 A | P2.FAC.2.Z3.150 FF | 100% | 2025-08-06 | 2025-09-03 |  |  | 40 | T.FACADE.GLAZ | 81 | Sealant | KD | P2-5 | KD | Sealant |  |  |  |  |  |
| P2.FAC.5.Z3.180 |  | Stone Cladding _ST-01 / Sector Z3 | 10d | 2025-08-25 A | 2025-11-06 A | P2.FAC.1.Z2.160, P2.FAC.1.Z3.140, P2.FAC.4.Z3.110 | 100% | 2025-09-10 | 2025-09-23 |  |  | 40 | ! |  | EXTCLAD | KD | P2-5 | TCASP | EXTCLAD | AT28 |  |  |  |  |
| P2.FAC.5.Z3.150 |  | Caulk & Seal / Sector Z3 | 5d | 2025-12-08 A | 2025-12-12 A | P2.FAC.3.Z3.180, P2.FAC.3.Z3.130, P2.FAC.3.Z3.240, P2.FAC.3.Z3.170, BP2.089.3.100 | 100% | 2026-01-09 | 2026-01-15 |  |  | 40 | T.FACADE.GLAZ | 81 | Sealant |  | P2-5 | TCASP | Sealant |  | O |  |  |  |
| P2.FAC.5.Z3.130 |  | Expansion Joints / Sector Z3 | 5d | 2026-04-29 | 2026-05-05 | P2.FAC.2.Z3.110, P2.FAC.1.Z3.120, P2.LR.L2.230, BP2.079.3.200, BP2.079.3.230 |  |  |  | 139d | 43d | 40 | EXP JT? | 93,95 | EJ | KD | P2-5 | JW | EJ | AT57 |  |  |  |  |
| P2.FAC.5.Z3.220 |  | Soffit Framing / Sector Z3 | 5d | 2026-07-08 | 2026-07-14 | P2.FAC.2.Z3.150, P2.SITE.15, P2.FAC.5.Z3.130 |  |  |  | 96d | 0d | 40 | ! |  | GYP | KD | P2-5 | TCASP | GYP-1 |  |  |  |  |  |
| P2.FAC.5.Z3.230 |  | R/I MEP _ Soffit / Sector Z3 | 5d | 2026-07-15 | 2026-07-21 | P2.FAC.5.Z3.220 |  |  |  | 96d | 0d | 40 | ! |  | MEP | KD | P2-5 | TCASP | MEP |  |  | Harris |  |  |
| P2.FAC.5.Z3.140 |  | Metal Panel Facade Columns / Sector Z3 | 5d | 2026-07-22 | 2026-07-28 | P2.FAC.5.Z3.230, P2.SITE.13 |  |  |  | 96d | 0d | 40 |  | 20,102,103 | MPANEL |  | P2-5 | TCASP | MPANEL | AT27 |  |  |  |  |
| P2.FAC.5.Z3.240 |  | Soffit Finish Panels / Sector Z3 | 5d | 2026-07-29 | 2026-08-04 | P2.FAC.5.Z3.140 |  |  |  | 96d | 0d | 40 | ! | 20,83,102,103 | MPANEL |  | P2-5 | TCASP | MPANEL | AT27 |  |  |  |  |
| P2.FAC.5.F.190 |  | Exterior LV Systems / Sector Z3 | 5d | 2026-08-05 | 2026-08-11 | P2.FAC.5.Z3.240 |  |  |  | 96d | 0d | 40 | ! |  | LOWVOLT |  | P2-5 | TCASP | LOWVOLT-1 |  |  |  |  |  |
| P2.FAC.5.Z3.110 |  | Exterior Signage / Sector Z3 | 5d | 2026-08-05 | 2026-08-11 | P2.FAC.5.Z3.240, P2.FAC.5.Z3.150 |  |  |  | 96d | 0d | 40 | ! |  | SIGN |  | P2-5 | TCASP | SIGN |  |  |  |  |  |
| P2.FAC.5.Z3.120 |  | Exterior Lights & Receptacles / Sector Z3 | 5d | 2026-08-05 | 2026-08-11 | P2.FAC.5.Z3.240 |  |  |  | 96d | 0d | 40 | ! |  | ELEC |  | P2-5 | TCASP | ELEC-2 |  |  |  |  |  |
|  | 6 | **Quality Control Inspections - Sector Z3** |  | 2026-08-12 | 2026-09-09 |  |  |  |  |  |  |  |  |  |  |  |  |  |  |  |  |  |  |  |
| P2.FAC.Z3.9000 |  | Trades Inspect & Verify Work Completed to Specs / Sector Z3 | 5d | 2026-08-12 | 2026-08-18 | P2.FAC.3.Z3.160, P2.FAC.3.Z3.110, P2.FAC.5.F.190, P2.FAC.5.Z3.110, P2.FAC.5.Z3.120, P2.FAC.5.Z3.150, P2.FAC.5.Z3.180, P2.FAC.3.Z3.250, P2.FAC.3.Z3.220, P2.HZ.E.111, P2.FAC.5.Z3.250, BP2.070.3.100 |  |  |  | 96d | 0d | 40 | ! |  | T |  | P2-5 | TCASP | T |  |  |  |  |  |
| P2.FAC.Z3.9010 |  | Inspect & Prepare Punchlist / Sector Z3 | 5d | 2026-08-19 | 2026-08-25 | P2.FAC.Z3.9000 |  |  |  | 96d | 0d | 40 | ! |  | ARCH |  | P2-5 | TCASP | ARCH |  |  |  |  |  |
| P2.FAC.Z3.9020 |  | Correct Punchlist / Sector Z3 | 5d | 2026-08-26 | 2026-09-01 | P2.FAC.Z3.9010 |  |  |  | 96d | 0d | 40 | ! |  | T |  | P2-5 | TCASP | T |  |  |  |  |  |
| P2.FAC.Z3.9030 |  | NIH Acceptance of Facade / Sector Z3 | 5d | 2026-09-02 | 2026-09-09 | P2.DES.VMU.670 FF, P2.FAC.Z3.9020 |  |  |  | 96d | 41d | 40 | ! |  | NIH |  | P2-5 | TCASP | NIH |  |  |  |  |  |
|  | 4 | **PH 2 - Roofing** |  | 2025-03-11 | 2026-05-06 |  |  |  |  |  |  |  |  |  |  |  |  |  |  |  |  |  |  |  |
|  | 8 | **L2 - Low Roof / East Mech Tower Shaft** |  | 2025-04-16 | 2026-04-16 |  |  |  |  |  |  |  |  |  |  |  |  |  |  |  |  |  |  |  |
|  | 1 | **Weathertightness Prep** |  | 2025-04-16 | 2026-03-20 |  |  |  |  |  |  |  |  |  |  |  |  |  |  |  |  |  |  |  |
| P2.LR.L2.100 |  | Structural Steel at Level 2 Roof / Low Roof - L2 | 5d | 2025-04-16 A | 2025-04-23 A | P2.2.03.630 | 100% | 2025-05-01 | 2025-05-07 |  |  | 16 |  |  | STEEL |  | P2-5 |  | STEEL |  |  |  | P2.20.05.9.110 |  |
| P2.LR.L2.110 |  | Steel Inspection / Low Roof - L2 | 2d | 2025-04-24 A | 2025-04-25 A | P2.LR.L2.100 | 100% | 2025-05-08 | 2025-05-09 |  |  | 16 |  |  | STEEL |  | P2-5 |  | STEEL |  |  |  | P2.20.05.9.110 |  |
| P2.LR.L2.120 |  | Steel Decking at Level 2 Roof / Low Roof - L2 | 5d | 2025-04-28 A | 2025-05-24 A | P2.LR.L2.110 | 100% | 2025-05-12 | 2025-05-16 |  |  | 16 |  |  | STEEL |  | P2-5 |  | STEEL |  |  |  | P2.20.05.9.110 |  |
| P2.LR.L2.140 |  | Layout - All Trades / Low Roof - L2 | 2d | 2025-07-15 A | 2025-07-16 A | P2.8.03.530, P2.LR.L2.130 | 100% | 2025-08-14 | 2025-08-15 |  |  | 16 |  |  | R/I.OH | KD | P2-5 | KD | R/I.OH |  |  | Harris | P2.01.9.010 |  |
| P2.LR.L2.160 |  | Set & Connect Roof Drains / Low Roof - L2 | 2d | 2025-07-17 A | 2025-07-18 A | P2.LR.L2.140 | 100% | 2025-08-18 | 2025-08-19 |  |  | 16 |  |  | PLMB | KD | P2-5 | KD | PLMB |  |  | Harris | P2.22.14.9.110 |  |
| P2.LR.L2.130 |  | Roof Framing and Sheathing at Louver / Low Roof - L2 | 5d | 2025-07-21 A | 2025-07-31 A | P2.FAC.1.Z3.270, P2.LR.L2.120 | 100% | 2025-08-07 | 2025-08-13 |  |  | 16 |  |  | GYP | KD | P2-5 | KD | GYP |  |  |  | P2.20.05.9.110 |  |
| P2.LR.L2.150 |  | MEP - Penetrations, Sleeves, Supports & Pathways / Low Roof - L2 | 2d | 2025-07-28 A | 2025-07-31 A | P2.LR.L2.140 | 100% | 2025-08-18 | 2025-08-19 |  |  | 16 |  |  | R/I.OH | KD | P2-5 | KD | R/I.OH |  |  | Harris | P2.20.05.9.110 |  |
| P2.LR.L2.170 |  | Prefabricated Roof Hatch / Low Roof - L2 | 2d | 2025-09-08 A | 2025-09-09 A | BP2.076.3.100, P2.LR.L2.140 | 100% | 2025-10-07 | 2025-10-08 |  |  | 16 | T.FACADE.ROOF | 25 | ROOF | KD | P2-5 | KD | ROOF |  | O |  |  |  |
| P2.LR.L2.180 |  | Roofing - Temp Watertight Systems / Low Roof - L2 | 3d | 2026-03-18 A | 2026-03-20 A | BP2.073.3.100, P2.FAC.1.F.230, P2.LR.L2.150, P2.LR.L2.160, P2.LR.L2.170 | 100% | 2026-03-02 | 2026-03-04 |  |  | 16 |  | 25,45 | ROOF | KD | P2-5 | JW | ROOF |  | O |  | P2.07.55.9.010 | RF1 |

| ID | WBS | Activity | Duration | Start | Finish | Predecessors | Complete | Remaining | Planned start | Planned finish | Total float | Free float | Temp Orig Dur | Testing Type | *NIH Resp Check* | Trade Review Notes | Resp / SRLM | 744 | PHASE | RESP UPD | RESP / Trade | Update Status | Act ID Temp | SRLM - Crew | Z.RESP |
| --- | --- | --- | --- | --- | --- | --- | --- | --- | --- | --- | --- | --- | --- | --- | --- | --- | --- | --- | --- | --- | --- | --- | --- | --- | --- |
|  | 3 | **Roofing Finishes** |  | 2026-03-09 | 2026-04-07 |  |  |  |  |  |  |  |  |  |  |  |  |  |  |  |  |  |  |  |  |
| P2.LR.L2.230 |  | Metal Panels / Low Roof - L2 | 5d | 2026-03-09 A | 2026-03-11 A | P2.LR.L2.170 | 100% |  | 2026-04-09 | 2026-04-15 |  |  | 40 | AT27 | ! | 20,56,71,72,98 | MPANEL | KD | P2-5 | JW | MPANEL |  |  |  |  |
| P2.LR.L2.200 |  | Roofing - Permanent Systems / Low Roof - L2 | 5d | 2026-03-20 A | 2026-03-27 A | P2.LR.L2.180 | 100% |  | 2026-03-30 | 2026-04-03 |  |  | 40 |  |  | 25,71,72 | ROOF | KD | P2-5 | JW | ROOF | O | P2.07.55.9.210 | RF1 |  |
| P2.LR.L2.235 |  | Roof Ballasts, Copings, & Metal Trim / Low Roof - L2 | 5d | 2026-03-21 A | 2026-04-01 | P2.LR.L2.230 | 80% | 1d | 2026-04-16 | 2026-04-22 | 216d | 2d | 40 | AT27 | ! | 20,56,98 | MPANEL | KD | P2-5 | JW | MPANEL |  |  |  |  |
| P2.LR.L2.210 |  | Area Drain Flood Testing / Low Roof - L2 | 1d | 2026-04-01 | 2026-04-01 | P2.LR.L2.200 |  |  |  |  | 214d | 0d | 8 | AT36 |  | 25 | ROOF | KD | P2-5 | JW | ROOF |  | P2..07.01.9.110 |  |  |
| P2.LR.L2.220 |  | Electronic Leak Detection Testing & Corrections / Low Roof - L2 | 2d | 2026-04-02 | 2026-04-03 | P2.LR.L2.210 |  |  |  |  | 214d | 0d | 16 | AT37 |  | 25 | ROOF | KD | P2-5 | JW | ROOF |  | P2.07.01.9.210 |  |  |
| P2.LR.L2.240 |  | Roof Trim Out - All Trades / Low Roof - L2 | 2d | 2026-04-06 | 2026-04-07 | P2.LR.L2.235, P2.LR.L2.220 |  |  |  |  | 214d | 0d | 16 |  |  | 25,56 | ROOF | KD | P2-5 | JW | ROOF |  | P2.07.62.9.210 |  |  |
|  | 4 | **Quality Control Inspections** |  | 2026-04-08 | 2026-04-16 |  |  |  |  |  |  |  |  |  |  |  |  |  |  |  |  |  |  |  |  |
| P2.LR.L2.9000 |  | Trades Inspect & Verify Work Completed to Specs / Low Roof - L2 | 2d | 2026-04-08 | 2026-04-09 | P2.FAC.3.Z3.120, P2.LR.L2.240 |  |  |  |  | 214d | 0d | 16 |  | ! |  | T |  | P2-5 | JW | T |  |  |  |  |
| P2.LR.L2.9010 |  | Inspect & Prepare Punchlist / Low Roof - L2 | 1d | 2026-04-10 | 2026-04-10 | P2.LR.L2.9000 |  |  |  |  | 214d | 0d | 8 |  | ! |  | ARCH |  | P2-5 | JW | ARCH |  |  |  |  |
| P2.LR.L2.9020 |  | Correct Punchlist / Low Roof - L2 | 2d | 2026-04-13 | 2026-04-14 | P2.LR.L2.9010 |  |  |  |  | 214d | 0d | 16 |  | ! |  | T |  | P2-5 | JW | T |  |  |  |  |
| P2.LR.L2.9030 |  | Final Inspection & Acceptance / Low Roof - L2 | 2d | 2026-04-15 | 2026-04-16 | P2.LR.L2.9020 |  |  |  |  | 214d | 226d | 16 |  | ! |  | AHJ |  | P2-5 | JW | AHJ |  |  |  |  |
|  | 14 | **L7 - Low Roof / @ Grid Z6/ZJ** |  | 2025-09-16 | 2026-04-20 |  |  |  |  |  |  |  |  |  |  |  |  |  |  |  |  |  |  |  |  |
|  | 1 | **Weathertightness Prep** |  | 2025-09-16 | 2025-10-14 |  |  |  |  |  |  |  |  |  |  |  |  |  |  |  |  |  |  |  |  |
| P2.LR.L7.100 |  | Layout - All Trades / Low Roof - L7 | 2d | 2025-09-16 A | 2025-09-17 A | P2.7.03.530, P2.PR.03.510, P2.FAC.4.Z3.180 | 100% |  | 2025-10-15 | 2025-10-16 |  |  | 16 |  |  |  | R/I.OH | KD | P2-5 | KD | R/I.OH | O | P2.01.9.010 |  | Harris |
| P2.LR.L7.140 |  | MEP - Penetrations, Sleeves, Supports & Pathways / Low Roof - L7 | 2d | 2025-09-18 A | 2025-09-19 A | P2.LR.L7.100 | 100% |  | 2025-10-17 | 2025-10-20 |  |  | 16 |  |  |  | R/I.OH | KD | P2-5 | KD | R/I.OH | O | P2.20.05.9.110 |  | Harris |
| P2.LR.L7.150 |  | Prefabricated Roof Hatch / Low Roof - L7 | 2d | 2025-09-18 A | 2025-09-19 A | P2.LR.L7.100 | 100% |  | 2025-10-17 | 2025-10-20 |  |  | 16 |  | T.FACADE.ROOF | 25 | ROOF | KD | P2-5 | KD | ROOF | O |  |  |  |
| P2.LR.L7.160 |  | Set & Connect Roof Drains / Low Roof - L7 | 2d | 2025-09-22 A | 2025-09-23 A | P2.LR.L7.140 | 100% |  | 2025-10-21 | 2025-10-22 |  |  | 16 |  |  |  | PLMB | KD | P2-5 | KD | PLMB | O | P2.22.14.9.110 |  | Harris |
| P2.LR.L7.170 |  | Roofing - Temp Watertight Systems / Low Roof - L7 | 2d | 2025-10-13 A | 2025-10-14 A | P2.FAC.1.Z3.290, P2.LR.L7.160, P2.LR.L7.150, P2.PR.S.1080 | 100% |  | 2025-10-15 | 2025-10-16 |  |  | 16 |  |  | 25,45 | ROOF | KD | P2-5 | KD | ROOF |  | P2.07.55.9.010 | RF1 |  |
|  | 4 | **Roofing Finishes** |  | 2025-10-15 | 2026-04-09 |  |  |  |  |  |  |  |  |  |  |  |  |  |  |  |  |  |  |  |  |
| P2.LR.L7.200 |  | Roofing - Permanent Systems / Low Roof - L7 | 5d | 2025-10-15 A | 2025-10-17 A | P2.LR.L7.170 | 100% |  | 2025-10-17 | 2025-10-23 |  |  | 40 |  |  | 25 | ROOF | KD | P2-5 | KD | ROOF |  | P2.07.55.9.210 | RF1 |  |
| P2.LR.L7.210 |  | Area Drain Flood Testing / Low Roof - L7 | 1d | 2025-12-01 A | 2025-12-01 A | P2.LR.L7.200 | 100% |  | 2026-01-02 | 2026-01-02 |  |  | 8 | AT36 |  | 25 | ROOF | KD | P2-5 | JW | ROOF | O | P2..07.01.9.110 |  |  |
| P2.LR.L7.220 |  | Electronic Leak Detection Testing & Corrections / Low Roof - L7 | 2d | 2025-12-09 A | 2025-12-09 A | P2.LR.L7.210 | 100% |  | 2026-01-05 | 2026-01-06 |  |  | 16 | AT37 |  | 25 | ROOF | KD | P2-5 | JW | ROOF | O | P2.07.01.9.210 |  |  |
| P2.LR.L7.230 |  | Metal Panels / Low Roof - L7 | 5d | 2026-04-01 | 2026-04-07 | P2.FAC.4.Z3.180, P2.LR.L7.220 |  |  |  |  | 31d | 0d | 40 | AT27 | ! | 20,56,98 | MPANEL | KD | P2-5 | JW | MPANEL | O |  |  |  |
| P2.LR.L7.240 |  | Roof Trim Out - All Trades / Low Roof - L7 | 2d | 2026-04-08 | 2026-04-09 | P2.LR.L7.230 |  |  |  |  | 31d | 0d | 16 |  |  | 25,56 | ROOF | KD | P2-5 | JW | ROOF | O | P2.07.62.9.210 |  |  |

| ID | WBS | Activity | Duration | Start | Finish | Predecessors | Complete | Remaining | Planned start | Planned finish | Total float | Free float | Temp Orig Dur | Update Status | *NIH Resp Check* | Resp / SRLM | 744 | PHASE | RESP UPD | RESP / Trade | Act ID Temp | Z.RESP | SRLM - Crew | Trade Review Notes | Testing Type |
| --- | --- | --- | --- | --- | --- | --- | --- | --- | --- | --- | --- | --- | --- | --- | --- | --- | --- | --- | --- | --- | --- | --- | --- | --- | --- |
|  | 6 | **Quality Control Inspections** |  | 2026-04-10 | 2026-04-20 |  |  |  |  |  |  |  |  |  |  |  |  |  |  |  |  |  |  |  |  |
| P2.LR.L7.9000 |  | Trades Inspect & Verify Work Completed to Specs / Low Roof - L7 | 2d | 2026-04-10 | 2026-04-13 | P2.LR.L7.240 |  |  |  |  | 31d | 0d | 16 | O | ! | T | KD | P2-5 | JW | T |  |  |  |  |  |
| P2.LR.L7.9010 |  | Inspect & Prepare Punchlist / Low Roof - L7 | 1d | 2026-04-14 | 2026-04-14 | P2.LR.L7.9000 |  |  |  |  | 31d | 0d | 8 | O | ! | ARCH | KD | P2-5 | JW | ARCH |  |  |  |  |  |
| P2.LR.L7.9020 |  | Correct Punchlist / Low Roof - L7 | 2d | 2026-04-15 | 2026-04-16 | P2.LR.L7.9010 |  |  |  |  | 31d | 0d | 16 | O | ! | T | KD | P2-5 | JW | T |  |  |  |  |  |
| P2.LR.L7.9030 |  | Final Inspection & Acceptance / Low Roof - L7 | 2d | 2026-04-17 | 2026-04-20 | P2.LR.L7.9020 |  |  |  |  | 31d | 39d | 16 | O | ! | AHJ | KD | P2-5 | JW | AHJ |  |  |  |  |  |
|  | 6 | **L9 - MAIN ROOF** |  | 2025-03-11 | 2026-05-04 |  |  |  |  |  |  |  |  |  |  |  |  |  |  |  |  |  |  |  |  |
|  | 1 | **Main Roof / West Tower** |  | 2025-03-11 | 2026-04-21 |  |  |  |  |  |  |  |  |  |  |  |  |  |  |  |  |  |  |  |  |
|  | 4 | **Weathertightness Prep** |  | 2025-03-24 | 2025-05-30 |  |  |  |  |  |  |  |  |  |  |  |  |  |  |  |  |  |  |  |  |
| P2.MR.W.100 |  | Layout - All Trades / Main Roof - West | 2d | 2025-03-24 A | 2025-03-28 A | P2.PR.03.510 | 100% |  | 2025-04-01 | 2025-04-02 |  |  | 16 |  |  | R/I.OH |  | P2-5 |  | R/I.OH | P2.01.9.010 | Harris |  |  |  |
| P2.MR.W.110 |  | MEP - Penetrations, Sleeves, Supports & Pathways / Main Roof - West | 5d | 2025-03-24 A | 2025-03-28 A | P2.MR.W.100 | 100% |  | 2025-04-03 | 2025-04-09 |  |  | 40 |  |  | R/I.OH |  | P2-5 |  | R/I.OH | P2.20.05.9.110 | Harris |  |  |  |
| P2.MR.W.120 |  | Set & Connect Roof Drains / Main Roof - West | 5d | 2025-03-24 A | 2025-03-28 A | P2.MR.W.100 | 100% |  | 2025-04-03 | 2025-04-09 |  |  | 40 |  |  | PLMB |  | P2-5 |  | PLMB | P2.22.14.9.110 | Harris |  |  |  |
| P2.MR.W.130 |  | Prefabricated Curbs and Flashing / Main Roof - West | 5d | 2025-03-24 A | 2025-03-28 A | P2.MR.W.100, P2.MR.W.120 | 100% |  | 2025-04-10 | 2025-04-16 |  |  | 40 |  | T.FACADE.ROOF | HVAC |  | P2-5 |  | HVAC |  | Harris |  |  |  |
| P2.MR.W.140 |  | Facade Maint Equip - R/I / Main Roof - West | 5d | 2025-03-24 A | 2025-03-28 A | P2.FAD.FM.230, P2.FAD.FM.240, P2.MR.W.100, P2.MR.W.130 | 100% |  | 2025-04-17 | 2025-04-23 |  |  | 40 |  |  | EXMAINT |  | P2-5 |  | EXMAINT | P2.11.24.9.110 |  |  |  |  |
| P2.MR.W.160 |  | Roofing - Watertight Systems (WP-05) / Main Roof - West | 5d | 2025-04-15 A | 2025-05-30 A | P2.MR/PS.03.420, P2.FAC.1.Z2.220, P2.FAC.1.Z2.240, P2.MR.W.140, P2.MR.W.110, P2.MR.W.120, P2.MR.W.130, P2.MR.W.150 SS | 100% |  | 2025-04-28 | 2025-05-02 |  |  | 40 |  |  | ROOF |  | P2-5 |  | ROOF | P2.07.55.9.010 |  | RF1 | 25,45 |  |
| P2.MR.W.150 |  | Prefabricated Roof Hatch / Main Roof - West | 2d | 2025-04-28 A | 2025-05-28 A | P2.MR.W.140, P2.MR.W.100 | 100% |  | 2025-04-24 | 2025-04-25 |  |  | 40 |  | T.FACADE.ROOF | ROOF |  | P2-5 |  | ROOF |  |  |  | 25 |  |
|  | 1 | **Rooftop MEP** |  | 2025-03-11 | 2026-04-08 |  |  |  |  |  |  |  |  |  |  |  |  |  |  |  |  |  |  |  |  |
| P2.MR.W.170 |  | Support Frames - Rooftop Equip / Main Roof - West | 5d | 2025-03-11 A | 2025-03-28 A | P2.MR/PS.03.520 | 100% |  | 2025-03-11 | 2025-03-17 |  |  | 40 |  |  | HVAC |  | P2-5 |  | HVAC | P2.23.749.110 | Harris |  |  |  |
| P2.MR.W.9060 |  | HVAC Equip - Set and Connect / Main Roof - West | 5d | 2025-11-13 A | 2025-11-13 A | P2.MR.W.170 | 100% |  | 2025-12-01 | 2025-12-05 |  |  | 40 |  |  | HVAC | KD | P2-5 | JW | HVAC | P2.23.749.110 | Harris |  |  |  |
| P2.MR.W.190 |  | Elec Connections to MEP / Main Roof - West | 5d | 2025-11-25 A | 2026-04-08 | P2.MR.W.180 | 80% | 1d | 2025-12-15 | 2025-12-19 | 83d | 2d |  | O |  | ELEC | KD | P2-5 | JW | ELEC-2 |  |  |  |  |  |
| P2.MR.W.180 |  | MEP - Piping & Equip Tie In / Main Roof - West | 5d | 2026-04-01 | 2026-04-07 | P2.MR.W.9060 |  |  |  |  | 83d | 0d | 40 | O |  | BAS | KD | P2-5 | JW | BAS-1 | P2.25.059.110 | Harris |  |  |  |
|  | 2 | **Roofing Finishes** |  | 2025-06-23 | 2026-04-10 |  |  |  |  |  |  |  |  |  |  |  |  |  |  |  |  |  |  |  |  |
| P2.MR.W.200 |  | Roofing - Permanent Systems / Main Roof - West | 5d | 2025-06-23 A | 2025-07-17 A | P2.MR.W.160 | 100% |  | 2025-07-16 | 2025-07-22 |  |  | 40 |  |  | ROOF | KD | P2-5 | KD | ROOF | P2.07.55.9.210 |  | RF1 | 25 |  |
| P2.MR.W.210 |  | Flood Test / Main Roof - West | 2d | 2025-07-08 A | 2025-07-09 A | P2.MR.W.200 | 100% |  | 2025-08-19 | 2025-08-20 |  |  | 16 |  |  | ROOF | KD | P2-5 | KD | ROOF | P2..07.01.9.110 |  |  | 25 | AT36 |
| P2.MR.W.220 |  | Electronic Leak Detection Testing & Corrections / Main Roof - West | 3d | 2025-07-08 A | 2025-07-09 A | P2.MR.W.210 | 100% |  | 2025-08-21 | 2025-08-25 |  |  | 24 |  |  | ROOF | KD | P2-5 | KD | ROOF | P2.07.01.9.210 |  |  | 25 | AT37 |
| P2.MR.W.230 |  | Roof Pavers (RS-01) / Main Roof - West | 10d | 2025-07-14 A | 2025-09-22 A | BP2.073.3.110, P2.MR.W.220, P1.BGS.190 SS | 100% |  | 2025-08-26 | 2025-09-09 |  |  | 40 | O |  | ROOF | KD | P2-5 | KD | ROOF | P2.07.76.9.110 |  |  | 25 |  |
| P2.MR.W.9050 |  | Roofing - Patch Back / Main Roof - West | 5d | 2025-09-23 A | 2025-11-06 A | P2.FAC.1.Z1.220, P2.FAC.1.Z2.230 | 100% |  | 2025-10-01 | 2025-10-07 |  |  | 40 |  |  | ROOF | KD | P2-5 | JW | ROOF | P2.07.55.9.210 |  | RF1 | 25 |  |
| P2.MR.W.260 |  | Ladders & Stairs / Main Roof - West | 5d | 2025-11-03 A | 2025-11-06 A | P2.MR.W.230 | 100% |  | 2025-12-22 | 2025-12-29 |  |  | 40 |  |  | ROOF | KD | P2-5 | JW | ROOF | P2.07.62.9.210 |  |  | 25 | AT38 |
| P2.MR.W.270 |  | Roofing - Standing Seam - Clerestory | 5d | 2025-12-10 A | 2025-12-31 A | P2.MR.W.260 | 100% |  | 2026-02-06 | 2026-02-12 |  |  | 40 |  | ! | ROOF | KD | P2-5 | JW | ROOF |  |  |  | 25 |  |
| P2.MR.W.240 |  | Metal Panels / Main Roof - West | 5d | 2026-03-09 A | 2026-04-03 | P2.MR.W.9050, P2.MR.W.230 | 40% | 3d | 2026-03-09 | 2026-03-13 | 81d | 0d | 40 | O | ! | MPANEL | KD | P2-5 | JW | MPANEL |  |  |  | 20,56,98 | AT27 |
| P2.MR.W.250 |  | Roof Trim Out - All Trades / Main Roof - West | 5d | 2026-04-06 | 2026-04-10 | P2.MR.W.240 |  |  |  |  | 81d | 0d | 40 | O |  | ROOF | KD | P2-5 | JW | ROOF | P2.07.62.9.210 |  |  | 25,56 |  |

| ID | WBS | Activity | Duration | Start | Finish | Predecessors | Complete | Remaining | Planned start | Planned finish | Total float | Free float | Temp Orig Dur | *NIH Resp Check* | Resp / SRLM | 744 | PHASE | RESP UPD | RESP / Trade | Act ID Temp | Z.RESP | Trade Review Notes | SRLM - Crew | Testing Type | Update Status |
| --- | --- | --- | --- | --- | --- | --- | --- | --- | --- | --- | --- | --- | --- | --- | --- | --- | --- | --- | --- | --- | --- | --- | --- | --- | --- |
|  | 6 | **Quality Control Inspections** |  | 2026-04-13 | 2026-04-21 |  |  |  |  |  |  |  |  |  |  |  |  |  |  |  |  |  |  |  |  |
| P2.MR.W.9000 |  | Trades Inspect & Verify Work Completed to Specs / Main Roof - West | 2d | 2026-04-13 | 2026-04-14 | P2.MR.W.260, P2.MR.W.270, P2.MR.W.250, P2.MR.W.190 |  |  |  |  | 81d | 0d | 16 | ! | T | KD | P2-5 | JW | T |  |  |  |  |  |  |
| P2.MR.W.9010 |  | Inspect & Prepare Punchlist / Main Roof - West | 1d | 2026-04-15 | 2026-04-15 | P2.MR.W.9000 |  |  |  |  | 81d | 0d | 8 | ! | ARCH | KD | P2-5 | JW | ARCH |  |  |  |  |  |  |
| P2.MR.W.9020 |  | Correct Punchlist / Main Roof - West | 2d | 2026-04-16 | 2026-04-17 | P2.MR.W.9010 |  |  |  |  | 81d | 0d | 16 | ! | T | KD | P2-5 | JW | T |  |  |  |  |  |  |
| P2.MR.W.9030 |  | Final Inspection & Acceptance / Main Roof - West | 2d | 2026-04-20 | 2026-04-21 | P2.MR.W.9020 |  |  |  |  | 81d | 68d | 16 | ! | AHJ | KD | P2-5 | JW | AHJ |  |  |  |  |  |  |
|  | 2 | **Main Roof / Center Tower** |  | 2025-03-31 | 2026-04-17 |  |  |  |  |  |  |  |  |  |  |  |  |  |  |  |  |  |  |  |  |
|  | 4 | **Weathertightness Prep** |  | 2025-03-31 | 2025-05-30 |  |  |  |  |  |  |  |  |  |  |  |  |  |  |  |  |  |  |  |  |
| P2.MR.C.100 |  | Layout - All Trades / Main Roof - Center | 2d | 2025-03-31 A | 2025-04-01 A | P2.MR/PS.03.330 SS | 100% |  | 2025-04-08 | 2025-04-09 |  |  | 16 |  | R/I.OH |  | P2-5 |  | R/I.OH | P2.01.9.010 | Harris |  |  |  |  |
| P2.MR.C.110 |  | MEP - Penetrations, Sleeves, Supports & Pathways / Main Roof - Center | 5d | 2025-03-31 A | 2025-04-04 A | P2.MR.C.100 SS | 100% |  | 2025-04-10 | 2025-04-16 |  |  | 40 |  | R/I.OH |  | P2-5 |  | R/I.OH | P2.20.05.9.110 | Harris |  |  |  |  |
| P2.MR.C.120 |  | Set & Connect Roof Drains / Main Roof - Center | 5d | 2025-03-31 A | 2025-04-04 A | P2.MR.C.100 SS | 100% |  | 2025-04-10 | 2025-04-16 |  |  | 40 |  | PLMB |  | P2-5 |  | PLMB | P2.22.14.9.110 | Harris |  |  |  |  |
| P2.MR.C.130 |  | Prefabricated Curbs and Flashing / Main Roof - Center | 5d | 2025-03-31 A | 2025-04-04 A | P2.MR.C.120 SS, P2.MR.C.100 SS | 100% |  | 2025-04-17 | 2025-04-23 |  |  | 40 | T.FACADE.ROOF | HVAC |  | P2-5 |  | HVAC |  | Harris |  |  |  |  |
| P2.MR.C.140 |  | Facade Maint Equip - R/I / Main Roof - Center | 5d | 2025-03-31 A | 2025-04-04 A | P2.MR.C.130 SS, P2.MR.C.100 SS | 100% |  | 2025-04-24 | 2025-04-30 |  |  | 40 |  | EXMAINT |  | P2-5 |  | EXMAINT | P2.11.24.9.110 |  |  |  |  |  |
| P2.MR.C.150 |  | Prefabricated Roof Hatch / Main Roof - Center | 2d | 2025-04-28 A | 2025-05-29 A | P2.MR.C.140 SS, P2.MR.C.100 SS | 100% |  | 2025-05-01 | 2025-05-02 |  |  | 40 | T.FACADE.ROOF | ROOF |  | P2-5 |  | ROOF |  |  | 25 |  |  |  |
| P2.MR.C.160 |  | Roofing - Watertight Systems (WP-05) / Main Roof - Center | 5d | 2025-04-28 A | 2025-05-30 A | P2.MR/PS.03.430, P2.MR.C.110, P2.MR.C.120, P2.MR.C.130, P2.MR.W.160, P2.MR.C.140, P2.MR.C.150 | 100% |  | 2025-05-19 | 2025-05-23 |  |  | 40 |  | ROOF |  | P2-5 |  | ROOF | P2.07.55.9.010 |  | 25,45 | RF1 |  |  |
|  | 2 | **Roofing Finishes** |  | 2025-06-25 | 2026-04-08 |  |  |  |  |  |  |  |  |  |  |  |  |  |  |  |  |  |  |  |  |
| P2.MR.C.200 |  | Roofing - Permanent Systems / Main Roof - Center | 5d | 2025-06-25 A | 2025-07-02 A | P2.MR.C.160 | 100% |  | 2025-07-01 | 2025-07-08 |  |  | 40 |  | ROOF | KD | P2-5 | KD | ROOF | P2.07.55.9.210 |  | 25 | RF1 |  |  |
| P2.MR.C.210 |  | Flood Test / Main Roof - Center | 2d | 2025-07-07 A | 2025-07-09 A | P2.MR.C.200 | 100% |  | 2025-08-05 | 2025-08-06 |  |  | 16 |  | ROOF | KD | P2-5 | KD | ROOF | P2..07.01.9.110 |  | 25 |  | AT36 |  |
| P2.MR.C.220 |  | Electronic Leak Detection Testing & Corrections / Main Roof - Center | 3d | 2025-07-07 A | 2025-07-09 A | P2.MR.C.210 | 100% |  | 2025-08-07 | 2025-08-11 |  |  | 24 |  | ROOF | KD | P2-5 | KD | ROOF | P2.07.01.9.210 |  | 25 |  | AT37 |  |
| P2.MR.C.9040 |  | Roofing - Patch Back / Main Roof - Center | 5d | 2025-10-01 A | 2025-10-07 A | P2.FAC.1.Z2.230, P2.FAC.4.Z3.140, P2.FAC.4.Z3.150 | 100% |  |  |  |  |  | 40 |  | ROOF | KD | P2-5 | KD | ROOF | P2.07.55.9.210 |  | 25 | RF1 |  |  |
| P2.MR.C.230 |  | Roof Pavers (RS-01) / Main Roof - Center | 10d | 2025-10-15 A | 2025-10-28 A | P2.MR.W.230, P2.MR.C.220, P1.BGS.190 SS, P1.BGS.280 SS | 100% |  |  |  |  |  | 40 |  | ROOF | KD | P2-5 | KD | ROOF | P2.07.76.9.110 |  | 25 |  |  |  |
| P2.MR.C.240 |  | Metal Panels / Main Roof - Center | 5d | 2025-10-29 A | 2026-04-01 | P2.MR.C.9040, P2.MR.C.230 | 80% | 1d | 2025-10-29 | 2025-11-04 | 213d | 0d | 40 | ! | MPANEL | KD | P2-5 | JW | MPANEL |  |  | 20,56,98 |  | AT27 | O |
| P2.MR.C.260 |  | Ladders & Stairs / Main Roof - Center | 5d | 2025-11-04 A | 2025-12-31 A | P2.MR.C.230 | 100% |  | 2025-12-17 | 2025-12-23 |  |  | 40 |  | ROOF | KD | P2-5 | JW | ROOF | P2.07.62.9.210 |  | 25 |  | AT38 | O |
| P2.MR.C.270 |  | Roofing - Standing Seam - Clerestory | 5d | 2025-12-09 A | 2025-12-19 A | P2.MR.C.230 | 100% |  | 2026-02-20 | 2026-02-26 |  |  | 40 | ! | ROOF | KD | P2-5 | JW | ROOF |  |  | 25 |  |  |  |
| P2.MR.C.250 |  | Roof Trim Out - All Trades / Main Roof - Center | 5d | 2026-04-02 | 2026-04-08 | P2.MR.C.240 |  |  |  |  | 213d | 0d | 40 |  | ROOF | KD | P2-5 | JW | ROOF | P2.07.62.9.210 |  | 25,56 |  |  | O |

| ID | WBS | Activity | Duration | Start | Finish | Predecessors | Complete | Remaining | Planned start | Planned finish | Total float | Free float | Temp Orig Dur | *NIH Resp Check* | Resp / SRLM | 744 | PHASE | RESP UPD | RESP / Trade | Act ID Temp | Z.RESP | Trade Review Notes | SRLM - Crew | Testing Type | Update Status |
| --- | --- | --- | --- | --- | --- | --- | --- | --- | --- | --- | --- | --- | --- | --- | --- | --- | --- | --- | --- | --- | --- | --- | --- | --- | --- |
|  | 6 | **Quality Control Inspections** |  | 2026-04-09 | 2026-04-17 |  |  |  |  |  |  |  |  |  |  |  |  |  |  |  |  |  |  |  |  |
| P2.MR.C.9000 |  | Trades Inspect & Verify Work Completed to Specs / Main Roof - Center | 2d | 2026-04-09 | 2026-04-10 | P2.MR.C.260, P2.MR.C.270, P2.MR.C.250 |  |  |  |  | 213d | 0d | 16 | ! | T | KD | P2-5 | JW | T |  |  |  |  |  |  |
| P2.MR.C.9010 |  | Inspect & Prepare Punchlist / Main Roof - Center | 1d | 2026-04-13 | 2026-04-13 | P2.MR.C.9000 |  |  |  |  | 213d | 0d | 8 | ! | ARCH | KD | P2-5 | JW | ARCH |  |  |  |  |  |  |
| P2.MR.C.9020 |  | Correct Punchlist / Main Roof - Center | 2d | 2026-04-14 | 2026-04-15 | P2.MR.C.9010 |  |  |  |  | 213d | 0d | 16 | ! | T | KD | P2-5 | JW | T |  |  |  |  |  |  |
| P2.MR.C.9030 |  | Final Inspection & Acceptance / Main Roof - Center | 2d | 2026-04-16 | 2026-04-17 | P2.MR.C.9020 |  |  |  |  | 213d | 225d | 16 | ! | AHJ | KD | P2-5 | JW | AHJ |  |  |  |  |  |  |
|  | 3 | **Main Roof / East Tower** |  | 2025-04-18 | 2026-04-21 |  |  |  |  |  |  |  |  |  |  |  |  |  |  |  |  |  |  |  |  |
|  | 4 | **Weathertightness Prep** |  | 2025-04-18 | 2025-05-30 |  |  |  |  |  |  |  |  |  |  |  |  |  |  |  |  |  |  |  |  |
| P2.MR.E.100 |  | Layout - All Trades / Main Roof - East | 2d | 2025-04-18 A | 2025-04-21 A | P2.PR.03.520 | 100% |  | 2025-05-22 | 2025-05-23 |  |  | 16 |  | R/I.OH |  | P2-5 |  | R/I.OH | P2.01.9.010 | Harris |  |  |  |  |
| P2.MR.E.110 |  | MEP - Penetrations, Sleeves, Supports & Pathways / Main Roof - East | 5d | 2025-04-21 A | 2025-04-28 A | P2.MR.E.100 | 100% |  | 2025-05-27 | 2025-06-02 |  |  | 40 |  | R/I.OH |  | P2-5 |  | R/I.OH | P2.20.05.9.110 | Harris |  |  |  |  |
| P2.MR.E.120 |  | Set & Connect Roof Drains / Main Roof - East | 5d | 2025-04-21 A | 2025-04-28 A | P2.MR.E.100 | 100% |  | 2025-05-27 | 2025-06-02 |  |  | 40 |  | PLMB |  | P2-5 |  | PLMB | P2.22.14.9.110 | Harris |  |  |  |  |
| P2.MR.E.130 |  | Prefabricated Curbs and Flashing / Main Roof - East | 5d | 2025-04-21 A | 2025-04-28 A | P2.MR.E.100, P2.MR.E.120 | 100% |  | 2025-06-03 | 2025-06-09 |  |  | 40 | T.FACADE.ROOF | HVAC |  | P2-5 |  | HVAC |  | Harris |  |  |  |  |
| P2.MR.E.140 |  | Facade Maint Equip - R/I / Main Roof - East | 5d | 2025-04-21 A | 2025-04-28 A | P2.MR.E.100, P2.MR.E.130 | 100% |  | 2025-06-10 | 2025-06-16 |  |  | 40 |  | EXMAINT |  | P2-5 |  | EXMAINT | P2.11.24.9.110 |  |  |  |  |  |
| P2.MR.E.150 |  | Prefabricated Roof Hatch / Main Roof - East | 2d | 2025-04-28 A | 2025-05-28 A | P2.MR.E.140, P2.MR.E.100 | 100% |  | 2025-06-17 | 2025-06-18 |  |  | 40 | T.FACADE.ROOF | ROOF |  | P2-5 |  | ROOF |  |  | 25 |  |  |  |
| P2.MR.E.160 |  | Roofing - Watertight Systems (WP-05) / Main Roof - East | 5d | 2025-04-28 A | 2025-05-30 A | P2.FAC.1.Z3.240, P2.MR.C.160, P2.MR.E.140, P2.MR.E.150, P2.MR.E.110, P2.MR.E.120, P2.MR.E.130 | 100% |  | 2025-06-20 | 2025-06-26 |  |  | 40 |  | ROOF |  | P2-5 |  | ROOF | P2.07.55.9.010 |  | 25,45 |  |  |  |
|  | 2 | **Roofing Finishes** |  | 2025-06-30 | 2026-04-10 |  |  |  |  |  |  |  |  |  |  |  |  |  |  |  |  |  |  |  |  |
| P2.MR.E.200 |  | Roofing - Permanent Systems / Main Roof - East | 5d | 2025-06-30 A | 2025-07-19 A | P2.MR.E.160 | 100% |  | 2025-08-20 | 2025-08-26 |  |  | 40 |  | ROOF | KD | P2-5 | KD | ROOF | P2.07.55.9.210 |  | 25 | RF1 |  |  |
| P2.MR.E.210 |  | Flood Test / Main Roof - East | 2d | 2025-07-07 A | 2025-07-09 A | P2.MR.E.200 | 100% |  | 2025-09-26 | 2025-09-29 |  |  | 16 |  | ROOF | KD | P2-5 | KD | ROOF | P2..07.01.9.110 |  | 25 |  | AT36 |  |
| P2.MR.E.220 |  | Electronic Leak Detection Testing & Corrections / Main Roof - East | 3d | 2025-07-07 A | 2025-07-09 A | P2.MR.E.210 | 100% |  | 2025-09-30 | 2025-10-02 |  |  | 24 |  | ROOF | KD | P2-5 | KD | ROOF | P2.07.01.9.210 |  | 25 |  | AT37 |  |
| P2.MR.E.230 |  | Roof Pavers (RS-01) / Main Roof - East | 5d | 2025-09-15 A | 2025-09-23 A | BP2.073.3.110, P2.MR.E.220, P1.BGS.280 SS | 100% |  | 2025-10-03 | 2025-10-09 |  |  | 40 |  | ROOF | KD | P2-5 | KD | ROOF | P2.07.76.9.110 |  | 25,56 |  |  | O |
| P2.MR.E.9040 |  | Roofing - Patch Back / Main Roof - East | 5d | 2025-09-24 A | 2025-11-18 A | P2.FAC.4.Z3.170 FF, P2.FAC.4.Z3.160 | 100% |  | 2025-10-02 | 2025-10-08 |  |  | 40 |  | ROOF | KD | P2-5 | JW | ROOF | P2.07.55.9.210 |  | 25 | RF1 |  |  |
| P2.MR.E.260 |  | Ladders & Stairs / Main Roof - East | 5d | 2025-12-15 A | 2025-12-18 A | P2.MR.E.230 | 100% |  | 2026-01-09 | 2026-01-15 |  |  | 40 |  | ROOF | KD | P2-5 | JW | ROOF | P2.07.62.9.210 |  | 25 |  | AT38 | O |
| P2.MR.E.240 |  | Metal Panels / Main Roof - East | 5d | 2026-03-02 A | 2026-04-03 | P2.MR.E.9040, P2.MR.E.230 | 40% | 3d | 2026-03-02 | 2026-03-06 | 211d | 0d | 40 | ! | MPANEL | KD | P2-5 | JW | MPANEL |  |  | 20,56,98 |  | AT27 | O |
| P2.MR.E.250 |  | Roof Trim Out - All Trades / Main Roof - East | 5d | 2026-04-06 | 2026-04-10 | P2.MR.E.240 |  |  |  |  | 211d | 0d | 40 |  | ROOF | KD | P2-5 | JW | ROOF | P2.07.62.9.210 |  | 25 |  |  | O |
|  | 8 | **Quality Control Inspections** |  | 2026-04-13 | 2026-04-21 |  |  |  |  |  |  |  |  |  |  |  |  |  |  |  |  |  |  |  |  |
| P2.MR.E.9000 |  | Trades Inspect & Verify Work Completed to Specs / Main Roof - East | 2d | 2026-04-13 | 2026-04-14 | P2.MR.E.260, P2.MR.E.250 |  |  |  |  | 211d | 0d | 16 | ! | T | KD | P2-5 | JW | T |  |  |  |  |  | O |
| P2.MR.E.9010 |  | Inspect & Prepare Punchlist / Main Roof - East | 1d | 2026-04-15 | 2026-04-15 | P2.MR.E.9000 |  |  |  |  | 211d | 0d | 8 | ! | ARCH | KD | P2-5 | JW | ARCH |  |  |  |  |  | O |
| P2.MR.E.9020 |  | Correct Punchlist / Main Roof - East | 2d | 2026-04-16 | 2026-04-17 | P2.MR.E.9010 |  |  |  |  | 211d | 0d | 16 | ! | T | KD | P2-5 | JW | T |  |  |  |  |  | O |
| P2.MR.E.9030 |  | Final Inspection & Acceptance / Main Roof - East | 2d | 2026-04-20 | 2026-04-21 | P2.MR.E.9020 |  |  |  |  | 211d | 223d | 16 | ! | AHJ | KD | P2-5 | JW | AHJ |  |  |  |  |  | O |

| ID | WBS | Activity | Duration | Start | Finish | Predecessors | Complete | Remaining | Planned start | Planned finish | Total float | Free float | Temp Orig Dur | Testing Type | Act ID Temp | *NIH Resp Check* | Resp / SRLM | PHASE | RESP / Trade | Z.RESP | Trade Review Notes | 744 | RESP UPD | Pick | Update Status | SRLM - Crew |
| --- | --- | --- | --- | --- | --- | --- | --- | --- | --- | --- | --- | --- | --- | --- | --- | --- | --- | --- | --- | --- | --- | --- | --- | --- | --- | --- |
|  | 10 | **Main Roof / East Mechanical Tower** |  | 2025-03-24 | 2026-05-04 |  |  |  |  |  |  |  |  |  |  |  |  |  |  |  |  |  |  |  |  |  |
|  | 1 | **Weathertightness Prep** |  | 2025-04-15 | 2025-08-21 |  |  |  |  |  |  |  |  |  |  |  |  |  |  |  |  |  |  |  |  |  |
| P2.MR.EMT.1020 |  | Steel Equipment Supports / Main Roof - East Mech Tower | 5d | 2025-04-15 A | 2025-04-30 A | P2.MR.EMT.1000 | 100% |  | 2025-05-30 | 2025-06-05 |  |  | 40 | AT39 | P2.03.10.110 | T.R/I.IW.MECH | STEEL | P2-5 | STEEL |  |  |  |  |  |  |  |
| P2.MR.EMT.1000 |  | Layout - All Trades / Main Roof - East Mech Tower | 5d | 2025-04-18 A | 2025-04-24 A | P2.PR.03.520 | 100% |  | 2025-05-22 | 2025-05-29 |  |  | 40 |  | P2.01.9.010 |  | R/I.OH | P2-5 | R/I.OH | Harris |  |  |  |  |  |  |
| P2.MR.EMT.1010 |  | Prefabricated Curbs and Flashing / Main Roof - East Mech Tower | 5d | 2025-05-01 A | 2025-05-14 A | P2.MR.EMT.1000, P2.MR.EMT.1060 | 100% |  | 2025-06-23 | 2025-06-27 |  |  | 40 |  |  | T.FACADE.ROOF | HVAC | P2-5 | HVAC | Harris |  |  |  |  |  |  |
| P2.MR.EMT.1030 |  | Facade Maint Equip - R/I / Main Roof - East Mech Tower | 5d | 2025-05-01 A | 2025-05-07 A | P2.MR.EMT.1000, P2.MR.EMT.1020 | 100% |  | 2025-06-02 | 2025-06-06 |  |  | 40 |  | P2.11.2410.110 | ! | EXMAINT | P2-5 | EXMAINT |  |  |  |  |  |  |  |
| P2.MR.EMT.1040 |  | Fall Protection Anchors / Main Roof - East Mech Tower | 5d | 2025-05-01 A | 2025-05-14 A | P2.MR.EMT.1030 | 100% |  | 2025-06-09 | 2025-06-13 |  |  | 40 | AT40 | P2.41.67.10.110 | T.MISCMTL | EXMAINT | P2-5 | EXMAINT |  |  |  |  |  |  |  |
| P2.MR.EMT.1050 |  | MEP - Penetrations, Sleeves, Supports & Pathways / Main Roof - East Mech Tower | 5d | 2025-05-01 A | 2025-05-14 A | P2.MR.EMT.1000, P2.MR.EMT.1030 | 100% |  | 2025-06-09 | 2025-06-13 |  |  | 40 |  | P2.20.05.9.110 |  | R/I.OH | P2-5 | R/I.OH | Harris |  |  |  |  |  |  |
| P2.MR.EMT.1060 |  | Set & Connect Roof Drains / Main Roof - East Mech Tower | 5d | 2025-05-01 A | 2025-05-14 A | P2.MR.EMT.1000, P2.MR.EMT.1050 | 100% |  | 2025-06-16 | 2025-06-20 |  |  | 40 |  | P2.22.14.9.110 |  | PLMB | P2-5 | PLMB | Harris |  |  |  |  |  |  |
| P2.MR.EMT.1070 |  | Prefabricated Roof Hatch / Main Roof - East Mech Tower | 2d | 2025-05-28 A | 2025-05-30 A | P2.MR.EMT.1010, P2.MR.EMT.1000 | 100% |  | 2025-06-30 | 2025-07-01 |  |  | 40 |  |  | T.FACADE.ROOF | ROOF | P2-5 | ROOF |  | 25 |  |  |  |  |  |
| P2.MR.EMT.1080 |  | Roofing - Watertight Systems (WP-05 & Green Roof) / Main Roof - East | 5d | 2025-08-04 A | 2025-08-21 A | P2.FAC.1.Z3.300, P2.MR.E.160, P2.MR.EMT.1010, P2.MR.EMT.1070, P2.MR.EMT.1040, P2.MR.EMT.1050, P2.MR.EMT.1060 | 100% |  | 2025-08-15 | 2025-08-21 |  |  | 40 |  | P2.07.55.9.010 |  | ROOF | P2-5 | ROOF |  | 25,45 | KD | KD |  |  |  |
|  | 3 | **Rooftop MEP** |  | 2025-03-24 | 2026-04-23 |  |  |  |  |  |  |  |  |  |  |  |  |  |  |  |  |  |  |  |  |  |
| P2.MR.EMT.1090 |  | Support Frames - Rooftop Duct / Main Roof - East Mech Tower | 5d | 2025-03-24 A | 2025-05-14 A | P2.MR/PS.03.520 | 100% |  | 2025-03-11 | 2025-03-17 |  |  | 40 | AT41 | P2.05.45.10.110 | ! | HVAC | P2-5 | HVAC | Harris |  |  |  |  |  |  |
| P2.MR.EMT.1100 |  | Support Frames - Rooftop Stacks / Main Roof - East Mech Tower | 5d | 2025-05-01 A | 2025-05-14 A | P2.MR.EMT.1080, P2.MR.EMT.1020 | 100% |  | 2025-08-05 | 2025-08-11 |  |  | 40 | AT41 | P2.05.45.10.210 | ! | HVAC | P2-5 | HVAC | Harris |  |  |  |  |  |  |
| P2.MR.EMT.1140 |  | HVAC Duct - Stack R/I / Main Roof - East Mech Tower | 5d | 2025-09-18 A | 2025-09-25 A | P2.MR.EMT.1100 | 100% |  | 2025-10-01 | 2025-10-07 |  |  | 40 |  | P2.23.30.10.120 | ! | HVAC | P2-5 | HVAC | Harris |  | KD | KD | Roof Finishes?? | O |  |
| P2.MR.EMT.1110 |  | HVAC Equip - Set and Connect / Main Roof - East Mech Tower | 5d | 2025-09-22 A | 2025-11-13 A | P2.MR.EMT.1080, P1.BGS.280 | 100% |  | 2025-10-01 | 2025-10-07 |  |  | 40 |  | P2.23.749.110 |  | HVAC | P2-5 | HVAC | Harris |  | KD | JW |  |  |  |
| P2.MR.EMT.1120 |  | VFD's - Set and Connect / Main Roof - East Mech Tower | 5d | 2025-09-22 A | 2025-10-07 A | P2.MR.EMT.1110 | 100% |  | 2025-10-08 | 2025-10-14 |  |  | 40 |  | P2.40.9210.110 | ! | HVAC | P2-5 | HVAC | Harris |  | KD | KD |  |  |  |
| P2.MR.EMT.1130 |  | HVAC Duct - R/I / Main Roof - East Mech Tower | 10d | 2025-11-12 A | 2026-04-09 | P2.MR.EMT.1090, P2.MR.EMT.1080 | 30% | 7d | 2025-12-01 | 2025-12-12 | 6d | 0d | 40 |  | P2.23.30.10.110 | ! | HVAC | P2-5 | HVAC | Harris |  | KD | JW |  | O |  |
| P2.MR.EMT.1150 |  | MEP - Piping & Equip Tie In / Main Roof - East Mech Tower | 5d | 2026-04-10 | 2026-04-16 | P2.MR.EMT.1130, P2.MR.EMT.1140, P2.MR.EMT.1120 |  |  |  |  | 6d | 0d | 40 |  | P2.25.059.110 |  | BAS | P2-5 | BAS-1 | Harris |  | KD | JW | Roof Finishes?? | O |  |
| P2.MR.EMT.1160 |  | Elect Connections to MEP / Main Roof - East Mech Tower | 5d | 2026-04-17 | 2026-04-23 | P2.MR.EMT.1150 |  |  |  |  | 6d | 0d |  |  |  |  | ELEC | P2-5 | ELEC-2 |  |  | KD | JW |  | O |  |
|  | 4 | **Roofing Finishes** |  | 2025-07-07 | 2026-04-07 |  |  |  |  |  |  |  |  |  |  |  |  |  |  |  |  |  |  |  |  |  |
| P2.MR.EMT.2000 |  | Roofing - Permanent Systems / Main Roof - East Mech Tower | 10d | 2025-07-07 A | 2025-07-24 A | P2.MR.E.160 | 100% |  | 2025-10-13 | 2025-10-24 |  |  | 40 |  | P2.07.55.9.210 |  | ROOF | P2-5 | ROOF |  | 25 | KD | KD |  |  | RF1 |
| P2.MR.EMT.2070 |  | Exterior Framing and Sheathing at Roof Penthouse Main Roof / EMMR-GRP2 Roof | 5d | 2025-07-14 A | 2025-07-18 A | P2.PH.N.1050 | 100% |  | 2025-08-13 | 2025-08-19 |  |  | 40 |  | P2.07.55.9.210 |  | GYP | P2-5 | GYP |  | 25 | KD | KD |  |  | RF1 |
| P2.MR.EMT.2010 |  | Flood Test / Main Roof - East Mech Tower | 2d | 2025-10-01 A | 2025-10-02 A | P2.MR.EMT.2000 | 100% |  | 2025-10-22 | 2025-10-23 |  |  | 16 | AT36 | P2..07.01.9.110 |  | ROOF | P2-5 | ROOF |  | 25 | KD | KD |  |  |  |
| P2.MR.EMT.9050 |  | Roofing - Patch Back / Main Roof - East Mech Tower | 10d | 2025-10-06 A | 2025-10-07 A | P2.FAC.4.Z3.180 FF | 100% |  | 2025-10-22 | 2025-11-04 |  |  | 40 |  | P2.07.55.9.210 |  | ROOF | P2-5 | ROOF |  | 25 | KD | KD |  |  | RF1 |
| P2.MR.EMT.2020 |  | Electronic Leak Detection Testing & Corrections / Main Roof - East Mech Tower | 3d | 2025-10-08 A | 2025-10-09 A | P2.MR.EMT.2010 | 100% |  | 2025-10-24 | 2025-10-28 |  |  | 24 | AT37 | P2.07.01.9.210 |  | ROOF | P2-5 | ROOF |  | 25 | KD | KD |  |  |  |
| P2.MR.EMT.9040 |  | Roofing - Standing Seam around Group 2 Elevator Tower Main Roof / EMMR-GRP2 Roof | 5d | 2025-10-13 A | 2025-11-27 A | P2.MR.EMT.2070 | 100% |  | 2025-10-01 | 2025-10-07 |  |  | 40 |  | P2.07.55.9.210 |  | ROOF | P2-5 | ROOF |  | 25 | KD | JW |  |  | RF1 |
| P2.MR.EMT.2060 |  | Ladders & Stairs / Main Roof - East Mech Tower | 5d | 2025-11-04 A | 2025-11-20 A | P2.MR.EMT.2020 | 100% |  | 2026-01-14 | 2026-01-20 |  |  | 40 | AT38 | P2.26.41.9.110 | ! | MISCMTL | P2-5 | MISCMTL |  |  | KD | JW |  |  |  |
| P2.MR.EMT.2030 |  | Roof Pavers (RS-01) / Main Roof - East Mech Tower | 10d | 2026-01-05 A | 2026-01-30 A | P2.MR.C.230, P2.MR.EMT.2020 | 100% |  | 2026-01-20 | 2026-02-02 |  |  | 40 |  | P2.07.76.9.110 |  | ROOF | P2-5 | ROOF |  | 25 | KD | JW |  | O |  |
| P2.MR.EMT.2050 |  | Roof Trim Out - All Trades / Main Roof - East Mech Tower | 5d | 2026-04-01 | 2026-04-07 | P2.MR.EMT.2030, P2.MR.EMT.9050 |  |  |  |  | 18d | 12d | 40 |  | P2.07.62.9.210 |  | ROOF | P2-5 | ROOF |  | 25,56 | KD | JW |  |  |  |

| ID | WBS | Activity | Duration | Start | Finish | Predecessors | Complete | Planned start | Planned finish | Total float | Free float | Temp Orig Dur | *NIH Resp Check* | Resp / SRLM | 744 | PHASE | RESP UPD | RESP / Trade | Act ID Temp | Z.RESP | Trade Review Notes | SRLM - Crew | Update Status | Testing Type |
| --- | --- | --- | --- | --- | --- | --- | --- | --- | --- | --- | --- | --- | --- | --- | --- | --- | --- | --- | --- | --- | --- | --- | --- | --- |
|  | 5 | **Quality Control Inspections** |  | 2026-04-24 | 2026-05-04 |  |  |  |  |  |  |  |  |  |  |  |  |  |  |  |  |  |  |  |
| P2.MR.EMT.9000 |  | Trades Inspect & Verify Work Completed to Specs / Main Roof - East Mech Tower | 2d | 2026-04-24 | 2026-04-27 | P2.MR.EMT.2060, P2.MR.EMT.1160, P2.MR.EMT.2050 |  |  |  | 6d | 0d | 16 | ! | T | KD | P2-5 | JW | T |  |  |  |  |  |  |
| P2.MR.EMT.9010 |  | Inspect & Prepare Punchlist / Main Roof - East Mech Tower | 1d | 2026-04-28 | 2026-04-28 | P2.MR.EMT.9000 |  |  |  | 6d | 0d | 8 | ! | ARCH | KD | P2-5 | JW | ARCH |  |  |  |  |  |  |
| P2.MR.EMT.9020 |  | Correct Punchlist / Main Roof - East Mech Tower | 2d | 2026-04-29 | 2026-04-30 | P2.MR.EMT.9010 |  |  |  | 6d | 0d | 16 | ! | T | KD | P2-5 | JW | T |  |  |  |  |  |  |
| P2.MR.EMT.9030 |  | Final Inspection & Acceptance / Main Roof - East Mech Tower | 2d | 2026-05-01 | 2026-05-04 | P2.MR.EMT.9020 |  |  |  | 6d | 14d | 16 | ! | AHJ | KD | P2-5 | JW | AHJ |  |  |  |  |  |  |
|  | 11 | **Main Roof / Stair 5-8** |  | 2025-07-16 | 2026-04-14 |  |  |  |  |  |  |  |  |  |  |  |  |  |  |  |  |  |  |  |
|  | 4 | **Weathertightness Prep** |  | 2025-07-16 | 2025-10-17 |  |  |  |  |  |  |  |  |  |  |  |  |  |  |  |  |  |  |  |
| P2.MR.5-8.100 |  | Layout - All Trades / Main Roof - Stair 5-8 | 2d | 2025-07-16 A | 2025-07-17 A | P2.FAC.1.F.200 | 100% | 2025-08-15 | 2025-08-18 |  |  | 16 |  | R/I.OH | KD | P2-5 | KD | R/I.OH | P2.01.9.010 | Harris |  |  |  |  |
| P2.MR.5-8.110 |  | MEP - Penetrations, Sleeves, Supports & Pathways / Main Roof - Stair 5-8 | 2d | 2025-07-18 A | 2025-07-21 A | P2.MR.5-8.100 | 100% | 2025-08-19 | 2025-08-20 |  |  | 16 |  | R/I.OH | KD | P2-5 | KD | R/I.OH | P2.20.05.9.110 | Harris |  |  |  |  |
| P2.MR.5-8.120 |  | Set & Connect Roof Drains / Main Roof - Stair 5-8 | 2d | 2025-07-18 A | 2025-07-21 A | P2.MR.5-8.100 | 100% | 2025-08-19 | 2025-08-20 |  |  | 16 |  | PLMB | KD | P2-5 | KD | PLMB | P2.22.14.9.110 | Harris |  |  |  |  |
| P2.MR.5-8.130 |  | Prefabricated Roof Hatch / Main Roof - Stair 5-8 | 2d | 2025-07-22 A | 2025-07-23 A | P2.MR.5-8.100, P2.MR.5-8.120 | 100% | 2025-08-21 | 2025-08-22 |  |  | 16 | T.FACADE.ROOF | ROOF | KD | P2-5 | KD | ROOF |  |  | 25 |  |  |  |
| P2.MR.5-8.150 |  | Framing & Sheathing of Parapets / Main Roof - Stair 5-8 | 5d | 2025-07-24 A | 2025-07-30 A | P2.MR.5-8.130, P2.MR.5-8.100 | 100% | 2025-08-25 | 2025-08-29 |  |  | 16 |  | GYP | KD | P2-5 | KD | GYP | P2.01.9.010 |  |  |  |  |  |
| P2.MR.5-8.140 |  | Roofing - Temp Watertight Systems / Main Roof - Stair 5-8 | 2d | 2025-10-16 A | 2025-10-17 A | P2.MR.5-8.130, P2.MR.5-8.150, P2.MR.5-8.110, P2.MR.5-8.120, P2.L11.5-9.140 | 100% | 2025-10-03 | 2025-10-06 |  |  | 16 |  | ROOF | KD | P2-5 | KD | ROOF | P2.07.55.9.010 |  | 25,45 | RF1 |  |  |
|  | 2 | **Roofing Finishes** |  | 2025-10-18 | 2026-04-03 |  |  |  |  |  |  |  |  |  |  |  |  |  |  |  |  |  |  |  |
| P2.MR.5-8.200 |  | Roofing - Permanent Systems / Main Roof - Stair 5-8 | 5d | 2025-10-18 A | 2025-10-22 A | P2.MR.5-8.140 | 100% | 2025-10-07 | 2025-10-13 |  |  | 40 |  | ROOF | KD | P2-5 | KD | ROOF | P2.07.55.9.210 |  | 25 | RF1 |  |  |
| P2.MR.5-8.220 |  | Electronic Leak Detection Testing & Corrections / Main Roof - Stair 5-8 | 2d | 2025-12-08 A | 2025-12-08 A | P2.MR.5-8.200 | 100% | 2026-01-05 | 2026-01-06 |  |  | 16 |  | ROOF | KD | P2-5 | JW | ROOF | P2.07.01.9.210 |  | 25 |  | O | AT37 |
| P2.MR.5-8.230 |  | Metal Panels / Main Roof - Stair 5-8 | 5d | 2026-03-17 A | 2026-03-31 A | P2.MR.5-8.220 | 100% | 2026-03-03 | 2026-03-09 |  |  | 40 | ! | MPANEL | KD | P2-5 | JW | MPANEL |  |  | 20,56,98 |  | O | AT27 |
| P2.MR.5-8.210 |  | Flood Test / Main Roof - Stair 5-8 | 1d | 2026-04-01 | 2026-04-01 | P2.MR.5-8.200 |  |  |  | 35d | 0d | 8 |  | ROOF | KD | P2-5 | JW | ROOF | P2..07.01.9.110 |  | 25 |  | O | AT36 |
| P2.MR.5-8.240 |  | Roof Trim Out - All Trades / Main Roof - Stair 5-8 | 2d | 2026-04-02 | 2026-04-03 | P2.MR.5-8.230, P2.MR.5-8.210 |  |  |  | 35d | 0d | 16 |  | ROOF | KD | P2-5 | JW | ROOF | P2.07.62.9.210 |  | 25,56 |  | O |  |
|  | 6 | **Quality Control Inspections** |  | 2026-04-06 | 2026-04-14 |  |  |  |  |  |  |  |  |  |  |  |  |  |  |  |  |  |  |  |
| P2.MR.5-8.9000 |  | Trades Inspect & Verify Work Completed to Specs / Main Roof - Stair 5-8 | 2d | 2026-04-06 | 2026-04-07 | P2.MR.5-8.240 |  |  |  | 35d | 0d | 16 | ! | T | KD | P2-5 | JW | T |  |  |  |  | O |  |
| P2.MR.5-8.9010 |  | Inspect & Prepare Punchlist / Main Roof - Stair 5-8 | 1d | 2026-04-08 | 2026-04-08 | P2.MR.5-8.9000 |  |  |  | 35d | 0d | 8 | ! | ARCH | KD | P2-5 | JW | ARCH |  |  |  |  | O |  |
| P2.MR.5-8.9020 |  | Correct Punchlist / Main Roof - Stair 5-8 | 2d | 2026-04-09 | 2026-04-10 | P2.MR.5-8.9010 |  |  |  | 35d | 0d | 16 | ! | T | KD | P2-5 | JW | T |  |  |  |  | O |  |
| P2.MR.5-8.9030 |  | Final Inspection & Acceptance / Main Roof - Stair 5-8 | 2d | 2026-04-13 | 2026-04-14 | P2.MR.5-8.9020 |  |  |  | 35d | 43d | 16 | ! | AHJ | KD | P2-5 | JW | AHJ |  |  |  |  | O |  |

| ID | WBS | Activity | Duration | Start | Finish | Predecessors | Complete | Planned start | Planned finish | Total float | Free float | Temp Orig Dur | Act ID Temp | Resp / SRLM | PHASE | Z.RESP | RESP / Trade | *NIH Resp Check* | Trade Review Notes | 744 | RESP UPD | SRLM - Crew | Update Status | Testing Type |
| --- | --- | --- | --- | --- | --- | --- | --- | --- | --- | --- | --- | --- | --- | --- | --- | --- | --- | --- | --- | --- | --- | --- | --- | --- |
|  | 7 | **Main Roof / Stair 2-8** |  | 2025-03-25 | 2026-04-20 |  |  |  |  |  |  |  |  |  |  |  |  |  |  |  |  |  |  |  |
|  | 4 | **Weathertightness Prep** |  | 2025-03-25 | 2025-11-18 |  |  |  |  |  |  |  |  |  |  |  |  |  |  |  |  |  |  |  |
| P2.MR.2-8.100 |  | Layout - All Trades / Main Roof - Stair 2-8 | 2d | 2025-03-25 A | 2025-03-26 A | P2.MR/PS.03.530 | 100% |  |  |  |  | 16 | P2.01.9.010 | R/I.OH | P2-5 | Harris | R/I.OH |  |  |  |  |  |  |  |
| P2.MR.2-8.110 |  | MEP - Penetrations, Sleeves, Supports & Pathways / Main Roof - Stair 2-8 | 2d | 2025-03-27 A | 2025-03-28 A | P2.MR.2-8.100 | 100% |  |  |  |  | 16 | P2.20.05.9.110 | R/I.OH | P2-5 | Harris | R/I.OH |  |  |  |  |  |  |  |
| P2.MR.2-8.120 |  | Set & Connect Roof Drains / Main Roof - Stair 2-8 | 2d | 2025-03-27 A | 2025-03-28 A | P2.MR.2-8.100, P2.MR.2-8.110 | 100% | 2025-03-31 | 2025-04-01 |  |  | 16 | P2.22.14.9.110 | PLMB | P2-5 | Harris | PLMB |  |  |  |  |  |  |  |
| P2.MR.2-8.130 |  | Prefabricated Roof Hatch / Main Roof - Stair 2-8 | 2d | 2025-07-21 A | 2025-07-22 A | P2.MR.2-8.100, P2.MR.2-8.120 | 100% | 2025-08-01 | 2025-08-04 |  |  | 16 |  | ROOF | P2-5 |  | ROOF | T.FACADE.ROOF | 25 | KD | KD |  |  |  |
| P2.MR.2-8.140 |  | Roofing - Temp Watertight Systems / Main Roof - Stair 2-8 | 2d | 2025-11-17 A | 2025-11-18 A | P2.MR/PS.03.430, P2.FAC.1.Z3.240, P2.MR.2-8.110, P2.MR.2-8.120, P2.MR.2-8.130 | 100% | 2025-12-01 | 2025-12-02 |  |  | 16 | P2.07.55.9.010 | ROOF | P2-5 |  | ROOF |  | 25,45 | KD | JW | RF1 |  |  |
|  | 2 | **Roofing Finishes** |  | 2025-11-19 | 2026-04-09 |  |  |  |  |  |  |  |  |  |  |  |  |  |  |  |  |  |  |  |
| P2.MR.2-8.200 |  | Roofing - Permanent Systems / Main Roof - Stair 2-8 | 5d | 2025-11-19 A | 2025-11-21 A | P2.MR.2-8.140, P2.FAC.4.Z3.180 | 100% | 2025-12-08 | 2025-12-12 |  |  | 40 | P2.07.55.9.210 | ROOF | P2-5 |  | ROOF |  | 25 | KD | JW | RF1 |  |  |
| P2.MR.2-8.220 |  | Electronic Leak Detection Testing & Corrections / Main Roof - Stair 2-8 | 2d | 2025-12-08 A | 2025-12-08 A | P2.MR.2-8.200 | 100% | 2026-01-05 | 2026-01-06 |  |  | 16 | P2.07.01.9.210 | ROOF | P2-5 |  | ROOF |  | 25 | KD | JW |  | O | AT37 |
| P2.MR.2-8.210 |  | Flood Test / Main Roof - Stair 2-8 | 1d | 2026-04-01 | 2026-04-01 | P2.MR.2-8.200 |  |  |  | 35d | 4d | 8 | P2..07.01.9.110 | ROOF | P2-5 |  | ROOF |  | 25 | KD | JW |  | O | AT36 |
| P2.MR.2-8.230 |  | Metal Panels / Main Roof - Stair 2-8 | 5d | 2026-04-01 | 2026-04-07 | P2.MR.2-8.220 |  |  |  | 31d | 0d | 40 |  | MPANEL | P2-5 |  | MPANEL | ! | 20,56,98 | KD | JW |  | O | AT27 |
| P2.MR.2-8.240 |  | Roof Trim Out - All Trades / Main Roof - Stair 2-8 | 2d | 2026-04-08 | 2026-04-09 | P2.MR.2-8.230, P2.MR.2-8.210 |  |  |  | 31d | 0d | 16 | P2.07.62.9.210 | ROOF | P2-5 |  | ROOF |  | 25,56 | KD | JW |  | O |  |
|  | 6 | **Quality Control Inspections** |  | 2026-04-10 | 2026-04-20 |  |  |  |  |  |  |  |  |  |  |  |  |  |  |  |  |  |  |  |
| P2.MR.2-8.9000 |  | Trades Inspect & Verify Work Completed to Specs / Main Roof - Stair 2-8 | 2d | 2026-04-10 | 2026-04-13 | P2.MR.2-8.240 |  |  |  | 31d | 0d | 16 |  | T | P2-5 |  | T | ! |  | KD | JW |  | O |  |
| P2.MR.2-8.9010 |  | Inspect & Prepare Punchlist / Main Roof - Stair 2-8 | 1d | 2026-04-14 | 2026-04-14 | P2.MR.2-8.9000 |  |  |  | 31d | 0d | 8 |  | ARCH | P2-5 |  | ARCH | ! |  | KD | JW |  | O |  |
| P2.MR.2-8.9020 |  | Correct Punchlist / Main Roof - Stair 2-8 | 2d | 2026-04-15 | 2026-04-16 | P2.MR.2-8.9010 |  |  |  | 31d | 0d | 16 |  | T | P2-5 |  | T | ! |  | KD | JW |  | O |  |
| P2.MR.2-8.9030 |  | Final Inspection & Acceptance / Main Roof - Stair 2-8 | 2d | 2026-04-17 | 2026-04-20 | P2.MR.2-8.9020 |  |  |  | 31d | 39d | 16 |  | AHJ | P2-5 |  | AHJ | ! |  | KD | JW |  | O |  |
|  | 4 | **L10 - PENTHOUSE ROOF** |  | 2025-04-15 | 2026-05-06 |  |  |  |  |  |  |  |  |  |  |  |  |  |  |  |  |  |  |  |
|  | 1 | **Penthouse Roof - South Side** |  | 2025-04-15 | 2026-04-27 |  |  |  |  |  |  |  |  |  |  |  |  |  |  |  |  |  |  |  |
|  | 4 | **Weathertightness Prep** |  | 2025-05-01 | 2025-10-31 |  |  |  |  |  |  |  |  |  |  |  |  |  |  |  |  |  |  |  |
| P2.PR.S.1000 |  | Layout - All Trades / Penthouse Roof - South Side | 5d | 2025-05-01 A | 2025-05-07 A | P2.PR.03.410, P2.BIM.SUM.100 | 100% | 2025-06-02 | 2025-06-06 |  |  | 40 | P2.01.9.010 | R/I.OH | P2-5 | Harris | R/I.OH |  |  |  |  |  |  |  |
| P2.PR.S.1020 |  | Steel Supports for Equipment / Penthouse Roof - South Side | 10d | 2025-05-08 A | 2025-05-14 A | P2.PR.S.1000 | 100% | 2025-06-09 | 2025-06-20 |  |  | 40 | P2.03.10.110 | STEEL | P2-5 |  | STEEL | T.R/I.IW.MECH |  |  |  |  |  | AT39 |
| P2.PR.S.1030 |  | Facade Maint Equip - R/I / Penthouse Roof - South Side | 5d | 2025-05-08 A | 2025-05-14 A | P2.PR.S.1000 | 100% | 2025-06-09 | 2025-06-13 |  |  | 40 | P2.11.2410.110 | EXMAINT | P2-5 |  | EXMAINT | ! |  |  |  |  |  |  |
| P2.PR.S.1040 |  | Fall Protection Anchors / Penthouse Roof - South Side | 5d | 2025-05-15 A | 2025-05-21 A | P2.PR.S.1000, P2.PR.S.1030 | 100% | 2025-06-16 | 2025-06-20 |  |  | 40 | P2.41.67.10.110 | EXMAINT | P2-5 |  | EXMAINT | T.MISCMTL |  |  |  |  |  | AT40 |
| P2.PR.S.1050 |  | MEP - Penetrations, Sleeves, Supports & Pathways / Penthouse Roof - South Side | 5d | 2025-05-22 A | 2025-05-29 A | P2.PR.S.1000, P2.PR.S.1040 | 100% | 2025-06-23 | 2025-06-27 |  |  | 40 | P2.20.05.9.110 | R/I.OH | P2-5 | Harris | R/I.OH |  |  |  |  |  |  |  |
| P2.PR.S.1060 |  | Set & Connect Roof Drains / Penthouse Roof - South Side | 5d | 2025-05-22 A | 2025-05-29 A | P2.PR.S.1050 SS, P2.PR.S.1000 | 100% | 2025-06-23 | 2025-06-27 |  |  | 40 | P2.22.14.9.110 | PLMB | P2-5 | Harris | PLMB |  |  |  |  |  |  |  |
| P2.PR.S.1010 |  | Prefabricated Curbs and Flashing / Penthouse Roof - South Side | 10d | 2025-05-30 A | 2025-07-30 A | P2.PR.S.1000, P2.PR.S.1060 | 100% | 2025-06-30 | 2025-07-14 |  |  | 40 |  | HVAC | P2-5 | Harris | HVAC | T.FACADE.ROOF |  | KD | KD |  |  |  |
| P2.PR.S.1070 |  | Prefabricated Roof Hatch / Penthouse Roof - South Side | 2d | 2025-07-21 A | 2025-07-23 A | P2.PR.S.1000, P2.PR.S.1010 | 100% | 2025-08-11 | 2025-08-12 |  |  | 40 |  | ROOF | P2-5 |  | ROOF | T.FACADE.ROOF | 25 | KD | KD |  |  |  |
| P2.PR.S.1080 |  | Roofing - Temp Watertight Systems / Penthouse Roof - South Side | 20d | 2025-08-25 A | 2025-10-31 A | P2.PR.S.1070 SS+2d, P2.FAC.1.Z1.260, P2.FAC.1.Z1.230, P2.PR.S.1010 FF, P2.PR.S.1050, P2.PR.S.1060, P2.PR.S.1020, P2.PR.S.1030, P2.PR.S.1040, P2.PR.S.1100, P2.PR.S.1090 | 100% | 2025-08-01 | 2025-08-28 |  |  | 40 | P2.07.55.9.010 | ROOF | P2-5 |  | ROOF |  | 25,45 | KD | KD | RF1 |  |  |

| ID | WBS | Activity | Duration | Start | Finish | Predecessors | Complete | Remaining | Planned start | Planned finish | Total float | Free float | Temp Orig Dur | Testing Type | Act ID Temp | *NIH Resp Check* | Resp / SRLM | PHASE | Z.RESP | RESP / Trade | 744 | RESP UPD | Update Status | SRLM - Crew | Trade Review Notes |
| --- | --- | --- | --- | --- | --- | --- | --- | --- | --- | --- | --- | --- | --- | --- | --- | --- | --- | --- | --- | --- | --- | --- | --- | --- | --- |
|  | 1 | **Rooftop MEP** |  | 2025-04-15 | 2026-04-09 |  |  |  |  |  |  |  |  |  |  |  |  |  |  |  |  |  |  |  |  |
| P2.PR.S.1090 |  | Support Frames - Rooftop Duct / Penthouse Roof - South Side | 5d | 2025-04-15 A | 2025-05-30 A | P2.PR.03.510 | 100% |  | 2025-05-01 | 2025-05-07 |  |  | 40 | AT41 | P2.05.45.10.110 | ! | HVAC | P2-5 | Harris | HVAC |  |  |  |  |  |
| P2.PR.S.1100 |  | Support Frames - Rooftop Stacks / Penthouse Roof - South Side | 5d | 2025-04-17 A | 2025-07-30 A | P2.PR.03.520 | 100% |  | 2025-05-22 | 2025-05-29 |  |  | 40 | AT41 | P2.05.45.10.210 | ! | HVAC | P2-5 | Harris | HVAC | KD | KD |  |  |  |
| P2.PR.S.1120 |  | VFD's - Set and Connect / Penthouse Roof - South Side | 5d | 2025-09-22 A | 2025-10-07 A | P2.PR.N.1110, P1.BGS.280, P1.BGS.190 | 100% |  | 2025-11-12 | 2025-11-18 |  |  | 40 |  | P2.40.9210.110 | ! | HVAC | P2-5 | Harris | HVAC | KD | KD |  |  |  |
| P2.PR.S.1110 |  | HVAC Equip - Set and Connect / Penthouse Roof - South Side | 15d | 2025-10-01 A | 2025-11-13 A | P1.BGS.190 FF, P2.PR.S.1080 FF, P1.BGS.280 | 100% |  | 2025-10-01 | 2025-10-21 |  |  | 40 |  | P2.23.749.110 |  | HVAC | P2-5 | Harris | HVAC | KD | JW |  |  |  |
| P2.PR.S.1130 |  | HVAC Duct - R/I / Penthouse Roof - South Side | 20d | 2025-10-15 A | 2026-04-09 | P2.PR.N.1120, P2.PR.S.1090 | 65% | 7d | 2025-10-30 | 2025-11-26 | 40d | 0d | 40 |  | P2.23.30.10.110 | ! | HVAC | P2-5 | Harris | HVAC | KD | JW | O |  |  |
| P2.PR.S.1140 |  | HVAC Duct - Stack R/I / Penthouse Roof - South Side | 5d | 2025-11-03 A | 2025-11-06 A | P2.PR.S.1100 | 100% |  | 2026-02-02 | 2026-02-06 |  |  | 40 |  | P2.23.30.10.120 | ! | HVAC | P2-5 | Harris | HVAC | KD | JW |  |  |  |
| P2.PR.S.1150 |  | MEP - Piping & Equip Tie In / Penthouse Roof - South Side | 5d | 2026-04-01 | 2026-04-07 | P2.PR.S.1140 |  |  |  |  | 22d | 25d | 40 |  | P2.25.059.110 |  | BAS | P2-5 | Harris | BAS-1 |  | JW |  |  |  |
|  | 2 | **Roofing Finishes** |  | 2025-07-22 | 2026-04-16 |  |  |  |  |  |  |  |  |  |  |  |  |  |  |  |  |  |  |  |  |
| P2.PR.S.2070 |  | Roofing - Standing Seam on Mech-Tower / South Mech Tower - East Side | 5d | 2025-07-22 A | 2025-08-28 A | P2.PH.S.1050 | 100% |  | 2025-08-07 | 2025-08-13 |  |  | 40 |  | P2.07.55.9.210 |  | ROOF | P2-5 |  | ROOF | KD | KD |  | RF1 | 25 |
| P2.PR.S.9040 |  | Roofing - Standing Seam on Mech-Tower / South Mech Tower - West Side | 5d | 2025-07-28 A | 2025-08-25 A | P2.PR.S.2070 | 100% |  | 2025-08-14 | 2025-08-20 |  |  | 40 |  | P2.07.55.9.210 |  | ROOF | P2-5 |  | ROOF | KD | KD |  | RF1 | 25 |
| P2.PR.S.2000 |  | Roofing - Permanent Systems / Penthouse Roof - South Side | 15d | 2025-08-06 A | 2025-08-28 A | P2.PR.S.1080 | 100% |  | 2025-08-29 | 2025-09-19 |  |  | 40 |  | P2.07.55.9.210 |  | ROOF | P2-5 |  | ROOF | KD | KD |  | RF1 | 25 |
| P2.PR.S.2010 |  | Flood Test / Penthouse Roof - South Side | 2d | 2025-09-29 A | 2025-09-30 A | P2.PR.S.2000 | 100% |  | 2025-10-08 | 2025-10-09 |  |  | 16 | AT36 | P2..07.01.9.110 |  | ROOF | P2-5 |  | ROOF | KD | KD | O |  | 25 |
| P2.PR.S.2020 |  | Electronic Leak Detection Testing & Corrections / Penthouse Roof - South Side | 3d | 2025-09-29 A | 2025-09-30 A | P2.PR.S.2010 | 100% |  | 2025-10-10 | 2025-10-14 |  |  | 24 | AT37 | P2.07.01.9.210 |  | ROOF | P2-5 |  | ROOF | KD | KD | O |  | 25 |
| P2.PR.S.2060 |  | Ladders & Stairs / Penthouse Roof - South Side | 5d | 2025-11-11 A | 2025-11-11 A | P2.PR.S.2000 | 100% |  | 2026-01-14 | 2026-01-20 |  |  | 40 | AT38 | P2.26.41.9.110 | ! | MISCMTL | P2-5 |  | MISCMTL | KD | JW |  |  |  |
| P2.PR.S.2030 |  | Roof Pavers (RS-01) / Penthouse Roof - South Side | 20d | 2025-12-09 A | 2026-04-03 | P2.PR.S.2020 | 85% | 3d | 2026-01-02 | 2026-01-29 | 207d | 0d | 40 |  | P2.07.76.9.110 |  | ROOF | P2-5 |  | ROOF | KD | JW | O |  | 25 |
| P2.PR.S.2040 |  | Metal Panels / Penthouse Roof - South Side | 5d | 2026-03-02 A | 2026-04-09 | P2.PR.S.2030 | 20% | 4d | 2026-03-09 | 2026-03-13 | 207d | 0d | 40 | AT27 |  | ! | MPANEL | P2-5 |  | MPANEL | KD | JW | O |  | 20,56,98 |
| P2.PR.S.2050 |  | Roof Trim Out - All Trades / Penthouse Roof - South Side | 5d | 2026-04-10 | 2026-04-16 | P2.PR.S.2040 |  |  |  |  | 207d | 0d | 40 |  | P2.07.62.9.210 |  | ROOF | P2-5 |  | ROOF | KD | JW |  |  | 25,56 |
|  | 6 | **Quality Control Inspections** |  | 2026-04-17 | 2026-04-27 |  |  |  |  |  |  |  |  |  |  |  |  |  |  |  |  |  |  |  |  |
| P2.PR.S.9000 |  | Trades Inspect & Verify Work Completed to Specs / Penthouse Roof - South Side | 2d | 2026-04-17 | 2026-04-20 | P2.PR.S.2060, P2.PR.S.2050 |  |  |  |  | 207d | 0d | 16 |  |  | ! | T | P2-5 |  | T | KD | JW |  |  |  |
| P2.PR.S.9010 |  | Inspect & Prepare Punchlist / Penthouse Roof - South Side | 1d | 2026-04-21 | 2026-04-21 | P2.PR.S.9000 |  |  |  |  | 207d | 0d | 8 |  |  | ! | ARCH | P2-5 |  | ARCH | KD | JW |  |  |  |
| P2.PR.S.9020 |  | Correct Punchlist / Penthouse Roof - South Side | 2d | 2026-04-22 | 2026-04-23 | P2.PR.S.9010 |  |  |  |  | 207d | 0d | 16 |  |  | ! | T | P2-5 |  | T | KD | JW |  |  |  |
| P2.PR.S.9030 |  | Final Inspection & Acceptance / Penthouse Roof - South Side | 2d | 2026-04-24 | 2026-04-27 | P2.PR.S.9020 |  |  |  |  | 207d | 219d | 16 |  |  | ! | AHJ | P2-5 |  | AHJ | KD | JW |  |  |  |
|  | 3 | **Penthouse Roof - North Side** |  | 2025-04-18 | 2026-05-06 |  |  |  |  |  |  |  |  |  |  |  |  |  |  |  |  |  |  |  |  |
|  | 4 | **Weathertightness Prep** |  | 2025-05-01 | 2025-08-25 |  |  |  |  |  |  |  |  |  |  |  |  |  |  |  |  |  |  |  |  |
| P2.PR.N.1000 |  | Layout - All Trades / Penthouse Roof - North Side | 5d | 2025-05-01 A | 2025-05-07 A | P2.PR.03.420 | 100% |  | 2025-06-02 | 2025-06-06 |  |  | 40 |  | P2.01.9.010 |  | R/I.OH | P2-5 | Harris | R/I.OH |  |  |  |  |  |
| P2.PR.N.1020 |  | Steel for Mech Equipment / Penthouse Roof - North Side | 10d | 2025-05-08 A | 2025-05-21 A | P2.PR.N.1000 | 100% |  | 2025-06-09 | 2025-06-20 |  |  | 40 | AT39 | P2.03.10.110 | T.R/I.IW.MECH | STEEL | P2-5 |  | STEEL |  |  |  |  |  |
| P2.PR.N.1030 |  | Facade Maint Equip - R/I / Penthouse Roof - North Side | 5d | 2025-05-08 A | 2025-05-14 A | P2.PR.N.1000 | 100% |  | 2025-06-09 | 2025-06-13 |  |  | 40 |  | P2.11.2410.110 | ! | EXMAINT | P2-5 |  | EXMAINT |  |  |  |  |  |
| P2.PR.N.1040 |  | Fall Protection Anchors / Penthouse Roof - North Side | 5d | 2025-05-15 A | 2025-05-21 A | P2.PR.N.1030, P2.PR.N.1000 | 100% |  | 2025-06-16 | 2025-06-20 |  |  | 40 | AT40 | P2.41.67.10.110 | T.MISCMTL | EXMAINT | P2-5 |  | EXMAINT |  |  |  |  |  |
| P2.PR.N.1050 |  | MEP - Penetrations, Sleeves, Supports & Pathways / Penthouse Roof - North Side | 5d | 2025-05-22 A | 2025-05-29 A | P2.PR.N.1040, P2.PR.N.1000 | 100% |  | 2025-06-23 | 2025-06-27 |  |  | 40 |  | P2.20.05.9.110 |  | R/I.OH | P2-5 | Harris | R/I.OH |  |  |  |  |  |
| P2.PR.N.1060 |  | Set & Connect Roof Drains / Penthouse Roof - North Side | 5d | 2025-05-22 A | 2025-05-29 A | P2.PR.N.1050 SS, P2.PR.N.1000 | 100% |  | 2025-06-23 | 2025-06-27 |  |  | 40 |  | P2.22.14.9.110 |  | PLMB | P2-5 | Harris | PLMB |  |  |  |  |  |
| P2.PR.N.1010 |  | Prefabricated Curbs and Flashing / Penthouse Roof - North Side | 10d | 2025-05-30 A | 2025-07-25 A | P2.PR.N.1000, P2.PR.N.1060 | 100% |  | 2025-06-30 | 2025-07-14 |  |  | 40 |  |  | T.FACADE.ROOF | HVAC | P2-5 | Harris | HVAC | KD | KD |  |  |  |
| P2.PR.N.1070 |  | Prefabricated Roof Hatch / Penthouse Roof - North Side | 5d | 2025-07-22 A | 2025-07-23 A | P2.PR.N.1010, P2.PR.N.1000 | 100% |  | 2025-08-04 | 2025-08-08 |  |  | 40 |  |  | T.FACADE.ROOF | ROOF | P2-5 |  | ROOF | KD | KD |  |  | 25 |
| P2.PR.N.1080 |  | Roofing - Temp Watertight Systems / Penthouse Roof - North Side | 20d | 2025-07-28 A | 2025-08-25 A | P2.PR.N.1010 FF, P2.PR.N.1070 SS+2d, P2.FAC.1.Z3.250, P2.PR.N.1020, P2.PR.N.1030, P2.PR.N.1040, P2.PR.S.1080 FF+10d, P2.PR.N.1090, P2.PR.N.1100, P2.PR.N.1010, P2.PR.N.1050, P2.PR.N.1060 | 100% |  | 2025-08-27 | 2025-09-24 |  |  | 40 |  | P2.07.55.9.010 |  | ROOF | P2-5 |  | ROOF | KD | KD |  | RF1 | 25,45 |

| ID | WBS | Activity | Duration | Start | Finish | Predecessors | Complete | Remaining | Planned start | Planned finish | Total float | Free float | Temp Orig Dur | Testing Type | Act ID Temp | *NIH Resp Check* | Resp / SRLM | PHASE | Z.RESP | RESP / Trade | Update Status | 744 | RESP UPD | Trade Review Notes | SRLM - Crew |
| --- | --- | --- | --- | --- | --- | --- | --- | --- | --- | --- | --- | --- | --- | --- | --- | --- | --- | --- | --- | --- | --- | --- | --- | --- | --- |
|  | 1 | **Rooftop MEP** |  | 2025-04-18 | 2026-05-06 |  |  |  |  |  |  |  |  |  |  |  |  |  |  |  |  |  |  |  |  |
| P2.PR.N.1090 |  | Support Frames - Rooftop Duct / Penthouse Roof - North Side | 5d | 2025-04-18 A | 2025-05-05 A | P2.PR.03.520 | 100% |  | 2025-05-22 | 2025-05-29 |  |  | 40 | AT41 | P2.05.45.10.110 | ! | HVAC | P2-5 | Harris | HVAC |  |  |  |  |  |
| P2.PR.N.1100 |  | Support Frames - Rooftop Stacks / Penthouse Roof - North Side | 5d | 2025-04-25 A | 2025-05-27 A | P2.PR.03.510, P2.PR.N.1090 | 100% |  | 2025-05-30 | 2025-06-05 |  |  | 40 | AT41 | P2.05.45.10.210 | ! | HVAC | P2-5 | Harris | HVAC |  |  |  |  |  |
| P2.PR.N.1110 |  | HVAC Equip - Set and Connect / Penthouse Roof - North Side | 15d | 2025-09-22 A | 2025-09-22 A | P2.PR.N.1080 FF, P2.PR.S.1110, P1.BGS.280 | 100% |  | 2025-10-22 | 2025-11-11 |  |  | 40 |  | P2.23.749.110 |  | HVAC | P2-5 | Harris | HVAC | O | KD | KD |  |  |
| P2.PR.N.1120 |  | VFD's - Set and Connect / Penthouse Roof - North Side | 5d | 2025-09-30 A | 2025-10-07 A | P2.PR.S.1120, P1.BGS.280 | 100% |  | 2025-11-19 | 2025-11-25 |  |  | 40 |  | P2.40.9210.110 | ! | HVAC | P2-5 | Harris | HVAC |  | KD | KD |  |  |
| P2.PR.N.1140 |  | HVAC Duct - Stack R/I / Penthouse Roof - North Side | 0d | 2025-11-12 A | 2025-11-13 A | P2.PR.N.1100, P2.PR.S.1140 | 100% |  | 2026-02-09 | 2026-02-09 |  |  | 40 |  | P2.23.30.10.120 | ! | HVAC | P2-5 | Harris | HVAC |  |  | JW |  |  |
| P2.PR.N.1130 |  | HVAC Duct - R/I / Penthouse Roof - North Side | 20d | 2026-01-05 A | 2026-04-29 | P2.PR.N.1090, P2.PR.S.1130 | 30% | 14d | 2026-01-16 | 2026-02-12 | 40d | 0d | 40 |  | P2.23.30.10.110 | ! | HVAC | P2-5 | Harris | HVAC | O | KD | JW |  |  |
| P2.PR.N.1150 |  | MEP - Piping & Equip Tie In / Penthouse Roof - North Side | 5d | 2026-04-30 | 2026-05-06 | P2.PR.N.1140, P2.PR.N.1130 |  |  |  |  | 40d | 42d | 40 |  | P2.25.059.110 |  | BAS | P2-5 | Harris | BAS-1 |  |  | JW |  |  |
|  | 2 | **Roofing Finishes** |  | 2025-09-02 | 2026-04-07 |  |  |  |  |  |  |  |  |  |  |  |  |  |  |  |  |  |  |  |  |
| P2.PR.N.2010 |  | Flood Test / Penthouse Roof - North Side | 2d | 2025-09-02 A | 2025-09-02 A | P2.PR.N.2000 | 100% |  | 2025-11-12 | 2025-11-13 |  |  | 16 | AT36 | P2..07.01.9.110 |  | ROOF | P2-5 |  | ROOF |  | KD | KD | 25 |  |
| P2.PR.N.2020 |  | Electronic Leak Detection Testing & Corrections / Penthouse Roof - North Side | 3d | 2025-09-02 A | 2025-09-02 A | P2.PR.N.2010 | 100% |  | 2025-11-14 | 2025-11-18 |  |  | 24 | AT37 | P2.07.01.9.210 |  | ROOF | P2-5 |  | ROOF |  | KD | KD | 25 |  |
| P2.PR.N.2000 |  | Roofing - Permanent Systems / Penthouse Roof - North Side | 15d | 2025-09-10 A | 2025-09-25 A | P2.PR.N.1080, P2.PR.S.2010 | 100% |  | 2025-10-22 | 2025-11-11 |  |  | 40 |  | P2.07.55.9.210 |  | ROOF | P2-5 |  | ROOF | O | KD | KD | 25 | RF1 |
| P2.PR.N.2030 |  | Roof Pavers (RS-01) / Penthouse Roof - North Side | 20d | 2025-09-12 A | 2025-12-24 A | P2.PR.N.2020 | 100% |  | 2025-11-19 | 2025-12-18 |  |  | 40 |  | P2.07.76.9.110 |  | ROOF | P2-5 |  | ROOF | O | KD | JW | 25 |  |
| P2.PR.N.2040 |  | Metal Panels / Penthouse Roof - North Side | 5d | 2026-03-02 A | 2026-03-13 A | P2.PR.N.2030 | 100% |  | 2026-03-02 | 2026-03-06 |  |  | 40 | AT27 |  | ! | MPANEL | P2-5 |  | MPANEL | O | KD | JW | 20,56,98 |  |
| P2.PR.N.2060 |  | Ladders & Stairs / Penthouse Roof - North Side | 5d | 2026-03-09 A | 2026-03-11 A | P2.PR.N.2030 | 100% |  | 2026-03-16 | 2026-03-20 |  |  | 40 | AT38 | P2.26.41.9.110 | ! | MISCMTL | P2-5 |  | MISCMTL | O | KD | JW |  |  |
| P2.PR.N.2050 |  | Roof Trim Out - All Trades / Penthouse Roof - North Side | 5d | 2026-04-01 | 2026-04-07 | P2.PR.N.2040 |  |  |  |  | 214d | 0d | 40 |  | P2.07.62.9.210 |  | ROOF | P2-5 |  | ROOF | O | KD | JW | 25,56 |  |
|  | 6 | **Quality Control Inspections** |  | 2026-04-08 | 2026-04-16 |  |  |  |  |  |  |  |  |  |  |  |  |  |  |  |  |  |  |  |  |
| P2.PR.N.9000 |  | Trades Inspect & Verify Work Completed to Specs / Penthouse Roof - North Side | 2d | 2026-04-08 | 2026-04-09 | P2.PR.N.2060, P2.PR.N.2050 |  |  |  |  | 214d | 0d | 16 |  |  | ! | T | P2-5 |  | T |  | KD | JW |  |  |
| P2.PR.N.9010 |  | Inspect & Prepare Punchlist / Penthouse Roof - North Side | 1d | 2026-04-10 | 2026-04-10 | P2.PR.N.9000 |  |  |  |  | 214d | 0d | 8 |  |  | ! | ARCH | P2-5 |  | ARCH |  |  | JW |  |  |
| P2.PR.N.9020 |  | Correct Punchlist / Penthouse Roof - North Side | 2d | 2026-04-13 | 2026-04-14 | P2.PR.N.9010 |  |  |  |  | 214d | 0d | 16 |  |  | ! | T | P2-5 |  | T |  |  | JW |  |  |
| P2.PR.N.9030 |  | Final Inspection & Acceptance / Penthouse Roof - North Side | 2d | 2026-04-15 | 2026-04-16 | P2.PR.N.9020 |  |  |  |  | 214d | 226d | 16 |  |  | ! | AHJ | P2-5 |  | AHJ |  |  | JW |  |  |
|  | 5 | **L10 - ELEVATOR MACHINE ROOM ROOF (EMMR) - GROUP 2** |  | 2025-07-21 | 2026-04-13 |  |  |  |  |  |  |  |  |  |  |  |  |  |  |  |  |  |  |  |  |
|  | 4 | **Weathertightness Prep** |  | 2025-07-21 | 2025-07-31 |  |  |  |  |  |  |  |  |  |  |  |  |  |  |  |  |  |  |  |  |
| P2.PR.EMRR.2.100 |  | Layout - All Trades / Upper Penthouse Roof - Group 2 EMR | 2d | 2025-07-21 A | 2025-07-22 A | P2.PR.03.420, P2.EMRR.03.510, P2.MR.EMT.2070 | 100% |  | 2025-08-20 | 2025-08-21 |  |  | 16 |  | P2.01.9.010 |  | R/I.OH | P2-5 | Harris | R/I.OH |  | KD | KD |  |  |
| P2.PR.EMRR.2.150 |  | Framing & Sheathing of Parapets / Upper Penthouse Roof - Group 2 EMR | 5d | 2025-07-22 A | 2025-07-24 A | P2.PR.EMRR.2.130, P2.PR.EMRR.2.100 | 100% |  | 2025-08-28 | 2025-09-04 |  |  | 16 |  | P2.01.9.010 |  | GYP | P2-5 |  | GYP |  | KD | KD |  |  |
| P2.PR.EMRR.2.110 |  | MEP - Penetrations, Sleeves, Supports & Pathways / Upper Penthouse Roof - Group 2 EMR | 2d | 2025-07-23 A | 2025-07-24 A | P2.PR.EMRR.2.100 | 100% |  | 2025-08-22 | 2025-08-25 |  |  | 16 |  | P2.20.05.9.110 |  | R/I.OH | P2-5 | Harris | R/I.OH |  | KD | KD |  |  |
| P2.PR.EMRR.2.120 |  | Set & Connect Roof Drains / Upper Penthouse Roof - Group 2 EMR | 2d | 2025-07-23 A | 2025-07-24 A | P2.PR.EMRR.2.100 | 100% |  | 2025-08-22 | 2025-08-25 |  |  | 16 |  | P2.22.14.9.110 |  | PLMB | P2-5 | Harris | PLMB |  | KD | KD |  |  |
| P2.PR.EMRR.2.130 |  | Prefabricated Roof Hatch / Upper Penthouse Roof - Group 2 EMR | 2d | 2025-07-25 A | 2025-07-28 A | P2.PR.EMRR.2.120, P2.PR.EMRR.2.100 | 100% |  | 2025-08-26 | 2025-08-27 |  |  | 16 |  |  | T.FACADE.ROOF | ROOF | P2-5 |  | ROOF |  | KD | KD | 25 |  |
| P2.PR.EMRR.2.140 |  | Roofing - Temp Watertight Systems / Upper Penthouse Roof - Group 2 EMR | 2d | 2025-07-25 A | 2025-07-31 A | P2.EMRR.03.410, P2.PR.EMRR.2.120, P2.PR.EMRR.2.130, P2.PR.EMRR.2.150, P2.PR.EMRR.2.110 | 100% |  | 2025-09-05 | 2025-09-08 |  |  | 16 |  | P2.07.55.9.010 |  | ROOF | P2-5 |  | ROOF |  | KD | KD | 25,45 | RF1 |

| ID | WBS | Activity | Duration | Start | Finish | Predecessors | Complete | Planned start | Planned finish | Total float | Free float | Temp Orig Dur | Act ID Temp | SRLM - Crew | Trade Review Notes | Resp / SRLM | 744 | PHASE | RESP UPD | RESP / Trade | Update Status | Testing Type | *NIH Resp Check* | Z.RESP |
| --- | --- | --- | --- | --- | --- | --- | --- | --- | --- | --- | --- | --- | --- | --- | --- | --- | --- | --- | --- | --- | --- | --- | --- | --- |
|  | 2 | **Roofing Finishes** |  | 2025-10-01 | 2026-04-02 |  |  |  |  |  |  |  |  |  |  |  |  |  |  |  |  |  |  |  |
| P2.PR.EMRR.2.200 |  | Roofing - Permanent Systems / Upper Penthouse Roof - Group 2 EMR | 5d | 2025-10-01 A | 2025-10-07 A | P2.EMRR.03.610, P2.PR.EMRR.2.140 | 100% |  |  |  |  | 40 | P2.07.55.9.210 | RF1 | 25 | ROOF | KD | P2-5 | KD | ROOF |  |  |  |  |
| P2.PR.EMRR.2.210 |  | Flood Test / Upper Penthouse Roof - Group 2 EMR | 1d | 2025-12-08 A | 2025-12-08 A | P2.PR.EMRR.2.200 | 100% | 2026-01-02 | 2026-01-02 |  |  | 8 | P2..07.01.9.110 |  | 25 | ROOF | KD | P2-5 | JW | ROOF | O | AT36 |  |  |
| P2.PR.EMRR.2.220 |  | Electronic Leak Detection Testing & Corrections / Upper Penthouse Roof - Group 2 EMR | 2d | 2025-12-08 A | 2025-12-08 A | P2.PR.EMRR.2.210 | 100% | 2026-01-05 | 2026-01-06 |  |  | 16 | P2.07.01.9.210 |  | 25 | ROOF | KD | P2-5 | JW | ROOF | O | AT37 |  |  |
| P2.PR.EMRR.2.230 |  | Metal Panels / Upper Penthouse Roof - Group 2 EMR | 5d | 2026-03-16 A | 2026-03-18 A | P2.PR.EMRR.2.220 FF, P2.PR.EMRR.2.220 | 100% | 2026-03-02 | 2026-03-06 |  |  | 40 |  |  | 20,56,98 | MPANEL | KD | P2-5 | JW | MPANEL | O | AT27 | ! |  |
| P2.PR.EMRR.2.240 |  | Roof Trim Out - All Trades / Upper Penthouse Roof - Group 2 EMR | 2d | 2026-04-01 | 2026-04-02 | P2.PR.EMRR.2.230 |  |  |  | 36d | 0d | 16 | P2.07.62.9.210 |  | 25,56 | ROOF | KD | P2-5 | JW | ROOF | O |  |  |  |
|  | 6 | **Quality Control Inspections** |  | 2026-04-03 | 2026-04-13 |  |  |  |  |  |  |  |  |  |  |  |  |  |  |  |  |  |  |  |
| P2.PR.EMMR.2.9000 |  | Trades Inspect & Verify Work Completed to Specs / Upper Penthouse Roof - Group 2 EMR | 2d | 2026-04-03 | 2026-04-06 | P2.PR.EMRR.2.240 |  |  |  | 36d | 0d | 16 |  |  |  | T | KD | P2-5 | JW | T | O |  | ! |  |
| P2.PR.EMMR.2.9010 |  | Inspect & Prepare Punchlist / Upper Penthouse Roof - Group 2 EMR | 1d | 2026-04-07 | 2026-04-07 | P2.PR.EMMR.2.9000 |  |  |  | 36d | 0d | 8 |  |  |  | ARCH | KD | P2-5 | JW | ARCH | O |  | ! |  |
| P2.PR.EMMR.2.9020 |  | Correct Punchlist / Upper Penthouse Roof - Group 2 EMR | 2d | 2026-04-08 | 2026-04-09 | P2.PR.EMMR.2.9010 |  |  |  | 36d | 0d | 16 |  |  |  | T | KD | P2-5 | JW | T | O |  | ! |  |
| P2.PR.EMMR.2.9030 |  | Final Inspection & Acceptance / Upper Penthouse Roof - Group 2 EMR | 2d | 2026-04-10 | 2026-04-13 | P2.PR.EMMR.2.9020 |  |  |  | 36d | 44d | 16 |  |  |  | AHJ | KD | P2-5 | JW | AHJ | O |  | ! |  |
|  | 9 | **L11 - HIGH ROOF / Stair 5-9** |  | 2025-05-29 | 2026-04-13 |  |  |  |  |  |  |  |  |  |  |  |  |  |  |  |  |  |  |  |
|  | 4 | **Weathertightness Prep** |  | 2025-05-29 | 2025-07-30 |  |  |  |  |  |  |  |  |  |  |  |  |  |  |  |  |  |  |  |
| P2.L11.5-9.100 |  | Layout - All Trades / High Roof - Stair 5-9 | 2d | 2025-05-29 A | 2025-07-01 A | P2.EMRR.03.410 | 100% | 2025-06-02 | 2025-06-03 |  |  | 16 | P2.01.9.010 |  |  | R/I.OH | KD | P2-5 | KD | R/I.OH |  |  |  | Harris |
| P2.L11.5-9.150 |  | Framing and Sheathing of Parapets / High Roof - Stair 5-9 | 5d | 2025-07-01 A | 2025-07-22 A | P2.L11.5-9.130, P2.L11.5-9.100 | 100% | 2025-08-08 | 2025-08-14 |  |  | 16 | P2.01.9.010 |  |  | GYP | KD | P2-5 | KD | GYP |  |  |  |  |
| P2.L11.5-9.110 |  | MEP - Penetrations, Sleeves, Supports & Pathways / High Roof - Stair 5-9 | 2d | 2025-07-02 A | 2025-07-03 A | P2.L11.5-9.100 | 100% | 2025-08-04 | 2025-08-05 |  |  | 16 | P2.20.05.9.110 |  |  | R/I.OH | KD | P2-5 | KD | R/I.OH |  |  |  | Harris |
| P2.L11.5-9.120 |  | Set & Connect Roof Drains / High Roof - Stair 5-9 | 2d | 2025-07-02 A | 2025-07-03 A | P2.L11.5-9.100 | 100% | 2025-08-04 | 2025-08-05 |  |  | 16 | P2.22.14.9.110 |  |  | PLMB | KD | P2-5 | KD | PLMB |  |  |  | Harris |
| P2.L11.5-9.130 |  | Prefabricated Roof Hatch / High Roof - Stair 5-9 | 2d | 2025-07-22 A | 2025-07-23 A | P2.L11.5-9.100, P2.L11.5-9.120 | 100% | 2025-08-06 | 2025-08-07 |  |  | 16 |  |  | 25 | ROOF | KD | P2-5 | KD | ROOF |  |  | T.FACADE.ROOF |  |
| P2.L11.5-9.140 |  | Roofing - Temp Watertight Systems / High Roof - Stair 5-9 | 2d | 2025-07-24 A | 2025-07-30 A | P2.FAC.1.Z1.240, P2.L11.EMMR.3.140, P2.L11.5-9.130, P2.L11.5-9.150, P2.L11.5-9.110, P2.L11.5-9.120 | 100% | 2025-09-11 | 2025-09-12 |  |  | 16 | P2.07.55.9.010 | RF1 | 25,45 | ROOF | KD | P2-5 | KD | ROOF |  |  |  |  |
|  | 2 | **Roofing Finishes** |  | 2025-10-01 | 2026-04-02 |  |  |  |  |  |  |  |  |  |  |  |  |  |  |  |  |  |  |  |
| P2.L11.5-9.200 |  | Roofing - Permanent Systems / High Roof - Stair 5-9 | 5d | 2025-10-01 A | 2025-10-08 A | P2.FAC.2.Z1.160, P2.L11.5-9.140 | 100% | 2025-11-03 | 2025-11-07 |  |  | 40 | P2.07.55.9.210 | RF1 | 25 | ROOF | KD | P2-5 | KD | ROOF |  |  |  |  |
| P2.L11.5-9.210 |  | Flood Test / High Roof - Stair 5-9 | 1d | 2025-10-10 A | 2025-10-10 A | P2.L11.5-9.200 | 100% |  |  |  |  | 8 | P2..07.01.9.110 |  | 25 | ROOF | KD | P2-5 | KD | ROOF |  | AT36 |  |  |
| P2.L11.5-9.220 |  | Electronic Leak Detection Testing & Corrections / High Roof - Stair 5-9 | 2d | 2025-12-08 A | 2025-12-08 A | P2.L11.5-9.210 | 100% | 2026-01-02 | 2026-01-05 |  |  | 16 | P2.07.01.9.210 |  | 25 | ROOF | KD | P2-5 | JW | ROOF | O | AT37 |  |  |
| P2.L11.5-9.230 |  | Metal Panels / High Roof - Stair 5-9 | 5d | 2026-03-16 A | 2026-03-18 A | P2.FAC.1.Z1.270, P2.L11.5-9.220 | 100% | 2026-03-02 | 2026-03-06 |  |  | 40 |  |  | 20,56,98 | MPANEL | KD | P2-5 | JW | MPANEL | O | AT27 | ! |  |
| P2.L11.5-9.240 |  | Roof Trim Out - All Trades / High Roof - Stair 5-9 | 2d | 2026-04-01 | 2026-04-02 | P2.L11.5-9.230 |  |  |  | 36d | 0d | 16 | P2.07.62.9.210 |  | 25,56 | ROOF | KD | P2-5 | JW | ROOF | O |  |  |  |

| ID | WBS | Activity | Duration | Start | Finish | Predecessors | Complete | Planned start | Planned finish | Total float | Free float | Temp Orig Dur | Update Status | *NIH Resp Check* | Resp / SRLM | 744 | PHASE | RESP UPD | RESP / Trade | Act ID Temp | Z.RESP | Trade Review Notes | SRLM - Crew | Testing Type |
| --- | --- | --- | --- | --- | --- | --- | --- | --- | --- | --- | --- | --- | --- | --- | --- | --- | --- | --- | --- | --- | --- | --- | --- | --- |
|  | 6 | **Quality Control Inspections** |  | 2026-04-03 | 2026-04-13 |  |  |  |  |  |  |  |  |  |  |  |  |  |  |  |  |  |  |  |
| P2.L11.5-9.9000 |  | Trades Inspect & Verify Work Completed to Specs / High Roof - Stair 5-9 | 2d | 2026-04-03 | 2026-04-06 | P2.L11.5-9.240 |  |  |  | 36d | 0d | 16 | O | ! | T | KD | P2-5 | JW | T |  |  |  |  |  |
| P2.L11.5-9.9010 |  | Inspect & Prepare Punchlist / High Roof - Stair 5-9 | 1d | 2026-04-07 | 2026-04-07 | P2.L11.5-9.9000 |  |  |  | 36d | 0d | 8 | O | ! | ARCH | KD | P2-5 | JW | ARCH |  |  |  |  |  |
| P2.L11.5-9.9020 |  | Correct Punchlist / High Roof - Stair 5-9 | 2d | 2026-04-08 | 2026-04-09 | P2.L11.5-9.9010 |  |  |  | 36d | 0d | 16 | O | ! | T | KD | P2-5 | JW | T |  |  |  |  |  |
| P2.L11.5-9.9030 |  | Final Inspection & Acceptance / High Roof - Stair 5-9 | 2d | 2026-04-10 | 2026-04-13 | P2.L11.5-9.9020 |  |  |  | 36d | 44d | 16 | O | ! | AHJ | KD | P2-5 | JW | AHJ |  |  |  |  |  |
|  | 13 | **L12 - ELEVATOR MACHINE ROOM ROOF (EMMR) - GROUP 3** |  | 2025-05-29 | 2026-04-13 |  |  |  |  |  |  |  |  |  |  |  |  |  |  |  |  |  |  |  |
|  | 4 | **Weathertightness Prep** |  | 2025-05-29 | 2025-10-02 |  |  |  |  |  |  |  |  |  |  |  |  |  |  |  |  |  |  |  |
| P2.L11.EMMR.3.100 |  | Layout - All Trades / High Roof - Group 3 EMR | 2d | 2025-05-29 A | 2025-06-05 A | P2.EMRR.03.410 | 100% | 2025-06-02 | 2025-06-03 |  |  | 16 |  |  | R/I.OH | KD | P2-5 | KD | R/I.OH | P2.01.9.010 | Harris |  |  |  |
| P2.L11.EMMR.3.110 |  | MEP - Penetrations, Sleeves, Supports & Pathways / High Roof - Group 3 EMR | 2d | 2025-07-02 A | 2025-07-03 A | P2.L11.EMMR.3.100 | 100% | 2025-08-04 | 2025-08-05 |  |  | 16 |  |  | R/I.OH | KD | P2-5 | KD | R/I.OH | P2.20.05.9.110 | Harris |  |  |  |
| P2.L11.EMMR.3.120 |  | Set & Connect Roof Drains / High Roof - Group 3 EMR | 2d | 2025-07-07 A | 2025-07-08 A | P2.L11.EMMR.3.100, P2.L11.EMMR.3.110 | 100% | 2025-08-06 | 2025-08-07 |  |  | 16 |  |  | PLMB | KD | P2-5 | KD | PLMB | P2.22.14.9.110 | Harris |  |  |  |
| P2.L11.EMMR.3.130 |  | Prefabricated Roof Hatch / High Roof - Group 3 EMR | 2d | 2025-07-22 A | 2025-07-23 A | P2.L11.EMMR.3.100, P2.L11.EMMR.3.120 | 100% | 2025-08-08 | 2025-08-11 |  |  | 16 |  | T.FACADE.ROOF | ROOF | KD | P2-5 | KD | ROOF |  |  | 25 |  |  |
| P2.L11.EMMR.3.150 |  | Framing & Sheathing of Parapets / High Roof - Group 3 EMR | 5d | 2025-07-24 A | 2025-07-31 A | P2.L11.EMMR.3.100, P2.L11.EMMR.3.130 | 100% | 2025-08-12 | 2025-08-18 |  |  | 16 |  |  | GYP | KD | P2-5 | KD | GYP | P2.01.9.010 |  |  |  |  |
| P2.L11.EMMR.3.140 |  | Roofing - Temp Watertight Systems / High Roof - Group 3 EMR | 2d | 2025-10-01 A | 2025-10-02 A | P2.PR.EMRR.2.140, P2.L11.EMMR.3.150, P2.L11.EMMR.3.110, P2.L11.EMMR.3.120, P2.L11.EMMR.3.130 | 100% |  |  |  |  | 16 |  |  | ROOF | KD | P2-5 | KD | ROOF | P2.07.55.9.010 |  | 25,45 | RF1 |  |
|  | 2 | **Roofing Finishes** |  | 2025-10-03 | 2026-04-02 |  |  |  |  |  |  |  |  |  |  |  |  |  |  |  |  |  |  |  |
| P2.L11.EMMR.3.200 |  | Roofing - Permanent Systems / High Roof - Group 3 EMR | 5d | 2025-10-03 A | 2025-10-09 A | P2.L11.EMMR.3.140 | 100% |  |  |  |  | 40 |  |  | ROOF | KD | P2-5 | KD | ROOF | P2.07.55.9.210 |  | 25 | RF1 |  |
| P2.L11.EMMR.3.210 |  | Flood Test / High Roof - Group 3 EMR | 1d | 2025-10-10 A | 2025-10-10 A | P2.L11.EMMR.3.200 | 100% |  |  |  |  | 8 |  |  | ROOF | KD | P2-5 | KD | ROOF | P2..07.01.9.110 |  | 25 |  | AT36 |
| P2.L11.EMMR.3.220 |  | Electronic Leak Detection Testing & Corrections / High Roof - Group 3 EMR | 2d | 2025-12-08 A | 2025-12-08 A | P2.L11.EMMR.3.210 | 100% | 2026-01-02 | 2026-01-05 |  |  | 16 | O |  | ROOF | KD | P2-5 | JW | ROOF | P2.07.01.9.210 |  | 25 |  | AT37 |
| P2.L11.EMMR.3.230 |  | Metal Panels / High Roof - Group 3 EMR | 5d | 2026-03-16 A | 2026-03-18 A | P2.L11.EMMR.3.220 | 100% | 2026-03-02 | 2026-03-06 |  |  | 40 | O | ! | MPANEL | KD | P2-5 | JW | MPANEL |  |  | 20,56,98 |  | AT27 |
| P2.L11.EMMR.3.240 |  | Roof Trim Out - All Trades / High Roof - Group 3 EMR | 2d | 2026-04-01 | 2026-04-02 | P2.L11.EMMR.3.230 |  |  |  | 36d | 0d | 16 | O |  | ROOF | KD | P2-5 | JW | ROOF | P2.07.62.9.210 |  | 25,56 |  |  |
|  | 6 | **Quality Control Inspections** |  | 2026-04-03 | 2026-04-13 |  |  |  |  |  |  |  |  |  |  |  |  |  |  |  |  |  |  |  |
| P2.L11.EMMR.3.9000 |  | Trades Inspect & Verify Work Completed to Specs / High Roof - Group 3 EMR | 2d | 2026-04-03 | 2026-04-06 | P2.L11.EMMR.3.240 |  |  |  | 36d | 0d | 16 | O | ! | T | KD | P2-5 | JW | T |  |  |  |  |  |
| P2.L11.EMMR.3.9010 |  | Inspect & Prepare Punchlist / High Roof - Group 3 EMR | 1d | 2026-04-07 | 2026-04-07 | P2.L11.EMMR.3.9000 |  |  |  | 36d | 0d | 8 | O | ! | ARCH | KD | P2-5 | JW | ARCH |  |  |  |  |  |
| P2.L11.EMMR.3.9020 |  | Correct Punchlist / High Roof - Group 3 EMR | 2d | 2026-04-08 | 2026-04-09 | P2.L11.EMMR.3.9010 |  |  |  | 36d | 0d | 16 | O | ! | T | KD | P2-5 | JW | T |  |  |  |  |  |
| P2.L11.EMMR.3.9030 |  | Final Inspection & Acceptance / High Roof - Group 3 EMR | 2d | 2026-04-10 | 2026-04-13 | P2.L11.EMMR.3.9020 |  |  |  | 36d | 44d | 16 | O | ! | AHJ | KD | P2-5 | JW | AHJ |  |  |  |  |  |

| ID | WBS | Activity | Type | Duration | Start | Finish | Predecessors | Complete | Remaining | Planned start | Planned finish | Total float | Free float | Resp / SRLM | RESP / Trade | RESP UPD | Testing Type | Update Status | Temp Orig Dur | 744 | PHASE | Z.RESP | Pick |
| --- | --- | --- | --- | --- | --- | --- | --- | --- | --- | --- | --- | --- | --- | --- | --- | --- | --- | --- | --- | --- | --- | --- | --- |
|  | 1 | **PH 2 - Hoist & Zipper** |  |  | 2024-10-07 | 2026-10-08 |  |  |  |  |  |  |  |  |  |  |  |  |  |  |  |  |  |
|  | 1 | **East** |  |  | 2024-10-28 | 2026-04-28 |  |  |  |  |  |  |  |  |  |  |  |  |  |  |  |  |  |
| P2.HZ.E.11 |  | Erect East Material Hoist |  | 5d | 2024-10-28 A | 2024-11-20 A | P2.2.03.520, P2.2.03.530, BP9.111.3.120 | 100% |  | 2024-11-01 | 2024-11-07 |  |  | HOIST | HOIST |  |  |  |  |  |  |  |  |
| P2.HZ.E.21 |  | East Material Hoist Onsite | level of effort | 285d | 2024-11-20 A | 2025-10-07 A | P2.HZ.E.11 | 100% |  | 2024-12-09 | 2026-01-22 |  |  | HOIST | HOIST |  |  |  |  |  |  |  |  |
| P2.HZ.E.51 |  | Remove Hoist |  | 5d | 2025-10-03 A | 2025-10-07 A | P2.HZ.E.21 FF, P2.L8.N.1190 FF | 100% |  | 2025-10-01 | 2025-10-07 |  |  | HOIST | HOIST | JH |  |  |  |  |  |  |  |
| P2.HZ.E.61 |  | Precast Infill @ Material Hoist |  | 10d | 2025-10-13 A | 2025-10-17 A | P2.HZ.E.121 | 100% |  | 2025-10-15 | 2025-10-28 |  |  | PRECAST | PRECAST | KD | AT30 |  |  |  |  |  |  |
| P2.HZ.E.71 |  | Precast Caulking |  | 10d | 2025-10-20 A | 2025-10-24 A | P2.HZ.E.61 FF+2d | 100% |  | 2025-10-17 | 2025-10-30 |  |  | Sealant | Sealant | KD |  |  |  |  |  |  |  |
| P2.HZ.E.101 |  | Parapet Metal Framing & Sheathing & Air Barrier |  | 5d | 2025-11-10 A | 2025-11-13 A | P2.HZ.E.71 | 100% |  | 2025-12-15 | 2025-12-19 |  |  | GYP | GYP | TCASP |  |  |  |  |  |  |  |
| P2.HZ.E.91 |  | Tie In Roofing |  | 8d | 2025-11-24 A | 2025-12-17 A | P2.HZ.E.101 | 100% |  | 2025-12-22 | 2026-01-02 |  |  | ROOF | ROOF | JH |  | O |  |  |  |  |  |
| P2.HZ.E.121 |  | FRP L1 Slab at Hoist |  | 5d | 2025-12-15 A | 2025-12-22 A | P2.HZ.E.51 | 100% |  | 2026-01-02 | 2026-01-08 |  |  | HP.CONC | HP.CONC | JH |  | O |  |  |  |  |  |
| P2.HZ.E.131 |  | Waterproof at Hoist |  | 5d | 2026-03-09 A | 2026-03-13 A | P2.HZ.E.121 | 100% |  | 2026-03-02 | 2026-03-06 |  |  | HP.CONC | HP.CONC | TCASP |  | O |  |  |  |  |  |
| P2.HZ.E.141 |  | Backfill at Hoist |  | 5d | 2026-03-16 A | 2026-03-20 A | P2.HZ.E.131 | 100% |  | 2026-03-09 | 2026-03-13 |  |  | HP.CONC | HP.CONC | TCASP |  | O |  |  |  |  |  |
| P2.HZ.E.111 |  | Install Metal Panels @ Parapet |  | 5d | 2026-04-01 | 2026-04-07 | P2.HZ.E.91 |  |  |  |  | 184d | 88d | MPANEL | MPANEL | JW |  | O |  |  |  |  |  |
| P2.HZ.E.81 |  | Interior Finishes L1 to 8 |  | 20d | 2026-04-01 | 2026-04-28 | P2.HZ.E.71 |  |  |  |  | 186d | 163d | GYP | GYP-1 | TCASP |  | O |  |  |  |  |  |
|  | 2 | **West** |  |  | 2024-10-07 | 2026-10-08 |  |  |  |  |  |  |  |  |  |  |  |  |  |  |  |  |  |
| P2.HZ.W.01 |  | Install Material Hoist Foundation |  | 5d | 2024-10-07 A | 2024-10-10 A | P1.BG.WP.100 | 100% |  | 2024-11-01 | 2024-11-07 |  |  | HOIST | HOIST |  | AT11 |  |  |  |  |  |  |
| P2.HZ.W.31 |  | Erect West Material Hoist |  | 5d | 2024-11-26 A | 2025-02-26 A | P2.HZ.W.01, P2.HZ.E.11 | 100% |  | 2024-12-09 | 2024-12-13 |  |  | HOIST | HOIST |  |  |  |  |  |  |  |  |
| P2.HZ.W.41 |  | West Material Hoist Onsite | level of effort | 165d | 2025-02-26 A | 2026-07-17 | P2.HZ.W.31 | 54% | 76d | 2025-03-06 | 2025-10-27 | 55d | 0d | HOIST | HOIST | TCASP |  |  |  |  |  |  |  |
| P2.HZ.W.91 |  | Remove Hoist |  | 8d | 2026-07-20 | 2026-07-29 | P2.HZ.W.41, P2.L9.F.1000, P2.GP2.14.1210 |  |  |  |  | 55d | 0d | HOIST | HOIST | TCASP |  |  |  |  |  |  |  |
| P2.HZ.W.101 |  | Curtainwall @ Material Hoist |  | 20d | 2026-07-30 | 2026-08-26 | P2.HZ.W.91 |  |  |  |  | 55d | 0d | GLAZ | GLAZ | TCASP | AT26 |  |  |  |  |  |  |
| P2.HZ.W.111 |  | Curtainwall Caulking |  | 20d | 2026-08-06 | 2026-09-02 | P2.HZ.W.101 FF+5d |  |  |  |  | 55d | 0d | GLAZ | GLAZ | TCASP |  |  |  |  |  |  |  |
| P2.HZ.W.121 |  | Interior Finishes L1 to 8 |  | 20d | 2026-09-03 | 2026-10-01 | P2.HZ.W.111 |  |  |  |  | 55d | 0d | GYP | GYP-1 | TCASP |  |  |  |  |  |  |  |
| P2.HZ.W.131 |  | Tie In Standing Seam Roofing |  | 5d | 2026-10-02 | 2026-10-08 | P2.HZ.W.121 |  |  |  |  | 55d | 0d | ROOF | ROOF | JW |  |  |  |  |  |  |  |
|  | 4 | **PH 2 VERTICAL SYSTEMS** |  |  | 2024-11-07 | 2026-08-07 |  |  |  |  |  |  |  |  |  |  |  |  |  |  |  |  |  |
|  | 1.Elev | **ELEVATORS** |  |  | 2025-07-07 | 2026-08-07 |  |  |  |  |  |  |  |  |  |  |  |  |  |  |  |  |  |
|  | 1 | **Group 1 - Elevators 90 & 91** |  |  | 2025-07-14 | 2026-04-21 |  |  |  |  |  |  |  |  |  |  |  |  |  |  |  |  |  |
| P2.GP1.14.120 |  | Hoistway / EMR Ready for Elevator Mobilization (Dry In / Shaft Complete / Power) / Group 1 | milestone | 0d | 2025-07-14 A | 2025-07-14 A | BP1.142.3.200 FF, P2.GP1.14.170 | 100% |  |  |  |  |  | HP | HP | TCASP |  |  | 0 | TCASP | P2-5 |  |  |
| P2.GP1.14.150 |  | HVAC Equipment / Group 1 |  | 5d | 2025-07-16 A | 2025-07-16 A | P2.GP1.14.130 | 100% |  | 2025-08-11 | 2025-08-15 |  |  | HVAC | HVAC | TCASP |  |  | 40 | TCASP | P2-5 | Harris |  |
| P2.GP1.14.110 |  | Rails & Brackets / Group 1 |  | 5d | 2025-07-23 A | 2025-08-14 A | P2.GP1.14.120, BP1.142.3.200 | 100% |  | 2025-09-18 | 2025-09-24 |  |  | ELEV | ELEV | TCASP | AT42 | O | 40 | TCASP | P2-5 |  | 1 |
| P2.GP1.14.210 |  | Pit Equipment - Buffer Channels - Buffers / Group 1 |  | 5d | 2025-07-23 A | 2025-08-28 A | BP1.220.3.120, P2.GP1.14.110 | 100% |  | 2025-09-25 | 2025-10-01 |  |  | ELEV | ELEV | TCASP |  |  | 40 | TCASP | P2-5 |  | 2 |
| P2.GP1.14.130 |  | Paint Prime & 1st Coat - EMR / Group 1 |  | 5d | 2025-08-14 A | 2025-08-15 A | P2.FAC.2.Z1.150 | 100% |  | 2025-08-01 | 2025-08-07 |  |  | PAINT | PAINT-1 | TCASP |  |  | 40 | TCASP | P2-5 |  |  |
| P2.GP1.14.310 |  | EMR Equipment / Group 1 |  | 5d | 2025-08-18 A | 2025-08-29 A | P2.GP1.14.210, BP1.142.3.400 | 100% |  | 2025-09-22 | 2025-09-26 |  |  | ELEV | ELEV | TCASP |  |  | 40 | TCASP | P2-5 |  | 3 |
| P2.GP1.14.140 |  | Electrical Disconnects and Equipment / Group 1 |  | 5d | 2025-08-25 A | 2025-08-29 A | P2.GP1.14.130 | 100% |  | 2025-08-08 | 2025-08-14 |  |  | ELEC | ELEC-2 | TCASP |  |  | 40 | TCASP | P2-5 |  |  |
| P2.GP1.14.510 |  | Platforms and Counterweight / Group 1 |  | 5d | 2025-09-22 A | 2025-09-25 A | P2.GP1.14.410 | 100% |  | 2025-11-04 | 2025-11-10 |  |  | ELEV | ELEV | TCASP |  |  | 40 | TCASP | P2-5 |  | 5 |
| P2.GP1.14.610 |  | Hoists & Cables / Group 1 |  | 5d | 2025-09-29 A | 2025-09-30 A | P2.GP1.14.510 | 100% |  | 2025-11-11 | 2025-11-17 |  |  | ELEV | ELEV | TCASP |  |  | 40 | TCASP | P2-5 |  | 6 |
| P2.GP1.14.170 |  | Energize Electrical Disconnects for Elevator Usage / Group 1 |  | 5d | 2025-11-17 A | 2025-11-21 A | P2.GP1.14.140, P2.PH.S.1610 | 100% |  | 2025-12-01 | 2025-12-05 |  |  | ELEC | ELEC-2 | TCASP |  |  | 40 | TCASP | P2-5 |  |  |
| P2.GP1.14.410 |  | Trim out/ Energize EMR Equipment / Group 1 |  | 5d | 2025-11-25 A | 2025-11-26 A | P2.GP1.14.310, P2.GP1.14.150 | 100% |  | 2025-12-08 | 2025-12-12 |  |  | ELEV | ELEV | TCASP |  |  | 40 | TCASP | P2-5 |  | 4 |
| P2.GP1.14.710 |  | Entrances - Doors - Fixtures - Facia / Group 1 |  | 5d | 2025-12-03 A | 2025-12-31 A | P2.GP1.14.810, BP1.142.3.100 | 100% |  | 2026-01-16 | 2026-01-22 |  |  | ELEV | ELEV | TCASP |  | O | 40 |  | P2-5 |  | 9 |
| P2.GP1.14.160 |  | Frame and Hang Gyp - Elevator Shaft / Group 1 |  | 5d | 2025-12-11 A | 2025-12-18 A | P2.FAC.2.Z1.160, P2.PR.S.1080, P2.GP1.14.710 | 100% |  | 2026-01-23 | 2026-01-29 |  |  | GYP | GYP-1 | TCASP |  | O | 40 | TCASP | P2-5 |  |  |
| P2.GP1.14.810 |  | Hoistway Equipment - Pipe - Wire / Group 1 |  | 5d | 2026-01-12 A | 2026-01-16 A | P2.GP1.14.910 | 100% |  | 2026-01-09 | 2026-01-15 |  |  | ELEV | ELEV | TCASP |  | O | 40 |  | P2-5 |  | 8 |
| P2.GP1.14.910 |  | Cabs - Wiring - Door Operators / Group 1 |  | 5d | 2026-01-19 A | 2026-02-12 A | P2.GP1.14.610, BP1.142.3.300 | 100% |  | 2026-01-02 | 2026-01-08 |  |  | ELEV | ELEV | TCASP |  | O | 40 |  | P2-5 |  | 7 |
| P2.GP1.14.1010 |  | Adjust & Test - Internal / Group 1 |  | 5d | 2026-03-02 A | 2026-03-03 A | P2.GP1.14.1110 | 100% |  | 2026-03-16 | 2026-03-20 |  |  | ELEV | ELEV | TCASP |  |  | 40 |  | P2-5 |  | 11 |
| P2.GP1.14.1110 |  | Punchlist & Inspections / Group 1 |  | 5d | 2026-03-16 A | 2026-03-19 A | P2.GP1.14.710, P2.GP1.14.160 | 100% |  | 2026-03-09 | 2026-03-13 |  |  | ELEV | ELEV | TCASP |  | O | 40 |  | P2-5 |  | 10 |
| P2.GP1.14.1510 |  | Third Party Testing / Group 1 |  | 5d | 2026-04-01 | 2026-04-07 | P2.GP1.14.1010 |  |  |  |  | 216d | 0d | ELEV | ELEV | TCASP | AT43 |  | 40 |  | P2-5 |  | 15 |
| P2.GP1.14.1610 |  | Final Testing and Inspection / Group 1 |  | 5d | 2026-04-08 | 2026-04-14 | P2.GP1.14.1510 |  |  |  |  | 216d | 0d | ELEV | ELEV | TCASP |  |  | 40 |  | P2-5 |  | 16 |
| P2.GP1.14.1710 |  | Elevator Acceptance - NIH AHJ / Group 1 |  | 5d | 2026-04-15 | 2026-04-21 | P2.SUM.255 FF, P2.GP1.14.1610 |  |  |  |  | 254d | 275d | ELEV | ELEV | TCASP |  |  | 40 |  | P2-5 |  | 17 |

| ID | WBS | Activity | Type | Duration | Start | Finish | Predecessors | Complete | Remaining | Planned start | Planned finish | Total float | Free float | Temp Orig Dur | Testing Type | Resp / SRLM | 744 | PHASE | RESP UPD | RESP / Trade | Update Status | Z.RESP | Pick |
| --- | --- | --- | --- | --- | --- | --- | --- | --- | --- | --- | --- | --- | --- | --- | --- | --- | --- | --- | --- | --- | --- | --- | --- |
|  | 2 | **Group 2 - Elevators 92 & 93** |  |  | 2025-08-18 | 2026-08-07 |  |  |  |  |  |  |  |  |  |  |  |  |  |  |  |  |  |
| P2.GP2.14.110 |  | Rails & Brackets / Group 2 |  | 5d | 2025-08-18 A | 2025-08-28 A | P2.GP1.14.130 | 100% |  | 2025-09-29 | 2025-10-03 |  |  | 40 | AT42 | ELEV | TCASP | P2-5 | TCASP | ELEV |  |  |  |
| P2.G2.14.0010 |  | Paint Prime & 1st Coat - EMR / Group 2 |  | 5d | 2025-08-25 A | 2025-08-29 A | P2.EMRR.03.610, P2.PH.N.1110 | 100% |  | 2025-09-12 | 2025-09-18 |  |  | 40 |  | PAINT | TCASP | P2-5 | TCASP | PAINT-1 |  |  |  |
| P2.GP2.14.310 |  | EMR Equipment / Group 2 |  | 5d | 2025-09-02 A | 2025-09-03 A | P2.GP2.14.110 | 100% |  | 2025-10-01 | 2025-10-07 |  |  | 40 |  | ELEV |  | P2-5 | TCASP | ELEV | O |  |  |
| P2.GP2.14.210 |  | Pit Equipment - Buffer Channels - Buffers / Group 2 |  | 5d | 2025-09-08 A | 2025-09-09 A | P2.GP2.14.110, P2.GP2.14.310 | 100% |  | 2025-10-08 | 2025-10-14 |  |  | 40 |  | ELEV |  | P2-5 | TCASP | ELEV | O |  |  |
| P2.G2.14.0030 |  | Electrical Disconnects and Equipment / Group 2 |  | 5d | 2025-09-09 A | 2025-09-11 A | P2.G2.14.0010 | 100% |  | 2025-10-01 | 2025-10-07 |  |  | 40 |  | ELEC | TCASP | P2-5 | TCASP | ELEC-2 | O |  |  |
| P2.G2.14.0040 |  | HVAC Equipment / Group 2 |  | 5d | 2025-09-09 A | 2025-09-09 A | P2.G2.14.0010 | 100% |  | 2025-10-01 | 2025-10-07 |  |  | 40 |  | HVAC | TCASP | P2-5 | TCASP | HVAC | O | Harris |  |
| P2.GP2.14.510 |  | Platforms and Counterweight / Group 2 |  | 5d | 2025-09-09 A | 2025-09-15 A | P2.GP2.14.410, P2.GP2.14.210 | 100% |  | 2025-10-22 | 2025-10-28 |  |  | 40 |  | ELEV |  | P2-5 | TCASP | ELEV | O |  |  |
| P2.GP2.14.610 |  | Hoists & Cables / Group 2 |  | 5d | 2025-09-22 A | 2025-09-23 A | P2.GP2.14.510 | 100% |  | 2025-10-29 | 2025-11-04 |  |  | 40 |  | ELEV |  | P2-5 | TCASP | ELEV | O |  |  |
| P2.G2.14.0050 |  | Energize Electrical Disconnects for Elevator Usage / Group 2 |  | 5d | 2025-09-24 A | 2025-09-24 A | P2.G2.14.0030, P2.PH.N.1650 | 100% |  | 2025-10-27 | 2025-10-31 |  |  | 40 |  | ELEC | TCASP | P2-5 | TCASP | ELEC-2 | O |  |  |
| P2.GP2.14.410 |  | Trim out/ Energize EMR Equipment / Group 2 |  | 5d | 2025-09-24 A | 2025-09-24 A | P2.G2.14.0040, P2.GP2.14.310, P2.GP2.14.210 | 100% |  | 2025-10-15 | 2025-10-21 |  |  | 40 |  | ELEV |  | P2-5 | TCASP | ELEV | O |  |  |
| P2.GP2.14.710 |  | Entrances - Doors - Fixtures - Facia / Group 2 |  | 5d | 2025-10-06 A | 2025-10-24 A | P2.GP2.14.810 | 100% |  | 2025-10-29 | 2025-11-04 |  |  | 40 |  | ELEV |  | P2-5 | TCASP | ELEV |  |  |  |
| P2.G2.14.0020 |  | Frame and Hang Gyp - Elevator Shaft / Group 2 |  | 5d | 2025-10-10 A | 2025-10-11 A | P2.PR.EMRR.2.140, P2.FAC.2.Z3.150, P2.GP2.14.710 | 100% |  | 2025-11-05 | 2025-11-11 |  |  | 40 |  | GYP | TCASP | P2-5 | TCASP | GYP-1 |  |  |  |
| P2.G2.14.0060 |  | Hoistway / EMR Ready for Elevator Mobilization (Dry In / Shaft Complete / Power) / Group 2 | milestone | 0d | 2025-10-14 A | 2025-10-14 A | P2.PR.EMRR.2.220 FF, P2.G2.14.0050 | 100% |  |  |  |  |  | 0 |  | HP | TCASP | P2-5 | TCASP | HP |  |  |  |
| P2.GP2.14.810 |  | Hoistway Equipment - Pipe - Wire / Group 2 |  | 5d | 2025-10-17 A | 2025-10-31 A | P2.GP2.14.910 | 100% |  | 2025-10-22 | 2025-10-28 |  |  | 40 |  | ELEV |  | P2-5 | TCASP | ELEV |  |  |  |
| P2.GP2.14.910 |  | Cabs - Wiring - Door Operators / Group 2 |  | 5d | 2025-10-27 A | 2025-11-06 A | P2.GP2.14.610, P2.G2.14.0060 | 100% |  | 2025-10-15 | 2025-10-21 |  |  | 40 |  | ELEV |  | P2-5 | TCASP | ELEV |  |  |  |
| P2.GP2.14.1110 |  | Punchlist & Inspections / Group 2 |  | 5d | 2025-11-10 A | 2025-11-13 A | P2.GP2.14.710, P2.G2.14.0020 | 100% |  | 2025-12-22 | 2025-12-29 |  |  | 40 |  | ELEV |  | P2-5 | TCASP | ELEV |  |  |  |
| P2.GP2.14.1010 |  | Adjust & Test - Internal / Group 2 |  | 5d | 2025-11-24 A | 2025-11-26 A | P2.GP2.14.1110 | 100% |  | 2025-12-30 | 2026-01-06 |  |  | 40 |  | ELEV |  | P2-5 | TCASP | ELEV |  |  |  |
| P2.GP2.14.1210 |  | Elevator Approved for Construction Use / Group 2 |  | 5d | 2025-11-24 A | 2025-11-24 A | P2.GP2.14.1110, P2.GP2.14.1010 | 100% |  | 2026-01-07 | 2026-01-13 |  |  | 40 |  | ELEV |  | P2-5 | TCASP | ELEV |  |  | 12 |
| P2.GP2.14.1310 |  | Temporary Construction Use / Group 2 | level of effort | 107d | 2025-11-24 A | 2026-07-10 | P2.GP2.14.1210 | 34% | 71d | 2026-01-14 | 2026-06-12 | 178d | 0d | 40 |  | ELEV |  | P2-5 | TCASP | ELEV |  |  | 13 |
| P2.GP2.14.1410 |  | Return to "Like New" Condition / Group 2 |  | 5d | 2026-07-13 | 2026-07-20 | P2.PIA.110 FF-20d, P2.GP2.14.1310 |  |  |  |  | 178d | 0d | 40 |  | ELEV |  | P2-5 | TCASP | ELEV |  |  | 14 |
| P2.GP2.14.1510 |  | Third Party Testing / Group 2 |  | 5d | 2026-07-20 | 2026-07-24 | P2.GP2.14.1010, P2.GP2.14.1410 |  |  |  |  | 178d | 0d | 40 | AT43 | ELEV |  | P2-5 | TCASP | ELEV |  |  |  |
| P2.GP2.14.1610 |  | Final Testing and Inspection / Group 2 |  | 5d | 2026-07-27 | 2026-07-31 | P2.GP2.14.1510 |  |  |  |  | 178d | 0d | 40 |  | ELEV |  | P2-5 | TCASP | ELEV |  |  |  |
| P2.GP2.14.1710 |  | Elevator Acceptance - NIH AHJ / Group 2 |  | 5d | 2026-08-03 | 2026-08-07 | P2.SUM.255 FF, P2.GP2.14.1610 |  |  |  |  | 178d | 199d | 40 |  | ELEV |  | P2-5 | TCASP | ELEV |  |  |  |

| ID | WBS | Activity | Type | Duration | Start | Finish | Predecessors | Complete | Remaining | Planned start | Planned finish | Total float | Free float | Temp Orig Dur | Testing Type | Resp / SRLM | 744 | PHASE | RESP UPD | RESP / Trade | Z.RESP | Update Status |
| --- | --- | --- | --- | --- | --- | --- | --- | --- | --- | --- | --- | --- | --- | --- | --- | --- | --- | --- | --- | --- | --- | --- |
|  | 3 | **Group 3 - Elevators 94 & 95** |  |  | 2025-10-01 | 2026-05-19 |  |  |  |  |  |  |  |  |  |  |  |  |  |  |  |  |
| P2.GP3.14.110 |  | Rails & Brackets / Group 3 |  | 22d | 2025-10-01 A | 2025-10-30 A | P2.G3.14.0060 | 100% |  |  |  |  |  | 40 | AT42 | ELEV | TCASP | P2-5 | TCASP | ELEV |  |  |
| P2.GP3.14.210 |  | Pit Equipment - Buffer Channels - Buffers / Group 3 |  | 5d | 2025-10-06 A | 2025-10-31 A | P2.GP3.14.110 | 100% |  | 2025-11-12 | 2025-11-18 |  |  | 40 |  | ELEV | TCASP | P2-5 | TCASP | ELEV |  |  |
| P2.G3.14.0030 |  | HVAC Equipment / Group 3 |  | 5d | 2025-10-24 A | 2025-10-31 A | P2.G3.14.0010 | 100% |  | 2025-10-22 | 2025-10-28 |  |  | 40 |  | HVAC | TCASP | P2-5 | TCASP | HVAC | Harris |  |
| P2.G3.14.0020 |  | Electrical Disconnects and Equipment / Group 3 |  | 5d | 2025-10-31 A | 2025-10-31 A | P2.G3.14.0010 | 100% |  | 2025-10-22 | 2025-10-28 |  |  | 40 |  | ELEC | TCASP | P2-5 | TCASP | ELEC-2 |  |  |
| P2.G3.14.0010 |  | Paint Prime & 1st Coat - EMR / Group 3 |  | 5d | 2025-11-07 A | 2025-11-07 A | P2.L11.EMMR.3.220, P2.G3.14.0050 | 100% |  | 2025-12-08 | 2025-12-12 |  |  | 40 |  | PAINT | TCASP | P2-5 | TCASP | PAINT-1 |  |  |
| P2.GP3.14.310 |  | EMR Equipment / Group 3 |  | 5d | 2025-11-17 A | 2025-11-26 A | P2.GP3.14.210 | 100% |  | 2025-12-22 | 2025-12-29 |  |  | 40 |  | ELEV | TCASP | P2-5 | TCASP | ELEV |  |  |
| P2.G3.14.0060 |  | Hoistway / EMR Ready for Elevator Mobilization (Dry In / Shaft Complete / Power) / Group 3 | milestone | 0d | 2025-12-12 A | 2025-12-12 A | P2.L11.EMMR.3.220 FF, P2.G3.14.0040, P2.G3.14.0050 | 100% |  |  |  |  |  | 0 |  | HP | TCASP | P2-5 | TCASP | HP |  | O |
| P2.GP3.14.610 |  | Hoists & Cables / Group 3 |  | 5d | 2025-12-15 A | 2025-12-19 A | P2.GP3.14.510 | 100% |  | 2026-01-30 | 2026-02-05 |  |  | 40 |  | ELEV | TCASP | P2-5 | TCASP | ELEV |  | O |
| P2.G3.14.0040 |  | Energize Electrical Disconnects for Elevator Usage / Group 3 |  | 5d | 2025-12-22 A | 2025-12-31 A | P2.G3.14.0020, P2.PH.S.1610 | 100% |  | 2026-01-09 | 2026-01-15 |  |  | 40 |  | ELEC | TCASP | P2-5 | TCASP | ELEC-2 |  | O |
| P2.GP3.14.510 |  | Platforms and Counterweight / Group 3 |  | 5d | 2026-01-05 A | 2026-01-09 A | P2.GP3.14.410 | 100% |  | 2026-01-16 | 2026-01-22 |  |  | 40 |  | ELEV | TCASP | P2-5 | TCASP | ELEV |  | O |
| P2.GP3.14.410 |  | Trim out/ Energize EMR Equipment / Group 3 |  | 5d | 2026-01-19 A | 2026-01-23 A | P2.G3.14.0030, P2.GP3.14.310 | 100% |  | 2026-01-09 | 2026-01-15 |  |  | 40 |  | ELEV | TCASP | P2-5 | TCASP | ELEV |  | O |
| P2.GP3.14.710 |  | Entrances - Doors - Fixtures - Facia / Group 3 |  | 5d | 2026-01-26 A | 2026-03-18 A | P2.GP3.14.410 | 100% |  | 2026-02-06 | 2026-02-12 |  |  | 40 |  | ELEV |  | P2-5 | TCASP | ELEV |  |  |
| P2.G3.14.0050 |  | Frame and Hang Gyp - Elevator Shaft / Group 3 |  | 5d | 2026-02-19 A | 2026-02-27 A | P2.L11.EMMR.3.140, P2.FAC.1.F.160, P2.FAC.1.F.210 | 100% |  | 2026-03-02 | 2026-03-06 |  |  | 40 |  | GYP | TCASP | P2-5 | TCASP | GYP-1 |  | O |
| P2.GP3.14.910 |  | Cabs - Wiring - Door Operators / Group 3 |  | 5d | 2026-03-19 A | 2026-04-07 | P2.GP3.14.610 |  | 5d | 2026-03-09 | 2026-03-13 | 196d | 0d | 40 |  | ELEV | TCASP | P2-5 | TCASP | ELEV |  |  |
| P2.GP3.14.810 |  | Hoistway Equipment - Pipe - Wire / Group 3 |  | 5d | 2026-04-08 | 2026-04-14 | P2.GP3.14.910 |  |  |  |  | 196d | 0d | 40 |  | ELEV |  | P2-5 | TCASP | ELEV |  |  |
| P2.GP3.14.1110 |  | Punchlist & Inspections / Group 3 |  | 5d | 2026-04-15 | 2026-04-21 | P2.GP3.14.710, P2.GP3.14.810 |  |  |  |  | 196d | 0d | 40 |  | ELEV |  | P2-5 | TCASP | ELEV |  |  |
| P2.GP3.14.1010 |  | Adjust & Test - Internal / Group 3 |  | 5d | 2026-04-22 | 2026-04-28 | P2.GP3.14.1110 |  |  |  |  | 196d | 0d | 40 |  | ELEV |  | P2-5 | TCASP | ELEV |  |  |
| P2.GP3.14.1510 |  | Third Party Testing / Group 3 |  | 5d | 2026-04-29 | 2026-05-05 | P2.GP3.14.1010 |  |  |  |  | 196d | 0d | 40 | AT43 | ELEV |  | P2-5 | TCASP | ELEV |  |  |
| P2.GP3.14.1610 |  | Final Testing and Inspection / Group 3 |  | 5d | 2026-05-06 | 2026-05-12 | P2.GP3.14.1510 |  |  |  |  | 196d | 0d | 40 |  | ELEV |  | P2-5 | TCASP | ELEV |  |  |
| P2.GP3.14.1710 |  | Elevator Acceptance - NIH AHJ / Group 3 |  | 5d | 2026-05-13 | 2026-05-19 | P2.SUM.255 FF, P2.GP3.14.1610 |  |  |  |  | 234d | 255d | 40 |  | ELEV |  | P2-5 | TCASP | ELEV |  |  |
|  | 4 | **Group 4 - Elevators 96 & 97** |  |  | 2025-07-07 | 2026-05-27 |  |  |  |  |  |  |  |  |  |  |  |  |  |  |  |  |
| P2.G4.14.00110 |  | Frame and Hang Gyp - Elevator Shaft / Group 4 |  | 5d | 2025-07-07 A | 2025-07-11 A | P2.L4.N.1140, P2.L2.INT.N.1040, P2.FAC.2.Z2.180 | 100% |  | 2025-08-20 | 2025-08-26 |  |  | 40 |  | GYP | TCASP | P2-5 | TCASP | GYP-1 |  |  |
| P2.G4.14.0070 |  | Paint Prime & 1st Coat - EMR / Group 4 |  | 5d | 2025-07-28 A | 2025-07-31 A | P2.L4.N.1140, P2.G4.14.00110 | 100% |  | 2025-08-27 | 2025-09-03 |  |  | 40 |  | PAINT | TCASP | P2-5 | TCASP | PAINT-1 |  |  |
| P2.G4.14.0090 |  | HVAC Equipment / Group 4 |  | 5d | 2025-09-02 A | 2025-09-03 A | P2.G4.14.0070 | 100% |  | 2025-10-01 | 2025-10-07 |  |  | 40 |  | HVAC | TCASP | P2-5 | TCASP | HVAC | Harris | O |
| P2.GP4.14.210 |  | Pit Equipment - Buffer Channels - Buffers / Group 4 |  | 5d | 2025-11-03 A | 2025-11-06 A | P2.GP4.14.110 | 100% |  | 2025-12-22 | 2025-12-29 |  |  | 40 |  | ELEV | TCASP | P2-5 | TCASP | ELEV |  |  |
| P2.GP4.14.110 |  | Rails & Brackets / Group 4 |  | 5d | 2025-11-10 A | 2025-12-31 A | P2.G4.14.00120 | 100% |  | 2025-12-15 | 2025-12-19 |  |  | 40 | AT42 | ELEV | TCASP | P2-5 | TCASP | ELEV |  | O |
| P2.G4.14.00120 |  | Hoistway / EMR Ready for Elevator Mobilization (Dry In / Shaft Complete / Power) / Group 4 | milestone | 0d | 2025-12-12 A | 2025-12-12 A | P2.G4.14.00100, P2.G4.14.00110 | 100% |  |  |  |  |  | 0 |  | HP | TCASP | P2-5 | TCASP | HP |  | O |
| P2.GP4.14.510 |  | Platforms and Counterweight / Group 4 |  | 5d | 2026-01-05 A | 2026-01-09 A | P2.GP4.14.410 | 100% |  | 2026-01-30 | 2026-02-05 |  |  | 40 |  | ELEV | TCASP | P2-5 | TCASP | ELEV |  |  |
| P2.GP4.14.610 |  | Hoists & Cables / Group 4 |  | 5d | 2026-01-12 A | 2026-01-16 A | P2.GP4.14.510 | 100% |  | 2026-02-06 | 2026-02-12 |  |  | 40 |  | ELEV | TCASP | P2-5 | TCASP | ELEV |  |  |
| P2.GP4.14.310 |  | EMR Equipment / Group 4 |  | 5d | 2026-01-19 A | 2026-03-05 A | P2.GP4.14.210 | 100% |  | 2026-01-16 | 2026-01-22 |  |  | 40 |  | ELEV | TCASP | P2-5 | TCASP | ELEV |  | O |
| P2.G4.14.0080 |  | Electrical Disconnects and Equipment / Group 4 |  | 5d | 2026-03-04 A | 2026-03-06 A | P2.G4.14.0070 | 100% |  | 2026-03-02 | 2026-03-06 |  |  | 40 |  | ELEC | TCASP | P2-5 | TCASP | ELEC-2 |  | O |
| P2.G4.14.00100 |  | Energize Electrical Disconnects for Elevator Usage / Group 4 |  | 5d | 2026-03-09 A | 2026-03-09 A | P2.G4.14.0080, P2.L3.EMT.1260 | 100% |  | 2026-03-09 | 2026-03-13 |  |  | 40 |  | ELEC | TCASP | P2-5 | TCASP | ELEC-2 |  | O |
| P2.GP4.14.410 |  | Trim out/ Energize EMR Equipment / Group 4 |  | 5d | 2026-03-10 A | 2026-03-10 A | P2.GP4.14.310, P2.G4.14.0090 | 100% |  | 2026-03-23 | 2026-03-27 |  |  | 40 |  | ELEV | TCASP | P2-5 | TCASP | ELEV |  | O |
| P2.GP4.14.910 |  | Cabs - Wiring - Door Operators / Group 4 |  | 5d | 2026-03-25 A | 2026-04-07 | P2.GP4.14.610 |  | 5d | 2026-03-30 | 2026-04-03 | 191d | 0d | 40 |  | ELEV | TCASP | P2-5 | TCASP | ELEV |  |  |
| P2.GP4.14.810 |  | Hoistway Equipment - Pipe - Wire / Group 4 |  | 5d | 2026-04-08 | 2026-04-14 | P2.GP4.14.910 |  |  |  |  | 191d | 0d | 40 |  | ELEV | TCASP | P2-5 | TCASP | ELEV |  |  |
| P2.GP4.14.710 |  | Entrances - Doors - Fixtures - Facia / Group 4 |  | 5d | 2026-04-15 | 2026-04-21 | P2.GP4.14.810 |  |  |  |  | 191d | 0d | 40 |  | ELEV | TCASP | P2-5 | TCASP | ELEV |  |  |
| P2.GP4.14.1110 |  | Punchlist & Inspections / Group 4 |  | 5d | 2026-04-22 | 2026-04-28 | P2.GP4.14.710 |  |  |  |  | 191d | 0d | 40 |  | ELEV | TCASP | P2-5 | TCASP | ELEV |  |  |
| P2.GP4.14.1010 |  | Adjust & Test - Internal / Group 4 |  | 5d | 2026-04-29 | 2026-05-05 | P2.GP4.14.1110 |  |  |  |  | 191d | 0d | 40 |  | ELEV | TCASP | P2-5 | TCASP | ELEV |  |  |
| P2.GP4.14.1510 |  | Third Party Testing / Group 4 |  | 5d | 2026-05-06 | 2026-05-12 | P2.GP4.14.1010 |  |  |  |  | 191d | 0d | 40 | AT43 | ELEV |  | P2-5 | TCASP | ELEV |  |  |
| P2.GP4.14.1610 |  | Final Testing and Inspection / Group 4 |  | 5d | 2026-05-13 | 2026-05-19 | P2.GP4.14.1510 |  |  |  |  | 191d | 0d | 40 |  | ELEV |  | P2-5 | TCASP | ELEV |  |  |
| P2.GP4.14.1710 |  | Elevator Acceptance - NIH AHJ / Group 4 |  | 5d | 2026-05-20 | 2026-05-27 | P2.SUM.255 FF, P2.GP4.14.1610 |  |  |  |  | 229d | 250d | 40 |  | ELEV |  | P2-5 | TCASP | ELEV |  |  |

| ID | WBS | Activity | Duration | Start | Finish | Predecessors | Complete | Remaining | Planned start | Planned finish | Total float | Free float | Temp Orig Dur | Update Status | Resp / SRLM | 744 | PHASE | RESP UPD | RESP / Trade | Z.RESP | Testing Type | *NIH Resp Check* |
| --- | --- | --- | --- | --- | --- | --- | --- | --- | --- | --- | --- | --- | --- | --- | --- | --- | --- | --- | --- | --- | --- | --- |
|  | 1.Stairs | **STAIRS** |  | 2024-11-07 | 2026-07-06 |  |  |  |  |  |  |  |  |  |  |  |  |  |  |  |  |  |
|  | 2.9 | **Stair 2-9** |  | 2026-01-05 | 2026-06-05 |  |  |  |  |  |  |  |  |  |  |  |  |  |  |  |  |  |
| P2.2-9.1000 |  | Framing and Blocking - Interior Walls / Stair 2-9 | 5d | 2026-01-05 A | 2026-04-07 | P2.FAC.4.Z3.170 |  | 5d | 2026-01-02 | 2026-01-08 | 184d | 0d | 40 | O | GYP | JH | P2-5 | TCASP | GYP-1 |  |  |  |
| P2.2-9.1010 |  | MEP Rough In / Stair 2-9 | 5d | 2026-04-08 | 2026-04-14 | P2.2-9.1000 |  |  |  |  | 184d | 0d | 40 | O | R/I.OH | JH | P2-5 | TCASP | R/I.OH | Harris |  |  |
| P2.2-9.1020 |  | Drywall / Stair 2-9 | 5d | 2026-04-15 | 2026-04-21 | P2.2-9.1010 |  |  |  |  | 184d | 0d | 40 | O | GYP | JH | P2-5 | TCASP | GYP-1 |  |  |  |
| P2.2-9.1030 |  | Metal Railings & Handrails / Stair 2-9 | 5d | 2026-04-22 | 2026-04-28 | P2.2-9.1020 |  |  |  |  | 184d | 0d | 40 | O | MISCMTL | JH | P2-5 | TCASP | MISCMTL |  | AT44 |  |
| P2.2-9.1040 |  | Prime & Paint Walls / Stair 2-9 | 5d | 2026-04-29 | 2026-05-05 | P2.2-9.1030 |  |  |  |  | 184d | 0d | 40 | O | PAINT | JH | P2-5 | TCASP | PAINT-1 |  |  |  |
| P2.2-9.1050 |  | Trim MEPF & Fixtures / Stair 2-9 | 5d | 2026-05-06 | 2026-05-12 | BP1.233.3.410, P2.2-9.1040 |  |  |  |  | 184d | 0d | 40 |  | R/I.OH | JH | P2-5 | TCASP | R/I.OH | Harris |  |  |
| P2.2-9.1060 |  | Flooring / Stair 2-9 | 5d | 2026-05-13 | 2026-05-19 | P2.2-9.1050 |  |  |  |  | 184d | 0d | 40 |  | FLOOR | JH | P2-5 | TCASP | FLOOR |  |  |  |
| P2.2-9.1070 |  | Doors & Hardware / Stair 2-9 | 5d | 2026-05-20 | 2026-05-27 | P2.2-9.1060 |  |  |  |  | 184d | 0d | 40 |  | DFH | JH | P2-5 | TCASP | DFH |  | AT29 |  |
|  | 6 | **Quality Control Inspections - Stair 2-9** |  | 2026-05-28 | 2026-06-05 |  |  |  |  |  |  |  |  |  |  |  |  |  |  |  |  |  |
| P2.2-9.9000 |  | Trades Inspect & Verify Work Completed to Specs / Stair 2-9 | 2d | 2026-05-28 | 2026-05-29 | P2.2-9.1070 |  |  |  |  | 184d | 0d | 16 |  | T |  | P2-5 | TCASP | T |  |  | ! |
| P2.2-9.9010 |  | Inspect & Prepare Punchlist / Stair 2-9 | 1d | 2026-06-01 | 2026-06-01 | P2.2-9.9000 |  |  |  |  | 222d | 0d | 8 |  | ARCH |  | P2-5 | TCASP | ARCH |  |  | ! |
| P2.2-9.9020 |  | Correct Punchlist / Stair 2-9 | 2d | 2026-06-02 | 2026-06-03 | P2.2-9.9010 |  |  |  |  | 222d | 0d | 16 |  | T |  | P2-5 | TCASP | T |  |  | ! |
| P2.2-9.9030 |  | Final Inspection & Acceptance / Stair 2-9 | 2d | 2026-06-04 | 2026-06-05 | P2.SUM.255 FF, P2.2-9.9020 |  |  |  |  | 222d | 243d | 16 |  | AHJ |  | P2-5 | TCASP | AHJ |  |  | ! |
|  | 5.9 | **Stair 5-9** |  | 2025-07-17 | 2026-05-21 |  |  |  |  |  |  |  |  |  |  |  |  |  |  |  |  |  |
| P2.5-9.1010 |  | MEP Rough In / Stair 5-9 | 5d | 2025-07-17 A | 2025-07-30 A | P2.5-9.1000 | 100% |  | 2025-08-18 | 2025-08-22 |  |  | 40 |  | R/I.OH | JH | P2-5 | JH | R/I.OH | Harris |  |  |
| P2.5-9.1000 |  | Framing and Blocking - Interior Walls / Stair 5-9 | 5d | 2025-12-22 A | 2026-01-23 A | P2.FAC.2.Z1.160, P2.L7.EMT.1000 | 100% |  | 2026-01-02 | 2026-01-08 |  |  | 40 | O | GYP | JH | P2-5 | TCASP | GYP-1 |  |  |  |
| P2.5-9.1020 |  | Drywall / Stair 5-9 | 5d | 2026-04-01 | 2026-04-07 | P2.5-9.1010 |  |  |  |  | 194d | 0d | 40 | O | GYP | JH | P2-5 | TCASP | GYP-1 |  |  |  |
| P2.5-9.1030 |  | Metal Railings & Handrails / Stair 5-9 | 5d | 2026-04-08 | 2026-04-14 | BP4.055.3.150, BP4.055.3.110, BP4.055.3.120, P2.5-9.1020 |  |  |  |  | 194d | 0d | 40 | O | MISCMTL | JH | P2-5 | TCASP | MISCMTL |  | AT44 |  |
| P2.5-9.1040 |  | Prime & Paint Walls / Stair 5-9 | 5d | 2026-04-15 | 2026-04-21 | P2.5-9.1030 |  |  |  |  | 194d | 0d | 40 | O | PAINT | JH | P2-5 | TCASP | PAINT-1 |  |  |  |
| P2.5-9.1050 |  | Trim MEPF & Fixtures / Stair 5-9 | 5d | 2026-04-22 | 2026-04-28 | BP1.233.3.410, P2.5-9.1040 |  |  |  |  | 194d | 0d | 40 | O | R/I.OH | JH | P2-5 | TCASP | R/I.OH | Harris |  |  |
| P2.5-9.1060 |  | Flooring / Stair 5-9 | 5d | 2026-04-29 | 2026-05-05 | P2.5-9.1050 |  |  |  |  | 194d | 0d | 40 |  | FLOOR | JH | P2-5 | TCASP | FLOOR |  |  |  |
| P2.5-9.1070 |  | Doors & Hardware / Stair 5-9 | 5d | 2026-05-06 | 2026-05-12 | P2.5-9.1060 |  |  |  |  | 194d | 0d | 40 |  | DFH | JH | P2-5 | TCASP | DFH |  | AT29 |  |

| ID | WBS | Activity | Duration | Start | Finish | Predecessors | Complete | Remaining | Planned start | Planned finish | Total float | Free float | Temp Orig Dur | *NIH Resp Check* | Resp / SRLM | 744 | PHASE | RESP UPD | RESP / Trade | Testing Type | Update Status | Z.RESP |
| --- | --- | --- | --- | --- | --- | --- | --- | --- | --- | --- | --- | --- | --- | --- | --- | --- | --- | --- | --- | --- | --- | --- |
|  | 6 | **Quality Control Inspections - Stair 5-9** |  | 2026-05-13 | 2026-05-21 |  |  |  |  |  |  |  |  |  |  |  |  |  |  |  |  |  |
| P2.5-9.9000 |  | Trades Inspect & Verify Work Completed to Specs / Stair 5-9 | 2d | 2026-05-13 | 2026-05-14 | P2.5-9.1070 |  |  |  |  | 194d | 0d | 16 | ! | T | JH | P2-5 | TCASP | T |  |  |  |
| P2.5-9.9010 |  | Inspect & Prepare Punchlist / Stair 5-9 | 1d | 2026-05-15 | 2026-05-15 | P2.5-9.9000 |  |  |  |  | 232d | 0d | 8 | ! | ARCH | JH | P2-5 | TCASP | ARCH |  |  |  |
| P2.5-9.9020 |  | Correct Punchlist / Stair 5-9 | 2d | 2026-05-18 | 2026-05-19 | P2.5-9.9010 |  |  |  |  | 232d | 0d | 16 | ! | T | JH | P2-5 | TCASP | T |  |  |  |
| P2.5-9.9030 |  | Final Inspection & Acceptance / Stair 5-9 | 2d | 2026-05-20 | 2026-05-21 | P2.SUM.255 FF, P2.5-9.9020 |  |  |  |  | 232d | 253d | 16 | ! | AHJ | JH | P2-5 | TCASP | AHJ |  |  |  |
|  | 2.8 | **Stair 2-8** |  | 2025-10-06 | 2026-06-12 |  |  |  |  |  |  |  |  |  |  |  |  |  |  |  |  |  |
| P2.2-8.1030 |  | Metal Railings & Handrails / Stair 2-8 | 5d | 2025-10-06 A | 2025-10-17 A | P2.2-10.1030 | 100% |  | 2025-11-19 | 2025-11-25 |  |  | 40 |  | MISCMTL | JH | P2-5 | TCASP | MISCMTL | AT44 |  |  |
| P2.2-8.1000 |  | Framing and Blocking - Interior Walls / Stair 2-8 | 5d | 2025-12-31 A | 2026-04-21 | P2.MR.2-8.200, P2.FAC.4.Z3.180, DDD2200 |  | 5d | 2026-01-30 | 2026-02-05 | 179d | 0d | 40 |  | GYP | JH | P2-5 | TCASP | GYP-1 |  | O |  |
| P2.2-8.1010 |  | MEP Rough In / Stair 2-8 | 5d | 2026-04-22 | 2026-04-28 | P2.2-8.1000 |  |  |  |  | 179d | 0d | 40 |  | R/I.OH | JH | P2-5 | TCASP | R/I.OH |  |  | Harris |
| P2.2-8.1020 |  | Drywall / Stair 2-8 | 5d | 2026-04-29 | 2026-05-05 | P2.2-8.1010 |  |  |  |  | 179d | 0d | 40 |  | GYP | JH | P2-5 | TCASP | GYP-1 |  |  |  |
| P2.2-8.1040 |  | Prime & Paint Walls / Stair 2-8 | 5d | 2026-05-06 | 2026-05-12 | P2.2-8.1030, P2.2-8.1020 |  |  |  |  | 179d | 0d | 40 |  | PAINT | JH | P2-5 | TCASP | PAINT-1 |  |  |  |
| P2.2-8.1050 |  | Trim MEPF & Fixtures / Stair 2-8 | 5d | 2026-05-13 | 2026-05-19 | BP1.233.3.410, P2.2-8.1040 |  |  |  |  | 179d | 0d | 40 |  | R/I.OH |  | P2-5 | TCASP | R/I.OH |  |  | Harris |
| P2.2-8.1060 |  | Flooring / Stair 2-8 | 5d | 2026-05-20 | 2026-05-27 | P2.2-8.1050 |  |  |  |  | 179d | 0d | 40 |  | FLOOR |  | P2-5 | TCASP | FLOOR |  |  |  |
| P2.2-8.1070 |  | Doors & Hardware / Stair 2-8 | 5d | 2026-05-28 | 2026-06-03 | P2.2-8.1060 |  |  |  |  | 179d | 0d | 40 |  | DFH |  | P2-5 | TCASP | DFH | AT29 |  |  |
|  | 6 | **Quality Control Inspections - Stair 2-8** |  | 2026-06-04 | 2026-06-12 |  |  |  |  |  |  |  |  |  |  |  |  |  |  |  |  |  |
| P2.2-8.9000 |  | Trades Inspect & Verify Work Completed to Specs / Stair 2-8 | 2d | 2026-06-04 | 2026-06-05 | P2.2-8.1070 |  |  |  |  | 179d | 0d | 16 | ! | T |  | P2-5 | TCASP | T |  |  |  |
| P2.2-8.9010 |  | Inspect & Prepare Punchlist / Stair 2-8 | 1d | 2026-06-08 | 2026-06-08 | P2.2-8.9000 |  |  |  |  | 217d | 0d | 8 | ! | ARCH |  | P2-5 | TCASP | ARCH |  |  |  |
| P2.2-8.9020 |  | Correct Punchlist / Stair 2-8 | 2d | 2026-06-09 | 2026-06-10 | P2.2-8.9010 |  |  |  |  | 217d | 0d | 16 | ! | T |  | P2-5 | TCASP | T |  |  |  |
| P2.2-8.9030 |  | Final Inspection & Acceptance / Stair 2-8 | 2d | 2026-06-11 | 2026-06-12 | P2.SUM.255 FF, P2.2-8.9020 |  |  |  |  | 217d | 238d | 16 | ! | AHJ |  | P2-5 | TCASP | AHJ |  |  |  |
|  | 2.10 | **Stair 2-10** |  | 2025-09-08 | 2026-05-29 |  |  |  |  |  |  |  |  |  |  |  |  |  |  |  |  |  |
| P2.2-10.1030 |  | Metal Railings & Handrails / Stair 2-10 | 5d | 2025-09-08 A | 2025-10-31 A | BP4.055.3.150 | 100% |  | 2025-12-05 | 2025-12-11 |  |  | 40 |  | MISCMTL | JH | P2-5 | TCASP | MISCMTL | AT44 |  |  |
| P2.2-10.1000 |  | Framing and Blocking - Interior Walls / Stair 2-10 | 5d | 2026-03-30 A | 2026-04-07 | P2.FAC.2.Z2.130, P2.L7.EMT.1000 |  | 5d | 2026-03-02 | 2026-03-06 | 189d | 0d | 40 |  | GYP | JH | P2-5 | TCASP | GYP-1 |  | O |  |
| P2.2-10.1010 |  | MEP Rough In / Stair 2-10 | 5d | 2026-04-08 | 2026-04-14 | DDD2150, P2.2-10.1000 |  |  |  |  | 189d | 0d | 40 |  | R/I.OH | JH | P2-5 | TCASP | R/I.OH |  | O | Harris |
| P2.2-10.1020 |  | Drywall / Stair 2-10 | 5d | 2026-04-15 | 2026-04-21 | P2.2-10.1010 |  |  |  |  | 189d | 0d | 40 |  | GYP | JH | P2-5 | TCASP | GYP-1 |  | O |  |
| P2.2-10.1040 |  | Prime & Paint Walls / Stair 2-10 | 5d | 2026-04-22 | 2026-04-28 | P2.2-10.1030, P2.2-10.1020 |  |  |  |  | 189d | 0d | 40 |  | PAINT | JH | P2-5 | TCASP | PAINT-1 |  | O |  |
| P2.2-10.1050 |  | Trim MEPF & Fixtures / Stair 2-10 | 5d | 2026-04-29 | 2026-05-05 | BP1.233.3.410, P2.2-10.1040 |  |  |  |  | 189d | 0d | 40 |  | R/I.OH | JH | P2-5 | TCASP | R/I.OH |  | O | Harris |
| P2.2-10.1060 |  | Flooring / Stair 2-10 | 5d | 2026-05-06 | 2026-05-12 | P2.2-10.1050 |  |  |  |  | 189d | 0d | 40 |  | FLOOR | JH | P2-5 | TCASP | FLOOR |  |  |  |
| P2.2-10.1070 |  | Doors & Hardware / Stair 2-10 | 5d | 2026-05-13 | 2026-05-19 | P2.2-10.1060 |  |  |  |  | 189d | 0d | 40 |  | DFH | JH | P2-5 | TCASP | DFH | AT29 |  |  |

| ID | WBS | Activity | Duration | Start | Finish | Predecessors | Complete | Planned start | Planned finish | Total float | Free float | Calendar | Temp Orig Dur | *NIH Resp Check* | Resp / SRLM | 744 | PHASE | RESP UPD | RESP / Trade | Testing Type | Update Status | Z.RESP |
| --- | --- | --- | --- | --- | --- | --- | --- | --- | --- | --- | --- | --- | --- | --- | --- | --- | --- | --- | --- | --- | --- | --- |
|  | 6 | **Quality Control Inspections - Stair 2-10** |  | 2026-05-20 | 2026-05-29 |  |  |  |  |  |  |  |  |  |  |  |  |  |  |  |  |  |
| P2.2-10.9000 |  | Trades Inspect & Verify Work Completed to Specs / Stair 2-10 | 2d | 2026-05-20 | 2026-05-21 | P2.2-10.1070 |  |  |  | 189d | 0d |  | 16 | ! | T | JH | P2-5 | TCASP | T |  |  |  |
| P2.2-10.9010 |  | Inspect & Prepare Punchlist / Stair 2-10 | 1d | 2026-05-22 | 2026-05-22 | P2.2-10.9000 |  |  |  | 227d | 0d |  | 8 | ! | ARCH | JH | P2-5 | TCASP | ARCH |  |  |  |
| P2.2-10.9020 |  | Correct Punchlist / Stair 2-10 | 2d | 2026-05-26 | 2026-05-27 | P2.2-10.9010 |  |  |  | 227d | 0d |  | 16 | ! | T | JH | P2-5 | TCASP | T |  |  |  |
| P2.2-10.9030 |  | Final Inspection & Acceptance / Stair 2-10 | 2d | 2026-05-28 | 2026-05-29 | P2.SUM.255 FF, P2.2-10.9020 |  |  |  | 227d | 248d |  | 16 | ! | AHJ | JH | P2-5 | TCASP | AHJ |  |  |  |
|  | 3.9 | **Stair 3-9** |  | 2024-11-07 | 2026-06-19 |  |  |  |  |  |  |  |  |  |  |  |  |  |  |  |  |  |
| P2.3-9.9040 |  | Demo Existing CRC Roof and Temp Protect | 10d | 2024-11-07 A | 2024-11-15 A | P2.5.03.310 | 100% | 2024-11-07 | 2024-11-20 |  |  |  | 40 | ! | ROOF |  | P2-5 |  | ROOF | AT45 |  |  |
| P2.3-9.1020 |  | Pour Perimeter Beams and tie into existing parapets | 10d | 2024-11-25 A | 2024-12-10 A | P2.3-9.9040 | 100% | 2024-12-16 | 2024-12-30 |  |  |  | 40 | ! | HP.CONC |  | P2-5 |  | HP.CONC | AT45 |  |  |
| P2.3-9.1030 |  | Steel - HSS Posts/Beams _ All Levels / Stair 3-9 (East Crane) | 5d | 2025-04-21 A | 2025-04-25 A | P2.3-9.1020, BP4.055.3.400, BP7.051.3.110, P2.PR.03.520 | 100% | 2025-05-22 | 2025-05-29 |  |  |  | 40 | ! | MISCMTL |  | P2-5 |  | MISCMTL | AT45 |  |  |
| P2.3-9.1040 |  | Erect Stringers & Platforms / Stair 3-9 (East Crane) | 5d | 2025-06-23 A | 2025-10-07 A | P2.3-9.1030 | 100% | 2025-07-01 | 2025-07-08 |  |  |  | 40 |  | MISCMTL | JH | P2-5 | TCASP | MISCMTL | AT45 |  |  |
| P2.3-9.1070 |  | Exterior Sheathing of Stair Walls / Stair 3-9 | 5d | 2025-09-22 A | 2025-09-26 A | P2.3-9.1030 | 100% | 2025-10-01 | 2025-10-07 |  |  |  | 40 |  | GYP | JH | P2-5 | TCASP | GYP-1 |  | O |  |
| P2.3-9.1050 |  | Pour & Finish Stairs / Stair 3-9 | 5d | 2026-04-01 | 2026-04-07 | P2.3-9.1040 |  |  |  | 174d | 0d |  | 40 |  | STRCONC | JH | P2-5 | TCASP | STRCONC | AT45 | O |  |
| P2.3-9.1060 |  | CURE Stairs / Stair 3-9 | 7d | 2026-04-08 | 2026-04-14 | P2.3-9.1050 |  |  |  | 251d | 0d | 7D / SRLM | 40 |  | STRCONC | JH | P2-5 | TCASP | STRCONC | AT45 | O |  |
| P2.3-9.1080 |  | Framing and Blocking - Interior Walls / Stair 3-9 | 5d | 2026-04-15 | 2026-04-21 | P2.3-9.1070, P2.3-9.1060 |  |  |  | 174d | 0d |  | 40 |  | GYP | JH | P2-5 | TCASP | GYP-1 |  | O |  |
| P2.3-9.1090 |  | MEP Rough In / Stair 3-9 | 5d | 2026-04-22 | 2026-04-28 | P2.3-9.1080 |  |  |  | 174d | 0d |  | 40 |  | R/I.OH | JH | P2-5 | TCASP | R/I.OH |  | O | Harris |
| P2.3-9.1100 |  | Drywall / Stair 3-9 | 5d | 2026-04-29 | 2026-05-05 | P2.PR.S.2000, P2.3-9.1090 |  |  |  | 174d | 0d |  | 40 |  | GYP | JH | P2-5 | TCASP | GYP-1 |  | O |  |
| P2.3-9.1110 |  | Metal Railings & Handrails / Stair 3-9 | 5d | 2026-05-06 | 2026-05-12 | P2.3-9.1100 |  |  |  | 174d | 0d |  | 40 |  | MISCMTL | JH | P2-5 | TCASP | MISCMTL | AT44 |  |  |
| P2.3-9.1120 |  | Prime & Paint Walls / Stair 3-9 | 5d | 2026-05-13 | 2026-05-19 | P2.3-9.1110 |  |  |  | 174d | 0d |  | 40 |  | PAINT | JH | P2-5 | TCASP | PAINT-1 |  |  |  |
| P2.3-9.1130 |  | Trim MEPF & Fixtures / Stair 3-9 | 5d | 2026-05-20 | 2026-05-27 | BP1.233.3.410, P2.3-9.1120 |  |  |  | 174d | 0d |  | 40 |  | R/I.OH | JH | P2-5 | TCASP | R/I.OH |  |  | Harris |
| P2.3-9.1140 |  | Flooring / Stair 3-9 | 5d | 2026-05-28 | 2026-06-03 | P2.3-9.1130 |  |  |  | 174d | 0d |  | 40 |  | FLOOR | JH | P2-5 | TCASP | FLOOR |  |  |  |
| P2.3-9.1150 |  | Doors & Hardware / Stair 3-9 | 5d | 2026-06-04 | 2026-06-10 | P2.3-9.1140 |  |  |  | 174d | 0d |  | 40 |  | DFH | JH | P2-5 | TCASP | DFH | AT29 |  |  |
|  | 6 | **Quality Control Inspections - Stair 3-9** |  | 2026-06-11 | 2026-06-19 |  |  |  |  |  |  |  |  |  |  |  |  |  |  |  |  |  |
| P2.3-9.9000 |  | Trades Inspect & Verify Work Completed to Specs / Stair 3-9 | 2d | 2026-06-11 | 2026-06-12 | P2.3-9.1150 |  |  |  | 174d | 0d |  | 16 | ! | T | JH | P2-5 | TCASP | T |  |  |  |
| P2.3-9.9010 |  | Inspect & Prepare Punchlist / Stair 3-9 | 1d | 2026-06-15 | 2026-06-15 | P2.3-9.9000 |  |  |  | 212d | 0d |  | 8 | ! | ARCH | JH | P2-5 | TCASP | ARCH |  |  |  |
| P2.3-9.9020 |  | Correct Punchlist / Stair 3-9 | 2d | 2026-06-16 | 2026-06-17 | P2.3-9.9010 |  |  |  | 212d | 0d |  | 16 | ! | T | JH | P2-5 | TCASP | T |  |  |  |
| P2.3-9.9030 |  | Final Inspection & Acceptance / Stair 3-9 | 2d | 2026-06-18 | 2026-06-19 | P2.3-9.9020, P2.SUM.255 FF |  |  |  | 212d | 233d |  | 16 | ! | AHJ | JH | P2-5 | TCASP | AHJ |  |  |  |

| ID | WBS | Activity | Duration | Start | Finish | Predecessors | Complete | Planned start | Planned finish | Total float | Free float | Temp Orig Dur | Testing Type | Resp / SRLM | 744 | PHASE | RESP UPD | RESP / Trade | Update Status | Z.RESP | *NIH Resp Check* |
| --- | --- | --- | --- | --- | --- | --- | --- | --- | --- | --- | --- | --- | --- | --- | --- | --- | --- | --- | --- | --- | --- |
|  | 3.10 | **Stair 3-10** |  | 2025-07-23 | 2026-05-29 |  |  |  |  |  |  |  |  |  |  |  |  |  |  |  |  |
| P2.3-10.1030 |  | Metal Railings & Handrails / Stair 3-10 | 5d | 2025-07-23 A | 2025-08-08 A | BP4.055.3.150 | 100% | 2025-08-22 | 2025-08-28 |  |  | 40 | AT44 | MISCMTL | JH | P2-5 | JH | MISCMTL |  |  |  |
| P2.3-10.1000 |  | Framing and Blocking - Interior Walls / Stair 3-10 | 5d | 2026-04-01 | 2026-04-07 | P2.FAC.2.Z1.140 |  |  |  | 189d | 0d | 40 |  | GYP | JH | P2-5 | TCASP | GYP-1 | O |  |  |
| P2.3-10.1010 |  | MEP Rough In / Stair 3-10 | 5d | 2026-04-08 | 2026-04-14 | P2.3-10.1000 |  |  |  | 189d | 0d | 40 |  | R/I.OH | JH | P2-5 | TCASP | R/I.OH | O | Harris |  |
| P2.3-10.1020 |  | Drywall / Stair 3-10 | 5d | 2026-04-15 | 2026-04-21 | P2.3-10.1010 |  |  |  | 189d | 0d | 40 |  | GYP | JH | P2-5 | TCASP | GYP-1 | O |  |  |
| P2.3-10.1040 |  | Prime & Paint Walls / Stair 3-10 | 5d | 2026-04-22 | 2026-04-28 | P2.3-10.1030, P2.3-10.1020 |  |  |  | 189d | 0d | 40 |  | PAINT | JH | P2-5 | TCASP | PAINT-1 | O |  |  |
| P2.3-10.1050 |  | Trim MEPF & Fixtures / Stair 3-10 | 5d | 2026-04-29 | 2026-05-05 | BP1.233.3.410, P2.3-10.1040 |  |  |  | 189d | 0d | 40 |  | R/I.OH | JH | P2-5 | TCASP | R/I.OH | O | Harris |  |
| P2.3-10.1060 |  | Flooring / Stair 3-10 | 5d | 2026-05-06 | 2026-05-12 | P2.3-10.1050 |  |  |  | 189d | 0d | 40 |  | FLOOR | JH | P2-5 | TCASP | FLOOR |  |  |  |
| P2.3-10.1070 |  | Doors & Hardware / Stair 3-10 | 5d | 2026-05-13 | 2026-05-19 | P2.3-10.1060 |  |  |  | 189d | 0d | 40 | AT29 | DFH | JH | P2-5 | TCASP | DFH |  |  |  |
|  | 6 | **Quality Control Inspections - Stair 3-10** |  | 2026-05-20 | 2026-05-29 |  |  |  |  |  |  |  |  |  |  |  |  |  |  |  |  |
| P2.3-10.9000 |  | Trades Inspect & Verify Work Completed to Specs / Stair 3-10 | 2d | 2026-05-20 | 2026-05-21 | P2.3-10.1070 |  |  |  | 189d | 0d | 16 |  | T | JH | P2-5 | TCASP | T |  |  | ! |
| P2.3-10.9010 |  | Inspect & Prepare Punchlist / Stair 3-10 | 1d | 2026-05-22 | 2026-05-22 | P2.3-10.9000 |  |  |  | 227d | 0d | 8 |  | ARCH | JH | P2-5 | TCASP | ARCH |  |  | ! |
| P2.3-10.9020 |  | Correct Punchlist / Stair 3-10 | 2d | 2026-05-26 | 2026-05-27 | P2.3-10.9010 |  |  |  | 227d | 0d | 16 |  | T | JH | P2-5 | TCASP | T |  |  | ! |
| P2.3-10.9030 |  | Final Inspection & Acceptance / Stair 3-10 | 2d | 2026-05-28 | 2026-05-29 | P2.3-10.9020, P2.SUM.255 FF |  |  |  | 227d | 248d | 16 |  | AHJ | JH | P2-5 | TCASP | AHJ |  |  | ! |
|  | 5.8 | **Stair 5-8** |  | 2026-04-29 | 2026-07-06 |  |  |  |  |  |  |  |  |  |  |  |  |  |  |  |  |
| P2.5-8.1000 |  | Framing and Blocking - Interior Walls / Stair 5-8 | 5d | 2026-04-29 | 2026-05-05 | P2.FAC.4.F.120 |  |  |  | 164d | 0d | 40 |  | GYP | JH | P2-5 | TCASP | GYP-1 |  |  |  |
| P2.5-8.1010 |  | MEP Rough In / Stair 5-8 | 5d | 2026-05-06 | 2026-05-12 | P2.5-8.1000 |  |  |  | 164d | 0d | 40 |  | R/I.OH | JH | P2-5 | TCASP | R/I.OH |  | Harris |  |
| P2.5-8.1020 |  | Drywall / Stair 5-8 | 5d | 2026-05-13 | 2026-05-19 | P2.5-8.1010 |  |  |  | 164d | 0d | 40 |  | GYP |  | P2-5 | TCASP | GYP-1 |  |  |  |
| P2.5-8.1030 |  | Metal Railings & Handrails / Stair 5-8 | 5d | 2026-05-20 | 2026-05-27 | P2.5-8.1020, BP4.055.3.150 |  |  |  | 164d | 0d | 40 | AT44 | MISCMTL |  | P2-5 | TCASP | MISCMTL |  |  |  |
| P2.5-8.1040 |  | Prime & Paint Walls / Stair 5-8 | 5d | 2026-05-28 | 2026-06-03 | P2.5-8.1030 |  |  |  | 164d | 0d | 40 |  | PAINT |  | P2-5 | TCASP | PAINT-1 |  |  |  |
| P2.5-8.1050 |  | Trim MEPF & Fixtures / Stair 5-8 | 5d | 2026-06-04 | 2026-06-10 | P2.5-8.1040, BP1.233.3.410 |  |  |  | 164d | 0d | 40 |  | R/I.OH |  | P2-5 | TCASP | R/I.OH |  | Harris |  |
| P2.5-8.1060 |  | Flooring / Stair 5-8 | 5d | 2026-06-11 | 2026-06-17 | P2.5-8.1050 |  |  |  | 164d | 0d | 40 |  | FLOOR |  | P2-5 | TCASP | FLOOR |  |  |  |
| P2.5-8.1070 |  | Doors & Hardware / Stair 5-8 | 5d | 2026-06-18 | 2026-06-24 | P2.5-8.1060 |  |  |  | 164d | 0d | 40 | AT29 | DFH |  | P2-5 | TCASP | DFH |  |  |  |
|  | 6 | **Quality Control Inspections - Stair 5-8** |  | 2026-06-25 | 2026-07-06 |  |  |  |  |  |  |  |  |  |  |  |  |  |  |  |  |
| P2.5-8.9000 |  | Trades Inspect & Verify Work Completed to Specs / Stair 5-8 | 2d | 2026-06-25 | 2026-06-26 | P2.5-8.1070 |  |  |  | 164d | 0d | 16 |  | T |  | P2-5 | TCASP | T |  |  | ! |
| P2.5-8.9010 |  | Inspect & Prepare Punchlist / Stair 5-8 | 1d | 2026-06-29 | 2026-06-29 | P2.5-8.9000 |  |  |  | 202d | 0d | 8 |  | ARCH |  | P2-5 | TCASP | ARCH |  |  | ! |
| P2.5-8.9020 |  | Correct Punchlist / Stair 5-8 | 2d | 2026-06-30 | 2026-07-01 | P2.5-8.9010 |  |  |  | 202d | 0d | 16 |  | T |  | P2-5 | TCASP | T |  |  | ! |
| P2.5-8.9030 |  | Final Inspection & Acceptance / Stair 5-8 | 2d | 2026-07-02 | 2026-07-06 | P2.5-8.9020, P2.SUM.255 FF |  |  |  | 202d | 223d | 16 |  | AHJ |  | P2-5 | TCASP | AHJ |  |  | ! |

| ID | WBS | Activity | Duration | Start | Finish | Predecessors | Complete | Planned start | Planned finish | Total float | Free float | Temp Orig Dur | Testing Type | Resp / SRLM | 744 | PHASE | RESP UPD | RESP / Trade | Update Status | Z.RESP | *NIH Resp Check* |
| --- | --- | --- | --- | --- | --- | --- | --- | --- | --- | --- | --- | --- | --- | --- | --- | --- | --- | --- | --- | --- | --- |
|  | 5.10 | **Stair 5-10** |  | 2025-08-11 | 2026-05-14 |  |  |  |  |  |  |  |  |  |  |  |  |  |  |  |  |
| P2.5-10.1000 |  | Erect Stringers & Platforms / Stair 5-10 | 5d | 2025-08-11 A | 2025-08-29 A | P2.PR.03.610 | 100% | 2025-08-01 | 2025-08-07 |  |  | 40 | AT45 | MISCMTL | JH | P2-5 | JH | MISCMTL |  |  |  |
| P2.5-9.9040 |  | Framing and Blocking - Interior Walls / Stair 5-10 | 5d | 2025-12-01 A | 2025-12-05 A | P2.5-10.1000, P2.PR.EMRR.2.200 | 100% | 2026-01-02 | 2026-01-08 |  |  | 40 |  | GYP | JH | P2-5 | TCASP | GYP-1 | O |  |  |
| P2.5-9.9050 |  | MEP Rough In / Stair 5-10 | 5d | 2026-03-02 A | 2026-03-06 A | P2.5-9.9040 | 100% |  |  |  |  | 40 |  | R/I.OH | JH | P2-5 | TCASP | R/I.OH | O | Harris |  |
| P2.5-9.9070 |  | Metal Railings & Handrails / Stair 5-10 | 5d | 2026-03-09 A | 2026-03-13 A | P2.5-9.9040 | 100% | 2026-03-16 | 2026-03-20 |  |  | 40 | AT44 | MISCMTL | JH | P2-5 | TCASP | MISCMTL | O |  |  |
| P2.5-9.9060 |  | Drywall / Stair 5-10 | 5d | 2026-04-01 | 2026-04-07 | P2.5-9.9050 |  |  |  | 199d | 0d | 40 |  | GYP | JH | P2-5 | TCASP | GYP-1 | O |  |  |
| P2.5-9.9080 |  | Prime & Paint Walls / Stair 5-10 | 5d | 2026-04-08 | 2026-04-14 | P2.5-9.9070, P2.5-9.9060 |  |  |  | 199d | 0d | 40 |  | PAINT | JH | P2-5 | TCASP | PAINT-1 | O |  |  |
| P2.5-9.9090 |  | Trim MEPF & Fixtures / Stair 5-10 | 5d | 2026-04-15 | 2026-04-21 | BP1.233.3.410, P2.5-9.9080 |  |  |  | 199d | 0d | 40 |  | R/I.OH | JH | P2-5 | TCASP | R/I.OH |  | Harris |  |
| P2.5-9.9100 |  | Flooring / Stair 5-10 | 5d | 2026-04-22 | 2026-04-28 | P2.5-9.9090 |  |  |  | 199d | 0d | 40 |  | FLOOR | JH | P2-5 | TCASP | FLOOR |  |  |  |
| P2.5-9.9110 |  | Doors & Hardware / Stair 5-10 | 5d | 2026-04-29 | 2026-05-05 | P2.5-9.9100 |  |  |  | 199d | 0d | 40 | AT29 | DFH | JH | P2-5 | TCASP | DFH |  |  |  |
|  | 6 | **Quality Control Inspections - Stair 5-10** |  | 2026-05-06 | 2026-05-14 |  |  |  |  |  |  |  |  |  |  |  |  |  |  |  |  |
| P2.5-10.9000 |  | Trades Inspect & Verify Work Completed to Specs / Stair 5-10 | 2d | 2026-05-06 | 2026-05-07 | P2.5-9.9110 |  |  |  | 199d | 0d | 16 |  | T | JH | P2-5 | TCASP | T |  |  | ! |
| P2.5-10.9010 |  | Inspect & Prepare Punchlist / Stair 5-10 | 1d | 2026-05-08 | 2026-05-08 | P2.5-10.9000 |  |  |  | 237d | 0d | 8 |  | ARCH | JH | P2-5 | TCASP | ARCH |  |  | ! |
| P2.5-10.9020 |  | Correct Punchlist / Stair 5-10 | 2d | 2026-05-11 | 2026-05-12 | P2.5-10.9010 |  |  |  | 237d | 0d | 16 |  | T | JH | P2-5 | TCASP | T |  |  | ! |
| P2.5-10.9030 |  | Final Inspection & Acceptance / Stair 5-10 | 2d | 2026-05-13 | 2026-05-14 | P2.5-10.9020, P2.SUM.255 FF |  |  |  | 237d | 258d | 16 |  | AHJ | JH | P2-5 | TCASP | AHJ |  |  | ! |
|  | 6.9 | **Stair 6-9** |  | 2025-08-11 | 2026-05-29 |  |  |  |  |  |  |  |  |  |  |  |  |  |  |  |  |
| P2.6-9.1000 |  | Framing and Blocking - Interior Walls / Stair 6-9 | 5d | 2025-08-11 A | 2025-09-11 A | P2.B2.S.1420 | 100% | 2025-08-22 | 2025-08-28 |  |  | 40 |  | GYP | JH | P2-5 | TCASP | GYP-1 | O |  |  |
| P2.6-9.1010 |  | MEP Rough In / Stair 6-9 | 5d | 2026-04-01 | 2026-04-07 | P2.6-9.1000 |  |  |  | 189d | 0d | 40 |  | R/I.OH | JH | P2-5 | TCASP | R/I.OH | O | Harris |  |
| P2.6-9.1020 |  | Drywall / Stair 6-9 | 5d | 2026-04-08 | 2026-04-14 | P2.6-9.1010 |  |  |  | 189d | 0d | 40 |  | GYP | JH | P2-5 | TCASP | GYP-1 | O |  |  |
| P2.6-9.1030 |  | Metal Railings & Handrails / Stair 6-9 | 5d | 2026-04-15 | 2026-04-21 | P2.6-9.1020, BP4.055.3.150 |  |  |  | 189d | 0d | 40 | AT44 | MISCMTL | JH | P2-5 | TCASP | MISCMTL | O |  |  |
| P2.6-9.1040 |  | Prime & Paint Walls / Stair 6-9 | 5d | 2026-04-22 | 2026-04-28 | P2.6-9.1030 |  |  |  | 189d | 0d | 40 |  | PAINT | JH | P2-5 | TCASP | PAINT-1 |  |  |  |
| P2.6-9.1050 |  | Trim MEPF & Fixtures / Stair 6-9 | 5d | 2026-04-29 | 2026-05-05 | BP1.233.3.410, P2.6-9.1040 |  |  |  | 189d | 0d | 40 |  | R/I.OH | JH | P2-5 | TCASP | R/I.OH |  | Harris |  |
| P2.6-9.1060 |  | Flooring / Stair 6-9 | 5d | 2026-05-06 | 2026-05-12 | P2.6-9.1050 |  |  |  | 189d | 0d | 40 |  | FLOOR | JH | P2-5 | TCASP | FLOOR |  |  |  |
| P2.6-9.1070 |  | Doors & Hardware / Stair 6-9 | 5d | 2026-05-13 | 2026-05-19 | P2.6-9.1060 |  |  |  | 189d | 0d | 40 | AT29 | DFH | JH | P2-5 | TCASP | DFH |  |  |  |

| ID | WBS | Activity | Duration | Start | Finish | Predecessors | Complete | Planned start | Planned finish | Total float | Free float | Temp Orig Dur | *NIH Resp Check* | Resp / SRLM | 744 | PHASE | RESP UPD | RESP / Trade | Z.RESP | Update Status | NOTES | Pick | Act ID Temp |
| --- | --- | --- | --- | --- | --- | --- | --- | --- | --- | --- | --- | --- | --- | --- | --- | --- | --- | --- | --- | --- | --- | --- | --- |
|  | 6 | **Quality Control Inspections - Stair 6-9** |  | 2026-05-20 | 2026-05-29 |  |  |  |  |  |  |  |  |  |  |  |  |  |  |  |  |  |  |
| P2.6-9.9000 |  | Trades Inspect & Verify Work Completed to Specs / Stair 6-9 | 2d | 2026-05-20 | 2026-05-21 | P2.6-9.1070 |  |  |  | 189d | 0d | 16 | ! | T | JH | P2-5 | TCASP | T |  |  |  |  |  |
| P2.6-9.9010 |  | Inspect & Prepare Punchlist / Stair 6-9 | 1d | 2026-05-22 | 2026-05-22 | P2.6-9.9000 |  |  |  | 227d | 0d | 8 | ! | ARCH | JH | P2-5 | TCASP | ARCH |  |  |  |  |  |
| P2.6-9.9020 |  | Correct Punchlist / Stair 6-9 | 2d | 2026-05-26 | 2026-05-27 | P2.6-9.9010 |  |  |  | 227d | 0d | 16 | ! | T | JH | P2-5 | TCASP | T |  |  |  |  |  |
| P2.6-9.9030 |  | Final Inspection & Acceptance / Stair 6-9 | 2d | 2026-05-28 | 2026-05-29 | P2.6-9.9020, P2.SUM.255 FF |  |  |  | 227d | 248d | 16 | ! | AHJ | JH | P2-5 | TCASP | AHJ |  |  |  |  |  |
|  | 4 | **SHAFTS** |  | 2024-11-26 | 2026-06-10 |  |  |  |  |  |  |  |  |  |  |  |  |  |  |  |  |  |  |
|  | 10 | **MEP Shafts - Z1** |  | 2024-11-26 | 2026-06-10 |  |  |  |  |  |  |  |  |  |  |  |  |  |  |  |  |  |  |
|  | 13 | **Mechanical Shaft - 2860** |  | 2025-02-10 | 2025-02-28 |  |  |  |  |  |  |  |  |  |  |  |  |  |  |  |  |  |  |
| DDD3160 |  | MEP Systems Install - Risers L7-PH / Shaft - 2860 | 5d | 2025-02-10 A | 2025-02-13 A | P2.MR/PS.03.510, P2.BIM.MEPR.40.110 | 100% | 2025-03-19 | 2025-03-25 |  |  | 40 |  | MEP |  | P2-5 |  | MEP-2 | Harris |  |  |  |  |
| DDD3180 |  | Test Systems - Risers / Shaft - 2860 | 2d | 2025-02-14 A | 2025-02-17 A | DDD3160 | 100% | 2025-03-26 | 2025-03-27 |  |  | 16 |  | MEP |  | P2-5 |  | MEP-2 | Harris |  |  |  |  |
| DDD3170 |  | Insulate - Risers / Shaft - 2860 | 3d | 2025-02-18 A | 2025-02-19 A | DDD3180 | 100% | 2025-04-14 | 2025-04-16 |  |  | 24 |  | INSUL |  | P2-5 |  | INSUL-3 | Harris |  |  |  |  |
| DDD3190 |  | Inspections - Close In / Shaft - 2860 | 5d | 2025-02-20 A | 2025-02-24 A | DDD3170 | 100% | 2025-04-17 | 2025-04-23 |  |  | 40 |  | AHJ |  | P2-5 |  | AHJ |  |  |  |  |  |
| DDD3200 |  | Gypsum Shaft Walls / Shaft - 2860 | 5d | 2025-02-25 A | 2025-02-28 A | DDD3190 | 100% | 2025-04-24 | 2025-04-30 |  |  | 40 |  | GYP |  | P2-5 |  | GYP-1 |  |  |  |  |  |
|  | 2 | **Mechanical Shaft - 2950** |  | 2025-04-10 | 2025-12-30 |  |  |  |  |  |  |  |  |  |  |  |  |  |  |  |  |  |  |
| DDD3110 |  | MEP Systems Install - Risers B2-L4 / Shaft - 2950 | 7d | 2025-04-10 A | 2025-04-16 A | P2.4.03.510, P2.BIM.MEPR.40.110, P2.2.I.03.320 | 100% | 2025-05-01 | 2025-05-09 |  |  | 120 |  | MEP |  | P2-5 |  | MEP-2 | Harris |  |  |  |  |
| DDD3290 |  | MEP Systems Install - Risers L4-L7 / Shaft - 2950 | 5d | 2025-08-19 A | 2025-08-22 A | DDD3110, P2.7.03.510 | 100% | 2025-08-01 | 2025-08-07 |  |  | 120 |  | MEP | JP | P2-5 | JP | MEP-2 | Harris |  |  |  |  |
| DDD3300 |  | MEP Systems Install - Risers L7-PH / Shaft - 2950 | 5d | 2025-08-19 A | 2025-08-22 A | DDD3290, P2.MR/PS.03.510, P2.MR/PS.03.610 | 100% | 2025-08-08 | 2025-08-14 |  |  | 120 |  | MEP | JP | P2-5 | JP | MEP-2 | Harris |  |  |  |  |
| DDD3130 |  | Test Systems - Risers / Shaft - 2950 | 5d | 2025-10-29 A | 2025-11-24 A | DDD3300, DDD3110 | 100% | 2025-10-01 | 2025-10-07 |  |  | 40 |  | MEP | JP | P2-5 | TS | MEP-2 | Harris |  |  |  |  |
| DDD3140 |  | Inspections - Close In / Shaft - 2950 | 5d | 2025-12-15 A | 2025-12-19 A | DDD3130 | 100% | 2026-01-02 | 2026-01-08 |  |  | 40 |  | AHJ | JP | P2-5 | TS | AHJ |  | O |  |  |  |
| DDD3150 |  | Gypsum Shaft Walls / Shaft - 2950 | 10d | 2025-12-22 A | 2025-12-30 A | DDD3140 | 100% | 2026-01-09 | 2026-01-22 |  |  | 80 |  | GYP | JP | P2-5 | TS | GYP-1 |  | O |  |  |  |
|  | 12 | **Mechanical Shaft - 3830** |  | 2026-03-23 | 2026-06-10 |  |  |  |  |  |  |  |  |  |  |  |  |  |  |  |  |  |  |
| DDD3060 |  | MEP Systems Install - Risers B2-L4 / Shaft - 3830 | 5d | 2026-03-23 A | 2026-03-31 A | P2.4.03.510, P2.BIM.MEPR.40.110, P2.4.I.03.320 | 100% | 2026-03-02 | 2026-03-06 |  |  | 120 |  | MEP | JP | P2-5 | SM | MEP-2 | Harris | O |  |  |  |
| DDD3310 |  | MEP Systems Install - Risers L4-L7 / Shaft - 3830 | 5d | 2026-04-01 | 2026-04-07 | DDD3060, P2.7.03.510 |  |  |  | 9d | 0d | 120 |  | MEP | JP | P2-5 | SM | MEP-2 | Harris | O |  |  |  |
| DDD3320 |  | MEP Systems Install - Risers L7-PH / Shaft - 3830 | 5d | 2026-04-08 | 2026-04-14 | DDD3310, P2.MR/PS.03.510, P2.MR/PS.03.610 |  |  |  | 9d | 0d | 120 |  | MEP | JP | P2-5 | SM | MEP-2 | Harris | O | 8/28 per harris schedule |  |  |
| DDD3080 |  | Test Systems - Risers / Shaft - 3830 | 5d | 2026-04-15 | 2026-04-21 | DDD3320 |  |  |  | 9d | 0d | 40 |  | MEP | JP | P2-5 | SM | MEP-2 | Harris | O |  |  |  |
| FRG.ROF.7.1000 |  | Insulate B2-L2 / ROF7 - FRAGNET | 5d | 2026-04-22 | 2026-04-28 | DDD3080 |  |  |  | 44d | 0d | 80 |  | Harris Fragnet | TA | P2-5 | SM | FIT-2 | Harris | O |  | 2 | P2.B2.23.20.410 |
| FRG.ROF.7.1010 |  | Insulate L3-L4 / ROF7 - FRAGNET | 5d | 2026-04-29 | 2026-05-05 | FRG.ROF.7.1000 |  |  |  | 44d | 0d | 80 |  | Harris Fragnet | TA | P2-5 | SM | FIT-2 | Harris |  |  | 2 | P2.B2.23.20.410 |
| FRG.ROF.7.1020 |  | Insulate L5-L6 / ROF7 - FRAGNET | 5d | 2026-05-06 | 2026-05-12 | FRG.ROF.7.1010 |  |  |  | 44d | 0d | 80 |  | Harris Fragnet | TA | P2-5 | SM | FIT-2 | Harris |  |  | 2 | P2.B2.23.20.410 |
| DDD3070 |  | Insulate - Risers / Shaft - 3830 | 5d | 2026-05-13 | 2026-05-19 | DDD3080, FRG.ROF.7.1030 FF |  |  |  | 44d | 0d | 40 |  | INSUL | JP | P2-5 | SM | INSUL-3 | Harris |  |  |  |  |
| FRG.ROF.7.1030 |  | Insulate L7-PH / ROF7 - FRAGNET | 5d | 2026-05-13 | 2026-05-19 | FRG.ROF.7.1020 |  |  |  | 44d | 0d | 80 |  | Harris Fragnet | TA | P2-5 | SM | FIT-2 | Harris |  | 9/12 per Harris schedule | 2 | P2.B2.23.20.410 |
| DDD3090 |  | Inspections - Close In / Shaft - 3830 | 5d | 2026-05-20 | 2026-05-27 | DDD3070, FRG.ROF.7.1030 |  |  |  | 44d | 0d | 40 |  | AHJ | JP | P2-5 | SM | AHJ |  |  |  |  |  |
| DDD3100 |  | Gypsum Shaft Walls / Shaft - 3830 | 10d | 2026-05-28 | 2026-06-10 | DDD3090 |  |  |  | 44d | 0d | 80 |  | GYP | JP | P2-5 | SM | GYP-1 |  |  |  |  |  |

| ID | WBS | Activity | Duration | Start | Finish | Predecessors | Complete | Remaining | Planned start | Planned finish | Total float | Free float | Temp Orig Dur | Resp / SRLM | PHASE | Z.RESP | RESP / Trade | 744 | RESP UPD | Pick | Act ID Temp | NOTES | Update Status | Testing Type |
| --- | --- | --- | --- | --- | --- | --- | --- | --- | --- | --- | --- | --- | --- | --- | --- | --- | --- | --- | --- | --- | --- | --- | --- | --- |
|  | 8 | **Mechanical Shaft - 3902** |  | 2025-05-08 | 2025-12-30 |  |  |  |  |  |  |  |  |  |  |  |  |  |  |  |  |  |  |  |
| DDD3010 |  | MEP Systems Install - Risers B2-L4 / Shaft - 3902 | 7d | 2025-05-08 A | 2025-05-19 A | P2.4.03.510, P2.BIM.MEPR.40.110, P2.4.I.03.310 | 100% |  | 2025-06-02 | 2025-06-10 |  |  | 120 | MEP | P2-5 | Harris | MEP-2 |  |  |  |  |  |  |  |
| DDD3330 |  | MEP Systems Install - Risers L4-L7 / Shaft - 3902 | 5d | 2025-05-19 A | 2025-05-23 A | DDD3010, P2.6.03.510, P2.7.03.510 | 100% |  | 2025-06-11 | 2025-06-17 |  |  | 120 | MEP | P2-5 | Harris | MEP-2 |  |  |  |  |  |  |  |
| DDD3340 |  | MEP Systems Install - Risers L7-PH / Shaft - 3902 | 5d | 2025-08-27 A | 2025-10-27 A | DDD3330, P2.MR/PS.03.510, P2.MR/PS.03.610 | 100% |  | 2025-08-01 | 2025-08-07 |  |  | 120 | MEP | P2-5 | Harris | MEP-2 | JP | JP |  |  |  |  |  |
| FRG.P2.ROG.5.1040 |  | Install Fill-in Pieces & Branches / ROG5 - FRAGNET | 15d | 2025-09-24 A | 2025-10-27 A | DDD3340 FF, FRG.RED.0.1060 | 100% |  | 2025-09-30 | 2025-10-20 |  |  | 80 | Harris Fragnet | P2-5 | Harris | FIT-2 | TA | TA | 2 | P2.B2.23.20.410 | 9/5 per harris schedule |  |  |
| DDD3030 |  | Test Systems - Risers / Shaft - 3902 | 5d | 2025-10-31 A | 2025-11-21 A | DDD3340, FRG.P2.ROG.5.1040 | 100% |  | 2025-10-06 | 2025-10-10 |  |  | 40 | MEP | P2-5 | Harris | MEP-2 | JP | TS |  |  |  |  |  |
| DDD3040 |  | Inspections - Close In / Shaft - 3902 | 5d | 2025-12-15 A | 2025-12-19 A | FRG.P2.ROG.5.1040, DDD3030 | 100% |  | 2026-01-02 | 2026-01-08 |  |  | 40 | AHJ | P2-5 |  | AHJ | JP | TS |  |  |  | O |  |
| DDD3050 |  | Gypsum Shaft Walls / Shaft - 3902 | 10d | 2025-12-22 A | 2025-12-30 A | DDD3040 | 100% |  | 2026-01-09 | 2026-01-22 |  |  | 80 | GYP | P2-5 |  | GYP-1 | JP | TS |  |  |  | O |  |
|  | 11 | **Mechanical Shaft - 3940** |  | 2024-12-17 | 2025-12-19 |  |  |  |  |  |  |  |  |  |  |  |  |  |  |  |  |  |  |  |
| DDD2960 |  | MEP Systems Install - Risers L2-L6 / Shaft - 3940 | 5d | 2024-12-17 A | 2024-12-19 A | P2.6.03.510, P2.BIM.MEPR.40.110 | 100% |  | 2025-01-02 | 2025-01-08 |  |  | 120 | MEP | P2-5 | Harris | MEP-2 |  |  |  |  |  |  |  |
| DDD2980 |  | Test Systems - Risers / Shaft - 3940 | 5d | 2025-06-02 A | 2025-06-06 A | DDD2960, DDD2930 | 100% |  | 2025-08-13 | 2025-08-19 |  |  | 40 | MEP | P2-5 | Harris | MEP-2 | JP | JP |  |  |  |  |  |
| DDD2970 |  | Insulate - Risers / Shaft - 3940 | 5d | 2025-08-18 A | 2025-08-22 A | DDD2980 | 100% |  | 2025-09-04 | 2025-09-10 |  |  | 40 | INSUL | P2-5 | Harris | INSUL-3 | JP | JP |  |  |  |  |  |
| DDD2990 |  | Inspections - Close In / Shaft - 3940 | 5d | 2025-12-01 A | 2025-12-05 A | DDD2970 | 100% |  | 2026-01-02 | 2026-01-08 |  |  | 40 | AHJ | P2-5 |  | AHJ | JP | TS |  |  |  | O |  |
| DDD3000 |  | Gypsum Shaft Walls / Shaft - 3940 | 10d | 2025-12-08 A | 2025-12-19 A | DDD2990 | 100% |  | 2026-01-09 | 2026-01-22 |  |  | 80 | GYP | P2-5 |  | GYP-1 | JP | TS |  |  |  | O |  |
|  | 9 | **Mechanical Shaft - 3959** |  | 2025-01-28 | 2026-01-22 |  |  |  |  |  |  |  |  |  |  |  |  |  |  |  |  |  |  |  |
| DDD2910 |  | MEP Systems Install - Risers B2-L4 / Shaft - 3959 | 5d | 2025-01-28 A | 2025-01-30 A | P2.4.03.510, P2.BIM.MEPR.40.110 | 100% |  | 2025-02-03 | 2025-02-07 |  |  | 120 | MEP | P2-5 | Harris | MEP-2 |  |  |  |  |  |  |  |
| DDD3350 |  | MEP Systems Install - Risers L4-L7 / Shaft - 3959 | 5d | 2025-01-28 A | 2025-01-30 A | DDD2910, P2.7.03.510 | 100% |  | 2025-02-10 | 2025-02-14 |  |  | 120 | MEP | P2-5 | Harris | MEP-2 |  |  |  |  |  |  |  |
| DDD3360 |  | MEP Systems Install - Risers L7-PH / Shaft - 3959 | 5d | 2025-01-28 A | 2025-01-30 A | DDD3350 | 100% |  | 2025-03-12 | 2025-03-18 |  |  | 120 | MEP | P2-5 | Harris | MEP-2 |  |  |  |  |  |  |  |
| DDD2930 |  | Test Systems - Risers / Shaft - 3959 | 5d | 2025-06-02 A | 2025-06-06 A | DDD3360 | 100% |  | 2025-08-06 | 2025-08-12 |  |  | 40 | MEP | P2-5 | Harris | MEP-2 | JP | JP |  |  |  |  |  |
| DDD2920 |  | Insulate - Risers / Shaft - 3959 | 5d | 2025-08-18 A | 2025-09-29 A | DDD2930 | 100% |  | 2025-09-04 | 2025-09-10 |  |  | 40 | INSUL | P2-5 | Harris | INSUL-3 | JP | JP |  |  |  | O |  |
| DDD2940 |  | Inspections - Close In / Shaft - 3959 | 5d | 2025-12-01 A | 2025-12-01 A | DDD2920 | 100% |  | 2026-01-02 | 2026-01-08 |  |  | 40 | AHJ | P2-5 |  | AHJ | JP | TS |  |  |  | O |  |
| DDD2950 |  | Gypsum Shaft Walls / Shaft - 3959 | 10d | 2026-01-09 A | 2026-01-22 A | DDD2940 | 100% |  |  |  |  |  | 80 | GYP | P2-5 |  | GYP-1 | JP | TS |  |  |  | O |  |
|  | 4 | **Mechanical Shaft - 5970** |  | 2024-12-03 | 2026-04-08 |  |  |  |  |  |  |  |  |  |  |  |  |  |  |  |  |  |  |  |
| DDD2860 |  | MEP Systems Install - Risers B2-L4 / Shaft - 5970 | 5d | 2024-12-03 A | 2024-12-05 A | P2.4.03.510, P2.BIM.MEPR.40.110 | 100% |  | 2025-01-02 | 2025-01-08 |  |  | 120 | MEP | P2-5 | Harris | MEP-2 |  |  |  |  |  |  |  |
| DDD3370 |  | MEP Systems Install - Risers L4- L7 / Shaft - 5970 | 5d | 2025-02-03 A | 2025-02-03 A | DDD2860, P2.7.03.510 | 100% |  | 2025-03-03 | 2025-03-07 |  |  | 120 | MEP | P2-5 | Harris | MEP-2 |  |  |  |  |  |  |  |
| DDD3380 |  | MEP Systems Install - Risers L7-PH / Shaft - 5970 | 5d | 2025-06-18 A | 2025-07-11 A | DDD3370, P2.MR/PS.03.510, P2.MR/PS.03.610 | 100% |  | 2025-07-01 | 2025-07-08 |  |  | 120 | MEP | P2-5 | Harris | MEP-2 | JP | JP |  |  |  |  |  |
| FRG.P2.RSJ.6.1000 |  | Install Fill-in Pieces & Branches / RSJ6 - FRAGNET | 15d | 2025-09-02 A | 2025-09-22 A | DDD3380 | 100% |  | 2025-10-01 | 2025-10-21 |  |  | 80 | Harris Fragnet | P2-5 | Harris | FIT-2 | TA | TA | 2 | P2.B2.23.20.410 | 9/5 per harris schedule | O |  |
| DDD2880 |  | Test Systems - Risers / Shaft - 5970 | 5d | 2025-09-26 A | 2025-11-07 A | DDD3380, FRG.P2.RSJ.6.1000 | 100% |  | 2025-10-22 | 2025-10-28 |  |  | 40 | MEP | P2-5 | Harris | MEP-2 | JP | TS |  |  |  |  |  |
| FRG.P2.RSJ.6.1010 |  | Prep/Test Riser / RSJ6 - FRAGNET | 4d | 2025-09-26 A | 2025-10-23 A | FRG.P2.RSJ.6.1000 | 100% |  | 2025-10-22 | 2025-10-27 |  |  | 80 | Harris Fragnet | P2-5 | Harris | FIT-2 | TA | TA | 2 | P2.B2.23.20.410 |  |  |  |
| FRG.P2.RSJ.6.1100 |  | Install Clamps B2-L2 / RSJ6 - FRAGNET | 5d | 2025-10-07 A | 2025-10-15 A | DDD2880 | 100% |  | 2025-10-02 | 2025-10-08 |  |  | 80 | Harris Fragnet | P2-5 | Harris | FIT-2 | TA | TA | 2 | P2.B2.23.20.410 |  |  |  |
| FRG.P2.RSJ.6.1020 |  | Insulate B2-L2 / RSJ6 - FRAGNET | 5d | 2025-10-09 A | 2025-11-14 A | FRG.P2.RSJ.6.1010, FRG.P2.RSJ.6.1110 | 100% |  | 2025-10-09 | 2025-10-15 |  |  | 80 | Harris Fragnet | P2-5 | Harris | FIT-2 | TA | TS | 2 | P2.B2.23.20.410 |  |  |  |
| FRG.P2.RSJ.6.1030 |  | Insulate L3-L4 / RSJ6 - FRAGNET | 5d | 2025-10-15 A | 2025-11-24 A | FRG.P2.RSJ.6.1020 | 100% |  | 2025-10-16 | 2025-10-22 |  |  | 80 | Harris Fragnet | P2-5 | Harris | FIT-2 | TA | TS | 2 | P2.B2.23.20.410 |  |  |  |
| FRG.P2.RSJ.6.1110 |  | Install Clamps L3-L4 / RSJ6 - FRAGNET | 5d | 2025-10-15 A | 2025-10-23 A | FRG.P2.RSJ.6.1100 SS | 100% |  | 2025-10-02 | 2025-10-08 |  |  | 80 | Harris Fragnet | P2-5 | Harris | FIT-2 | TA | TA | 2 | P2.B2.23.20.410 |  |  |  |
| FRG.P2.RSJ.6.1120 |  | Install Clamps L5-L6 / RSJ6 - FRAGNET | 10d | 2025-10-24 A | 2025-10-24 A | FRG.P2.RSJ.6.1110 | 100% |  | 2025-10-09 | 2025-10-22 |  |  | 80 | Harris Fragnet | P2-5 | Harris | FIT-2 | TA | TA | 2 | P2.B2.23.20.410 |  |  |  |
| FRG.P2.RSJ.6.1130 |  | Install Clamps L7-PH / RSJ6 - FRAGNET | 10d | 2025-11-10 A | 2025-12-26 A | FRG.P2.RSJ.6.1120 SS | 100% |  | 2025-12-08 | 2025-12-19 |  |  | 80 | Harris Fragnet | P2-5 | Harris | FIT-2 | TA | TS | 2 | P2.B2.23.20.410 | 10/9 per harris schedule | O |  |
| FRG.P2.RSJ.6.1040 |  | Insulate L5-L6 / RSJ6 - FRAGNET | 5d | 2025-12-01 A | 2025-12-05 A | FRG.P2.RSJ.6.1030 | 100% |  | 2026-01-02 | 2026-01-08 |  |  | 80 | Harris Fragnet | P2-5 | Harris | FIT-2 | TA | TS | 2 | P2.B2.23.20.410 |  | O |  |
| FRG.P2.RSJ.6.1050 |  | Insulate L7-PH / RSJ6 - FRAGNET | 5d | 2025-12-08 A | 2025-12-12 A | FRG.P2.RSJ.6.1040 | 100% |  | 2026-01-09 | 2026-01-15 |  |  | 80 | Harris Fragnet | P2-5 | Harris | FIT-2 | TA | TS | 2 | P2.B2.23.20.410 | 10/9 per Harris schedule | O |  |
| DDD2890 |  | Inspections - Close In / Shaft - 5970 | 5d | 2026-02-09 A | 2026-04-01 | FRG.P2.RSJ.6.1130, FRG.P2.RSJ.6.1050, DDD2880 | 80% | 1d | 2026-03-02 | 2026-03-06 | 68d | 0d | 40 | AHJ | P2-5 |  | AHJ | JP | TS |  |  |  | O |  |
| DDD2900 |  | CMU Shaft Walls / Shaft - 5970 | 10d | 2026-02-09 A | 2026-04-08 | DDD2890, BP4.040.3.100 | 50% | 5d | 2026-03-09 | 2026-03-20 | 68d | 0d | 80 | CMU | P2-5 |  | CMU | JP | TS |  |  |  | O | AT3 |

| ID | WBS | Activity | Duration | Start | Finish | Predecessors | Complete | Remaining | Planned start | Planned finish | Total float | Free float | Testing Type | Resp / SRLM | PHASE | RESP / Trade | Temp Orig Dur | Update Status | 744 | RESP UPD | Z.RESP | NOTES | Pick | Act ID Temp |
| --- | --- | --- | --- | --- | --- | --- | --- | --- | --- | --- | --- | --- | --- | --- | --- | --- | --- | --- | --- | --- | --- | --- | --- | --- |
|  | 1 | **Mechanical Shaft - 5971** |  | 2025-04-01 | 2026-04-08 |  |  |  |  |  |  |  |  |  |  |  |  |  |  |  |  |  |  |  |
| DDD3260 |  | Steel Grating / Shaft - 5971 | 5d | 2025-04-01 A | 2025-04-17 A | P2.PR.03.510 | 100% |  | 2025-05-01 | 2025-05-07 |  |  | AT46 | MISCMTL | P2-5 | MISCMTL |  |  |  |  |  |  |  |  |
| DDD2840 |  | Inspections - Close In / Shaft - 5971 | 5d | 2026-03-23 A | 2026-04-01 | P2.L2.SMT.1000 | 80% | 1d | 2026-03-02 | 2026-03-06 | 78d | 0d |  | AHJ | P2-5 | AHJ | 40 | O | JP | TS |  |  |  |  |
| DDD2850 |  | Gypsum Shaft Walls / Shaft - 5971 | 10d | 2026-03-24 A | 2026-04-08 | DDD2840 | 50% | 5d | 2026-03-09 | 2026-03-20 | 78d | 34d |  | GYP | P2-5 | GYP-1 | 80 | O | JP | TS |  |  |  |  |
|  | 3 | **Mechanical Shaft - 5972** |  | 2024-12-20 | 2026-03-13 |  |  |  |  |  |  |  |  |  |  |  |  |  |  |  |  |  |  |  |
| DDD2760 |  | MEP Systems Install - Risers B2-L4 / Shaft - 5972 | 5d | 2024-12-20 A | 2024-12-20 A | P2.4.03.510, P2.BIM.MEPR.40.110 | 100% |  | 2025-01-02 | 2025-01-08 |  |  |  | MEP | P2-5 | MEP-2 | 120 |  |  |  | Harris |  |  |  |
| DDD3390 |  | MEP Systems Install - Risers L4-L7 / Shaft - 5972 | 5d | 2025-01-31 A | 2025-01-31 A | DDD2760, P2.7.03.510 | 100% |  | 2025-02-03 | 2025-02-07 |  |  |  | MEP | P2-5 | MEP-2 | 120 |  |  |  | Harris |  |  |  |
| DDD3400 |  | MEP Systems Install - Risers L7-PH / Shaft - 5972 | 5d | 2025-05-20 A | 2025-06-18 A | DDD3390, P2.MR/PS.03.510, P2.PR.03.510, P2.MR/PS.03.610 | 100% |  | 2025-06-02 | 2025-06-06 |  |  |  | MEP | P2-5 | MEP-2 | 120 |  | JP | JP | Harris |  |  |  |
| DDD2780 |  | Test Systems - Risers / Shaft - 5972 | 5d | 2025-08-25 A | 2025-08-30 A | DDD3400 | 100% |  | 2025-10-01 | 2025-10-07 |  |  |  | MEP | P2-5 | MEP-2 | 40 | O | JP | JP | Harris |  |  |  |
| DDD2770 |  | Insulate - Risers / Shaft - 5972 | 5d | 2025-09-23 A | 2025-09-30 A | DDD2780 | 100% |  | 2025-10-08 | 2025-10-14 |  |  |  | INSUL | P2-5 | INSUL-3 | 40 | O | JP | JP | Harris |  |  |  |
| DDD2790 |  | Inspections - Close In / Shaft - 5972 | 5d | 2025-11-17 A | 2025-11-24 A | DDD2770 | 100% |  | 2025-12-01 | 2025-12-05 |  |  |  | AHJ | P2-5 | AHJ | 40 |  | JP | TS |  |  |  |  |
| DDD2800 |  | CMU Shaft Walls / Shaft - 5972 | 10d | 2026-03-02 A | 2026-03-13 A | DDD2790 | 100% |  |  |  |  |  | AT3 | CMU | P2-5 | CMU | 80 | O | JP | TS |  |  |  |  |
|  | 5 | **Mechanical Shaft - 5973** |  | 2024-11-26 | 2026-04-22 |  |  |  |  |  |  |  |  |  |  |  |  |  |  |  |  |  |  |  |
| DDD2710 |  | MEP Systems Install - Risers L1-L4 / Shaft - 5973 | 5d | 2024-11-26 A | 2024-11-26 A | P2.4.03.510, P2.BIM.MEPR.40.110 | 100% |  | 2024-12-02 | 2024-12-06 |  |  |  | MEP | P2-5 | MEP-2 | 120 |  |  |  | Harris |  |  |  |
| DDD3410 |  | MEP Systems Install - Risers L4-L7 / Shaft - 5973 | 5d | 2024-11-26 A | 2024-11-26 A | DDD2710, P2.7.03.310 | 100% |  | 2025-01-20 | 2025-01-24 |  |  |  | MEP | P2-5 | MEP-2 | 120 |  |  |  | Harris |  |  |  |
| DDD3420 |  | MEP Systems Install - Risers L7-PH / Shaft - 5973 | 5d | 2025-08-11 A | 2025-09-30 A | DDD3410, P2.MR/PS.03.510, P2.PR.03.510, P2.MR/PS.03.610 | 100% |  | 2025-08-01 | 2025-08-07 |  |  |  | MEP | P2-5 | MEP-2 | 120 | O | JP | JP | Harris |  |  |  |
| DDD2720 |  | Insulate - Risers / Shaft - 5973 | 5d | 2025-10-07 A | 2025-10-24 A | DDD2730 | 100% |  | 2025-10-08 | 2025-10-14 |  |  |  | INSUL | P2-5 | INSUL-3 | 40 |  | JP | JP | Harris |  |  |  |
| DDD2730 |  | Test Systems - Risers / Shaft - 5973 | 5d | 2025-10-07 A | 2025-11-07 A | DDD3420 | 100% |  | 2025-10-01 | 2025-10-07 |  |  |  | MEP | P2-5 | MEP-2 | 40 |  | JP | TS | Harris |  |  |  |
| DDD2740 |  | Inspections - Close In / Shaft - 5973 | 5d | 2025-11-10 A | 2026-04-07 | DDD2720 |  | 5d | 2025-12-08 | 2025-12-12 | 69d | 1d |  | AHJ | P2-5 | AHJ | 40 | O | JP | TS |  |  |  |  |
| DDD2750 |  | CMU Shaft Walls / Shaft - 5973 | 10d | 2026-04-09 | 2026-04-22 | DDD2740, DDD2900 |  |  |  |  | 68d | 24d | AT3 | CMU | P2-5 | CMU | 80 | O | JP | TS |  |  |  |  |
|  | 6 | **Mechanical Shaft - 5975** |  | 2024-11-26 | 2026-04-08 |  |  |  |  |  |  |  |  |  |  |  |  |  |  |  |  |  |  |  |
| DDD2660 |  | MEP Systems Install - Risers B2-L4 / Shaft - 5975 | 5d | 2024-11-26 A | 2024-11-26 A | P2.4.03.510, P2.BIM.MEPR.40.110 | 100% |  | 2024-12-02 | 2024-12-06 |  |  |  | MEP | P2-5 | MEP-2 | 120 |  |  |  | Harris |  |  |  |
| DDD3430 |  | MEP Systems Install - Risers L4-L7 / Shaft - 5975 | 5d | 2024-11-26 A | 2024-11-26 A | DDD2660, P2.7.03.310 | 100% |  | 2025-01-20 | 2025-01-24 |  |  |  | MEP | P2-5 | MEP-2 | 120 |  |  |  | Harris |  |  |  |
| DDD3440 |  | MEP Systems Install - Risers L7-PH / Shaft - 5975 | 5d | 2025-07-28 A | 2025-09-30 A | DDD3430, P2.MR/PS.03.510, P2.PR.03.510, P2.MR/PS.03.610, FRG.P2.RSJ.1.1000 FF | 100% |  | 2025-08-01 | 2025-08-07 |  |  |  | MEP | P2-5 | MEP-2 | 120 | O | JP | JP | Harris | Per JP Projection |  |  |
| FRG.P2.RSJ.1.1000 |  | Install Fill-in Pieces & Branches / RSJ1 - FRAGNET | 20d | 2025-09-02 A | 2025-09-26 A | DDD3430 | 100% |  | 2025-09-02 | 2025-09-29 |  |  |  | Harris Fragnet | P2-5 | FIT-2 | 80 | O | TA | TA | Harris | 8/28 per harris schedule. Per JP end of September projection | 2 | P2.B2.23.20.410 |
| DDD2680 |  | Test Systems - Risers / Shaft - 5975 | 5d | 2025-09-29 A | 2025-10-01 A | DDD3440, FRG.P2.RSJ.1.1010 FF | 100% |  | 2025-10-09 | 2025-10-15 |  |  |  | MEP | P2-5 | MEP-2 | 40 |  | JP | JP | Harris |  |  |  |
| FRG.P2.RSJ.1.1010 |  | Prep/Test Riser / RSJ1 - FRAGNET | 4d | 2025-09-29 A | 2025-10-01 A | FRG.P2.RSJ.1.1000 | 100% |  | 2025-10-01 | 2025-10-06 |  |  |  | Harris Fragnet | P2-5 | FIT-2 | 80 |  | TA | TA | Harris |  | 2 | P2.B2.23.20.410 |
| FRG.P2.RSJ.1.1060 |  | Install Clamps B2-L2 / RSJ1 - FRAGNET | 5d | 2025-10-06 A | 2025-10-10 A | DDD3440 | 100% |  | 2025-10-01 | 2025-10-07 |  |  |  | Harris Fragnet | P2-5 | FIT-2 | 80 |  | TA | TA | Harris |  | 2 | P2.B2.23.20.410 |
| FRG.P2.RSJ.1.1020 |  | Insulate B2-L2 / RSJ1 - FRAGNET | 5d | 2025-10-08 A | 2025-11-07 A | FRG.P2.RSJ.1.1010, FRG.P2.RSJ.1.1070 | 100% |  | 2025-10-08 | 2025-10-14 |  |  |  | Harris Fragnet | P2-5 | FIT-2 | 80 |  | TA | TS | Harris |  | 2 | P2.B2.23.20.410 |
| FRG.P2.RSJ.1.1070 |  | Install Clamps L3-L4 / RSJ1 - FRAGNET | 5d | 2025-10-13 A | 2025-10-17 A | FRG.P2.RSJ.1.1060 SS | 100% |  | 2025-10-01 | 2025-10-07 |  |  |  | Harris Fragnet | P2-5 | FIT-2 | 80 |  | TA | TA | Harris |  | 2 | P2.B2.23.20.410 |
| FRG.P2.RSJ.1.1080 |  | Install Clamps L5-L6 / RSJ1 - FRAGNET | 5d | 2025-10-20 A | 2025-10-27 A | FRG.P2.RSJ.1.1070 | 100% |  | 2025-10-08 | 2025-10-14 |  |  |  | Harris Fragnet | P2-5 | FIT-2 | 80 |  | TA | TA | Harris |  | 2 | P2.B2.23.20.410 |
| FRG.P2.RSJ.1.1090 |  | Install Clamps L7-PH / RSJ1 - FRAGNET | 5d | 2025-10-20 A | 2025-10-27 A | FRG.P2.RSJ.1.1080 SS | 100% |  | 2025-10-08 | 2025-10-14 |  |  |  | Harris Fragnet | P2-5 | FIT-2 | 80 |  | TA | TA | Harris | 10/9 Per harris schedule | 2 | P2.B2.23.20.410 |
| FRG.P2.RSJ.1.1030 |  | Insulate L3-L4 / RSJ1 - FRAGNET | 5d | 2025-11-10 A | 2025-11-21 A | FRG.P2.RSJ.1.1020 | 100% |  | 2025-12-08 | 2025-12-12 |  |  |  | Harris Fragnet | P2-5 | FIT-2 | 80 |  | TA | TS | Harris |  | 2 | P2.B2.23.20.410 |
| FRG.P2.RSJ.1.1040 |  | Insulate L5-L6 / RSJ1 - FRAGNET | 5d | 2025-12-01 A | 2025-12-05 A | FRG.P2.RSJ.1.1030, FRG.P2.RSJ.1.1090 | 100% |  | 2026-01-02 | 2026-01-08 |  |  |  | Harris Fragnet | P2-5 | FIT-2 | 80 | O | TA | TS | Harris |  | 2 | P2.B2.23.20.410 |
| FRG.P2.RSJ.1.1050 |  | Insulate L7-PH / RSJ1 - FRAGNET | 5d | 2025-12-08 A | 2025-12-12 A | FRG.P2.RSJ.1.1040 | 100% |  | 2026-01-09 | 2026-01-15 |  |  |  | Harris Fragnet | P2-5 | FIT-2 | 80 | O | TA | TS | Harris | 10/2 per Harris schedule | 2 | P2.B2.23.20.410 |
| DDD2690 |  | Inspections - Close In / Shaft - 5975 | 5d | 2026-02-09 A | 2026-04-01 | FRG.P2.RSJ.1.1090, FRG.P2.RSJ.1.1050, DDD2680 | 80% | 1d | 2026-03-02 | 2026-03-06 | 78d | 0d |  | AHJ | P2-5 | AHJ | 40 | O | JP | TS |  |  |  |  |
| DDD2700 |  | CMU Shaft Walls / Shaft - 5975 | 10d | 2026-02-09 A | 2026-04-08 | DDD2690 | 50% | 5d | 2026-03-09 | 2026-03-20 | 78d | 34d | AT3 | CMU | P2-5 | CMU | 80 | O | JP | TS |  |  |  |  |

| ID | WBS | Activity | Duration | Start | Finish | Predecessors | Complete | Remaining | Planned start | Planned finish | Total float | Free float | Testing Type | Resp / SRLM | PHASE | RESP / Trade | Pick | Temp Orig Dur | Update Status | Act ID Temp | NOTES | 744 | Z.RESP | RESP UPD |
| --- | --- | --- | --- | --- | --- | --- | --- | --- | --- | --- | --- | --- | --- | --- | --- | --- | --- | --- | --- | --- | --- | --- | --- | --- |
|  | 7 | **Mechanical Shaft - 5976** |  | 2025-04-01 | 2026-04-08 |  |  |  |  |  |  |  |  |  |  |  |  |  |  |  |  |  |  |  |
| DDD2810 |  | Steel Grating / Shaft - 5976 | 5d | 2025-04-01 A | 2025-04-17 A | P2.PR.03.510 | 100% |  | 2025-05-01 | 2025-05-07 |  |  | AT46 | MISCMTL | P2-5 | MISCMTL |  |  |  |  |  |  |  |  |
| FRG.P2.RSJ.4.1000 |  | Install Fill-in Pieces & Branches / RSJ4 - FRAGNET | 20d | 2025-08-11 A | 2025-09-08 A | DDD2810 | 100% |  | 2025-09-02 | 2025-09-29 |  |  |  | Harris Fragnet | P2-5 | FIT-2 | 2 | 80 | O | P2.B2.23.20.410 | 9/5 per harris schedule | TA | Harris | TS |
| FRG.P2.RSJ.4.1010 |  | Prep/Test Riser / RSJ4 - FRAGNET | 4d | 2025-09-18 A | 2025-09-23 A | FRG.P2.RSJ.4.1000 | 100% |  | 2025-09-30 | 2025-10-03 |  |  |  | Harris Fragnet | P2-5 | FIT-2 | 2 | 80 | O | P2.B2.23.20.410 |  | TA | Harris | TS |
| FRG.P2.RSJ.4.1060 |  | Install Clamps B2-L2 / RSJ4 - FRAGNET | 5d | 2025-09-29 A | 2025-10-17 A | FRG.P2.RSJ.4.1010 | 100% |  | 2025-10-20 | 2025-10-24 |  |  |  | Harris Fragnet | P2-5 | FIT-2 | 2 | 80 |  | P2.B2.23.20.410 |  | TA | Harris | TS |
| FRG.P2.RSJ.4.1070 |  | Install Clamps L3-L4 / RSJ4 - FRAGNET | 5d | 2025-10-01 A | 2025-10-07 A | FRG.P2.RSJ.4.1060 SS | 100% |  |  |  |  |  |  | Harris Fragnet | P2-5 | FIT-2 | 2 | 80 |  | P2.B2.23.20.410 |  | TA | Harris | TS |
| FRG.P2.RSJ.4.1020 |  | Insulate B2-L2 / RSJ4 - FRAGNET | 5d | 2025-10-15 A | 2025-11-18 A | FRG.P2.RSJ.4.1010, FRG.P2.RSJ.4.1070 | 100% |  | 2025-10-08 | 2025-10-14 |  |  |  | Harris Fragnet | P2-5 | FIT-2 | 2 | 80 |  | P2.B2.23.20.410 |  | TA | Harris | TS |
| FRG.P2.RSJ.4.1080 |  | Install Clamps L5-L6 / RSJ4 - FRAGNET | 5d | 2025-10-15 A | 2025-10-24 A | FRG.P2.RSJ.4.1070 | 100% |  | 2025-10-08 | 2025-10-14 |  |  |  | Harris Fragnet | P2-5 | FIT-2 | 2 | 80 |  | P2.B2.23.20.410 |  | TA | Harris | TS |
| FRG.P2.RSJ.4.1030 |  | Insulate L3-L4 / RSJ4 - FRAGNET | 5d | 2025-10-16 A | 2025-11-26 A | FRG.P2.RSJ.4.1020 | 100% |  | 2025-10-15 | 2025-10-21 |  |  |  | Harris Fragnet | P2-5 | FIT-2 | 2 | 80 |  | P2.B2.23.20.410 |  | TA | Harris | TS |
| FRG.P2.RSJ.4.1040 |  | Insulate L5-L6 / RSJ4 - FRAGNET | 5d | 2025-10-17 A | 2025-12-01 A | FRG.P2.RSJ.4.1030 | 100% |  | 2025-10-22 | 2025-10-28 |  |  |  | Harris Fragnet | P2-5 | FIT-2 | 2 | 80 | O | P2.B2.23.20.410 |  | TA | Harris | TS |
| FRG.P2.RSJ.4.1090 |  | Install Clamps L7-PH / RSJ4 - FRAGNET | 5d | 2025-10-27 A | 2025-10-31 A | FRG.P2.RSJ.4.1080 SS | 100% |  | 2025-10-08 | 2025-10-14 |  |  |  | Harris Fragnet | P2-5 | FIT-2 | 2 | 80 |  | P2.B2.23.20.410 | 10/9 per Harris schedule | TA | Harris | TS |
| FRG.P2.RSJ.4.1050 |  | Insulate L7-PH / RSJ4 - FRAGNET | 5d | 2025-11-24 A | 2025-12-01 A | FRG.P2.RSJ.4.1040 | 100% |  | 2025-12-22 | 2025-12-29 |  |  |  | Harris Fragnet | P2-5 | FIT-2 | 2 | 80 | O | P2.B2.23.20.410 |  | TA | Harris | TS |
| DDD2640 |  | Inspections - Close In / Shaft - 5976 | 5d | 2026-03-23 A | 2026-04-01 | DDD2810, P2.L2.SMT.1000, FRG.P2.RSJ.4.1050, FRG.P2.RSJ.4.1090 | 80% | 1d | 2026-03-02 | 2026-03-06 | 15d | 0d |  | AHJ | P2-5 | AHJ |  | 40 | O |  |  | JP |  | TS |
| DDD2650 |  | Gypsum Shaft Walls / Shaft - 5976 | 10d | 2026-03-24 A | 2026-04-08 | DDD2640 | 50% | 5d | 2026-03-09 | 2026-03-20 | 15d | 10d |  | GYP | P2-5 | GYP-1 |  | 80 | O |  |  | JP |  | TS |
|  | 10 | **Mechanical Shaft - 3901** |  | 2026-04-01 | 2026-06-10 |  |  |  |  |  |  |  |  |  |  |  |  |  |  |  |  |  |  |  |
| DDD2560 |  | MEP Systems Install - Risers B2-L4 / Shaft - 3901 | 5d | 2026-04-01 | 2026-04-07 | P2.4.03.510, P2.BIM.MEPR.40.110 |  |  |  |  | 4d | 0d |  | MEP | P2-5 | MEP-2 |  | 120 | O |  |  | JP | Harris | ND |
| DDD3450 |  | MEP Systems Install - Risers L4-L7 / Shaft - 3901 | 5d | 2026-04-08 | 2026-04-14 | DDD2560, P2.7.03.510 |  |  |  |  | 4d | 0d |  | MEP | P2-5 | MEP-2 |  | 120 | O |  |  | JP | Harris | ND |
| DDD3460 |  | MEP Systems Install - Risers L7-PH / Shaft - 3901 | 5d | 2026-04-15 | 2026-04-21 | DDD3450, P2.MR/PS.03.510, P2.MR/PS.03.610 |  |  |  |  | 4d | 0d |  | MEP | P2-5 | MEP-2 |  | 120 | O |  | per Harris Schedule 10/1 | JP | Harris | ND |
| DDD2580 |  | Test Systems - Risers / Shaft - 3901 | 5d | 2026-04-22 | 2026-04-28 | DDD3460 |  |  |  |  | 4d | 0d |  | MEP | P2-5 | MEP-2 |  | 40 | O |  |  | JP | Harris | ND |
| FRG.RSH.5.1000 |  | Insulate B2-L2 / RSH5 - FRAGNET | 5d | 2026-04-22 | 2026-04-28 | DDD3460 |  |  |  |  | 44d | 0d |  | Harris Fragnet | P2-5 | FIT-2 | 2 | 80 | O | P2.B2.23.20.410 |  | TA | Harris | ND |
| FRG.RSH.5.1010 |  | Insulate L3-L4 / RSH5 - FRAGNET | 5d | 2026-04-29 | 2026-05-05 | FRG.RSH.5.1000 |  |  |  |  | 44d | 0d |  | Harris Fragnet | P2-5 | FIT-2 | 2 | 80 | O | P2.B2.23.20.410 |  | TA | Harris | ND |
| FRG.RSH.5.1020 |  | Insulate L5-L6 / RSH5 - FRAGNET | 5d | 2026-05-06 | 2026-05-12 | FRG.RSH.5.1010 |  |  |  |  | 44d | 0d |  | Harris Fragnet | P2-5 | FIT-2 | 2 | 80 |  | P2.B2.23.20.410 |  | TA | Harris | ND |
| DDD2570 |  | Insulate - Risers / Shaft - 3901 | 5d | 2026-05-13 | 2026-05-19 | DDD2580, FRG.RSH.5.1030 FF |  |  |  |  | 44d | 0d |  | INSUL | P2-5 | INSUL-3 |  | 40 |  |  |  | JP | Harris | ND |
| FRG.RSH.5.1030 |  | Insulate L7-PH / RSH5 - FRAGNET | 5d | 2026-05-13 | 2026-05-19 | FRG.RSH.5.1020 |  |  |  |  | 44d | 0d |  | Harris Fragnet | P2-5 | FIT-2 | 2 | 80 |  | P2.B2.23.20.410 | Per harris Schedule 10/15 | TA | Harris | ND |
| DDD2590 |  | Inspections - Close In / Shaft - 3901 | 5d | 2026-05-20 | 2026-05-27 | DDD2570, FRG.RSH.5.1030 |  |  |  |  | 44d | 0d |  | AHJ | P2-5 | AHJ |  | 40 |  |  |  | JP |  | ND |
| DDD2600 |  | Gypsum Shaft Walls / Shaft - 3901 | 10d | 2026-05-28 | 2026-06-10 | DDD2590, DDD2700, DDD2750, DDD2850 |  |  |  |  | 44d | 0d |  | GYP | P2-5 | GYP-1 |  | 80 |  |  |  | JP |  | ND |

| ID | WBS | Activity | Duration | Start | Finish | Predecessors | Complete | Remaining | Planned start | Planned finish | Total float | Free float | Temp Orig Dur | Resp / SRLM | PHASE | Z.RESP | RESP / Trade | 744 | RESP UPD | Update Status | Pick | Act ID Temp | NOTES |
| --- | --- | --- | --- | --- | --- | --- | --- | --- | --- | --- | --- | --- | --- | --- | --- | --- | --- | --- | --- | --- | --- | --- | --- |
|  | 11 | **MEP Shafts - Z2** |  | 2025-02-14 | 2026-01-31 |  |  |  |  |  |  |  |  |  |  |  |  |  |  |  |  |  |  |
|  | 1 | **Mechanical Shaft - 2948** |  | 2025-02-14 | 2026-01-31 |  |  |  |  |  |  |  |  |  |  |  |  |  |  |  |  |  |  |
| DDD2110 |  | MEP Systems Install - Risers L1-L4 / Shaft - 2948 | 5d | 2025-02-14 A | 2025-02-19 A | P2.4.03.520, P2.BIM.MEPR.40.110 | 100% |  | 2025-03-03 | 2025-03-07 |  |  | 120 | MEP | P2-5 | Harris | MEP-2 |  |  |  |  |  |  |
| DDD3470 |  | MEP Systems Install - Risers L4-L7 / Shaft - 2948 | 5d | 2025-04-07 A | 2025-04-11 A | DDD2110, P2.7.03.520 | 100% |  | 2025-05-01 | 2025-05-07 |  |  | 120 | MEP | P2-5 | Harris | MEP-2 |  |  |  |  |  |  |
| DDD3480 |  | MEP Systems Install - Risers L7-PH / Shaft - 2948 | 5d | 2025-06-02 A | 2025-06-06 A | DDD3470, P2.MR/PS.03.520, P2.MR/PS.03.620 | 100% |  | 2025-07-01 | 2025-07-08 |  |  | 120 | MEP | P2-5 | Harris | MEP-2 | JP | JP |  |  |  |  |
| DDD2130 |  | Test Systems - Risers / Shaft - 2948 | 5d | 2025-06-09 A | 2025-06-13 A | DDD3480 | 100% |  | 2025-07-09 | 2025-07-15 |  |  | 40 | MEP | P2-5 | Harris | MEP-2 | JP | JP |  |  |  |  |
| DDD2120 |  | Insulate - Risers / Shaft - 2948 | 5d | 2025-08-18 A | 2025-09-26 A | DDD2130, FRG.ROF.4.1030 FF | 100% |  | 2025-08-01 | 2025-08-07 |  |  | 40 | INSUL | P2-5 | Harris | INSUL-3 | JP | JP | O |  |  |  |
| FRG.ROF.4.1040 |  | Install L1-L2 Stainless / ROF4 - FRAGNET | 12d | 2025-08-21 A | 2025-09-05 A | DDD2130 | 100% |  | 2025-09-02 | 2025-09-17 |  |  | 80 | Harris Fragnet | P2-5 | Harris | FIT-2 | TA | TA | O | 2 | P2.B2.23.20.410 |  |
| FRG.ROF.4.1000 |  | Insulate L1-L2 / ROF4 - FRAGNET | 5d | 2025-09-02 A | 2025-09-08 A | FRG.ROF.4.1040 | 100% |  | 2025-10-01 | 2025-10-07 |  |  | 80 | Harris Fragnet | P2-5 | Harris | FIT-2 | TA | TA | O | 2 | P2.B2.23.20.410 |  |
| FRG.ROF.4.1070 |  | Install L5-PH Galvanized / ROF4 - FRAGNET | 10d | 2025-09-02 A | 2025-09-15 A | FRG.ROF.4.1050 | 100% |  | 2025-10-01 | 2025-10-14 |  |  | 80 | Harris Fragnet | P2-5 | Harris | FIT-2 | TA | TA | O | 2 | P2.B2.23.20.410 | 9/18 per harris schedule |
| FRG.ROF.4.1010 |  | Insulate L3-L4 / ROF4 - FRAGNET | 5d | 2025-09-09 A | 2025-09-15 A | FRG.ROF.4.1000, FRG.ROF.4.1050 | 100% |  | 2025-10-08 | 2025-10-14 |  |  | 80 | Harris Fragnet | P2-5 | Harris | FIT-2 | TA | TA | O | 2 | P2.B2.23.20.410 |  |
| FRG.ROF.4.1050 |  | Install L3-L4 Stainless / ROF4 - FRAGNET | 12d | 2025-09-11 A | 2025-09-26 A | FRG.ROF.4.1040 | 100% |  | 2025-09-18 | 2025-10-03 |  |  | 80 | Harris Fragnet | P2-5 | Harris | FIT-2 | TA | TA | O | 2 | P2.B2.23.20.410 |  |
| FRG.ROF.4.1020 |  | Insulate L5-L6 / ROF4 - FRAGNET | 5d | 2025-09-16 A | 2025-09-22 A | FRG.ROF.4.1010 | 100% |  | 2025-10-15 | 2025-10-21 |  |  | 80 | Harris Fragnet | P2-5 | Harris | FIT-2 | TA | TA | O | 2 | P2.B2.23.20.410 |  |
| FRG.ROF.4.1030 |  | Insulate L7-PH / ROF4 - FRAGNET | 5d | 2025-09-23 A | 2025-09-29 A | FRG.ROF.4.1020 | 100% |  | 2025-10-22 | 2025-10-28 |  |  | 80 | Harris Fragnet | P2-5 | Harris | FIT-2 | TA | TA | O | 2 | P2.B2.23.20.410 | 10/9 per Harris schedule |
| FRG.ROF.4.1060 |  | Install L5-PH Stainless / ROF4 - FRAGNET | 15d | 2025-09-29 A | 2025-09-29 A | FRG.ROF.4.1050 | 100% |  | 2025-10-06 | 2025-10-24 |  |  | 80 | Harris Fragnet | P2-5 | Harris | FIT-2 | TA | TA | O | 2 | P2.B2.23.20.410 | 9/28 per harris schedule |
| DDD2140 |  | Inspections - Close In / Shaft - 2948 | 5d | 2025-10-15 A | 2025-10-15 A | DDD2120, FRG.ROF.4.1030, FRG.ROF.4.1060, FRG.ROF.4.1070 | 100% |  | 2025-10-01 | 2025-10-07 |  |  | 40 | AHJ | P2-5 |  | AHJ | JP | JP |  |  |  |  |
| DDD2150 |  | Gypsum Shaft Walls / Shaft - 2948 | 10d | 2025-11-03 A | 2026-01-31 A | DDD2140 | 100% |  | 2025-12-01 | 2025-12-12 |  |  | 80 | GYP | P2-5 |  | GYP-1 | JP | SM | O |  |  |  |
|  | 12 | **MEP Shafts - Z3** |  | 2024-12-13 | 2026-05-05 |  |  |  |  |  |  |  |  |  |  |  |  |  |  |  |  |  |  |
|  | 7 | **Mechanical Shaft - 2800** |  | 2025-02-03 | 2026-04-14 |  |  |  |  |  |  |  |  |  |  |  |  |  |  |  |  |  |  |
| DDD2160 |  | MEP Systems Install - Risers B2-L4 / Shaft - 2800 | 5d | 2025-02-03 A | 2025-02-07 A | P2.4.03.530, P2.BIM.MEPR.40.110 | 100% |  | 2025-03-03 | 2025-03-07 |  |  | 120 | MEP | P2-5 | Harris | MEP-2 |  |  |  |  |  |  |
| DDD3490 |  | MEP Systems Install - Risers L4-L7 / Shaft - 2800 | 5d | 2025-04-07 A | 2025-04-11 A | DDD2160, P2.7.03.530 | 100% |  | 2025-05-01 | 2025-05-07 |  |  | 120 | MEP | P2-5 | Harris | MEP-2 |  |  |  |  |  |  |
| DDD3500 |  | MEP Systems Install - Risers L7-PH / Shaft - 2800 | 5d | 2025-05-05 A | 2025-06-03 A | DDD3490, P2.MR/PS.03.530, P2.MR/PS.03.630 | 100% |  | 2025-06-02 | 2025-06-06 |  |  | 120 | MEP | P2-5 | Harris | MEP-2 | JP | JP |  |  |  |  |
| DDD2180 |  | Test Systems - Risers / Shaft - 2800 | 5d | 2025-07-07 A | 2025-09-05 A | DDD3500 | 100% |  | 2025-10-06 | 2025-10-10 |  |  | 40 | MEP | P2-5 | Harris | MEP-2 | JP | JP | O |  |  |  |
| DDD2170 |  | Insulate - Risers / Shaft - 2800 | 5d | 2026-01-02 A | 2026-01-08 A | DDD2180 | 100% |  |  |  |  |  | 40 | INSUL | P2-5 | Harris | INSUL-3 | JP | SM | O |  |  |  |
| DDD2190 |  | Inspections - Close In / Shaft - 2800 | 5d | 2026-01-09 A | 2026-01-10 A | DDD2170 | 100% |  | 2026-01-09 | 2026-01-15 |  |  | 40 | AHJ | P2-5 |  | AHJ | JP | SM | O |  |  |  |
| DDD2200 |  | Gypsum Shaft Walls / Shaft - 2800 | 10d | 2026-03-30 A | 2026-04-14 | DDD2190 |  | 10d | 2026-03-02 | 2026-03-13 | 84d | 0d | 80 | GYP | P2-5 |  | GYP-1 | JP | TCASP | O |  |  |  |

| ID | WBS | Activity | Duration | Start | Finish | Predecessors | Complete | Remaining | Planned start | Planned finish | Total float | Free float | Testing Type | Resp / SRLM | PHASE | RESP / Trade | Temp Orig Dur | 744 | RESP UPD | Update Status | Z.RESP | Pick | Act ID Temp | NOTES |
| --- | --- | --- | --- | --- | --- | --- | --- | --- | --- | --- | --- | --- | --- | --- | --- | --- | --- | --- | --- | --- | --- | --- | --- | --- |
|  | 1 | **Mechanical Shaft - 2801** |  | 2025-04-01 | 2026-04-07 |  |  |  |  |  |  |  |  |  |  |  |  |  |  |  |  |  |  |  |
| DDD2610 |  | Steel Grating / Shaft - 2801 | 5d | 2025-04-01 A | 2025-04-17 A | P2.8.03.530 | 100% |  | 2025-05-01 | 2025-05-07 |  |  | AT46 | MISCMTL | P2-5 | MISCMTL |  |  |  |  |  |  |  |  |
| DDD2240 |  | Inspections - Close In / Shaft - 2801 | 5d | 2025-10-01 A | 2025-10-07 A | DDD2610, P2.L2.EMT.1000 FF | 100% |  |  |  |  |  |  | AHJ | P2-5 | AHJ | 40 | JP | SM |  |  |  |  |  |
| DDD2250 |  | CMU Shaft Walls / Shaft - 2801 | 10d | 2026-02-10 A | 2026-04-07 | DDD2240, BP4.040.3.100 | 50% | 5d | 2026-03-02 | 2026-03-13 | 44d | 5d | AT3 | CMU | P2-5 | CMU | 80 | JP | SM | O |  |  |  |  |
|  | 6 | **Mechanical Shaft - 2802** |  | 2025-02-03 | 2025-11-19 |  |  |  |  |  |  |  |  |  |  |  |  |  |  |  |  |  |  |  |
| DDD2260 |  | MEP Systems Install - Risers B2-L4 / Shaft - 2802 | 5d | 2025-02-03 A | 2025-02-07 A | P2.4.03.530, P2.BIM.MEPR.40.110 | 100% |  | 2025-03-03 | 2025-03-07 |  |  |  | MEP | P2-5 | MEP-2 | 120 |  |  |  | Harris |  |  |  |
| DDD3510 |  | MEP Systems Install - Risers L4-L7 / Shaft - 2802 | 5d | 2025-04-21 A | 2025-04-25 A | DDD2260, P2.7.03.530 | 100% |  | 2025-05-01 | 2025-05-07 |  |  |  | MEP | P2-5 | MEP-2 | 120 |  |  |  | Harris |  |  |  |
| DDD3520 |  | MEP Systems Install - Risers L7-PH / Shaft - 2802 | 5d | 2025-05-01 A | 2025-05-07 A | DDD3510, P2.MR/PS.03.530, P2.MR/PS.03.630 | 100% |  | 2025-06-02 | 2025-06-06 |  |  |  | MEP | P2-5 | MEP-2 | 120 |  |  |  | Harris |  |  |  |
| DDD2280 |  | Test Systems - Risers / Shaft - 2802 | 5d | 2025-06-02 A | 2025-06-06 A | DDD3520 | 100% |  | 2025-10-30 | 2025-11-05 |  |  |  | MEP | P2-5 | MEP-2 | 40 | JP | JP |  | Harris |  |  |  |
| DDD2270 |  | Insulate - Risers / Shaft - 2802 | 5d | 2025-08-27 A | 2025-09-26 A | DDD2280, FRG.RED.0.1070 FF | 100% |  | 2025-11-17 | 2025-11-21 |  |  |  | INSUL | P2-5 | INSUL-3 | 40 | JP | JP | O | Harris |  |  |  |
| FRG.RED.0.1060 |  | Insulate L1-L2 / RED0 - FRAGNET | 5d | 2025-09-08 A | 2025-09-12 A | DDD2280 | 100% |  | 2025-09-30 | 2025-10-06 |  |  |  | Harris Fragnet | P2-5 | FIT-2 | 80 | TA | TA | O | Harris | 2 | P2.B2.23.20.410 |  |
| FRG.RED.0.1070 |  | Insulate L3-L4 / RED0- FRAGNET | 5d | 2025-09-15 A | 2025-09-19 A | FRG.RED.0.1060 | 100% |  | 2025-10-07 | 2025-10-13 |  |  |  | Harris Fragnet | P2-5 | FIT-2 | 80 | TA | TA | O | Harris | 2 | P2.B2.23.20.410 | 9/26 per Harris schedule.Per JP this shaft only to L4 |
| DDD2290 |  | Inspections - Close In / Shaft - 2802 | 5d | 2025-11-14 A | 2025-11-14 A | DDD2270, FRG.RED.0.1070 | 100% |  | 2025-12-01 | 2025-12-05 |  |  |  | AHJ | P2-5 | AHJ | 40 | JP | SM |  |  |  |  | Per JP scheduled to start 9/22 |
| DDD2300 |  | CMU Shaft Walls / Shaft - 2802 | 10d | 2025-11-17 A | 2025-11-19 A | DDD2290 | 100% |  | 2025-12-08 | 2025-12-19 |  |  | AT3 | CMU | P2-5 | CMU | 80 |  | SM |  |  |  |  |  |
|  | 5 | **Mechanical Shaft - 2803** |  | 2025-02-18 | 2026-04-10 |  |  |  |  |  |  |  |  |  |  |  |  |  |  |  |  |  |  |  |
| DDD3530 |  | MEP Systems Install - Risers L4-L7 / Shaft - 2803 | 5d | 2025-02-18 A | 2025-02-18 A | P2.7.03.530, P2.BIM.MEPR.40.110, P2.4.03.530 | 100% |  | 2025-03-10 | 2025-03-14 |  |  |  | MEP | P2-5 | MEP-2 | 120 |  |  |  | Harris |  |  |  |
| DDD2310 |  | MEP Systems Install - Risers B2-L4 / Shaft - 2803 | 5d | 2025-04-07 A | 2025-04-11 A | P2.4.03.530, P2.BIM.MEPR.40.110 | 100% |  | 2025-05-01 | 2025-05-07 |  |  |  | MEP | P2-5 | MEP-2 | 120 |  |  |  | Harris |  |  |  |
| DDD3540 |  | MEP Systems Install - Risers L7-PH / Shaft - 2803 | 5d | 2025-06-30 A | 2025-10-02 A | DDD3530, P2.MR/PS.03.530, DDD2310, P2.MR/PS.03.630 | 100% |  | 2025-08-01 | 2025-08-07 |  |  |  | MEP | P2-5 | MEP-2 | 120 | JP | JP |  | Harris |  |  |  |
| FRG.REC.0.1040 |  | Install L1-L4 / REC0 - FRAGNET | 10d | 2025-10-29 A | 2025-12-17 A | FRG.ROF.4.1060 | 100% |  | 2025-10-01 | 2025-10-14 |  |  |  | Harris Fragnet | P2-5 | FIT-2 | 80 | TA | SM | O | Harris | 2 | P2.B2.23.20.410 | 10/09 per Harris schedule |
| FRG.REC.0.1050 |  | Install L5-PH / REC0- FRAGNET | 10d | 2025-11-10 A | 2026-01-23 A | FRG.REC.0.1040 | 100% |  | 2025-12-10 | 2025-12-23 |  |  |  | Harris Fragnet | P2-5 | FIT-2 | 80 | TA | SM | O | Harris | 2 | P2.B2.23.20.410 |  |
| DDD2330 |  | Test Systems - Risers / Shaft - 2803 | 5d | 2026-01-06 A | 2026-01-12 A | DDD3540, FRG.REC.0.1050 | 100% |  |  |  |  |  |  | MEP | P2-5 | MEP-2 | 40 | JP | SM | O | Harris |  |  |  |
| DDD2320 |  | Insulate - Risers / Shaft - 2803 | 5d | 2026-01-26 A | 2026-01-30 A | DDD2330, FRG.REC.0.1030 FF | 100% |  | 2026-01-23 | 2026-01-29 |  |  |  | INSUL | P2-5 | INSUL-3 | 40 | JP | SM | O | Harris |  |  |  |
| FRG.REC.0.1000 |  | Insulate L1-L2 / REC0 - FRAGNET | 5d | 2026-01-26 A | 2026-01-30 A | FRG.REC.0.1040 | 100% |  | 2026-01-02 | 2026-01-08 |  |  |  | Harris Fragnet | P2-5 | FIT-2 | 80 | TA | SM | O | Harris | 2 | P2.B2.23.20.410 |  |
| FRG.REC.0.1010 |  | Insulate L3-L4 / REC0- FRAGNET | 5d | 2026-01-26 A | 2026-01-30 A | FRG.REC.0.1000 | 100% |  | 2026-01-09 | 2026-01-15 |  |  |  | Harris Fragnet | P2-5 | FIT-2 | 80 | TA | SM | O | Harris | 2 | P2.B2.23.20.410 |  |
| FRG.REC.0.1020 |  | Insulate L5-L6 / REC0- FRAGNET | 5d | 2026-01-26 A | 2026-01-30 A | FRG.REC.0.1010, FRG.REC.0.1050 | 100% |  | 2026-01-16 | 2026-01-22 |  |  |  | Harris Fragnet | P2-5 | FIT-2 | 80 | TA | SM | O | Harris | 2 | P2.B2.23.20.410 |  |
| FRG.REC.0.1030 |  | Insulate L7-PH / REC0- FRAGNET | 5d | 2026-01-26 A | 2026-01-30 A | FRG.REC.0.1020 | 100% |  | 2026-01-23 | 2026-01-29 |  |  |  | Harris Fragnet | P2-5 | FIT-2 | 80 | TA | SM | O | Harris | 2 | P2.B2.23.20.410 | 11/06 per Harris schedule |
| DDD2340 |  | Inspections - Close In / Shaft - 2803 | 5d | 2026-02-09 A | 2026-04-02 | DDD2320, FRG.REC.0.1030 | 60% | 2d | 2026-03-02 | 2026-03-06 | 86d | 0d |  | AHJ | P2-5 | AHJ | 40 | JP | SM |  |  |  |  |  |
| DDD2350 |  | CMU Shaft Walls / Shaft - 2803 | 10d | 2026-02-10 A | 2026-04-10 | DDD2340 | 40% | 6d | 2026-03-09 | 2026-03-20 | 86d | 42d | AT3 | CMU | P2-5 | CMU | 80 | JP | SM |  |  |  |  |  |

| ID | WBS | Activity | Duration | Start | Finish | Predecessors | Complete | Remaining | Planned start | Planned finish | Total float | Free float | Temp Orig Dur | Resp / SRLM | PHASE | Z.RESP | RESP / Trade | 744 | RESP UPD | Update Status | Testing Type | Pick | Act ID Temp | NOTES |
| --- | --- | --- | --- | --- | --- | --- | --- | --- | --- | --- | --- | --- | --- | --- | --- | --- | --- | --- | --- | --- | --- | --- | --- | --- |
|  | 3 | **Mechanical Shaft - 2805** |  | 2025-04-07 | 2026-04-14 |  |  |  |  |  |  |  |  |  |  |  |  |  |  |  |  |  |  |  |
| DDD2360 |  | MEP Systems Install - Risers B2-L4 / Shaft - 2805 | 5d | 2025-04-07 A | 2025-04-11 A | P2.4.03.530, P2.BIM.MEPR.40.110 | 100% |  | 2025-05-01 | 2025-05-07 |  |  | 120 | MEP | P2-5 | Harris | MEP-2 |  |  |  |  |  |  |  |
| DDD3550 |  | MEP Systems Install - Risers L4-L7 / Shaft - 2805 | 5d | 2025-04-14 A | 2025-04-18 A | DDD2360, P2.7.03.530 | 100% |  | 2025-05-08 | 2025-05-14 |  |  | 120 | MEP | P2-5 | Harris | MEP-2 |  |  |  |  |  |  |  |
| DDD3560 |  | MEP Systems Install - Risers L7-PH / Shaft - 2805 | 5d | 2025-05-15 A | 2025-08-22 A | DDD3550, P2.MR/PS.03.530, P2.MR/PS.03.630 | 100% |  | 2025-06-02 | 2025-06-06 |  |  | 120 | MEP | P2-5 | Harris | MEP-2 | JP | JP |  |  |  |  |  |
| DDD2370 |  | Insulate - Risers / Shaft - 2805 | 5d | 2025-08-18 A | 2025-08-22 A | DDD2380 | 100% |  | 2025-09-02 | 2025-09-08 |  |  |  |  |  |  |  |  |  |  |  |  |  |  |
| DDD2380 |  | Test Systems - Risers / Shaft - 2805 | 5d | 2025-08-18 A | 2025-08-22 A | DDD3560 | 100% |  | 2025-09-02 | 2025-09-08 |  |  |  |  |  |  |  |  |  |  |  |  |  |  |
| DDD2390 |  | Inspections - Close In / Shaft - 2805 | 5d | 2026-03-10 A | 2026-03-10 A | DDD3560, DDD2180, DDD2370 | 100% |  | 2026-03-02 | 2026-03-06 |  |  | 40 | AHJ | P2-5 |  | AHJ | JP | SM | O |  |  |  |  |
| DDD2400 |  | CMU Shaft Walls / Shaft - 2805 | 10d | 2026-04-01 | 2026-04-14 | DDD2390 |  |  |  |  | 39d | 0d | 80 | CMU | P2-5 |  | CMU | JP | SM | O | AT3 |  |  |  |
|  | 4 | **Mechanical Shaft - 2806** |  | 2024-12-13 | 2026-04-09 |  |  |  |  |  |  |  |  |  |  |  |  |  |  |  |  |  |  |  |
| DDD2410 |  | MEP Systems Install - Risers B2-L4 / Shaft - 2806 | 5d | 2024-12-13 A | 2024-12-13 A | P2.4.03.530, P2.BIM.MEPR.40.110 | 100% |  | 2025-01-02 | 2025-01-08 |  |  | 120 | MEP | P2-5 | Harris | MEP-2 |  |  |  |  |  |  |  |
| DDD3570 |  | MEP Systems Install - Risers L4-L7 / Shaft - 2806 | 15d | 2025-02-10 A | 2025-02-10 A | DDD2410, P2.7.03.530 | 100% |  | 2025-03-03 | 2025-03-21 |  |  | 120 | MEP | P2-5 | Harris | MEP-2 |  |  |  |  |  |  |  |
| DDD3580 |  | MEP Systems Install - Risers L7-PH / Shaft - 2806 | 15d | 2025-08-11 A | 2025-10-10 A | DDD3570, P2.MR/PS.03.530, P2.MR/PS.03.630 | 100% |  | 2025-08-01 | 2025-08-21 |  |  | 120 | MEP | P2-5 | Harris | MEP-2 | JP | JP |  |  |  |  |  |
| FRG.REE.9.1090 |  | Install Fill-in Pieces & Branches / REE9 - FRAGNET | 15d | 2025-09-22 A | 2025-10-16 A | FRG.P2.RSJ.1.1000, FRG.P2.RSJ.4.1000 | 100% |  | 2025-09-22 | 2025-10-10 |  |  | 80 | Harris Fragnet | P2-5 | Harris | FIT-2 | TA | TA |  |  | 2 | P2.B2.23.20.410 | 9/26 per harris schedule |
| DDD2430 |  | Test Systems - Risers / Shaft - 2806 | 5d | 2025-10-27 A | 2025-10-31 A | DDD3580, FRG.REE.9.1100 FF | 100% |  | 2025-10-02 | 2025-10-08 |  |  | 40 | MEP | P2-5 | Harris | MEP-2 | JP | JP |  |  |  |  |  |
| FRG.REE.9.1100 |  | Prep/Test Riser / REE9 - FRAGNET | 5d | 2025-10-27 A | 2025-10-31 A | FRG.REE.9.1090 | 100% |  | 2025-10-02 | 2025-10-08 |  |  | 80 | Harris Fragnet | P2-5 | Harris | FIT-2 | TA | TA |  |  | 2 | P2.B2.23.20.410 |  |
| FRG.REE.9.1050 |  | Install Clamps B2-L2 / REE9 - FRAGNET | 5d | 2025-11-03 A | 2025-11-07 A | FRG.REE.9.1100 | 100% |  | 2025-12-01 | 2025-12-05 |  |  | 80 | Harris Fragnet | P2-5 | Harris | FIT-2 | TA | SM |  |  | 2 | P2.B2.23.20.410 |  |
| FRG.REE.9.1060 |  | Install Clamps L3-L4 / REE9 - FRAGNET | 5d | 2025-11-03 A | 2025-11-07 A | FRG.REE.9.1050 SS | 100% |  | 2025-12-01 | 2025-12-05 |  |  | 80 | Harris Fragnet | P2-5 | Harris | FIT-2 | TA | SM |  |  | 2 | P2.B2.23.20.410 |  |
| FRG.REE.9.1070 |  | Install Clamps L5-L6 / REE9 - FRAGNET | 10d | 2025-11-10 A | 2025-11-21 A | FRG.REE.9.1060 | 100% |  | 2025-12-08 | 2025-12-19 |  |  | 80 | Harris Fragnet | P2-5 | Harris | FIT-2 | TA | SM |  |  | 2 | P2.B2.23.20.410 |  |
| FRG.REE.9.1080 |  | Install Clamps L7-PH / REE9 - FRAGNET | 10d | 2025-11-10 A | 2025-11-21 A | FRG.REE.9.1070 SS | 100% |  | 2025-12-08 | 2025-12-19 |  |  | 80 | Harris Fragnet | P2-5 | Harris | FIT-2 | TA | SM |  |  | 2 | P2.B2.23.20.410 | 10/9 per harris schedule |
| FRG.REE.9.1010 |  | Insulate B2-L2 / REE9 - FRAGNET | 5d | 2025-12-15 A | 2025-12-19 A | FRG.REE.9.1100, FRG.REE.9.1060 | 100% |  | 2026-01-02 | 2026-01-08 |  |  | 80 | Harris Fragnet | P2-5 | Harris | FIT-2 | TA | SM | O |  | 2 | P2.B2.23.20.410 |  |
| FRG.REE.9.1020 |  | Insulate L3-L4 / REE9 - FRAGNET | 5d | 2025-12-15 A | 2025-12-19 A | FRG.REE.9.1010 | 100% |  | 2026-01-09 | 2026-01-15 |  |  | 80 | Harris Fragnet | P2-5 | Harris | FIT-2 | TA | SM | O |  | 2 | P2.B2.23.20.410 |  |
| FRG.REE.9.1030 |  | Insulate L5-L6 / REE9 - FRAGNET | 5d | 2025-12-19 A | 2025-12-26 A | FRG.REE.9.1020 | 100% |  | 2026-01-16 | 2026-01-22 |  |  | 80 | Harris Fragnet | P2-5 | Harris | FIT-2 | TA | SM | O |  | 2 | P2.B2.23.20.410 |  |
| FRG.REE.9.1040 |  | Insulate L7-PH / REE9 - FRAGNET | 5d | 2025-12-19 A | 2025-12-26 A | FRG.REE.9.1030 | 100% |  | 2026-01-23 | 2026-01-29 |  |  | 80 | Harris Fragnet | P2-5 | Harris | FIT-2 | TA | SM | O |  | 2 | P2.B2.23.20.410 | 10/30 per Harris schedule |
| DDD2440 |  | Inspections - Close In / Shaft - 2806 | 5d | 2026-02-09 A | 2026-04-02 | FRG.REE.9.1040, FRG.REE.9.1080, DDD2430 | 60% | 2d | 2026-03-02 | 2026-03-06 | 87d | 0d | 40 | AHJ | P2-5 |  | AHJ | JP | SM | O |  |  |  |  |
| DDD2450 |  | CMU Shaft Walls / Shaft - 2806 | 10d | 2026-02-10 A | 2026-04-09 | DDD2440 | 50% | 5d | 2026-03-09 | 2026-03-20 | 87d | 43d | 80 | CMU | P2-5 |  | CMU | JP | SM |  | AT3 |  |  |  |

| ID | WBS | Activity | Duration | Start | Finish | Predecessors | Complete | Remaining | Planned start | Planned finish | Total float | Free float | Temp Orig Dur | Resp / SRLM | PHASE | Z.RESP | RESP / Trade | Update Status | 744 | RESP UPD | Pick | Act ID Temp | Testing Type |
| --- | --- | --- | --- | --- | --- | --- | --- | --- | --- | --- | --- | --- | --- | --- | --- | --- | --- | --- | --- | --- | --- | --- | --- |
|  | 2 | **Mechanical Shaft - 2807** |  | 2024-12-13 | 2026-04-09 |  |  |  |  |  |  |  |  |  |  |  |  |  |  |  |  |  |  |
| DDD2460 |  | MEP Systems Install - Risers B2-L4 / Shaft - 2807 | 5d | 2024-12-13 A | 2025-01-10 A | P2.4.03.530, P2.BIM.MEPR.40.110 | 100% |  | 2025-02-03 | 2025-02-07 |  |  | 120 | MEP | P2-5 | Harris | MEP-2 |  |  |  |  |  |  |
| DDD3590 |  | MEP Systems Install - Risers L4-L7 / Shaft - 2807 | 15d | 2025-02-10 A | 2025-02-10 A | DDD2460, P2.7.03.530 | 100% |  | 2025-03-03 | 2025-03-21 |  |  | 120 | MEP | P2-5 | Harris | MEP-2 |  |  |  |  |  |  |
| DDD3600 |  | MEP Systems Install - Risers L7-PH / Shaft - 2807 | 15d | 2025-08-11 A | 2025-09-26 A | DDD3590, P2.MR/PS.03.530, P2.MR/PS.03.630, FRG.REF.9.1000 FF | 100% |  | 2025-08-01 | 2025-08-21 |  |  | 120 | MEP | P2-5 | Harris | MEP-2 | O | JP | JP |  |  |  |
| FRG.REF.9.1000 |  | Install Fill-in Pieces & Branches / REF9 - FRAGNET | 20d | 2025-09-08 A | 2025-09-26 A | FRG.P2.RSJ.6.1000, FRG.P2.RSJ.4.1000 | 100% |  | 2025-09-02 | 2025-09-29 |  |  | 80 | Harris Fragnet | P2-5 | Harris | FIT-2 | O | TA | TA | 2 | P2.B2.23.20.410 |  |
| FRG.REF.9.1060 |  | Install Clamps B2-L2 / REF9 - FRAGNET | 5d | 2025-11-10 A | 2025-11-14 A | FRG.REF.9.1010 | 100% |  | 2025-12-08 | 2025-12-12 |  |  | 80 | Harris Fragnet | P2-5 | Harris | FIT-2 |  | TA | SM | 2 | P2.B2.23.20.410 |  |
| FRG.REF.9.1070 |  | Install Clamps L3-L4 / REF9 - FRAGNET | 5d | 2025-11-10 A | 2025-12-09 A | FRG.REF.9.1060 SS | 100% |  | 2025-12-08 | 2025-12-12 |  |  | 80 | Harris Fragnet | P2-5 | Harris | FIT-2 | O | TA | SM | 2 | P2.B2.23.20.410 |  |
| FRG.REF.9.1080 |  | Install Clamps L5-L6 / REF9 - FRAGNET | 5d | 2025-11-17 A | 2025-11-21 A | FRG.REF.9.1070 | 100% |  | 2025-12-15 | 2025-12-19 |  |  | 80 | Harris Fragnet | P2-5 | Harris | FIT-2 |  | TA | SM | 2 | P2.B2.23.20.410 |  |
| DDD2480 |  | Test Systems - Risers / Shaft - 2807 | 5d | 2025-12-01 A | 2025-12-05 A | DDD3600, FRG.REF.9.1010 FF | 100% |  | 2026-01-02 | 2026-01-08 |  |  | 40 | MEP | P2-5 | Harris | MEP-2 | O | JP | SM |  |  |  |
| FRG.REF.9.1010 |  | Prep/Test Riser / REF9 - FRAGNET | 5d | 2025-12-01 A | 2025-12-05 A | FRG.REF.9.1000 | 100% |  | 2026-01-02 | 2026-01-08 |  |  | 80 | Harris Fragnet | P2-5 | Harris | FIT-2 | O | TA | SM | 2 | P2.B2.23.20.410 |  |
| FRG.REF.9.1030 |  | Insulate L3-L4 / REF9 - FRAGNET | 5d | 2025-12-01 A | 2025-12-10 A | FRG.REF.9.1020 | 100% |  | 2026-01-20 | 2026-01-26 |  |  | 80 | Harris Fragnet | P2-5 | Harris | FIT-2 | O | TA | SM | 2 | P2.B2.23.20.410 |  |
| FRG.REF.9.1020 |  | Insulate B2-L2 / REF9 - FRAGNET | 5d | 2025-12-15 A | 2025-12-19 A | FRG.REF.9.1010, FRG.REF.9.1070 | 100% |  | 2026-01-13 | 2026-01-19 |  |  | 80 | Harris Fragnet | P2-5 | Harris | FIT-2 | O | TA | SM | 2 | P2.B2.23.20.410 |  |
| FRG.REF.9.1090 |  | Install Clamps L7-PH / REF9 - FRAGNET | 5d | 2025-12-15 A | 2025-12-19 A | FRG.REF.9.1080 | 100% |  | 2026-01-13 | 2026-01-19 |  |  | 80 | Harris Fragnet | P2-5 | Harris | FIT-2 | O | TA | SM | 2 | P2.B2.23.20.410 |  |
| FRG.REF.9.1040 |  | Insulate L5-L6 / REF9 - FRAGNET | 5d | 2025-12-19 A | 2025-12-26 A | FRG.REF.9.1030 | 100% |  | 2026-01-27 | 2026-02-02 |  |  | 80 | Harris Fragnet | P2-5 | Harris | FIT-2 | O | TA | SM | 2 | P2.B2.23.20.410 |  |
| FRG.REF.9.1050 |  | Insulate L7-PH / REF9 - FRAGNET | 5d | 2025-12-19 A | 2025-12-26 A | FRG.REF.9.1040 SS | 100% |  | 2026-01-27 | 2026-02-02 |  |  | 80 | Harris Fragnet | P2-5 | Harris | FIT-2 | O | TA | SM | 2 | P2.B2.23.20.410 |  |
| DDD2490 |  | Inspections - Close In / Shaft - 2807 | 5d | 2026-02-09 A | 2026-04-02 | FRG.REF.9.1090, FRG.REF.9.1050 FF, DDD2480, FRG.REF.9.1050 | 60% | 2d | 2026-03-02 | 2026-03-06 | 42d | 0d | 40 | AHJ | P2-5 |  | AHJ |  | JP | SM |  |  |  |
| DDD2500 |  | CMU Shaft Walls / Shaft - 2807 | 10d | 2026-02-10 A | 2026-04-09 | DDD2490 | 50% | 5d | 2026-03-09 | 2026-03-20 | 42d | 3d | 80 | CMU | P2-5 |  | CMU |  | JP | SM |  |  | AT3 |
|  | 9 | **Mechanical Shaft - 2809** |  | 2025-04-07 | 2026-05-05 |  |  |  |  |  |  |  |  |  |  |  |  |  |  |  |  |  |  |
| DDD3210 |  | MEP Systems Install - Risers B2-L4 / Shaft - 2809 | 5d | 2025-04-07 A | 2025-04-11 A | P2.4.03.530, P2.BIM.MEPR.40.110 | 100% |  | 2025-05-01 | 2025-05-07 |  |  | 120 | MEP | P2-5 | Harris | MEP-2 |  |  |  |  |  |  |
| DDD3620 |  | MEP Systems Install - Risers L4-L7 / Shaft - 2809 | 5d | 2025-04-14 A | 2025-04-18 A | DDD3210, P2.7.03.530 | 100% |  | 2025-05-08 | 2025-05-14 |  |  | 120 | MEP | P2-5 | Harris | MEP-2 |  |  |  |  |  |  |
| DDD3630 |  | MEP Systems Install - Risers L7-PH / Shaft - 2809 | 5d | 2025-09-02 A | 2025-09-15 A | DDD3620, P2.MR/PS.03.530, P2.MR/PS.03.630 | 100% |  | 2025-10-01 | 2025-10-07 |  |  | 120 | MEP | P2-5 | Harris | MEP-2 | O | JP | JP |  |  |  |
| DDD3230 |  | Test Systems - Risers / Shaft - 2809 | 5d | 2025-09-24 A | 2025-09-30 A | DDD3630 | 100% |  | 2025-10-01 | 2025-10-07 |  |  | 40 | MEP | P2-5 | Harris | MEP-2 |  | JP | JP |  |  |  |
| DDD3220 |  | Insulate - Risers / Shaft - 2809 | 5d | 2025-09-29 A | 2025-09-30 A | DDD3230 | 100% |  | 2025-10-01 | 2025-10-07 |  |  | 40 | INSUL | P2-5 | Harris | INSUL-3 |  | JP | JP |  |  |  |
| DDD3240 |  | Inspections - Close In / Shaft - 2809 | 5d | 2026-04-15 | 2026-04-21 | DDD3220, DDD2250, DDD2400, DDD2500 |  |  |  |  | 39d | 0d | 40 | AHJ | P2-5 |  | AHJ | O | JP | SM |  |  |  |
| DDD3250 |  | CMU Shaft Walls / Shaft - 2809 | 10d | 2026-04-22 | 2026-05-05 | DDD3240 |  |  |  |  | 39d | 0d | 80 | CMU | P2-5 |  | CMU | O | JP | SM |  |  | AT3 |

Notes:
- FRG.REF.9.1000: NOTES: 9/26 per harris schedule. ". date may be accurate. Basement tie ins not complete."
- FRG.REF.9.1090: NOTES: 10/30 per harris schedule
- FRG.REF.9.1050: NOTES: 10/30 per Harris schedule

| ID | WBS | Activity | Duration | Start | Finish | Predecessors | Complete | Planned start | Planned finish | Total float | Free float | Temp Orig Dur | Resp / SRLM | PHASE | Z.RESP | RESP / Trade | Pick | Update Status | Act ID Temp | NOTES | 744 | RESP UPD |
| --- | --- | --- | --- | --- | --- | --- | --- | --- | --- | --- | --- | --- | --- | --- | --- | --- | --- | --- | --- | --- | --- | --- |
|  | 8 | **Mechanical Shaft - 2810** |  | 2025-01-27 | 2026-04-21 |  |  |  |  |  |  |  |  |  |  |  |  |  |  |  |  |  |
| DDD2510 |  | MEP Systems Install - Risers B2-L4 / Shaft - 2810 | 5d | 2025-01-27 A | 2025-01-27 A | P2.4.03.530, P2.BIM.MEPR.40.110 | 100% | 2025-02-03 | 2025-02-07 |  |  | 120 | MEP | P2-5 | Harris | MEP-2 |  |  |  |  |  |  |
| DDD3640 |  | MEP Systems Install - Risers L4-L7 / Shaft - 2810 | 15d | 2025-02-17 A | 2025-02-17 A | DDD2510, P2.7.03.530 | 100% | 2025-03-03 | 2025-03-21 |  |  | 120 | MEP | P2-5 | Harris | MEP-2 |  |  |  |  |  |  |
| DDD3650 |  | MEP Systems Install - Risers L7-PH / Shaft - 2810 | 15d | 2025-02-17 A | 2025-02-17 A | DDD3640, P2.MR/PS.03.530 | 100% | 2025-03-31 | 2025-04-18 |  |  | 120 | MEP | P2-5 | Harris | MEP-2 |  |  |  |  |  |  |
| FRG.RNA.7.1000 |  | Install Fill-in Pieces & Branches / RNA7 - FRAGNET | 20d | 2025-09-08 A | 2025-09-30 A | FRG.P2.RSJ.1.1000 | 100% | 2025-09-30 | 2025-10-27 |  |  | 80 | Harris Fragnet | P2-5 | Harris | FIT-2 | 2 | O | P2.B2.23.20.410 | 9/26 per harris schedule | TA | TA |
| DDD2530 |  | Test Systems - Risers / Shaft - 2810 | 5d | 2025-10-24 A | 2025-10-31 A | DDD3650, FRG.RNA.7.1010 FF | 100% | 2025-11-03 | 2025-11-07 |  |  | 40 | MEP | P2-5 | Harris | MEP-2 |  |  |  |  | JP | JP |
| FRG.RNA.7.1010 |  | Prep/Test Riser / RNA7 - FRAGNET | 6d | 2025-10-24 A | 2025-10-31 A | FRG.RNA.7.1000 | 100% |  |  |  |  | 80 | Harris Fragnet | P2-5 | Harris | FIT-2 | 2 |  | P2.B2.23.20.410 |  | TA | TA |
| FRG.RNA.7.1060 |  | Install Clamps B2-L2 / RNA7 - FRAGNET | 5d | 2025-11-03 A | 2025-11-07 A | FRG.RNA.7.1010 | 100% | 2025-12-01 | 2025-12-05 |  |  | 80 | Harris Fragnet | P2-5 | Harris | FIT-2 | 2 |  | P2.B2.23.20.410 |  | TA | SM |
| FRG.RNA.7.1070 |  | Install Clamps L3-L4 / RNA7 - FRAGNET | 5d | 2025-11-03 A | 2025-11-07 A | FRG.RNA.7.1060 SS | 100% | 2025-12-01 | 2025-12-05 |  |  | 80 | Harris Fragnet | P2-5 | Harris | FIT-2 | 2 |  | P2.B2.23.20.410 |  | TA | SM |
| FRG.RNA.7.1080 |  | Install Clamps L5-L6 / RNA7 - FRAGNET | 5d | 2025-11-10 A | 2025-11-14 A | FRG.RNA.7.1070 | 100% | 2025-12-08 | 2025-12-12 |  |  | 80 | Harris Fragnet | P2-5 | Harris | FIT-2 | 2 |  | P2.B2.23.20.410 |  | TA | SM |
| FRG.RNA.7.1090 |  | Install Clamps L7-PH / RNA7 - FRAGNET | 5d | 2025-11-17 A | 2025-11-21 A | FRG.RNA.7.1080 | 100% | 2025-12-15 | 2025-12-19 |  |  | 80 | Harris Fragnet | P2-5 | Harris | FIT-2 | 2 |  | P2.B2.23.20.410 | 10/9 per harris schedule | TA | SM |
| FRG.RNA.7.1020 |  | Insulate B2-L2 / RNA7 - FRAGNET | 5d | 2025-12-18 A | 2025-12-19 A | FRG.RNA.7.1010, FRG.RNA.7.1070 | 100% | 2026-01-02 | 2026-01-08 |  |  | 80 | Harris Fragnet | P2-5 | Harris | FIT-2 | 2 | O | P2.B2.23.20.410 |  | TA | SM |
| FRG.RNA.7.1030 |  | Insulate L3-L4 / RNA7 - FRAGNET | 5d | 2025-12-18 A | 2025-12-19 A | FRG.RNA.7.1020 | 100% | 2026-01-09 | 2026-01-15 |  |  | 80 | Harris Fragnet | P2-5 | Harris | FIT-2 | 2 | O | P2.B2.23.20.410 |  | TA | SM |
| FRG.RNA.7.1040 |  | Insulate L5-L6 / RNA7 - FRAGNET | 5d | 2025-12-19 A | 2025-12-31 A | FRG.RNA.7.1030 | 100% | 2026-01-16 | 2026-01-22 |  |  | 80 | Harris Fragnet | P2-5 | Harris | FIT-2 | 2 | O | P2.B2.23.20.410 |  | TA | SM |
| FRG.RNA.7.1050 |  | Insulate L7-PH / RNA7 - FRAGNET | 5d | 2025-12-19 A | 2025-12-31 A | FRG.RNA.7.1040 | 100% | 2026-01-23 | 2026-01-29 |  |  | 80 | Harris Fragnet | P2-5 | Harris | FIT-2 | 2 | O | P2.B2.23.20.410 | 10/30 per Harris schedule | TA | SM |
| DDD2540 |  | Inspections - Close In / Shaft - 2810 | 5d | 2026-04-01 | 2026-04-07 | FRG.RNA.7.1090, DDD2530, FRG.RNA.7.1050 |  |  |  | 79d | 0d | 40 | AHJ | P2-5 |  | AHJ |  | O |  |  | JP | SM |
| DDD2550 |  | Gypsum Shaft Walls / Shaft - 2810 | 10d | 2026-04-08 | 2026-04-21 | DDD2540 |  |  |  | 79d | 35d | 80 | GYP | P2-5 |  | GYP-1 |  |  |  |  | JP | SM |
|  | 1 | **PH 2 MATERIAL MOVEMENT SYSTEMS** |  | 2024-11-08 | 2028-10-03 |  |  |  |  |  |  |  |  |  |  |  |  |  |  |  |  |  |
|  | 1 | **PNUEMATIC TUBE - P2** |  | 2024-11-08 | 2026-10-28 |  |  |  |  |  |  |  |  |  |  |  |  |  |  |  |  |  |
| P2.PT.1000 |  | Install Hangars at B1 | 5d | 2024-11-08 A | 2025-01-06 A | P2.B2.N.1000 SS | 100% | 2024-12-02 | 2024-12-06 |  |  |  | PTUBE |  |  | PTUBE |  |  |  |  |  |  |
| P2.PT.1010 |  | Install Hangars at B2 | 5d | 2024-11-08 A | 2025-01-06 A | P2.PT.1000 FF | 100% | 2024-12-09 | 2024-12-13 |  |  |  | PTUBE |  |  | PTUBE |  |  |  |  |  |  |
| P2.PT.1060 |  | Install B1 P-Tube System between L1 & B2 / Z3 | 5d | 2025-01-09 A | 2025-01-29 A | P2.PT.1010 | 100% | 2025-02-24 | 2025-02-28 |  |  |  | PTUBE |  |  | PTUBE |  |  |  |  |  |  |
| P2.PT.1030 |  | Install Hangars at Level 1 | 5d | 2025-03-10 A | 2025-03-21 A | P2.L1.LC.1000, P2.PT.1060 | 100% | 2025-03-10 | 2025-03-14 |  |  |  | PTUBE |  |  | PTUBE |  |  |  |  |  |  |
| P2.PT.2070 |  | Install Hangars at Level 3 | 5d | 2025-03-10 A | 2025-03-28 A | P2.L3.LC.1000 | 100% | 2025-03-10 | 2025-03-14 |  |  |  | PTUBE |  |  | PTUBE |  |  |  |  |  |  |
| P2.PT.2080 |  | Install Hangars at Level 4 | 5d | 2025-03-10 A | 2025-03-28 A | P2.4.I.03.310 | 100% | 2025-03-10 | 2025-03-14 |  |  |  | PTUBE |  |  | PTUBE |  |  |  |  |  |  |
| P2.PT.2030 |  | Install Hangars at Level 2 (South) | 5d | 2025-03-17 A | 2025-03-21 A | P2.L2.INT.S.1000, P2.L1.LC.1000, P2.PT.1030 | 100% |  |  |  |  |  | PTUBE |  |  | PTUBE |  |  |  |  |  |  |
| P2.PT.2040 |  | Install Hangars at Level 2 (North) | 5d | 2025-03-17 A | 2025-03-21 A | P2.PT.2030, P2.L2.INT.N.1000 | 100% | 2025-03-24 | 2025-03-28 |  |  |  | PTUBE |  |  | PTUBE |  |  |  |  |  |  |
| P2.PT.1130 |  | Install L3 P-Tube System & Station R/I / Z2 | 5d | 2025-03-31 A | 2025-04-07 A | P2.PT.1140 SS | 100% | 2025-03-24 | 2025-03-28 |  |  |  | PTUBE |  |  | PTUBE |  |  |  |  |  |  |
| P2.PT.1140 |  | Install L3 P-Tube System & Station R/I / Z1 | 5d | 2025-03-31 A | 2025-04-07 A | P2.PT.2070 | 100% | 2025-03-17 | 2025-03-21 |  |  |  | PTUBE |  |  | PTUBE |  |  |  |  |  |  |
| P2.PT.1110 |  | Install L2 P-Tube System / L2 Interstitial | 5d | 2025-08-18 A | 2025-08-29 A | P2.PT.2040, P2.PT.1080 | 100% | 2025-10-07 | 2025-10-13 |  |  |  | PTUBE |  |  | PTUBE |  |  |  |  | JH | JH |
| P2.PT.1070 |  | Install B2 P-Tube System / B2-2830A | 5d | 2025-09-22 A | 2025-09-28 A | P2.PT.1120, P2.PT.1060, P2.B2.LC.1080 | 100% | 2025-12-19 | 2025-12-26 |  |  |  | PTUBE |  |  | PTUBE |  |  |  |  | JH | JH |
| P2.PT.1090 |  | Install L1 P-Tube System / Z3 | 5d | 2025-09-22 A | 2025-09-29 A | P2.PT.1060, P2.L1.LC.1190 | 100% | 2025-10-01 | 2025-10-07 |  |  |  | PTUBE |  |  | PTUBE |  | O |  |  | JH | JH |
| P2.PT.1120 |  | Install Shaft 3902 P-Tube System / B2-L6 | 10d | 2025-09-29 A | 2025-12-24 A | P2.PT.1190, DDD3010 FF | 100% | 2025-12-05 | 2025-12-18 |  |  |  | PTUBE |  |  | PTUBE |  |  |  |  | JH | JH |
| P2.PT.1080 |  | Install B1 P-Tube System up to Level 1 from existing building / Z1 | 5d | 2025-12-15 A | 2025-12-19 A | P2.B2.WC.1530 | 100% | 2026-01-30 | 2026-02-05 |  |  |  | PTUBE |  |  | PTUBE |  | O |  |  | JH | JH |
| P2.PT.1190 |  | Install L6 P-Tube Blowers & Transfer Units / L6 Interstitial | 10d | 2026-03-03 A | 2026-03-06 A | P2.L6.INT.S.1040 | 100% | 2026-04-13 | 2026-04-24 |  |  |  | PTUBE |  |  | PTUBE |  |  |  |  | JH | SM |
| P2.PT.1150 |  | Install L4 P-Tube System for L3 Station / L4 Interstitial | 5d | 2026-03-09 A | 2026-03-27 A | P2.PT.2080, P2.PT.1110 | 100% | 2026-03-30 | 2026-04-03 |  |  |  | PTUBE |  |  | PTUBE |  |  |  |  | JH | JH |
| P2.PT.1160 |  | Install L4 P-Tube System - Transfer 311 to existing building / L4 Interstitial | 5d | 2026-04-01 | 2026-04-07 | P2.PT.1150, P2.PT.1150 FF |  |  |  | 224d | 4d |  | PTUBE |  |  | PTUBE |  |  |  |  | JH | JH |
| P2.PT.1180 |  | Install L5 P-Tube Stations / Z1 | 5d | 2026-04-01 | 2026-04-07 | P2.L5.LC.1140 |  |  |  | 169d | 0d |  | PTUBE |  |  | PTUBE |  | O |  |  | JH | JH |
| P2.PT.2090 |  | Install L5 P-Tube Stations Trim-Out / Z1 | 5d | 2026-04-08 | 2026-04-14 | P2.PT.1180 |  |  |  | 224d | 133d |  | PTUBE |  |  | PTUBE |  |  |  |  |  | JH |
| P2.PT.2000 |  | Tie-In Permanent Power to P-Tube System | 5d | 2026-04-14 | 2026-04-20 | P2.PT.1190, CX.B2.SWGR.1010, CX.B2.MVEE.1010, P2.PT.1160 |  |  |  | 220d | 129d | 16 | ELEC | P2-5 |  | ELEC-2 |  |  |  |  |  | JH |
| P2.PT.1100 |  | Install L1 P-Tube Station Trim-Out / Z2 | 2d | 2026-05-11 | 2026-05-12 | P2.L1.F.LC.2190 FF |  |  |  | 204d | 113d |  | PTUBE |  |  | PTUBE |  |  |  |  |  | JH |
| P2.PT.2050 |  | Install L1 P-Tube Station Trim-Out / Z3 | 2d | 2026-05-11 | 2026-05-12 | P2.PT.1090, P2.L1.F.LC.2190 FF |  |  |  | 204d | 113d |  | PTUBE |  |  | PTUBE |  |  |  |  |  | JH |
| P2.PT.2060 |  | Install L3 P-Tube Station Trim-Out / Z1 & Z2 | 2d | 2026-09-14 | 2026-09-15 | P2.PT.1130, P2.L3.F.LC.2190 FF |  |  |  | 117d | 26d |  | PTUBE |  |  | PTUBE |  |  |  |  |  | JH |
| P2.PT.2020 |  | Install B2 P-Tube Station TrimOut / B2-2830A | 5d | 2026-10-15 | 2026-10-21 | P2.PT.1070, P2.B2.F.LC.2450 FF, P2.B2.F.LC.1190 FF |  |  |  | 91d | 0d |  | PTUBE |  |  | PTUBE |  |  |  |  |  | JH |
| P2.PT.2010 |  | Test Systems -Full System / All Levels | 5d | 2026-10-22 | 2026-10-28 | P2.PT.2050, P2.PT.2060, P2.PT.2000, P2.PT.2020, P2.PT.1100, P2.PT.2090 |  |  |  | 91d | 112d |  | ETV |  |  | ETV |  |  |  |  |  | JH |

| ID | WBS | Activity | Duration | Start | Finish | Predecessors | Complete | Planned start | Planned finish | Total float | Free float | Update Status | Resp / SRLM | 744 | RESP UPD | RESP / Trade | Temp Orig Dur | PHASE | Z.RESP | **NEAR CRITICAL** |
| --- | --- | --- | --- | --- | --- | --- | --- | --- | --- | --- | --- | --- | --- | --- | --- | --- | --- | --- | --- | --- |
|  | 1 | **PNUEMATIC TUBE - P5 (Needed for P2)** |  | 2026-04-01 | 2026-04-28 |  |  |  |  |  |  |  |  |  |  |  |  |  |  |  |
| P2.PT.1020 |  | Install B1 P-Tube System in existing building / F-Wing B1 | 20d | 2026-04-01 | 2026-04-28 | P2.PT.1060 |  |  |  | 633d | 573d | O | PTUBE | JH | JH | PTUBE |  |  |  |  |
|  | 3 | **PNUEMATIC TUBE - P5** |  | 2028-08-01 | 2028-10-03 |  |  |  |  |  |  |  |  |  |  |  |  |  |  |  |
| P5.PT.1010 |  | Install L2 P-Tube System in existing building - Transfer 212 to Level 1 / F-Wing L2 intersitial | 10d | 2028-08-01 | 2028-08-14 | P5.CRC.160, P2.PT.1020 |  |  |  | 60d | 0d |  | PTUBE |  | JH | PTUBE |  |  |  |  |
| P5.PT.1000 |  | Install L1 P-Tube System & Station in existing building / F-Wing L1 - 1-3835 to 1-3823B | 5d | 2028-08-15 | 2028-08-21 | P5.PT.1010 |  |  |  | 60d | 0d |  | PTUBE |  | JH | PTUBE |  |  |  |  |
| P5.PT.1030 |  | Install L4 P-Tube System in existing building / F-Wing L4 intersitial | 10d | 2028-08-22 | 2028-09-05 | P5.PT.1000 |  |  |  | 60d | 0d |  | PTUBE |  | JH | PTUBE |  |  |  |  |
| P5.PT.1020 |  | Install L3 P-Tube System & Stations (3) in existing building / F-Wing L3 future clinical space | 10d | 2028-09-06 | 2028-09-19 | P5.PT.1030 |  |  |  | 60d | 0d |  | PTUBE |  | JH | PTUBE |  |  |  |  |
| P5.PT.1040 |  | Test System - Phase 5 (All Levels) / F-Wing | 10d | 2028-09-20 | 2028-10-03 | P5.PT.1020 |  |  |  | 60d | 80d |  | PTUBE |  | JH | PTUBE |  |  |  |  |
|  | 2 | **ELECTRIC TRACK VEHICLE (ETV) - P2** |  | 2024-12-03 | 2026-07-16 |  |  |  |  |  |  |  |  |  |  |  |  |  |  |  |
| P2.ETV.1000 |  | Install Hangers at B1 | 5d | 2024-12-03 A | 2024-12-30 A | BP1.125.3.110, P2.B2.M.2801.1040 | 100% | 2025-01-02 | 2025-01-08 |  |  |  | ETV |  |  | ETV |  |  |  |  |
| P2.ETV.1010 |  | Install Hangers at B2 | 5d | 2024-12-09 A | 2024-12-30 A | BP1.125.3.110, P2.B2.N.1000 | 100% | 2025-01-09 | 2025-01-15 |  |  |  | ETV |  |  | ETV |  |  |  |  |
| P2.ETV.1020 |  | Install Track at B1 | 5d | 2025-01-02 A | 2025-02-28 A | P2.ETV.1000, BP1.125.3.100 | 100% | 2025-02-26 | 2025-03-04 |  |  |  | ETV |  |  | ETV |  |  |  |  |
| P2.ETV.1050 |  | ETV Supports and Track Risers (L1-6) / Shaft - 2808 | 10d | 2025-03-03 A | 2025-03-31 A | P2.6.03.630 | 100% | 2025-03-03 | 2025-03-14 |  |  |  | MEP |  |  | MEP-2 | 40 | P2-5 | Harris |  |
| P2.ETV.1030 |  | Install Hangers at L5 | 5d | 2025-05-01 A | 2025-05-07 A | BP1.125.3.110, P2.L5.S.1000, P2.6.I.03.310 | 100% | 2025-06-02 | 2025-06-06 |  |  |  | ETV |  |  | ETV |  |  |  |  |
| P2.ETV.1040 |  | Install Track at L5 | 5d | 2025-12-08 A | 2025-12-24 A | P2.ETV.1030 | 100% | 2026-01-02 | 2026-01-08 |  |  | O | ETV | JH | JH | ETV |  |  |  |  |
| P2.ETV.1060 |  | Test Systems - Risers (L1-6) / Shaft - 2808 | 5d | 2026-01-02 A | 2026-01-08 A | P2.ETV.1050 | 100% |  |  |  |  | O | ETV | JH | JH | ETV | 16 | P2-5 |  | 2.2 |
| P2.ETV.1070 |  | Inspections - Close In / Shaft - 2808 | 5d | 2026-01-09 A | 2026-01-15 A | P2.ETV.1060 | 100% |  |  |  |  | O | AHJ | JH | JH | AHJ | 40 | P2-5 |  | 2.2 |
| P2.ETV.1090 |  | Install Hangars at L6 | 5d | 2026-03-09 A | 2026-03-13 A | BP1.125.3.110, P2.L6.INT.S.1000 | 100% | 2026-03-02 | 2026-03-06 |  |  | O | ETV | JH | JH | ETV |  |  |  |  |
| P2.ETV.1080 |  | Gypsum Shaft Walls & Acess Doors / Shaft - 2808 | 10d | 2026-04-01 | 2026-04-14 | P2.ETV.1070 |  |  |  | 224d | 60d | O | GYP | JH | JH | GYP-1 | 40 | P2-5 |  | 2.2 |
| P2.ETV.1100 |  | Install Track at L6 | 10d | 2026-04-01 | 2026-04-14 | P2.ETV.1090 |  |  |  | 214d | 50d | O | ETV | JH | JH | ETV |  |  |  |  |
| P2.ETV.1120 |  | Install Trolley System | 5d | 2026-06-25 | 2026-07-01 | P2.ETV.1020, P5.ETV.1110, P2.ETV.1100, P2.ETV.1040 |  |  |  | 164d | 0d |  | ETV | JH | JH | ETV | 16 | P2-5 |  |  |
| P2.ETV.1130 |  | Tie-In Permanent Power to ETV | 5d | 2026-07-02 | 2026-07-09 | P2.ETV.1120, CX.B2.SWGR.1010, CX.B2.MVEE.1010 |  |  |  | 164d | 0d |  | ELEC |  | JH | ELEC-2 | 16 | P2-5 |  |  |
| P2.ETV.1140 |  | Test Systems -Full System / All Levels | 5d | 2026-07-10 | 2026-07-16 | P2.ETV.1130, P2.ETV.1080 |  |  |  | 164d | 185d |  | ETV |  | JH | ETV |  |  |  |  |
|  | 1 | **ELECTRIC TRACK VEHICLE (ETV) - P5 (Needed for P2)** |  | 2026-06-18 | 2026-06-24 |  |  |  |  |  |  |  |  |  |  |  |  |  |  |  |
| P5.ETV.1110 |  | Install Track at B2 & make existing buliding connection | 5d | 2026-06-18 | 2026-06-24 | P2.ETV.1010, P2.B2.M.2803.1340, P2.B2.EXBR.1070 |  |  |  | 164d | 0d |  | ETV | JH | JH | ETV |  |  |  |  |

| ID | WBS | Activity | Duration | Start | Finish | Predecessors | Complete | Remaining | Planned start | Planned finish | Total float | Free float | Temp Orig Dur | Act ID Temp | Resp / SRLM | PHASE | Z.RESP | RESP / Trade | Pick | Testing Type | 744 | RESP UPD | *NIH Resp Check* | Update Status |
| --- | --- | --- | --- | --- | --- | --- | --- | --- | --- | --- | --- | --- | --- | --- | --- | --- | --- | --- | --- | --- | --- | --- | --- | --- |
|  | 5 | **PH 2 - CORE & SUPPORT / LAB & CLINICAL / INTERSTITIAL SPACES** |  | 2015-08-11 | 2027-03-09 |  |  |  |  |  |  |  |  |  |  |  |  |  |  |  |  |  |  |  |
|  | B3 | **B3 BUILDOUT (7K SF)** |  | 2024-09-02 | 2026-08-20 |  |  |  |  |  |  |  |  |  |  |  |  |  |  |  |  |  |  |  |
|  | B3 | **ROUGH IN / Mechanical B3-5970** |  | 2024-09-02 | 2026-05-27 |  |  |  |  |  |  |  |  |  |  |  |  |  |  |  |  |  |  |  |
| P2.B3.1000 |  | Layout - All Trades / Mech B3-5970 | 5d | 2024-09-02 A | 2024-09-06 A | P2.2.03.310 | 100% |  | 2024-10-01 | 2024-10-07 |  |  | 40 | P2.B2.01.010 | R/I.OH | P2-5 | Harris | R/I.OH |  |  |  |  |  |  |
| P2.B3.1010 |  | OH - MEPF - Hangers & Supports / Mech B3-5970 | 10d | 2024-09-09 A | 2024-09-18 A | P2.B3.1000, P2.BIM.B3.40.140, BP1.210.3.100 | 100% |  | 2024-10-08 | 2024-10-21 |  |  | 40 | P2.B2.20.05.410 | MEP | P2-5 | Harris | MEP-2 |  |  |  |  |  |  |
| P2.B3.1100 |  | OH - Plumbing Piping / Mech B3-5970 | 10d | 2024-09-09 A | 2024-09-18 A | P2.B3.1010 | 100% |  | 2025-04-23 | 2025-05-06 |  |  | 80 | P2.B2.22.14.210 | PLMB | P2-5 | Harris | PLMB | 1 |  |  |  |  |  |
| P2.B3.1090 |  | OH - Fire Suppression / Mech B3-5970 | 10d | 2024-09-24 A | 2024-10-01 A | P2.B3.1010 | 100% |  | 2024-11-01 | 2024-11-14 |  |  | 40 | P2.B2.21.13.210 | FP | P2-5 |  | FP-1 | 1 |  |  |  |  |  |
| P2.B3.1110 |  | OH - Electrical - 480/277v Distribution / Mech B3-5970 | 5d | 2024-10-08 A | 2024-10-18 A | P2.B3.1010 | 100% |  | 2024-11-01 | 2024-11-07 |  |  | 40 | P2.B2.26.05.210 | ELEC | P2-5 |  | ELEC-2 | 1 |  |  |  |  |  |
| P2.B3.2100 |  | CMU - Drill Dowels and Lay Block (ACRF Separation Wall) / Mech B3-5970 | 5d | 2024-10-14 A | 2024-11-01 A | P2.B3.1000 | 100% |  | 2024-11-01 | 2024-11-07 |  |  | 40 | P2.B2.04.20.210 | CMU | P2-5 |  | CMU |  | AT3 |  |  |  |  |
| P2.B3.1040 |  | In Wall - Electrical - CMU / Mech B3-5970 | 5d | 2024-11-11 A | 2024-11-18 A | P2.B3.2100 | 100% |  | 2024-12-02 | 2024-12-06 |  |  | 40 | P2.B2.26.05.510 | ELEC | P2-5 |  | ELEC-2 |  |  |  |  |  |  |
| P2.B3.1190 |  | OH - Plumbing - Test / Mech B3-5970 | 5d | 2024-11-18 A | 2024-11-19 A | P2.B3.1100, P2C.DES.235 SS | 100% |  | 2024-12-03 | 2024-12-09 |  |  | 40 | P2.B2.22.14.310 | PLMB | P2-5 | Harris | PLMB | 2 |  |  |  |  |  |
| P2.B3.1140 |  | OH - Hang Duct - LP Branch / Mech B3-5970 | 5d | 2025-01-02 A | 2025-01-08 A | P2.B3.1090 | 100% |  | 2025-02-03 | 2025-02-07 |  |  | 40 | P2.B2.23.30.410 | HVAC | P2-5 | Harris | HVAC | 3 |  |  |  |  |  |
| P2.B3.1180 |  | OH - Insulate LP Duct / Mech B3-5970 | 5d | 2025-01-09 A | 2025-01-14 A | P2.B3.1140 | 100% |  | 2025-02-10 | 2025-02-14 |  |  | 40 | P2.B2.23.07.410 | INSUL | P2-5 | Harris | INSUL-3 | 4 |  |  |  |  |  |
| P2.B3.1130 |  | OH - HVAC Piping (Steam Condensate) / Mech B3-5970 | 20d | 2025-01-23 A | 2025-03-26 A | P2.B3.1090 | 100% |  | 2025-02-03 | 2025-02-28 |  |  | 80 | P2.B2.23.20.410 | FIT | P2-5 | Harris | FIT-2 | 2 |  |  |  |  |  |
| P2.B3.2080 |  | OH - HVAC Piping (Reheat) / Mech B3-5970 | 20d | 2025-01-23 A | 2025-03-19 A | P2.B3.1130 FF | 100% |  | 2025-03-03 | 2025-03-28 |  |  | 80 | P2.B2.23.20.410 | FIT | P2-5 | Harris | FIT-2 | 2 |  |  |  |  |  |
| P2.B3.1150 |  | OH - Electrical - 208/120v Branch / Mech B3-5970 | 10d | 2025-02-05 A | 2025-04-02 A | P2.B3.1110, P2.B3.1020 | 100% |  | 2025-03-03 | 2025-03-14 |  |  | 80 | P2.B2.26.05.310 | ELEC | P2-5 |  | ELEC-2 | 2 |  |  |  |  |  |
| P2.B3.2120 |  | CMU - Point & Patch / Mech B3-5970 | 2d | 2025-06-02 A | 2025-06-03 A | P2.B3.2100, P2.B3.1020 SS | 100% |  | 2025-07-01 | 2025-07-02 |  |  | 16 | P2.B2.04.20.310 | CMU | P2-5 |  | CMU |  |  | TS | TS |  |  |
| P2.B3.1030 |  | CMU - Lay Block ***After Equipment Skids*** / Mech B3-5970 | 5d | 2025-06-10 A | 2025-06-18 A | BP5.081.3.400 FF, P2.B3.1020 | 100% |  | 2025-07-09 | 2025-07-15 |  |  | 40 | P2.B2.04.20.210 | CMU | P2-5 |  | CMU |  | AT3 | TS | TS |  |  |
| P2.B3.1060 |  | CMU - Point & Patch / Mech B3-5970 | 2d | 2025-06-18 A | 2025-06-19 A | P2.B3.1040, P2.B3.1050 | 100% |  | 2025-07-18 | 2025-07-21 |  |  | 16 | P2.B2.04.20.310 | CMU | P2-5 |  | CMU |  |  | TS | TS |  |  |
| P2.B3.1020 |  | Set and Connect Expansion Tanks and Pump Skids / Mech B3-5970 | 5d | 2025-06-23 A | 2025-06-30 A | BP1.224.3.960, P2.B3.1010 | 100% |  | 2025-07-01 | 2025-07-08 |  |  | 40 |  | FIT | P2-5 | Harris | FIT-2 |  |  | TS | TS | ! |  |
| P2.B3.1270 |  | OH - Conduit - Low Volt - BAS/Controls / Mech B3-5970 | 5d | 2025-09-02 A | 2025-09-08 A | P2.B3.1180 | 100% |  | 2025-10-01 | 2025-10-07 |  |  | 40 |  | BAS | P2-5 | Harris | BAS-1 | 5 |  | TS | TS |  | O |
| P2.B3.1280 |  | OH - Conduit - Low Volt - Fire Alarm / Mech B3-5970 | 5d | 2025-09-02 A | 2025-09-08 A | BP1.283.3.100, P2.B3.1180 | 100% |  | 2025-10-01 | 2025-10-07 |  |  | 40 |  | FA | P2-5 |  | FA-1 | 5 |  | TS | TS |  | O |
| P2.B3.1290 |  | OH - Conduit - Low Volt - Telecom / Mech B3-5970 | 5d | 2025-09-02 A | 2025-09-02 A | BP1.270.3.100, P2.B3.1180 | 100% |  | 2025-10-01 | 2025-10-07 |  |  | 40 |  | ELEC | P2-5 |  | ELEC-2 | 5 |  | TS | TS |  | O |
| P2.B3.1300 |  | OH - Conduit - Low Volt - Security / Mech B3-5970 | 5d | 2025-09-02 A | 2025-09-02 A | BP1.280.3.100, P2.B3.1180 | 100% |  | 2025-10-01 | 2025-10-07 |  |  | 40 |  | ELEC | P2-5 |  | ELEC-2 | 5 |  | TS | TS |  | O |
| P2.B3.1050 |  | Paint - CMU Block Fill / Mech B3-5970 | 2d | 2025-10-01 A | 2025-10-02 A | P2.B3.1030, BP7.099.3.100 | 100% |  |  |  |  |  | 16 | P2.B2.09.97.110 | PAINT | P2-5 |  | PAINT-1 |  |  | TS | TS |  |  |
| P2.B3.1120 |  | Electrical Tie in to Equipment / Mech B3-5970 | 5d | 2025-11-03 A | 2025-11-07 A | P2.B3.1110, P2.B3.1020 | 100% |  | 2025-12-01 | 2025-12-05 |  |  | 40 |  | ELEC | P2-5 |  | ELEC-2 |  |  | TS | TS |  |  |
| P2.B3.1160 |  | Pull Wire - Electrical - 480/277v Distribution / Mech B3-5970 | 10d | 2025-11-03 A | 2025-11-14 A | P2.B3.1110 | 100% |  | 2025-12-01 | 2025-12-12 |  |  | 80 |  | ELEC | P2-5 |  | ELEC-2 | To Trim Devices & Term Panel |  | TS | TS |  |  |
| P2.B3.1230 |  | Pull Wire - Electrical - 208/120v Branch & Equip / Mech B3-5970 | 5d | 2025-11-03 A | 2025-11-07 A | P2.B3.1150 | 100% |  | 2025-12-01 | 2025-12-05 |  |  | 40 |  | ELEC | P2-5 |  | ELEC-2 | To Trim Devices & Term Panel |  | TS | TS |  |  |
| P2.B3.1310 |  | Pull Wire - Low Volt - BAS/Controls / Mech B3-5970 | 5d | 2025-11-03 A | 2025-11-07 A | P2.B3.1270 | 100% |  | 2025-12-01 | 2025-12-05 |  |  | 40 |  | BAS | P2-5 | Harris | BAS-1 | To Trim Finishes |  | TS | TS |  |  |
| P2.B3.1070 |  | Spray/Seal/Firestop - Head of Wall / Mech B3-5970 | 2d | 2025-11-05 A | 2025-11-06 A | P2.B3.1080 SS | 100% |  | 2025-12-03 | 2025-12-04 |  |  | 16 | P2.B2.07.84.310 | FIRSAFE | P2-5 |  | FIRSAFE | To Finishes - Paint | AT47 | TS | TS |  |  |
| P2.B3.1170 |  | BAS Equipment Install / Mech B3-5970 | 10d | 2025-11-10 A | 2025-11-21 A | P2.B3.1120, P2.B3.1270 | 100% |  | 2025-12-08 | 2025-12-19 |  |  | 40 |  | BAS | P2-5 | Harris | BAS-1 |  |  | TS | TS |  |  |
| P2.B3.1200 |  | Control Wiring to Equipment / Mech B3-5970 | 5d | 2025-12-01 A | 2025-12-05 A | P2.B3.1170, P2.B3.1270 | 100% |  | 2026-01-02 | 2026-01-08 |  |  | 40 |  | BAS | P2-5 | Harris | BAS-1 |  |  | TS | TS |  | O |
| P2.B3.1210 |  | OH - HVAC Piping - Test / Mech B3-5970 | 5d | 2025-12-01 A | 2025-12-05 A | P2.B3.2080 | 100% |  | 2026-01-02 | 2026-01-08 |  |  | 40 | P2.B2.23.20.510 | FIT | P2-5 | Harris | FIT-2 | 3 |  | TS | TS |  | O |
| P2.B3.2110 |  | Paint - CMU Block Fill / Mech B3-5970 | 2d | 2026-01-12 A | 2026-01-13 A | P2.B3.2120 | 100% |  | 2026-01-02 | 2026-01-05 |  |  | 16 | P2.B2.09.97.110 | PAINT | P2-5 |  | PAINT-1 |  |  | TS | TS |  | O |
| P2.B3.1080 |  | Paint Prime & 1st Coat / Mech B3-5970 | 2d | 2026-01-14 A | 2026-01-20 A | P2.B3.2110, P2.B3.1060 | 100% |  | 2026-01-06 | 2026-01-07 |  |  | 16 | P2.B2.09.97.210 | PAINT | P2-5 |  | PAINT-1 |  |  | TS | TS |  | O |
| P2.B3.1250 |  | OH - HVAC Piping - Equip Tie In / Mech B3-5970 | 10d | 2026-03-02 A | 2026-05-05 | P2.B3.1210, P2.B3.1020, CX.B2.HYDR.1000 | 50% | 5d | 2026-03-30 | 2026-04-10 | 9d | 0d | 40 | P2.B2.23.20.610 | FIT | P2-5 | Harris | FIT-2 |  |  | TS | TS |  |  |
| P2.B3.1240 |  | Firestop - Thru Wall / Mech B3-5970 | 5d | 2026-03-09 A | 2026-03-13 A | P2.B3.1080 | 100% |  |  |  |  |  | 40 | P2.B2.07.84.210 | FIRESTO | P2-5 |  | FIRESTO | To Finishes - Paint | AT48 | TS | TS |  | O |
| P2.B3.1220 |  | OH - Insulate Plumbing / Mech B3-5970 | 5d | 2026-04-01 | 2026-04-07 | P2.B3.1190 |  |  |  |  | 39d | 30d | 40 | P2.B2.22.07.510 | INSUL | P2-5 | Harris | INSUL-3 | 3 |  | TS | TS |  | O |
| P2.B3.1320 |  | Pull Wire - Low Volt - Fire Alarm / Mech B3-5970 | 5d | 2026-04-01 | 2026-04-07 | P2.B3.1280 |  |  |  |  | 39d | 30d | 40 |  | FA | P2-5 |  | FA-1 | To Trim Finishes |  | TS | TS |  | O |
| P2.B3.1330 |  | Pull Wire - Low Volt - Telecom / Mech B3-5970 | 5d | 2026-04-01 | 2026-04-07 | P2.B3.1290 |  |  |  |  | 39d | 30d | 40 |  | LOWVOLT | P2-5 |  | LOWVOLT-1 | To Trim Finishes |  | TS | TS |  | O |
| P2.B3.1340 |  | Pull Wire - Low Volt - Security / Mech B3-5970 | 5d | 2026-04-01 | 2026-04-07 | P2.B3.1300 |  |  |  |  | 39d | 30d | 40 |  | LOWVOLT | P2-5 |  | LOWVOLT-1 | To Trim Finishes |  | TS | TS |  | O |
| P2.B3.1260 |  | OH - Insulate HVAC Pipe / Mech B3-5970 | 10d | 2026-05-06 | 2026-05-19 | P2.B3.1250 |  |  |  |  | 9d | 0d | 40 | P2.B2.22.07.610 | INSUL | P2-5 | Harris | INSUL-3 | 4 |  | TS | TS |  |  |
| P2.B3.1350 |  | Trades Inspect & Verify R/I Work Completed to Specs / Mech B3-5970 | 5d | 2026-05-20 | 2026-05-27 | P2.B3.1070, P2.B3.1240, P2.B3.1200, P2.B3.1160, P2.B3.1230, P2.B3.1310, P2.B3.1320, P2.B3.1330, P2.B3.1340, P2.B3.1260, P2.B3.1220 |  |  |  |  | 9d |  | 40 |  | T | P2-5 |  | T |  |  | TS | TS |  |  |

| ID | WBS | Activity | Duration | Start | Finish | Predecessors | Complete | Planned start | Planned finish | Total float | Free float | Temp Orig Dur | Resp / SRLM | 744 | PHASE | RESP UPD | RESP / Trade | Z.RESP | Testing Type | Act ID Temp | *NIH Resp Check* | Update Status |
| --- | --- | --- | --- | --- | --- | --- | --- | --- | --- | --- | --- | --- | --- | --- | --- | --- | --- | --- | --- | --- | --- | --- |
|  | 5 | **FINISHES / Mechanical B3-5970** |  | 2026-01-21 | 2026-08-20 |  |  |  |  |  |  |  |  |  |  |  |  |  |  |  |  |  |
| P2.B3.2000 |  | Paint - Finish Coat / Mech B3-5970 | 2d | 2026-01-21 A | 2026-01-22 A | P2.B3.1080 | 100% | 2026-03-27 | 2026-03-30 |  |  | 16 | PAINT | TS | P2-5 | TS | PAINT-1 |  |  |  |  |  |
| P2.B3.2090 |  | Flooring Prep - Epoxy Floors / Mech B3-5970 & B3-6901 | 5d | 2026-02-11 A | 2026-02-12 A | P2.B3.2000, BP7.096.3.200 | 100% | 2026-05-04 | 2026-05-08 |  |  | 16 | EPOXYF | TS | P2-5 | TS | EPOXYF |  |  |  |  |  |
| P2.B3.2020 |  | Flooring - Epoxy Floors / Mech B3-5970 & B3-6901 | 2d | 2026-02-12 A | 2026-02-18 A | P2.B3.2090, BP7.096.3.200 | 100% | 2026-05-11 | 2026-05-12 |  |  | 16 | EPOXYF | TS | P2-5 | TS | EPOXYF |  |  |  |  |  |
| P2.B3.2010 |  | Trim All MEPF Finishes / Mech B3-5970 | 2d | 2026-04-01 | 2026-04-02 | BP1.233.3.410, P2.B3.2000 |  |  |  | 208d | 82d | 16 | MEP | TS | P2-5 | TS | MEP-2 | Harris |  |  |  |  |
| P2.B3.2030 |  | Doors & Hardware / Mech B3-5970 | 2d | 2026-07-30 | 2026-07-31 | P2.B3.2020, BP5.081.3.300, P2.B3.2010 |  |  |  | 126d | 0d | 16 | DFH | TS | P2-5 | TS | DFH |  | AT29 |  |  |  |
| P2.B3.2040 |  | Work Completion List / Mech B3-5970 | 5d | 2026-08-03 | 2026-08-07 | P2.B3.2030 |  |  |  | 126d | 0d | 40 | T | TS | P2-5 | TS | T |  |  |  |  |  |
| P2.B3.2050 |  | Rough Clean / Mech B3-5970 | 2d | 2026-08-10 | 2026-08-11 | P2.B3.2040 |  |  |  | 126d | 0d | 16 | FCLEAN | TS | P2-5 | TS | FCLEAN |  |  |  |  |  |
| P2.B3.2060 |  | Punchlist / Mech B3-5970 | 5d | 2026-08-12 | 2026-08-18 | P2.B3.2050 |  |  |  | 126d | 0d | 40 | AHJ | TS | P2-5 | TS | AHJ |  |  |  |  |  |
| P2.B3.2070 |  | Final Clean / Mech B3-5970 | 2d | 2026-08-19 | 2026-08-20 | P2.B3.2060 |  |  |  | 126d | 138d | 16 | FCLEAN |  | P2-5 | TS | FCLEAN |  |  |  |  |  |
|  | B2 | **B2/B1 BUILDOUT** |  | 2015-08-11 | 2027-02-05 |  |  |  |  |  |  |  |  |  |  |  |  |  |  |  |  |  |
|  | B2 | **CORE & SUPPORT SPACES / LEVEL B2/B1** |  | 2015-08-11 | 2027-02-05 |  |  |  |  |  |  |  |  |  |  |  |  |  |  |  |  |  |
|  | 2 | **ROUGH IN - Core & Support Spaces / Level B2/B1** |  | 2015-08-11 | 2026-11-13 |  |  |  |  |  |  |  |  |  |  |  |  |  |  |  |  |  |
|  | 2 | **South Corridor (5900-5930)** |  | 2024-09-25 | 2026-03-11 |  |  |  |  |  |  |  |  |  |  |  |  |  |  |  |  |  |
| P2.B2.SC.1000 |  | Layout - All Trades / B2 / South Corridor | 5d | 2024-09-25 A | 2024-10-01 A | P1.1.03.610 SS | 100% | 2024-10-15 | 2024-10-21 |  |  | 40 | R/I.OH |  | P2-5 |  | R/I.OH | Harris |  | P2.B2.01.010 |  |  |
| P2.B2.SC.1030 |  | OH - MEPF & Ceiling Grid - Hangers & Supports / B2 / South Corridor | 10d | 2024-09-30 A | 2024-10-07 A | P2.BIM.B2.40.140 SS, P2.B2.SC.1000 SS | 100% | 2024-10-29 | 2024-11-11 |  |  | 80 | MEP |  | P2-5 |  | MEP-2 | Harris |  | P2.B2.20.05.410 |  |  |
| P2.B2.SC.1020 |  | OH - Structural Supports (All Trades) / B2 / South Corridor | 5d | 2024-10-01 A | 2024-10-08 A | P2.B2.SC.1000 SS | 100% | 2024-11-08 | 2024-11-14 |  |  | 80 | R/I.OH |  | P2-5 |  | R/I.OH | Harris |  | P2.B2.05.45.110 |  |  |
| P2.B2.SC.1050 |  | Install Doors Frames / B2 / South Corridor | 5d | 2024-10-04 A | 2024-12-10 A | P2.B2.SC.1000 SS | 100% | 2024-11-08 | 2024-11-14 |  |  | 40 | DFH |  | P2-5 |  | DFH |  | AT29 |  | ! |  |
| P2.B2.SC.1010 |  | Framing - Top Track / B2 / South Corridor | 5d | 2024-10-14 A | 2024-10-22 A | P2.B2.SC.1000 SS | 100% | 2024-11-08 | 2024-11-14 |  |  | 80 | GYP |  | P2-5 |  | GYP-1 |  |  | P2.B2.09.21.110 |  |  |
| P2.B2.SC.1090 |  | OH Fire Suppression Main / B2 / South Corridor | 5d | 2024-10-15 A | 2024-10-21 A | BP1.210.3.100, P2.B2.SC.1080 SS | 100% | 2024-11-26 | 2024-12-04 |  |  | 80 | FP |  | P2-5 |  | FP-1 |  |  | P2.B2.20.05.410 |  |  |
| P2.B2.SC.1110 |  | OH High Electrical Crossings / B2 / South Corridor | 5d | 2024-10-16 A | 2024-11-11 A | P2.B2.SC.1090 SS, P2.B2.SC.1030 SS | 100% | 2024-12-05 | 2024-12-11 |  |  | 40 | ELEC |  | P2-5 |  | ELEC-3 |  |  |  | ! |  |
| P2.B2.SC.1140 |  | Paint OH Fire Suppression / B2 / South Corridor | 2d | 2024-10-16 A | 2024-10-18 A | P2.B2.SC.1090 SS | 100% | 2024-12-12 | 2024-12-13 |  |  | 80 | FP |  | P2-5 |  | FP-1 |  |  | P2.B2.20.05.410 |  |  |
| P2.B2.SC.1060 |  | Frame Upper Partitions / B2 / South Corridor | 5d | 2024-10-17 A | 2024-10-24 A | P2.B2.SC.1010 | 100% | 2024-11-08 | 2024-11-14 |  |  | 40 | GYP |  | P2-5 |  | GYP-1 |  |  |  | ! |  |
| P2.B2.SC.1080 |  | Hang-Tape-Finish Upper Partitions (Tier 1) / B2 / South Corridor | 5d | 2024-10-29 A | 2024-11-21 A | P2.B2.SC.1060 SS, P2.B2.SC.1020 SS | 100% | 2024-11-22 | 2024-12-02 |  |  | 80 | GYP |  | P2-5 |  | GYP-1 |  |  | P2.B2.09.21.110 |  |  |
| P2.B2.SC.1040 |  | CMU - Drill_Epoxy Masonry Dowels / B2 / South Corridor | 5d | 2024-11-01 A | 2024-11-07 A | P2.B2.SC.1000, BP4.040.3.100 | 100% | 2024-12-02 | 2024-12-06 |  |  | 80 | CMU |  | P2-5 |  | CMU |  | AT4 | P2.B2.04.20.110 |  |  |
| P2.B2.SC.1070 |  | CMU - Lay Block / B2 / South Corridor | 10d | 2024-11-01 A | 2024-11-07 A | P2.B2.SC.1060 | 100% | 2024-12-09 | 2024-12-20 |  |  | 80 | CMU |  | P2-5 |  | CMU |  | AT3 | P2.B2.04.20.210 |  |  |
| P2.B2.SC.1180 |  | Hang-Tape-Finish Upper Partitions (Tier 2) / B2 / South Corridor | 5d | 2024-11-25 A | 2024-12-30 A | P2.B2.SC.1110, P2.B2.SC.1170 SS | 100% | 2024-12-31 | 2025-01-07 |  |  | 80 | GYP |  | P2-5 |  | GYP-1 |  |  | P2.B2.09.21.110 |  |  |
| P2.B2.SC.1150 |  | OH High Mechanical Install / B2 / South Corridor | 10d | 2024-11-29 A | 2024-12-03 A | P2.B2.SC.1140 | 100% | 2024-12-02 | 2024-12-13 |  |  | 40 | HVAC |  | P2-5 |  | HVAC | Harris |  |  | ! |  |
| P2.B2.SC.1160 |  | Testing & Inspection - High Mechanical Duct / B2 / South Corridor | 5d | 2024-12-02 A | 2024-12-03 A | P2.B2.SC.1150 SS | 100% | 2025-01-15 | 2025-01-21 |  |  | 80 | HVAC |  | P2-5 |  | HVAC | Harris |  |  | ! |  |
| P2.B2.SC.1170 |  | Insulate High Duct / B2 / South Corridor | 5d | 2024-12-04 A | 2025-02-10 A | P2.B2.SC.1160 SS | 100% | 2025-01-22 | 2025-01-28 |  |  | 40 | INSUL |  | P2-5 |  | INSUL-3 | Harris |  |  | ! |  |
| P2.B2.SC.1190 |  | OH Low Duct Install / B2 / South Corridor | 5d | 2025-01-08 A | 2025-04-01 A | P2.B2.SC.1180 | 100% | 2025-02-03 | 2025-02-07 |  |  | 40 | HVAC |  | P2-5 |  | HVAC | Harris |  |  | ! |  |
| P2.B2.SC.1200 |  | OH Piping Install / B2 / South Corridor | 10d | 2025-01-08 A | 2025-01-17 A | P2.B2.SC.1180 | 100% | 2025-02-10 | 2025-02-21 |  |  | 40 | MECH |  | P2-5 |  | MECH-2 | Harris |  |  | ! |  |
| P2.B2.SC.1230 |  | Insulate Mid-Tier Mechanical / B2 / South Corridor | 5d | 2025-01-08 A | 2025-02-18 A | P2.B2.SC.1220 | 100% | 2025-03-24 | 2025-03-28 |  |  | 40 | INSUL |  | P2-5 |  | INSUL-3 | Harris |  |  | ! |  |
| P2.B2.SC.1100 |  | In Wall MEPF Rough In / B2 / South Corridor | 5d | 2025-01-23 A | 2025-02-10 A | P2.B2.SC.1070 FF, P2.B2.SC.1030 | 100% | 2025-02-03 | 2025-02-07 |  |  | 40 | R/I.IW |  | P2-5 |  | R/I.IW |  |  |  | ! |  |
| P2.B2.SC.1210 |  | OH Mid Plumbing Install / B2 / South Corridor | 5d | 2025-01-23 A | 2025-02-10 A | P2.B2.SC.1200 FF | 100% | 2025-02-24 | 2025-02-28 |  |  | 40 | PLMB |  | P2-5 |  | PLMB | Harris |  |  | ! |  |
| P2.B2.SC.1220 |  | Testing & Inspection - Mechanical / B2 / South Corridor | 5d | 2025-02-06 A | 2025-02-18 A | P2.B2.SC.1210 | 100% | 2025-03-17 | 2025-03-21 |  |  | 80 | PLMB |  | P2-5 |  | PLMB | Harris |  |  | ! |  |
| P2.B2.SC.1130 |  | In Wall Inspection / B2 / South Corridor | 5d | 2025-02-10 A | 2025-02-20 A | P2.B2.SC.1100 | 100% | 2025-03-10 | 2025-03-14 |  |  | 40 | AHJ |  | P2-5 |  | AHJ |  |  |  | ! |  |
| P2.B2.SC.1240 |  | Hang-Tape-Finish Upper Partitions (Tier 3) / B2 / South Corridor | 5d | 2025-02-26 A | 2025-03-13 A | P2.B2.SC.1230 | 100% | 2025-03-11 | 2025-03-17 |  |  | 80 | GYP |  | P2-5 |  | GYP-1 |  |  | P2.B2.09.21.110 |  |  |
| P2.B2.SC.1270 |  | Hang-Tape-Finish / B2 / South Corridor | 5d | 2025-02-26 A | 2025-03-13 A | P2.B2.SC.1130 | 100% | 2025-05-22 | 2025-05-29 |  |  | 80 | GYP |  | P2-5 |  | GYP-1 |  |  | P2.B2.09.21.110 |  |  |
| P2.B2.SC.1280 |  | Fire Caulk MEPF Penetrations / B2 / South Corridor | 5d | 2025-04-21 A | 2025-05-15 A | P2.B2.SC.1270, P2.B2.SC.1260 | 100% | 2025-05-30 | 2025-06-05 |  |  | 40 | FIRESTO |  | P2-5 |  | FIRESTO |  | AT48 |  | ! |  |
| P2.B2.SC.1260 |  | OH Low Plumbing Install / B2 / South Corridor | 10d | 2025-05-05 A | 2025-07-02 A | P2.B2.SC.1240 | 100% | 2025-06-02 | 2025-06-13 |  |  | 40 | PLMB | SS | P2-5 | SS | PLMB | Harris |  |  | ! |  |
| P2.B2.SC.1250 |  | OH Electrical (Bus/Branch/Tray) / B2 / South Corridor | 10d | 2025-06-02 A | 2026-01-22 A | P2.B2.SC.1240, P2.B2.SC.1050, P2.LR.L2.180 | 100% | 2025-07-25 | 2025-08-07 |  |  | 40 | ELEC | SS | P2-5 | SS | ELEC-3 |  |  |  | ! | O |
| P2.B2.SC.1120 |  | Testing & Inspection - Fire Suppression / B2 / South Corridor | 5d | 2025-07-02 A | 2025-07-18 A | P2C.NIH.110, P2.B2.SC.1090, P2.B2.SC.1140, P2C.DES.210 | 100% | 2025-08-04 | 2025-08-08 |  |  | 80 | FP | SS | P2-5 | SS | FP-1 |  |  |  | ! |  |
| P2.B2.SC.1290 |  | Trades Inspect & Verify R/I Work Completed to Specs / B2 / South Corridor | 5d | 2026-03-05 A | 2026-03-11 A | P2.B2.SC.1220, P2.B2.SC.1280, P2.B2.SC.1260, P2.B2.SC.1120, P2.B2.SC.1160, P2.B2.SC.1190, P2.B2.SC.1200, P2.B2.SC.1210, P2.B2.SC.1250 | 100% |  |  |  |  | 40 | T | SS | P2-5 | DG | T |  |  |  |  | O |

| ID | WBS | Activity | Duration | Start | Finish | Predecessors | Complete | Planned start | Planned finish | Temp Orig Dur | Act ID Temp | Resp / SRLM | PHASE | Z.RESP | RESP / Trade | Testing Type | *NIH Resp Check* | 744 | RESP UPD | Update Status |
| --- | --- | --- | --- | --- | --- | --- | --- | --- | --- | --- | --- | --- | --- | --- | --- | --- | --- | --- | --- | --- |
|  | 6 | **West Corridor (3900, 2910, 2810, 2800)** |  | 2024-10-07 | 2026-03-11 |  |  |  |  |  |  |  |  |  |  |  |  |  |  |  |
| P2.B2.WC.1000 |  | Layout - All Trades / B2 / West Corridor | 5d | 2024-10-07 A | 2024-10-18 A | P1.1.03.620, P2.B2.SC.1000 SS | 100% | 2024-11-08 | 2024-11-14 | 40 | P2.B2.01.010 | R/I.OH | P2-5 | Harris | R/I.OH |  |  |  |  |  |
| P2.B2.WC.1020 |  | OH - Structural Supports (All Trades) / B2 / West Corridor | 5d | 2024-10-07 A | 2024-11-07 A | P2.B2.WC.1000 SS | 100% | 2024-11-15 | 2024-11-21 | 80 | P2.B2.05.45.110 | R/I.OH | P2-5 | Harris | R/I.OH |  |  |  |  |  |
| P2.B2.WC.1030 |  | OH - MEPF & Ceiling Grid - Hangers & Supports / B2 / West Corridor | 5d | 2024-10-07 A | 2024-11-07 A | P2.BIM.B2.40.140 SS, P2.B2.WC.1000 SS | 100% | 2024-12-17 | 2024-12-23 | 80 | P2.B2.20.05.410 | MEP | P2-5 | Harris | MEP-2 |  |  |  |  |  |
| P2.B2.WC.1090 |  | OH Fire Suppression Main / B2 / West Corridor | 5d | 2024-10-07 A | 2024-10-14 A | P2.B2.SC.1090 SS | 100% | 2024-12-05 | 2024-12-11 | 80 | P2.B2.20.05.410 | FP | P2-5 |  | FP-1 |  |  |  |  |  |
| P2.B2.WC.1010 |  | Framing - Top Track / B2 / West Corridor | 5d | 2024-10-14 A | 2024-10-21 A | P2.B2.WC.1000 SS, P2.B2.SC.1010 SS | 100% | 2024-11-15 | 2024-11-21 | 80 | P2.B2.09.21.110 | GYP | P2-5 |  | GYP-1 |  |  |  |  |  |
| P2.B2.WC.1140 |  | Paint OH Fire Suppression / B2 / West Corridor | 3d | 2024-10-14 A | 2024-10-24 A | P2.B2.WC.1090 SS | 100% | 2024-12-19 | 2024-12-23 | 80 | P2.B2.20.05.410 | FP | P2-5 |  | FP-1 |  |  |  |  |  |
| P2.B2.WC.1040 |  | CMU - Drill_Epoxy Masonry Dowels / B2 / West Corridor | 5d | 2024-10-16 A | 2025-02-05 A | P2.B2.SC.1040, P2.B2.WC.1000 | 100% | 2024-12-09 | 2024-12-13 | 80 | P2.B2.04.20.110 | CMU | P2-5 |  | CMU | AT4 |  |  |  |  |
| P2.B2.WC.1150 |  | OH High Plumbing Install / B2 / West Corridor | 20d | 2024-10-21 A | 2025-04-30 A | P2.B2.WC.1470 FF, P2.B2.WC.1140 SS | 100% | 2025-01-09 | 2025-02-05 | 40 |  | PLMB | P2-5 | Harris | PLMB |  | ! |  |  |  |
| P2.B2.WC.1110 |  | OH High Electrical/FA Crossings / B2 / West Corridor | 5d | 2024-11-11 A | 2025-03-06 A | P2.B2.WC.1080 FF, P2.B2.SC.1110, P2.B2.WC.1090, P2.B2.WC.1030 | 100% | 2024-12-16 | 2024-12-20 | 40 |  | ELEC | P2-5 |  | ELEC-3 |  | ! |  |  |  |
| P2.B2.WC.1170 |  | Insulate High Plumbing / B2 / West Corridor | 5d | 2024-11-11 A | 2025-04-30 A | P2.B2.WC.1730 FF, P2.B2.WC.1160 SS, P2.B2.WC.1150 FF | 100% | 2025-01-08 | 2025-01-14 | 40 |  | INSUL | P2-5 | Harris | INSUL-3 |  | ! |  |  |  |
| P2.B2.WC.1190 |  | OH High Duct Install / B2 / West Corridor | 10d | 2024-11-11 A | 2025-04-30 A | P2.B2.WC.1180 FF, P2.B2.WC.1080 FF, P2.B2.SC.1150 FF | 100% | 2025-01-22 | 2025-02-04 | 40 |  | HVAC | P2-5 | Harris | HVAC |  | ! |  |  |  |
| P2.B2.WC.1160 |  | Testing & Inspection - High Plumbing / B2 / West Corridor | 5d | 2024-11-20 A | 2025-04-30 A | P2.B2.WC.1150 SS | 100% | 2024-12-23 | 2024-12-30 | 80 |  | PLMB | P2-5 | Harris | PLMB |  | ! |  |  |  |
| P2.B2.WC.1060 |  | Frame Upper Partitions / B2 / West Corridor | 5d | 2024-11-25 A | 2024-12-13 A | P2.B2.WC.1010 | 100% | 2024-12-02 | 2024-12-06 | 40 |  | GYP | P2-5 |  | GYP-1 |  | ! |  |  |  |
| P2.B2.WC.1070 |  | CMU - Lay Block / B2 / West Corridor | 10d | 2024-12-16 A | 2025-02-11 A | P2.B2.SC.1070, P2.B2.WC.1040 SS | 100% | 2024-12-23 | 2025-01-07 | 80 | P2.B2.04.20.210 | CMU | P2-5 |  | CMU | AT3 |  |  |  |  |
| P2.B2.WC.1080 |  | Hang-Tape-Finish Upper Partitions (Tier 1) / B2 / West Corridor | 10d | 2024-12-17 A | 2024-12-26 A | P2.B2.WC.1090, P2.B2.WC.1060, P2.B2.WC.1020 | 100% | 2025-01-16 | 2025-01-29 | 80 | P2.B2.09.21.110 | GYP | P2-5 |  | GYP-1 |  |  |  |  |  |
| P2.B2.WC.1180 |  | Hang-Tape-Finish Upper Partitions (Tier 2) / B2 / West Corridor | 5d | 2024-12-17 A | 2024-12-31 A | P2.B2.WC.1110 SS, P2.B2.WC.1170 SS | 100% | 2025-02-05 | 2025-02-11 | 80 | P2.B2.09.21.110 | GYP | P2-5 |  | GYP-1 |  |  |  |  |  |
| P2.B2.WC.1050 |  | Install Doors Frames / B2 / West Corridor | 5d | 2025-01-20 A | 2025-04-01 A | P2.B2.WC.1000 | 100% | 2025-02-03 | 2025-02-07 | 40 |  | DFH | P2-5 |  | DFH | AT29 | ! |  |  |  |
| P2.B2.WC.1100 |  | In Wall MEPF Rough In / B2 / West Corridor | 5d | 2025-02-05 A | 2025-04-01 A | P2.B2.WC.1070 FF, P2.B2.WC.1030 | 100% | 2025-03-05 | 2025-03-11 | 40 |  | R/I.IW | P2-5 |  | R/I.IW |  | ! |  |  |  |
| P2.B2.WC.1130 |  | In Wall Inspection / B2 / West Corridor | 5d | 2025-02-12 A | 2025-04-10 A | P2.B2.WC.1100 FF+4d | 100% | 2025-03-12 | 2025-03-18 | 40 |  | AHJ | P2-5 |  | AHJ |  | ! |  |  |  |
| P2.B2.WC.1200 |  | Testing & Inspection - Mechanical / B2 / West Corridor | 5d | 2025-02-17 A | 2025-06-27 A | P2.B2.WC.1190 FF+4d | 100% | 2025-03-17 | 2025-03-21 | 80 |  | PLMB | P2-5 | Harris | PLMB |  | ! | SS | SS |  |
| P2.B2.WC.1210 |  | Insulate Mechanical / B2 / West Corridor | 5d | 2025-02-24 A | 2025-06-11 A | P2.B2.WC.1200 FF+4d | 100% | 2025-03-24 | 2025-03-28 | 40 |  | INSUL | P2-5 | Harris | INSUL-3 |  | ! | SS | SS |  |
| P2.B2.WC.1220 |  | Hang-Tape-Finish Upper Partitions (Tier 3) / B2 / West Corridor | 5d | 2025-03-19 A | 2025-03-25 A | P2.B2.WC.1180 | 100% |  |  | 80 | P2.B2.09.21.110 | GYP | P2-5 |  | GYP-1 |  |  |  |  |  |
| P2.B2.WC.1240 |  | OH Low Piping Install / B2 / West Corridor | 20d | 2025-04-01 A | 2025-04-22 A | P2.B2.WC.1220 | 100% | 2025-05-22 | 2025-06-19 | 40 |  | MECH | P2-5 | Harris | MECH-2 |  | ! |  |  |  |
| P2.B2.WC.1270 |  | Fire Caulk MEPF Penetrations / B2 / West Corridor | 5d | 2025-05-05 A | 2025-05-12 A | P2.B2.WC.1260 | 100% | 2025-07-21 | 2025-07-25 | 40 |  | FIRESTO | P2-5 |  | FIRESTO | AT48 | ! |  |  |  |
| P2.B2.WC.1230 |  | OH Electrical (Branch) / B2 / West Corridor | 5d | 2025-05-08 A | 2025-07-07 A | P2.B2.WC.1220, P2.B2.WC.1210 | 100% | 2025-06-12 | 2025-06-18 | 40 |  | ELEC | P2-5 |  | ELEC-3 |  | ! | SS | SS |  |
| P2.B2.WC.1260 |  | Hang-Tape-Finish / B2 / West Corridor | 5d | 2025-05-20 A | 2025-07-28 A | P2.B2.WC.1130, P2.B2.WC.1250, P2.B2.WC.1050, P2.B2.WC.1210 | 100% | 2025-07-14 | 2025-07-18 | 80 | P2.B2.09.21.110 | GYP | P2-5 |  | GYP-1 |  |  | SS | SS |  |
| P2.B2.WC.1120 |  | Testing & Inspection - Fire Suppression / B2 / West Corridor | 4d | 2025-07-18 A | 2025-10-24 A | P2C.NIH.110, P2.B2.WC.1090, P2.B2.WC.1140 | 100% | 2025-08-04 | 2025-08-07 | 80 |  | FP | P2-5 |  | FP-1 |  | ! | SS | SS |  |
| P2.B2.WC.1250 |  | OH Low Electrical (Bus/Tray) / B2 / West Corridor | 5d | 2025-08-14 A | 2026-01-15 A | P2.B2.WC.1240, P2.LR.L2.180 | 100% | 2025-08-14 | 2025-08-20 | 40 |  | ELEC | P2-5 |  | ELEC-3 |  | ! | SS | SS | O |
| P2.B2.WC.1280 |  | Trades Inspect & Verify R/I Work Completed to Specs / B2 / West Corridor | 5d | 2026-03-05 A | 2026-03-11 A | P2.B2.WC.1090, P2.B2.WC.1190, P2.B2.WC.1110, P2.B2.WC.1150, P2.B2.WC.1020, P2.B2.WC.1030, P2.B2.WC.1250, P2.B2.WC.1200, P2.B2.WC.1270, P2.B2.WC.1230, P2.B2.WC.1240, P2.B2.WC.1120, P2.B2.WC.1160, P2.B2.WC.1140 | 100% |  |  | 40 |  | T | P2-5 |  | T |  |  | SS | DG | O |

| ID | WBS | Activity | Duration | Start | Finish | Predecessors | Complete | Planned start | Planned finish | Total float | Free float | Temp Orig Dur | Act ID Temp | Resp / SRLM | PHASE | Z.RESP | RESP / Trade | *NIH Resp Check* | Testing Type | 744 | RESP UPD | Update Status |
| --- | --- | --- | --- | --- | --- | --- | --- | --- | --- | --- | --- | --- | --- | --- | --- | --- | --- | --- | --- | --- | --- | --- |
|  | 7 | **East Corridor (3910, 2900, 2810, 2830)** |  | 2024-10-14 | 2026-06-08 |  |  |  |  |  |  |  |  |  |  |  |  |  |  |  |  |  |
| P2.B2.WC.1360 |  | Layout - All Trades / B2 / East Corridor | 5d | 2024-10-14 A | 2024-10-18 A | P1.1.03.630, P2.B2.WC.1000 SS | 100% | 2024-11-15 | 2024-11-21 |  |  | 40 | P2.B2.01.010 | R/I.OH | P2-5 | Harris | R/I.OH |  |  |  |  |  |
| P2.B2.WC.1370 |  | Framing - Top Track / B2 / East Corridor | 5d | 2024-10-21 A | 2024-10-31 A | P2.B2.WC.1010, BP5.054.3.100, P2.B2.WC.1360 SS | 100% | 2024-11-22 | 2024-12-02 |  |  | 80 | P2.B2.09.21.110 | GYP | P2-5 |  | GYP-1 |  |  |  |  |  |
| P2.B2.WC.1450 |  | OH Fire Suppression Main / B2 / East Corridor | 5d | 2024-10-28 A | 2024-11-01 A | P2.B2.WC.1090, P2.B2.WC.1440 SS | 100% | 2024-11-19 | 2024-11-25 |  |  | 80 | P2.B2.20.05.410 | FP | P2-5 |  | FP-1 |  |  |  |  |  |
| P2.B2.WC.1440 |  | Hang-Tape-Finish Upper Partitions (Tier 1) / B2 / East Corridor | 5d | 2024-10-29 A | 2024-11-14 A | P2.B2.WC.1420 FF, P2.B2.WC.1380 SS | 100% | 2024-12-10 | 2024-12-16 |  |  | 80 | P2.B2.09.21.110 | GYP | P2-5 |  | GYP-1 |  |  |  |  |  |
| P2.B2.WC.1380 |  | OH - Structural Supports (All Trades) / B2 / East Corridor | 5d | 2024-10-30 A | 2025-02-06 A | P2.B2.WC.1360, BP1.149.3.110 SS | 100% | 2024-11-12 | 2024-11-18 |  |  | 80 | P2.B2.05.45.110 | R/I.OH | P2-5 | Harris | R/I.OH |  |  |  |  |  |
| P2.B2.WC.1390 |  | OH - MEPF & Ceiling Grid - Hangers & Supports / B2 / East Corridor | 5d | 2024-10-30 A | 2025-01-15 A | P2.B2.WC.1360, P2.BIM.B2.40.140, BP1.149.3.110 SS | 100% | 2024-11-12 | 2024-11-18 |  |  | 80 | P2.B2.20.05.410 | MEP | P2-5 | Harris | MEP-2 |  |  |  |  |  |
| P2.B2.WC.1420 |  | Frame Upper Partitions / B2 / East Corridor | 5d | 2024-11-01 A | 2024-11-11 A | P2.B2.WC.1370 | 100% | 2024-12-02 | 2024-12-06 |  |  | 40 |  | GYP | P2-5 |  | GYP-1 | ! |  |  |  |  |
| P2.B2.WC.1500 |  | Paint OH Fire Suppression / B2 / East Corridor | 2d | 2024-11-11 A | 2024-11-20 A | P2.B2.WC.1450 | 100% | 2024-12-16 | 2024-12-17 |  |  | 80 | P2.B2.20.05.410 | FP | P2-5 |  | FP-1 |  |  |  |  |  |
| P2.B2.WC.1540 |  | Hang-Tape-Finish Upper Partitions (Tier 2) / B2 / East Corridor | 5d | 2024-11-25 A | 2024-12-05 A | P2.B2.WC.1440 | 100% | 2025-01-08 | 2025-01-14 |  |  | 80 | P2.B2.09.21.110 | GYP | P2-5 |  | GYP-1 |  |  |  |  |  |
| P2.B2.WC.1470 |  | OH High Plumbing Install / B2 / East Corridor | 10d | 2025-01-23 A | 2025-02-07 A | P2.B2.WC.1450, P2.B2.WC.1390 | 100% | 2025-02-07 | 2025-02-20 |  |  | 40 |  | PLMB | P2-5 | Harris | PLMB | ! |  |  |  |  |
| P2.B2.WC.1510 |  | OH Chilled Water and Steam Install / B2 / East Corridor | 15d | 2025-01-23 A | 2025-03-21 A | P2.B2.WC.1540 | 100% | 2025-02-03 | 2025-02-21 |  |  | 40 |  | MECH | P2-5 | Harris | MECH-2 | ! |  |  |  |  |
| P2.B2.WC.1720 |  | Testing & Inspection - High Plumbing / B2 / East Corridor | 5d | 2025-02-10 A | 2025-02-17 A | P2.B2.WC.1500, P2.B2.WC.1470 | 100% | 2025-03-10 | 2025-03-14 |  |  | 80 |  | PLMB | P2-5 | Harris | PLMB | ! |  |  |  |  |
| P2.B2.WC.1400 |  | CMU - Drill_Epoxy Masonry Dowels / B2 / East Corridor | 5d | 2025-03-03 A | 2025-03-07 A | P2.B2.WC.1040 FF, P2.B2.WC.1360 | 100% |  |  |  |  | 80 | P2.B2.04.20.110 | CMU | P2-5 |  | CMU |  | AT4 |  |  |  |
| P2.B2.WC.1730 |  | Insulate High Plumbing / B2 / East Corridor | 5d | 2025-03-03 A | 2025-03-07 A | P2.B2.WC.1720 | 100% |  |  |  |  | 40 |  | INSUL | P2-5 | Harris | INSUL-3 | ! |  |  |  |  |
| P2.B2.WC.1430 |  | CMU - Lay Block / B2 / East Corridor | 10d | 2025-03-10 A | 2025-03-21 A | P2.B2.WC.1070, P2.B2.WC.1400 | 100% |  |  |  |  | 80 | P2.B2.04.20.210 | CMU | P2-5 |  | CMU |  | AT3 |  |  |  |
| P2.B2.WC.1530 |  | Insulate Chilled Water & Steam / B2 / East Corridor | 5d | 2025-03-12 A | 2025-04-30 A | P2.L2.INT.S.1140 SS | 100% | 2025-03-31 | 2025-04-04 |  |  | 40 |  | INSUL | P2-5 | Harris | INSUL-3 | ! |  |  |  |  |
| P2.B2.WC.1550 |  | OH Condensate, Steam, & HW Install / B2 / East Corridor | 15d | 2025-04-09 A | 2025-08-29 A | P2.B2.WC.1530 | 100% | 2025-06-02 | 2025-06-20 |  |  | 40 |  | MECH | P2-5 | Harris | MECH-2 | ! |  | SS | SS |  |
| P2.B2.WC.1520 |  | Testing & Inspection - OH Chilled Water and Steam / B2 / East Corridor | 5d | 2025-04-10 A | 2025-04-11 A | P2.B2.WC.1510, P2.B2.WC.1530 FF | 100% | 2025-05-22 | 2025-05-29 |  |  | 80 |  | MECH | P2-5 | Harris | MECH-2 | ! |  |  |  |  |
| P2.B2.WC.1460 |  | In Wall MEPF Rough In / B2 / East Corridor | 10d | 2025-05-01 A | 2025-05-14 A | P2.B2.WC.1430 FF, P2.B2.WC.1390, P2.B2.IT.2806.100 SS | 100% | 2025-06-02 | 2025-06-13 |  |  | 40 |  | R/I.IW | P2-5 |  | R/I.IW | ! |  |  |  |  |
| P2.B2.WC.1490 |  | In Wall Inspection / B2 / East Corridor | 5d | 2025-05-15 A | 2025-05-21 A | P2.B2.WC.1460, P2.B2.WC.1410 | 100% | 2025-06-16 | 2025-06-20 |  |  | 40 |  | AHJ | P2-5 |  | AHJ | ! |  |  |  |  |
| P2.B2.WC.1560 |  | Testing & Inspection - OH Condensate, Steam, & HW / B2 / East Corridor | 5d | 2025-06-17 A | 2025-06-30 A | P2.B2.WC.1550 | 100% | 2025-07-17 | 2025-07-23 |  |  | 80 |  | PLMB | P2-5 | Harris | PLMB | ! |  | SS | SS |  |
| P2.B2.WC.1410 |  | Install Doors Frames / B2 / East Corridor | 5d | 2025-06-23 A | 2025-09-05 A | P2.B2.WC.1360 | 100% | 2025-07-01 | 2025-07-08 |  |  | 40 |  | DFH | P2-5 |  | DFH | ! | AT29 | SS | SS | O |
| P2.B2.WC.1480 |  | Testing & Inspection - Fire Suppression / B2 / East Corridor | 5d | 2025-07-18 A | 2025-09-30 A | P2C.NIH.110, P2.B2.WC.1500, P2.B2.WC.1450 | 100% | 2025-08-04 | 2025-08-08 |  |  | 80 |  | FP | P2-5 |  | FP-1 | ! |  | SS | SS | O |
| P2.B2.WC.1740 |  | OH Med-Gas & Domestic Piping Install / B2 / East Corridor | 20d | 2025-07-24 A | 2025-09-29 A | P2.B2.WC.1570 | 100% | 2025-08-25 | 2025-09-22 |  |  | 40 |  | PLMB | P2-5 | Harris | PLMB | ! |  | SS | SS | O |
| P2.B2.WC.1750 |  | Testing & Inspection - Med-Gas & Domestic Piping / B2 / East Corridor | 5d | 2025-08-21 A | 2025-09-30 A | P2.B2.WC.1740 | 100% | 2025-08-29 | 2025-09-05 |  |  | 80 |  | PLMB | P2-5 | Harris | PLMB | ! |  | SS | SS | O |
| P2.B2.WC.1570 |  | Insulate OH Condensate, Steam, & HW / B2 / East Corridor | 5d | 2025-09-03 A | 2025-09-10 A | P2.B2.WC.1560 | 100% | 2025-10-01 | 2025-10-07 |  |  | 40 |  | INSUL | P2-5 | Harris | INSUL-3 | ! |  | SS | SS | O |
| P2.B2.WC.1760 |  | Insulate Med-Gas & Domestic Piping / B2 / East Corridor | 5d | 2025-09-03 A | 2025-09-10 A | P2.B2.WC.1750 | 100% | 2025-10-13 | 2025-10-17 |  |  | 40 |  | INSUL | P2-5 | Harris | INSUL-3 | ! |  | SS | SS | O |
| P2.B2.WC.1580 |  | Hang-Tape-Finish Upper Partitions (Tier 3) / B2 / East Corridor | 5d | 2025-10-01 A | 2025-10-07 A | P2.B2.WC.1760 | 100% |  |  |  |  | 80 | P2.B2.09.21.110 | GYP | P2-5 |  | GYP-1 |  |  | SS | SS |  |
| P2.B2.WC.1590 |  | OH Electrical (Bus/Tray/Branch) / B2 / East Corridor | 5d | 2025-10-13 A | 2026-01-22 A | P2.B2.WC.1580, P2.B2.WC.1250 | 100% | 2025-10-10 | 2025-10-16 |  |  | 40 |  | ELEC | P2-5 |  | ELEC-3 | ! |  | SS | SS | O |
| P2.B2.WC.1620 |  | Hang-Tape-Finish / B2 / East Corridor | 15d | 2026-05-04 | 2026-05-22 | P2.B2.WC.1590, P2.B2.WC.1490, P2.B2.S.1470 SS, P2.B2.N.1470 SS, P2.B2.N.1470 FF, P2.B2.S.1470 FF |  |  |  | -8d | 0d | 80 | P2.B2.09.21.110 | GYP | P2-5 |  | GYP-1 |  |  | SS | DG |  |
| P2.B2.WC.1630 |  | Fire Caulk MEPF Penetrations / B2 / East Corridor | 5d | 2026-05-26 | 2026-06-01 | P2.B2.WC.1620 |  |  |  | 15d | 0d | 40 |  | FIRESTO | P2-5 |  | FIRESTO | ! | AT48 | SS | DG |  |
| P2.B2.WC.1640 |  | Trades Inspect & Verify R/I Work Completed to Specs / B2 / East Corridor | 5d | 2026-06-02 | 2026-06-08 | P2.B2.WC.1550, P2.B2.WC.1590, P2.B2.WC.1480, P2.B2.WC.1520, P2.B2.WC.1450, P2.B2.WC.1470, P2.B2.WC.1510, P2.B2.WC.1380, P2.B2.WC.1390, P2.B2.WC.1750, P2.B2.WC.1720, P2.B2.WC.1740, P2.B2.WC.1500, P2.B2.WC.1560, P2.B2.WC.1630 |  |  |  | 15d | 0d | 40 |  | T | P2-5 |  | T |  |  | SS | DG |  |

| ID | WBS | Activity | Duration | Start | Finish | Predecessors | Complete | Remaining | Planned start | Planned finish | Total float | Free float | Temp Orig Dur | Act ID Temp | Resp / SRLM | PHASE | Z.RESP | RESP / Trade | Pick | Pick #1 | Testing Type | 744 | RESP UPD | Update Status | **NEAR CRITICAL** |
| --- | --- | --- | --- | --- | --- | --- | --- | --- | --- | --- | --- | --- | --- | --- | --- | --- | --- | --- | --- | --- | --- | --- | --- | --- | --- |
|  | Z1 | **South (20K SF) / Level B2/B1** |  | 2024-09-25 | 2026-05-22 |  |  |  |  |  |  |  |  |  |  |  |  |  |  |  |  |  |  |  |  |
| P2.B2.S.1000 |  | Layout - All Trades / B2 / South | 4d | 2024-09-25 A | 2024-10-10 A | P1.1.03.610 SS | 100% |  | 2024-10-04 | 2024-10-09 |  |  | 40 | P2.B2.01.010 | R/I.OH | P2-5 | Harris | R/I.OH |  |  |  |  |  |  |  |
| P2.B2.S.1010 |  | Framing - Top Track / B2 / South | 10d | 2024-10-14 A | 2024-10-31 A | P2.B2.WC.1370 | 100% |  | 2024-11-22 | 2024-12-09 |  |  | 80 | P2.B2.09.21.110 | GYP | P2-5 |  | GYP-1 |  |  |  |  |  |  |  |
| P2.B2.S.1030 |  | OH - MEPF - Hangers & Supports / B2 / South | 5d | 2024-10-15 A | 2025-01-10 A | BP1.233.3.100, P2.BIM.B2.40.140 SS, P2.B2.S.1000 SS | 100% |  | 2024-12-17 | 2024-12-23 |  |  | 80 | P2.B2.20.05.410 | MEP | P2-5 | Harris | MEP-2 |  |  |  |  |  |  |  |
| P2.B2.S.1180 |  | OH - Plumbing Piping / B2 / South | 20d | 2024-10-15 A | 2025-02-07 A | P2.B2.S.1030 SS, P1.B1.05.110 SS | 100% |  | 2024-12-24 | 2025-01-22 |  |  | 80 | P2.B2.22.14.210 | PLMB | P2-5 | Harris | PLMB | 1 |  |  |  |  |  |  |
| P2.B2.S.1020 |  | OH - Structural Supports (All Trades) / B2 / South | 5d | 2024-10-17 A | 2025-01-23 A | P2.B2.S.1000 SS | 100% |  | 2024-11-07 | 2024-11-13 |  |  | 80 | P2.B2.05.45.110 | R/I.OH | P2-5 | Harris | R/I.OH |  |  |  |  |  |  |  |
| P2.B2.S.1170 |  | OH - Fire Suppression / B2 / South | 5d | 2024-10-21 A | 2024-10-21 A | P2.B2.S.1030 SS, P2.B2.WC.1450 SS | 100% |  | 2024-12-24 | 2024-12-31 |  |  | 80 | P2.B2.21.13.210 | FP | P2-5 |  | FP-1 | 1 |  |  |  |  |  |  |
| P2.B2.S.1570 |  | Paint - OH Fire Suppression / B2 / South | 5d | 2024-10-21 A | 2024-10-28 A | P2.B2.S.1170 SS | 100% |  | 2025-01-09 | 2025-01-15 |  |  | 80 | P2.B2.21.13.210 | FP | P2-5 |  | FP-1 | 1 |  |  |  |  |  |  |
| P2.B2.S.1210 |  | OH - Hang Duct - HP Mains / B2 / South | 20d | 2024-10-24 A | 2025-04-16 A | P2.B2.S.1030 | 100% |  | 2025-05-15 | 2025-06-12 |  |  | 80 | P2.B2.23.30.210 | HVAC | P2-5 | Harris | HVAC | 1 |  |  |  |  |  |  |
| P1.B1.05.110 |  | Erect - Catwalk - Hangers | 5d | 2024-10-30 A | 2024-11-07 A | P2.B2.S.1000 SS, P2.B2.S.1020 SS, BP4.055.3.200 | 100% |  | 2024-11-14 | 2024-11-20 |  |  | 80 |  | STEEL | P2-5 |  | STEEL |  | S | AT20 |  |  |  |  |
| P1.B1.05.210 |  | Erect - Catwalk - Stringers / Bracing / Grating | 10d | 2024-10-30 A | 2025-04-07 A | BP4.055.3.300 FF, P1.B1.05.110 FF+1d | 100% |  | 2024-11-08 | 2024-11-21 |  |  | 80 |  | STEEL | P2-5 |  | STEEL |  | S | AT21 |  |  |  |  |
| P2.B2.S.1090 |  | Framing - Priority Walls & Door Frames / B2 / South | 10d | 2024-11-05 A | 2024-11-22 A | BP5.081.3.400, P2.B2.S.1010 | 100% |  | 2024-12-03 | 2024-12-16 |  |  | 80 | P2.B2.09.21.310 | GYP | P2-5 |  | GYP-1 |  |  |  |  |  |  |  |
| P2.B2.S.1130 |  | Framing - Priority Walls - AHJ Inspections / B2 / South | 5d | 2024-11-24 A | 2024-11-26 A | P2.B2.S.1090 | 100% |  | 2024-12-24 | 2024-12-31 |  |  | 80 | P2.B2.01.43.010 | FM | P2-5 |  | FM |  |  |  |  |  |  |  |
| P2.B2.S.1040 |  | CMU - Drill_Epoxy Masonry Dowels / B2 / South | 5d | 2024-12-02 A | 2024-12-02 A | BP4.040.3.100 FF | 100% |  | 2025-01-16 | 2025-01-22 |  |  | 80 | P2.B2.04.20.110 | CMU | P2-5 |  | CMU |  |  | AT4 |  |  |  |  |
| P2.B2.S.1050 |  | CMU - Lay Block / B2 / South | 5d | 2024-12-02 A | 2024-12-13 A | BP4.040.3.100 FF, P2.B2.S.1130, P2.B2.S.1040 | 100% |  | 2025-01-23 | 2025-01-29 |  |  | 80 | P2.B2.04.20.210 | CMU | P2-5 |  | CMU |  |  | AT3 |  |  |  |  |
| P2.B2.S.1580 |  | In Wall - Priority Walls - Backing/Blocking/Supports / B2 / South | 5d | 2024-12-02 A | 2024-12-04 A | P2.B2.S.1090 | 100% |  | 2025-01-02 | 2025-01-08 |  |  | 80 | P2.B2.09.21.510 | R/I.IW | P2-5 |  | R/I.IW |  |  |  |  |  |  |  |
| P2.B2.S.1140 |  | Hang/Tape/Finish - Priority Walls / B2 / South | 5d | 2025-01-06 A | 2025-02-28 A | BP5.134.3.200, P2.B2.S.1020, P2.B2.S.1070 | 100% |  | 2025-04-28 | 2025-05-02 |  |  | 80 | P2.B2.09.21.210 | GYP | P2-5 |  | GYP-1 |  |  |  |  |  |  |  |
| P2.B2.S.1220 |  | OH - HVAC Piping / B2 / South | 20d | 2025-01-23 A | 2025-04-21 A | P2.B2.S.1030 | 100% |  | 2025-02-04 | 2025-03-03 |  |  | 80 | P2.B2.23.20.410 | FIT | P2-5 | Harris | FIT-2 | 2 |  |  |  |  |  |  |
| P2.B2.S.1060 |  | In Wall - Electrical - CMU / B2 / South | 20d | 2025-02-03 A | 2025-02-28 A | P2.B2.S.1050 SS | 100% |  | 2025-03-03 | 2025-03-28 |  |  | 80 | P2.B2.26.05.510 | ELEC | P2-5 |  | ELEC-2 |  |  |  |  |  |  |  |
| P2.B2.S.1240 |  | OH - Plumbing - Test / B2 / South | 5d | 2025-02-10 A | 2025-02-14 A | P2.B2.S.1180 | 100% |  | 2025-03-10 | 2025-03-14 |  |  | 80 | P2.B2.22.14.310 | PLMB | P2-5 | Harris | PLMB | 2 |  |  |  |  |  |  |
| P2.B2.S.1160 |  | Spray/Seal/Firestop - Head of Wall - Priority Walls / B2 / South | 5d | 2025-02-28 A | 2025-03-03 A | P2.B2.S.1140 | 100% |  | 2025-03-31 | 2025-04-04 |  |  | 80 | P2.B2.07.84.410 | FIRESTO | P2-5 |  | FIRESTO |  |  | AT47 |  |  |  |  |
| P2.B2.S.1070 |  | In Wall - Plumbing - CMU / B2 / South | 20d | 2025-03-03 A | 2025-03-28 A | P2.B2.S.1060 | 100% |  |  |  |  |  | 80 | P2.B2.22.05.310 | PLMB | P2-5 | Harris | PLMB |  |  |  |  |  |  |  |
| P2.B2.S.1270 |  | OH - HVAC Piping - Test / B2 / South | 5d | 2025-03-10 A | 2025-06-27 A | P2.B2.S.1220 FF+3d | 100% |  | 2025-03-10 | 2025-03-14 |  |  | 80 | P2.B2.23.20.510 | FIT | P2-5 | Harris | FIT-2 | 3 |  |  | SS | SS |  |  |
| P2.B2.S.1280 |  | OH - Insulate Plumbing / B2 / South | 5d | 2025-03-10 A | 2025-04-21 A | P2.B2.S.1240 | 100% |  | 2025-03-10 | 2025-03-14 |  |  | 80 | P2.B2.22.07.510 | INSUL | P2-5 | Harris | INSUL-3 | 3 |  |  |  |  |  |  |
| P2.B2.S.1100 |  | Paint - CMU Block Fill / B2 / South | 5d | 2025-04-01 A | 2025-04-25 A | P2.B2.S.1140 | 100% |  | 2025-05-01 | 2025-05-07 |  |  | 80 | P2.B2.09.97.110 | PAINT | P2-5 |  | PAINT-1 |  |  |  |  |  |  |  |
| P2.B2.S.1110 |  | CMU - Point & Patch / B2 / South | 5d | 2025-04-01 A | 2025-04-25 A | P2.B2.S.1160, P2.B2.S.1100 | 100% |  | 2025-05-08 | 2025-05-14 |  |  | 80 | P2.B2.04.20.310 | CMU | P2-5 |  | CMU |  |  |  |  |  |  |  |
| P2.B2.S.1120 |  | Paint Prime & 1st Coat - CMU / B2 / South | 5d | 2025-04-01 A | 2025-04-07 A | P2.B2.S.1110 SS | 100% |  | 2025-05-08 | 2025-05-14 |  |  | 80 | P2.B2.09.97.210 | PAINT | P2-5 |  | PAINT-1 |  |  |  |  |  |  |  |
| P2.B2.S.1150 |  | Paint Prime & 1st Coat - Priority Walls / B2 / South | 5d | 2025-04-01 A | 2025-04-07 A | P2.B2.S.1160 SS | 100% |  | 2025-05-01 | 2025-05-07 |  |  | 80 | P2.B2.09.91.110 | PAINT | P2-5 |  | PAINT-1 |  |  |  |  |  |  |  |
| P2.B2.S.1200 |  | Firestop - Thru Wall - Priority Walls / B2 / South | 5d | 2025-04-16 A | 2025-05-02 A | P2.B2.S.1180, P2.B2.S.1150, P1.B1.05.210, P2.B2.S.1210 | 100% |  | 2025-05-08 | 2025-05-14 |  |  | 80 | P2.B2.07.84.110 | FIRESTO | P2-5 |  | FIRESTO |  |  | AT48 |  |  |  |  |
| P2.B2.S.1190 |  | OH - Electrical - 480/277v Distribution / B2 / South | 5d | 2025-05-01 A | 2025-05-07 A | BP1.260.3.200, P2.B2.WC.1110, P2.B3.1110, P2.B2.S.1210, P2.B2.S.1030 | 100% |  | 2025-06-02 | 2025-06-06 |  |  | 80 | P2.B2.26.05.210 | ELEC | P2-5 |  | ELEC-2 | 1 |  |  |  |  |  |  |
| P2.B2.S.1260 |  | OH - DALT - HP Mains / B2 / South | 5d | 2025-05-01 A | 2025-05-07 A | P2.B2.S.1210 | 100% |  | 2025-06-02 | 2025-06-06 |  |  | 80 | P2.B2.23.30.310 | TAB | P2-5 | Harris | TAB-1 | 2 |  |  |  |  |  |  |
| P2.B2.S.1230 |  | OH - Electrical - 208/120v Branch / B2 / South | 5d | 2025-05-08 A | 2025-07-03 A | P2.B2.S.1190 | 100% |  | 2025-06-09 | 2025-06-13 |  |  | 80 | P2.B2.26.05.310 | ELEC | P2-5 |  | ELEC-2 | 2 |  |  | SS | SS |  |  |
| P2.B2.S.1290 |  | OH - Insulate HP Duct / B2 / South | 5d | 2025-05-08 A | 2025-06-06 A | P2.B2.S.1260 | 100% |  | 2025-06-09 | 2025-06-13 |  |  | 80 | P2.B2.23.07.310 | INSUL | P2-5 | Harris | INSUL-3 | 3 |  |  | SS | SS |  |  |
| P2.B2.S.1300 |  | OH - Hang Duct - LP Branch / B2 / South | 20d | 2025-06-02 A | 2025-06-27 A | P2.B2.S.1260 | 100% |  | 2025-07-01 | 2025-07-29 |  |  | 80 | P2.B2.23.30.410 | HVAC | P2-5 | Harris | HVAC | 3 |  |  | SS | SS |  |  |
| P2.B2.S.1250 |  | Pull Wire - Electrical - 480/277v Distribution / B2 / South | 10d | 2025-06-09 A | 2025-06-20 A | P2.B2.S.1190, P2.B2.HE.5995.1010, P2.B2.HE.5920.1010 | 100% |  | 2025-07-09 | 2025-07-22 |  |  | 80 |  | ELEC | P2-5 |  | ELEC-2 | To Trim Devices & Term Panel |  |  | SS | SS |  |  |
| P2.B2.S.1310 |  | OH - Set & Connect Mech Equipment / B2 / South | 10d | 2025-06-17 A | 2025-06-30 A | BP1.238.3.100, BP1.233.3.300, P2.B2.S.1260 | 100% |  | 2025-07-17 | 2025-07-30 |  |  | 80 | P2.B2.23.82.110 | HVAC | P2-5 | Harris | HVAC | 3 |  |  | SS | SS |  |  |
| P2.B2.S.1400 |  | OH - Conduit - Low Volt - Security / B2 / South | 10d | 2025-06-23 A | 2025-07-22 A | P2.B2.S.1340 | 100% |  | 2025-07-23 | 2025-08-05 |  |  | 80 |  | ELEC | P2-5 |  | ELEC-2 | 5 |  |  | SS | SS |  |  |
| P2.B2.S.1350 |  | OH - Insulate LP Duct / B2 / South | 10d | 2025-06-30 A | 2025-07-14 A | P2.B2.S.1300 | 100% |  | 2025-07-30 | 2025-08-12 |  |  | 80 | P2.B2.23.07.410 | INSUL | P2-5 | Harris | INSUL-3 | 4 |  |  | SS | SS |  |  |
| P2.B2.S.1340 |  | OH - Insulate HVAC Pipe / B2 / South | 10d | 2025-07-01 A | 2025-07-15 A | P2.B2.S.1270, P2.B2.S.1290 | 100% |  | 2025-08-01 | 2025-08-14 |  |  | 80 | P2.B2.22.07.610 | INSUL | P2-5 | Harris | INSUL-3 | 4 |  |  | SS | SS |  |  |
| P2.B2.S.1380 |  | OH - Conduit - Low Volt - Fire Alarm / B2 / South | 10d | 2025-07-15 A | 2025-07-28 A | P2.B2.S.1350, P2.B2.S.1310 | 100% |  | 2025-08-01 | 2025-08-14 |  |  | 80 |  | FA | P2-5 |  | FA-1 | 5 |  |  | SS | SS |  |  |
| P2.B2.S.1420 |  | Framing - Balance of Framing & Door Frames / B2 / South | 10d | 2025-07-30 A | 2025-08-22 A | P2.B2.S.1280, P2.B2.S.1380, P2.B2.S.1390, P2.B2.S.1400, P2.B2.S.1410, P2.B2.S.1370 | 100% |  | 2025-08-15 | 2025-08-28 |  |  | 80 | A1310 | GYP | P2-5 |  | GYP-1 |  |  |  | SS | SS |  |  |
| P2.B2.S.1390 |  | OH - Conduit - Low Volt - Telecom / B2 / South | 10d | 2025-08-01 A | 2025-09-08 A | P2.B2.S.1350 | 100% |  | 2025-08-01 | 2025-08-14 |  |  | 80 |  | ELEC | P2-5 |  | ELEC-2 | 5 |  |  | SS | SS | O |  |
| P2.B2.S.1430 |  | In Wall - Plumbing - Framing / B2 / South | 20d | 2025-08-01 A | 2025-08-29 A | P2.B2.S.1420 | 100% |  | 2025-08-22 | 2025-09-19 |  |  | 80 | P2.B2.22.05.410 | PLMB | P2-5 | Harris | PLMB |  |  |  | SS | SS |  |  |
| P2.B2.S.1440 |  | In Wall - Electrical - Framing / B2 / South | 20d | 2025-08-01 A | 2025-08-29 A | P2.B2.S.1230, P2.B2.S.1420 | 100% |  | 2025-08-22 | 2025-09-19 |  |  | 80 | P2.B2.26.05.610 | ELEC | P2-5 |  | ELEC-2 |  |  |  | SS | SS |  |  |
| P2.B2.S.1450 |  | In Wall - Backing/Blocking/Supports / B2 / South | 5d | 2025-08-01 A | 2025-08-29 A | P2.B2.S.1420 | 100% |  | 2025-08-22 | 2025-08-28 |  |  | 80 | P2.B2.09.21.510 | R/I.IW | P2-5 |  | R/I.IW |  |  |  | SS | SS |  |  |
| P2.B2.S.1320 |  | OH - Electrical - Equip Tie In / B2 / South | 5d | 2025-08-08 A | 2025-09-30 A | P2.B2.S.1250, P2.B2.S.1310 | 100% |  | 2025-07-09 | 2025-07-15 |  |  | 80 | P2.B2.26.05.410 | ELEC | P2-5 |  | ELEC-2 | 4 |  |  | SS | SS | O |  |
| P2.B2.S.1560 |  | Test - OH Fire Suppression / B2 / South | 5d | 2025-08-27 A | 2025-09-19 A | P2.B2.S.1170, P2.B2.S.1570, P2C.NIH.110 SS | 100% |  | 2025-10-01 | 2025-10-07 |  |  | 80 | P2.B2.21.13.210 | FP | P2-5 |  | FP-1 | 1 |  |  | SS | SS | O |  |
| P2.B2.S.1460 |  | AHJ Inspections - Wall Close In / B2 / South | 5d | 2025-09-17 A | 2025-12-12 A | P2.B2.S.1440, P2.B2.S.1450, P2.B2.S.1430, P2.B2.S.1580, P2.B2.S.1200 | 100% |  | 2025-10-15 | 2025-10-21 |  |  | 40 | P2.B2.01.43.110 | FM | P2-5 |  | FM |  |  |  | SS | SS | O |  |
| P2.B2.S.1370 |  | OH - Conduit - Low Volt - BAS/Controls / B2 / South | 10d | 2025-10-01 A | 2026-01-30 A | P2.B2.S.1340, P2.B2.S.1310 | 100% |  | 2025-10-01 | 2025-10-14 |  |  | 80 |  | BAS | P2-5 | Harris | BAS-1 | 5 |  |  | SS | SS | O |  |
| P2.B2.S.1410 |  | OH - Conduit - Low Volt - Medical Services/Nurse Call (?) / B2 / South | 10d | 2025-10-01 A | 2025-10-14 A | P2.B2.S.1350 | 100% |  |  |  |  |  | 80 |  | ELEC | P2-5 |  | ELEC-2 | 5 |  |  | SS | SS |  |  |
| P2.B2.S.1360 |  | Pull Wire - Electrical - 208/120v Branch & Equip / B2 / South | 10d | 2025-11-17 A | 2026-01-30 A | P2.B2.S.1320, P2.B2.S.1230, P2.B2.S.1440 | 100% |  | 2026-01-09 | 2026-01-22 |  |  | 80 |  | ELEC | P2-5 |  | ELEC-2 | To Trim Devices & Term Panel |  |  | SS | SS | O |  |
| P2.B2.S.1480 |  | Spray/Seal/Firestop - Head of Wall / B2 / South | 10d | 2026-01-12 A | 2026-01-23 A | P2.B2.S.1120 | 100% |  | 2026-02-02 | 2026-02-13 |  |  | 80 | P2.B2.07.84.310 | FIRSAFE | P2-5 |  | FIRSAFE | To Finishes - Paint |  | AT47 | SS | SS |  | 3 |
| P2.B2.S.1510 |  | Pull Wire - Low Volt - Fire Alarm / B2 / South | 10d | 2026-03-02 A | 2026-03-30 A | P2.B2.S.1380 | 100% |  | 2026-03-02 | 2026-03-13 |  |  | 80 |  | FA | P2-5 |  | FA-1 | To Trim Finishes |  |  | SS | DG |  | 3 |
| P2.B2.S.1530 |  | Pull Wire - Low Volt - Security / B2 / South | 10d | 2026-03-02 A | 2026-04-07 | P2.B2.S.1400 | 50% | 5d | 2026-03-02 | 2026-03-13 | 58d | 28d | 80 |  | LOWVOLT | P2-5 |  | LOWVOLT-1 | To Trim Finishes |  |  | SS | DG |  | 3 |
| P2.B2.S.1330 |  | OH - HVAC Piping - Equip Tie In / B2 / South | 10d | 2026-03-16 A | 2026-05-11 | P2.B2.S.1270, P2.B2.S.1310, CX.B2.HYDR.1000 | 10% | 9d | 2026-03-30 | 2026-04-10 | 25d | 4d | 80 | P2.B2.23.20.610 | FIT | P2-5 | Harris | FIT-2 |  |  |  | SS | DG |  |  |
| P2.B2.S.1500 |  | Pull Wire - Low Volt - BAS/Controls / B2 / South | 10d | 2026-04-01 | 2026-04-14 | P2.B2.S.1370 |  |  |  |  | 39d | 20d | 80 |  | BAS | P2-5 | Harris | BAS-1 | To Trim Finishes |  |  | SS | DG |  | 3 |
| P2.B2.S.1520 |  | Pull Wire - Low Volt - Telecom / B2 / South | 10d | 2026-04-01 | 2026-04-14 | P2.B2.S.1390 |  |  |  |  | 53d | 23d | 80 |  | LOWVOLT | P2-5 |  | LOWVOLT-1 | To Trim Finishes |  |  | SS | DG |  | 3 |
| P2.B2.S.1540 |  | Pull Wire - Low Volt - Medical Services/Nurse Call (?) / B2 / South | 10d | 2026-04-01 | 2026-04-14 | P2.B2.S.1410 |  |  |  |  | 53d | 23d | 80 |  | LOWVOLT | P2-5 |  | LOWVOLT-1 | To Trim Finishes |  |  | SS | DG |  | 3 |
| P2.B2.S.1470 |  | Hang-Tape-Finish - Walls / B2 / South | 15d | 2026-04-13 | 2026-05-01 | P2.B2.S.1460, P2.L1.N.1470 |  |  |  |  | -8d | 0d | 80 | P2.B2.09.21.710 | GYP | P2-5 |  | GYP-1 |  |  |  | SS | DG |  | 1 |
| P2.B2.S.1490 |  | Firestop - Thru Wall / B2 / South | 10d | 2026-05-04 | 2026-05-15 | P2.B2.S.1470 |  |  |  |  | 30d | 0d | 80 | P2.B2.07.84.210 | FIRESTO | P2-5 |  | FIRESTO | To Finishes - Paint |  | AT48 | SS | DG |  | 3 |
| P2.B2.S.1550 |  | Trades Inspect & Verify R/I Work Completed to Specs / B2 / South | 5d | 2026-05-18 | 2026-05-22 | P2.B2.S.1490, P2.B2.S.1480, P2.B2.S.1530, P2.B2.S.1540, P2.B2.S.1360, P2.B2.S.1500, P2.B2.S.1510, P2.B2.S.1520, P2.B2.S.1330 |  |  |  |  | 30d | 20d | 40 |  | T | P2-5 |  | T |  |  |  | SS | DG |  | 1 |

| ID | WBS | Activity | Duration | Start | Finish | Predecessors | Complete | Remaining | Planned start | Planned finish | Total float | Free float | Pick | Temp Orig Dur | Act ID Temp | Resp / SRLM | PHASE | RESP / Trade | Z.RESP | Testing Type | 744 | RESP UPD | Update Status |
| --- | --- | --- | --- | --- | --- | --- | --- | --- | --- | --- | --- | --- | --- | --- | --- | --- | --- | --- | --- | --- | --- | --- | --- |
|  | Z2-3 | **North (17K SF) / Level B2/B1** |  | 2024-10-15 | 2026-06-15 |  |  |  |  |  |  |  |  |  |  |  |  |  |  |  |  |  |  |
| P2.B2.N.1630 |  | Paint - OH Fire Suppression / B2 / North | 5d | 2024-10-15 A | 2025-04-01 A | P2.B2.S.1570 SS | 100% |  | 2025-01-23 | 2025-01-29 |  |  | 1 | 80 | P2.B2.21.13.210 | FP | P2-5 | FP-1 |  |  |  |  |  |
| P2.B2.N.1000 |  | Layout - All Trades / B2 / North | 5d | 2024-10-16 A | 2024-11-22 A | P1.1.03.630, P2.B2.S.1000 SS | 100% |  | 2024-11-07 | 2024-11-13 |  |  |  | 40 | P2.B2.01.010 | R/I.OH | P2-5 | R/I.OH | Harris |  |  |  |  |
| P2.B2.N.1010 |  | Framing - Top Track / B2 / North | 10d | 2024-10-28 A | 2024-11-25 A | P2.B2.N.1000 SS, P2.B2.S.1010 | 100% |  | 2024-12-10 | 2024-12-23 |  |  |  | 80 | P2.B2.09.21.110 | GYP | P2-5 | GYP-1 |  |  |  |  |  |
| P2.B2.N.1030 |  | OH - MEPF - Hangers & Supports / B2 / North | 10d | 2024-10-29 A | 2025-01-10 A | P2.BIM.B2.40.140 SS, P2.B2.N.1000 SS | 100% |  | 2024-12-17 | 2024-12-31 |  |  |  | 80 | P2.B2.20.05.410 | MEP | P2-5 | MEP-2 | Harris |  |  |  |  |
| P2.B2.N.1170 |  | OH - Fire Suppression / B2 / North | 10d | 2024-10-29 A | 2025-01-02 A | P2.B2.N.1030 SS, P2.B2.S.1170 SS | 100% |  | 2025-01-02 | 2025-01-15 |  |  | 1 | 80 | P2.B2.21.13.210 | FP | P2-5 | FP-1 |  |  |  |  |  |
| P2.B2.N.1020 |  | OH - Structural Supports (All Trades) / B2 / North | 5d | 2024-10-30 A | 2024-11-07 A | P2.B2.N.1000 SS | 100% |  | 2024-11-14 | 2024-11-20 |  |  |  | 80 | P2.B2.05.45.110 | R/I.OH | P2-5 | R/I.OH | Harris |  |  |  |  |
| P2.B2.N.1090 |  | Framing - Priority Walls & Door Frames / B2 / North | 10d | 2024-11-18 A | 2024-12-09 A | P2.B2.N.1030 SS, P2.B2.S.1090, P2.B2.N.1010 | 100% |  | 2024-12-17 | 2024-12-31 |  |  |  | 80 | P2.B2.09.21.310 | GYP | P2-5 | GYP-1 |  |  |  |  |  |
| P2.B2.N.1640 |  | In Wall - Priority Walls - Backing/Blocking/Supports / B2 / North | 5d | 2024-11-18 A | 2024-12-06 A | P2.B2.N.1090 SS | 100% |  | 2025-01-02 | 2025-01-08 |  |  |  | 80 | P2.B2.09.21.510 | R/I.IW | P2-5 | R/I.IW |  |  |  |  |  |
| P2.B2.N.1130 |  | Framing - Priority Walls - AHJ Inspections / B2 / North | 5d | 2024-11-20 A | 2025-02-26 A | P2.B2.N.1640 SS, P2.B2.N.1090 SS | 100% |  | 2025-01-09 | 2025-01-15 |  |  |  | 80 | P2.B2.01.43.010 | FM | P2-5 | FM |  |  |  |  |  |
| P2.B2.N.1140 |  | Hang/Tape/Finish - Priority Walls / B2 / North | 10d | 2024-11-21 A | 2025-02-19 A | P2.B2.N.1130 SS, P2.B2.N.1020 | 100% |  | 2025-01-16 | 2025-01-29 |  |  |  | 80 | P2.B2.09.21.210 | GYP | P2-5 | GYP-1 |  |  |  |  |  |
| P2.B2.N.1040 |  | CMU - Drill_Epoxy Masonry Dowels / B2 / North | 10d | 2024-11-25 A | 2024-12-16 A | P2.B2.S.1040 FF, P2.B2.N.1000 | 100% |  | 2024-12-31 | 2025-01-14 |  |  |  | 80 | P2.B2.04.20.110 | CMU | P2-5 | CMU |  | AT4 |  |  |  |
| P2.B2.N.1050 |  | CMU - Lay Block / B2 / North | 10d | 2024-11-25 A | 2024-12-16 A | P2.B2.S.1050 FF, P2.B2.N.1040 FF | 100% |  | 2025-01-15 | 2025-01-28 |  |  |  | 80 | P2.B2.04.20.210 | CMU | P2-5 | CMU |  | AT3 |  |  |  |
| P2.B2.N.1060 |  | In Wall - Electrical - CMU / B2 / North | 20d | 2025-01-03 A | 2025-02-17 A | P2.B2.N.1050 SS, P2.B2.S.1060 | 100% |  | 2025-03-03 | 2025-03-28 |  |  |  | 80 | P2.B2.26.05.510 | ELEC | P2-5 | ELEC-2 |  |  |  |  |  |
| P2.B2.N.1070 |  | In Wall - Plumbing - CMU / B2 / North | 20d | 2025-01-03 A | 2025-02-17 A | P2.B2.N.1050 SS, P2.B2.S.1070 | 100% |  | 2025-05-01 | 2025-05-29 |  |  |  | 80 | P2.B2.22.05.310 | PLMB | P2-5 | PLMB | Harris |  |  |  |  |
| P2.B2.N.1180 |  | OH - Plumbing Piping / B2 / North | 20d | 2025-01-16 A | 2025-04-10 A | P2.B2.N.1030, P2.B2.S.1180 SS | 100% |  | 2025-02-10 | 2025-03-07 |  |  | 1 | 80 | P2.B2.22.14.210 | PLMB | P2-5 | PLMB | Harris |  |  |  |  |
| P2.B2.N.1280 |  | OH - Insulate Plumbing / B2 / North | 10d | 2025-01-16 A | 2025-04-10 A | P2.B2.S.1280 SS, P2.B2.N.1180 SS | 100% |  | 2025-03-31 | 2025-04-11 |  |  | 3 | 80 | P2.B2.22.07.510 | INSUL | P2-5 | INSUL-3 | Harris |  |  |  |  |
| P2.B2.N.1100 |  | Paint - CMU Block Fill / B2 / North | 10d | 2025-02-03 A | 2025-04-07 A | P2.B2.N.1050 | 100% |  | 2025-03-03 | 2025-03-14 |  |  |  | 80 | P2.B2.09.97.110 | PAINT | P2-5 | PAINT-1 |  |  |  |  |  |
| P2.B2.N.1160 |  | Spray/Seal/Firestop - Head of Wall - Priority Walls / B2 / North | 5d | 2025-02-19 A | 2025-03-03 A | P2.B2.N.1140 | 100% |  | 2025-03-03 | 2025-03-07 |  |  |  | 80 | P2.B2.07.84.410 | FIRESTO | P2-5 | FIRESTO |  | AT47 |  |  |  |
| P2.B2.N.1150 |  | Paint Prime & 1st Coat - Priority Walls / B2 / North | 10d | 2025-03-11 A | 2025-04-07 A | P2.B2.N.1160 SS | 100% |  | 2025-03-03 | 2025-03-14 |  |  |  | 80 | P2.B2.09.91.110 | PAINT | P2-5 | PAINT-1 |  |  |  |  |  |
| P2.B2.N.1220 |  | OH - HVAC Piping / B2 / North | 20d | 2025-04-10 A | 2025-06-06 A | P2.B2.N.1030, P2.B2.N.1170 | 100% |  | 2025-05-01 | 2025-05-29 |  |  | 2 | 80 | P2.B2.23.20.410 | FIT | P2-5 | FIT-2 | Harris |  | SS | SS |  |
| P2.B2.N.1120 |  | Paint Prime & 1st Coat - CMU / B2 / North | 10d | 2025-05-01 A | 2025-05-14 A | P2.B2.N.1110 SS | 100% |  | 2025-06-02 | 2025-06-13 |  |  |  | 80 | P2.B2.09.97.210 | PAINT | P2-5 | PAINT-1 |  |  |  |  |  |
| P2.B2.N.1200 |  | Firestop - Thru Wall - Priority Walls / B2 / North | 1d | 2025-05-01 A | 2025-05-02 A | P2.B2.N.1150 SS+3d | 100% |  | 2025-06-02 | 2025-06-02 |  |  |  | 80 | P2.B2.07.84.110 | FIRESTO | P2-5 | FIRESTO |  |  |  |  |  |
| P2.B2.N.1190 |  | OH - Electrical - 480/277v Distribution / B2 / North | 5d | 2025-05-08 A | 2025-05-14 A | P2.B2.S.1190, P2.B2.N.1030 | 100% |  | 2025-06-09 | 2025-06-13 |  |  | 1 | 80 | P2.B2.26.05.210 | ELEC | P2-5 | ELEC-2 |  |  |  |  |  |
| P2.B2.N.1110 |  | CMU - Point & Patch / B2 / North | 10d | 2025-05-14 A | 2025-05-30 A | P2.B2.N.1060, P2.B2.N.1100, P2.B2.N.1070 | 100% |  | 2025-06-02 | 2025-06-13 |  |  |  | 80 | P2.B2.04.20.310 | CMU | P2-5 | CMU |  |  |  |  |  |
| P2.B2.N.1210 |  | OH - Hang Duct - HP Mains / B2 / North | 15d | 2025-05-14 A | 2025-06-13 A | P2.B2.S.1210, P2.B2.N.1030, P2.B2.N.1200 | 100% |  | 2025-06-03 | 2025-06-23 |  |  | 1 | 80 | P2.B2.23.30.210 | HVAC | P2-5 | HVAC | Harris |  | SS | SS |  |
| P2.B2.N.1270 |  | OH - HVAC Piping - Test / B2 / North | 5d | 2025-06-09 A | 2025-06-30 A | P2.B2.N.1220, P2.B2.N.1620, P2.B2.N.1240 | 100% |  | 2025-07-09 | 2025-07-15 |  |  | 3 | 80 | P2.B2.23.20.510 | FIT | P2-5 | FIT-2 | Harris |  | SS | SS |  |
| P2.B2.N.1260 |  | OH - DALT - HP Mains / B2 / North | 5d | 2025-06-16 A | 2025-06-20 A | P2.B2.N.1210 | 100% |  | 2025-07-16 | 2025-07-22 |  |  | 2 | 80 | P2.B2.23.30.310 | TAB | P2-5 | TAB-1 | Harris |  | SS | SS |  |
| P2.B2.N.1290 |  | OH - Insulate HP Duct / B2 / North | 10d | 2025-06-23 A | 2025-07-08 A | P2.B2.N.1260 | 100% |  | 2025-07-23 | 2025-08-05 |  |  | 3 | 80 | P2.B2.23.07.310 | INSUL | P2-5 | INSUL-3 | Harris |  | SS | SS |  |
| P2.B2.N.1300 |  | OH - Hang Duct - LP Branch / B2 / North | 10d | 2025-06-23 A | 2025-07-08 A | P2.B2.N.1260 | 100% |  | 2025-07-23 | 2025-08-05 |  |  | 3 | 80 | P2.B2.23.30.410 | HVAC | P2-5 | HVAC | Harris |  | SS | SS |  |
| P2.B2.N.1310 |  | OH - Set & Connect Mech Equipment / B2 / North | 10d | 2025-06-23 A | 2025-06-23 A | P2.B2.N.1260 | 100% |  | 2025-07-23 | 2025-08-05 |  |  | 3 | 80 | P2.B2.23.82.110 | HVAC | P2-5 | HVAC | Harris |  | SS | SS |  |
| P2.B2.N.1400 |  | OH - Conduit - Low Volt - Security / B2 / North | 10d | 2025-06-23 A | 2025-07-29 A | P2.B2.N.1340 | 100% |  | 2025-08-20 | 2025-09-03 |  |  | 5 | 80 |  | ELEC | P2-5 | ELEC-2 |  |  | SS | SS |  |
| P2.B2.N.1230 |  | OH - Electrical - 208/120v Branch / B2 / North | 10d | 2025-06-30 A | 2025-07-14 A | P2.B2.N.1190 | 100% |  | 2025-07-01 | 2025-07-15 |  |  | 2 | 80 | P2.B2.26.05.310 | ELEC | P2-5 | ELEC-2 |  |  | SS | SS |  |
| P2.B2.N.1240 |  | OH - Plumbing - Test / B2 / North | 5d | 2025-07-01 A | 2025-07-08 A | P2.B2.N.1180, P2.B2.BR.2000 SS, P2.B2.N.1280 FF+5d | 100% |  | 2025-08-01 | 2025-08-07 |  |  | 2 | 80 | P2.B2.22.14.310 | PLMB | P2-5 | PLMB | Harris |  | SS | SS |  |
| P2.B2.N.1250 |  | Pull Wire - Electrical - 480/277v Distribution / B2 / North | 10d | 2025-07-09 A | 2025-07-22 A | P2.B2.N.1190, P2.B2.HE.5995.1010, P2.B2.HE.5920.1010 | 100% |  | 2025-08-08 | 2025-08-21 |  |  | To Trim Devices & Term Panel | 80 |  | ELEC | P2-5 | ELEC-2 |  |  | SS | SS |  |
| P2.B2.N.1340 |  | OH - Insulate HVAC Pipe / B2 / North | 10d | 2025-07-09 A | 2025-07-22 A | P2.B2.N.1270, P2.B2.N.1290 | 100% |  | 2025-08-08 | 2025-08-21 |  |  | 4 | 80 | P2.B2.22.07.610 | INSUL | P2-5 | INSUL-3 | Harris |  | SS | SS |  |
| P2.B2.N.1350 |  | OH - Insulate LP Duct / B2 / North | 10d | 2025-07-09 A | 2025-07-22 A | P2.B2.N.1300 | 100% |  | 2025-08-08 | 2025-08-21 |  |  | 4 | 80 | P2.B2.23.07.410 | INSUL | P2-5 | INSUL-3 | Harris |  | SS | SS |  |
| P2.B2.N.1620 |  | Test - OH Fire Suppression / B2 / North | 5d | 2025-07-18 A | 2025-10-24 A | P2.B2.N.1170, P2.B2.N.1630 | 100% |  | 2025-08-01 | 2025-08-07 |  |  | 1 | 80 | P2.B2.21.13.210 | FP | P2-5 | FP-1 |  |  | SS | SS |  |
| P2.B2.N.1320 |  | OH - Electrical - Equip Tie In / B2 / North | 10d | 2025-07-23 A | 2026-02-04 A | P2.B2.N.1250, P2.B2.N.1310 | 100% |  | 2025-08-22 | 2025-09-05 |  |  | 4 | 80 | P2.B2.26.05.410 | ELEC | P2-5 | ELEC-2 |  |  | SS | SS | O |
| P2.B2.N.1380 |  | OH - Conduit - Low Volt - Fire Alarm / B2 / North | 10d | 2025-07-23 A | 2025-07-31 A | P2.B2.N.1350, P2.B2.N.1310 | 100% |  | 2025-08-22 | 2025-09-05 |  |  | 5 | 80 |  | FA | P2-5 | FA-1 |  |  | SS | SS |  |
| P2.B2.N.1370 |  | OH - Conduit - Low Volt - BAS/Controls / B2 / North | 10d | 2025-09-05 A | 2025-10-10 A | P2.B2.N.1340, P2.B2.N.1310 | 100% |  | 2025-10-06 | 2025-10-17 |  |  | 5 | 80 |  | BAS | P2-5 | BAS-1 | Harris |  | SS | SS |  |
| P2.B2.N.1420 |  | Framing - Balance of Framing & Door Frames / B2 / North | 10d | 2025-10-01 A | 2025-10-10 A | P2.L3.LC.1410, P2.L3.S.1420, P2.L3.N.1420 | 100% |  | 2025-11-24 | 2025-12-09 |  |  |  | 80 | A1310 | GYP | P2-5 | GYP-1 |  |  | SS | SS |  |
| P2.B2.N.1430 |  | In Wall - Plumbing - Framing / B2 / North | 20d | 2025-10-01 A | 2025-10-20 A | P2.B2.S.1430, P2.B2.N.1420 | 100% |  | 2025-10-01 | 2025-10-28 |  |  |  | 80 | P2.B2.22.05.410 | PLMB | P2-5 | PLMB | Harris |  | SS | SS |  |
| P2.B2.N.1440 |  | In Wall - Electrical - Framing / B2 / North | 20d | 2025-10-01 A | 2025-10-20 A | P2.B2.S.1440, P2.B2.N.1230, P2.B2.N.1420 | 100% |  | 2025-10-01 | 2025-10-28 |  |  |  | 80 | P2.B2.26.05.610 | ELEC | P2-5 | ELEC-2 |  |  | SS | SS |  |
| P2.B2.N.1480 |  | Spray/Seal/Firestop - Head of Wall / B2 / North | 10d | 2026-01-12 A | 2026-01-23 A | P2.B2.N.1120 | 100% |  | 2026-02-02 | 2026-02-13 |  |  | To Finishes - Paint | 80 | P2.B2.07.84.310 | FIRSAFE | P2-5 | FIRSAFE |  | AT47 |  | SS |  |
| P2.B2.N.1360 |  | Pull Wire - Electrical - 208/120v Branch & Equip / B2 / North | 10d | 2026-03-16 A | 2026-03-25 A | P2.B2.N.1230, P2.B2.N.1320, P2.B2.N.1440 | 100% |  | 2026-03-16 | 2026-03-27 |  |  | To Trim Devices & Term Panel | 80 |  | ELEC | P2-5 | ELEC-2 |  |  | SS | DG | O |
| P2.B2.N.1450 |  | In Wall - Backing/Blocking/Supports / B2 / North | 5d | 2026-03-16 A | 2026-03-20 A | P2.B2.N.1420 | 100% |  |  |  |  |  |  | 80 | P2.B2.09.21.510 | R/I.IW | P2-5 | R/I.IW |  |  | SS | DG | O |
| P2.B2.N.1460 |  | AHJ Inspections - Wall Close In / B2 / North | 5d | 2026-03-23 A | 2026-04-01 | P2.B2.N.1440, P2.B2.N.1450, P2.B2.N.1430 | 80% | 1d | 2026-03-23 | 2026-03-27 | 14d | 22d |  | 40 | P2.B2.01.43.110 | FM | P2-5 | FM |  |  | SS | DG |  |
| P2.B2.N.1510 |  | Pull Wire - Low Volt - Fire Alarm / B2 / North | 10d | 2026-03-23 A | 2026-03-31 A | P2.B2.N.1380 | 100% |  | 2026-03-02 | 2026-03-13 |  |  | To Trim Finishes | 80 |  | FA | P2-5 | FA-1 |  |  |  | DG |  |
| P2.B2.N.1330 |  | OH - HVAC Piping - Equip Tie In / B2 / North | 10d | 2026-03-30 A | 2026-05-11 | P2.B2.N.1270, P2.B2.N.1310, CX.B2.HYDR.1000 | 10% | 9d | 2026-03-30 | 2026-04-10 | 25d | 16d |  | 80 | P2.B2.23.20.610 | FIT | P2-5 | FIT-2 | Harris |  | SS | DG |  |
| P2.B2.N.1390 |  | OH - Conduit - Low Volt - Telecom / B2 / North | 10d | 2026-04-01 | 2026-04-14 | P2.B2.N.1350 |  |  |  |  | 38d | 0d | 5 | 80 |  | ELEC | P2-5 | ELEC-2 |  |  | SS | DG | O |
| P2.B2.N.1410 |  | OH - Conduit - Low Volt - Medical Services/Nurse Call (?) / B2 / North | 10d | 2026-04-01 | 2026-04-14 | P2.B2.N.1350 |  |  |  |  | 38d | 0d | 5 | 80 |  | ELEC | P2-5 | ELEC-2 |  |  | SS | DG | O |
| P2.B2.N.1500 |  | Pull Wire - Low Volt - BAS/Controls / B2 / North | 10d | 2026-04-01 | 2026-04-14 | P2.B2.N.1370 |  |  |  |  | 39d | 20d | To Trim Finishes | 80 |  | BAS | P2-5 | BAS-1 | Harris |  |  | DG |  |
| P2.B2.N.1530 |  | Pull Wire - Low Volt - Security / B2 / North | 10d | 2026-04-01 | 2026-04-14 | P2.B2.N.1400 |  |  |  |  | 48d | 38d | To Trim Finishes | 80 |  | LOWVOLT | P2-5 | LOWVOLT-1 |  |  |  | DG |  |
| P2.B2.N.1520 |  | Pull Wire - Low Volt - Telecom / B2 / North | 10d | 2026-04-15 | 2026-04-28 | P2.B2.N.1390 |  |  |  |  | 38d | 28d | To Trim Finishes | 80 |  | LOWVOLT | P2-5 | LOWVOLT-1 |  |  |  | DG |  |
| P2.B2.N.1540 |  | Pull Wire - Low Volt - Medical Services/Nurse Call (?) / B2 / North | 10d | 2026-04-15 | 2026-04-28 | P2.B2.N.1410 |  |  |  |  | 38d | 28d | To Trim Finishes | 80 |  | LOWVOLT | P2-5 | LOWVOLT-1 |  |  |  | DG |  |
| P2.B2.N.1470 |  | Hang-Tape-Finish - Walls / B2 / North | 15d | 2026-05-04 | 2026-05-22 | P2.B2.N.1460, P2.L1.N.1470, P2.B2.S.1470 |  |  |  |  | -8d | 0d |  | 80 | P2.B2.09.21.710 | GYP | P2-5 | GYP-1 |  |  | SS | DG |  |
| P2.B2.N.1490 |  | Firestop - Thru Wall / B2 / North | 10d | 2026-05-26 | 2026-06-08 | P2.B2.N.1470 |  |  |  |  | 10d | 0d | To Finishes - Paint | 80 | P2.B2.07.84.210 | FIRESTO | P2-5 | FIRESTO |  | AT48 |  | DG |  |
| P2.B2.N.1550 |  | Trades Inspect & Verify R/I Work Completed to Specs / B2 / North | 5d | 2026-06-09 | 2026-06-15 | P2.B2.N.1490, P2.B2.N.1480, P2.B2.N.1540, P2.B2.N.1500, P2.B2.N.1510, P2.B2.N.1520, P2.B2.N.1530, P2.B2.N.1360, P2.B2.N.1330 |  |  |  |  | 10d | 0d |  | 40 |  | T | P2-5 | T |  |  |  | DG |  |

| ID | WBS | Activity | Duration | Start | Finish | Predecessors | Complete | Remaining | Planned start | Planned finish | Total float | Free float | Temp Orig Dur | Testing Type | *NIH Resp Check* | Resp / SRLM | PHASE | RESP / Trade | 744 | RESP UPD | Pick | Z.RESP | Update Status | Act ID Temp |
| --- | --- | --- | --- | --- | --- | --- | --- | --- | --- | --- | --- | --- | --- | --- | --- | --- | --- | --- | --- | --- | --- | --- | --- | --- |
|  | 8 | **Existing F-Wing Bathroom Relocation** |  | 2023-10-09 | 2026-11-13 |  |  |  |  |  |  |  |  |  |  |  |  |  |  |  |  |  |  |  |
| P2.B2.EXBR.1360 |  | PCO Notification of B2 F-Wing Bathroom Notification | 1d | 2023-10-09 A | 2023-10-09 A | P2A.DES.455 | 100% |  |  |  |  |  | 40 | AT45 | ! | HP | P2-5 | HP |  |  |  |  |  |  |
| P2.B2.EXBR.1370 |  | Scoping Letter Transmitted to NIH for RFP | 30d | 2023-10-10 A | 2024-03-06 A | P2.B2.EXBR.1360 | 100% |  | 2023-10-09 | 2023-11-17 |  |  | 40 | AT45 | ! | HP | P2-5 | HP |  |  |  |  |  |  |
| P2.B2.EXBR.1380 |  | NIH RFP Issuance to Hensel Phelps | 30d | 2024-03-07 A | 2024-03-08 A | P2.B2.EXBR.1370 | 100% |  | 2024-03-07 | 2024-04-17 |  |  | 40 | AT45 | ! | NIH | P2-5 | NIH | SS | SS |  |  |  |  |
| P2.B2.EXBR.1000 |  | Work-Plan Investigation of Existing Bathrooms B2-105 & B2-109 (B2 BR 1800 & 1802) | 20d | 2024-06-20 A | 2025-04-01 A | P2.B2.EXBR.1380 SS | 100% |  | 2024-08-06 | 2024-09-03 |  |  | 40 | AT45 | ! | HP | P2-5 | HP |  |  |  |  |  |  |
| P2.B2.EXBR.1010 |  | Work-Plan Development for Relocating Existing F-Wing Bathrooms | 20d | 2024-06-20 A | 2025-04-01 A | P2.B2.EXBR.1000 SS | 100% |  | 2024-09-04 | 2024-10-01 |  |  | 40 | AT45 | ! | HP | P2-5 | HP |  |  |  |  |  |  |
| P2.B2.EXBR.1090 |  | Plumbing - Set Pipe Carriers / B2 / North / BR 1800 & 1802 | 5d | 2025-10-27 A | 2025-11-01 A | P2.B2.BR.2000 SS | 100% |  | 2026-03-24 | 2026-03-30 |  |  | 24 |  | ! | PLMB | P2-5 | PLMB | SS | JH | ? | Harris |  |  |
| P2.B2.EXBR.1100 |  | Framing & Blocking - Walls and Hard Lid Ceilings / B2 / North / BR 1800 & 1802 | 2d | 2025-10-30 A | 2025-11-01 A | P2.B2.EXBR.1090 | 100% |  | 2026-03-31 | 2026-04-01 |  |  | 16 |  | ! | GYP | P2-5 | GYP-1 | SS | JH |  |  |  |  |
| P2.B2.EXBR.1160 |  | In Wall - Insulate Plumbing / B2 / North / BR 1800 & 1802 | 2d | 2025-10-30 A | 2025-11-01 A | P2.B2.EXBR.1100 | 100% |  | 2026-04-02 | 2026-04-03 |  |  | 16 |  |  | INSUL | P2-5 | INSUL-3 | SS | JH |  | Harris |  |  |
| P2.B2.EXBR.1020 |  | NIH Notification - Review and Approval of Relocating Existing F-Wing Bathrooms | 20d | 2025-11-20 A | 2026-04-28 | P2.B2.EXBR.1010 |  | 20d | 2025-12-01 | 2025-12-29 | 66d | 0d | 40 | AT45 | ! | NIH | P2-5 | NIH | SS | JH |  |  | O |  |
| P2.B2.EXBR.1110 |  | Plumbing - Test Pipe / B2 / North / BR 1800 & 1802 | 2d | 2026-04-01 | 2026-04-02 | P2.B2.EXBR.1090 |  |  |  |  | 89d | 23d | 16 |  |  | PLMB | P2-5 | PLMB | SS | JH |  | Harris |  |  |
| P2.B2.EXBR.1130 |  | Trim Sprinkler Drops _ Hard Lids / B2 / North / BR 1800 & 1802 | 2d | 2026-04-01 | 2026-04-02 | P2.B2.EXBR.1100 |  |  |  |  | 123d | 57d | 16 |  | ! | FP | P2-5 | FP-1 | SS | JH |  |  |  |  |
| P2.B2.EXBR.1140 |  | Duct Drops _ Hard Lids / B2 / North / BR 1800 & 1802 | 2d | 2026-04-01 | 2026-04-02 | P2.B2.EXBR.1100 |  |  |  |  | 123d | 57d | 16 |  | T.R/I.IW.MECH.HVAC.SM | HVAC | P2-5 | HVAC | SS | JH |  | Harris |  |  |
| P2.B2.EXBR.1150 |  | R/I - Fire Alarm _ Hard Lids / B2 / North / BR 1800 & 1802 | 2d | 2026-04-01 | 2026-04-02 | P2.B2.EXBR.1100 |  |  |  |  | 123d | 57d | 16 |  | ! | ELEC | P2-5 | ELEC-3 | SS | JH |  |  |  |  |
| P2.B2.EXBR.1030 |  | NIH Vacate B2-B109 Janitor Closet | 5d | 2026-04-29 | 2026-05-05 | P2.B2.EXBR.1020, P2.B2.EXBR.1110 FF |  |  |  |  | 66d | 0d | 40 | AT45 | ! | NIH | P2-5 | NIH | SS | JH |  |  | O |  |
| P2.B2.EXBR.1040 |  | Temp Partitions around Janitor Closet, Doors, & Inspections / B2 / BR 1800 & 1802 | 10d | 2026-05-06 | 2026-05-19 | P1.B2.03.460, P1.B2.03.430, P2.B2.EXBR.1030 |  |  |  |  | 66d | 0d | 40 |  |  | GYP | P2-5 | GYP | SS | JH |  | Harris |  | P2.B2.01.010 |
| P2.B2.EXBR.1050 |  | Shut Down Existing Janitor Closet Utilities / B2 / BR 1800 & 1802 | 5d | 2026-05-20 | 2026-05-27 | P2.B2.EXBR.1040 |  |  |  |  | 66d | 0d | 40 |  |  | MEP | P2-5 | MEP-2 | SS | JH |  | Harris |  | P2.B2.01.010 |
| P2.B2.EXBR.1060 |  | Demo Janitor Closet / B2 / BR 1800 & 1802 | 10d | 2026-05-28 | 2026-06-10 | P2.B2.EXBR.1050 |  |  |  |  | 66d | 0d | 40 |  |  | DEMO.1 | P2-5 | DEMO.1 | SS | JH |  | Harris |  | P2.B2.01.010 |
| P2.B2.EXBR.1070 |  | Demo Existing Building Wall North for ETV Shaft / B2 / BR 1800 & 1802 | 5d | 2026-06-11 | 2026-06-17 | P2.B2.EXBR.1060 |  |  |  |  | 66d | 0d | 40 |  |  | DEMO.1 | P2-5 | DEMO.1 | SS | JH |  | Harris |  | P2.B2.01.010 |
| P2.B2.EXBR.1080 |  | Layout - All Trades / B2 / BR 1800 & 1802 | 2d | 2026-06-18 | 2026-06-19 | P2.B2.EXBR.1070 |  |  |  |  | 66d | 0d | 40 |  |  | R/I.OH | P2-5 | R/I.OH | SS | JH |  | Harris |  | P2.B2.01.010 |
| P2.B2.EXBR.1120 |  | R/I - Electrical _ Hard Lids / B2 / North / BR 1800 & 1802 | 2d | 2026-06-22 | 2026-06-23 | P2.B2.EXBR.1100, P2.B2.EXBR.1080 |  |  |  |  | 66d | 0d | 16 |  | ! | ELEC | P2-5 | ELEC-3 | SS | JH |  |  |  |  |
| P2.B2.EXBR.1170 |  | Inspection - Close In - Walls and Hard Lid Ceilings / B2 / North / BR 1800 & 1802 | 3d | 2026-06-24 | 2026-06-26 | P2.B2.EXBR.1150, P2.B2.EXBR.1130, P2.B2.EXBR.1140, P2.B2.EXBR.1120, P2.B2.EXBR.1160 |  |  |  |  | 66d | 0d | 24 |  | ! | AHJ | P2-5 | AHJ | SS | JH |  |  |  |  |
| P2.B2.EXBR.1180 |  | Hang-Tape-Finish _ Walls / B2 / North / BR 1800 & 1802 | 5d | 2026-06-29 | 2026-07-06 | P2.B2.EXBR.1170, P2.L1.N.1470 |  |  |  |  | 66d | 0d | 40 |  | ! | GYP | P2-5 | GYP-1 | SS | JH |  |  |  |  |
| P2.B2.EXBR.1190 |  | Paint Prime & Final Coat _ Walls & Hard Lid Ceilings / B2 / North / BR 1800 & 1802 | 2d | 2026-07-07 | 2026-07-08 | P2.B2.EXBR.1180 |  |  |  |  | 66d | 0d | 16 |  | ! | PAINT | P2-5 | PAINT-1 | SS | JH |  |  |  |  |
| P2.B2.EXBR.1200 |  | Pull Wire & Trim Devices - Fire Alarm / B2 / North / BR 1800 & 1802 | 2d | 2026-07-09 | 2026-07-10 | P2.B2.EXBR.1190 |  |  |  |  | 75d | 9d | 16 |  | ! | ELEC | P2-5 | ELEC-2 | SS | JH |  |  |  |  |
| P2.B2.EXBR.1210 |  | Pull Wire & Trim Devices - Electrical / B2 / North / BR 1800 & 1802 | 2d | 2026-07-09 | 2026-07-10 | P2.B2.EXBR.1190 |  |  |  |  | 66d | 0d | 16 |  | ! | ELEC | P2-5 | ELEC-2 | SS | JH |  |  |  |  |
| P2.B2.EXBR.1220 |  | Lights - Set & Terminate / B2 / North / BR 1800 & 1802 | 2d | 2026-07-09 | 2026-07-10 | P2.B2.EXBR.1210 SS |  |  |  |  | 66d | 0d | 16 |  | ! | ELEC | P2-5 | ELEC-2 | SS | JH |  |  |  |  |
| P2.B2.EXBR.1230 |  | Trim - HVAC G/R/D's / B2 / North / BR 1800 & 1802 | 2d | 2026-07-09 | 2026-07-10 | P2.B2.EXBR.1190 |  |  |  |  | 66d | 0d | 16 |  | ! | HVAC | P2-5 | HVAC | SS | JH |  | Harris |  |  |
| P2.B2.EXBR.1240 |  | Flooring & Wall Tile / B2 / North / BR 1800 & 1802 | 5d | 2026-07-13 | 2026-07-17 | P2.B2.EXBR.1230, P2.B2.EXBR.1220 |  |  |  |  | 66d | 0d | 40 |  | ! | TILE | P2-5 | TILE | SS | JH |  |  |  |  |
| P2.B2.EXBR.1250 |  | Doors & Hardware / B2 / North / BR 1800 & 1802 | 2d | 2026-07-20 | 2026-07-21 | P2.B2.EXBR.1240 |  |  |  |  | 68d | 2d | 16 | AT29 | ! | DFH | P2-5 | DFH | SS | JH |  |  |  |  |
| P2.B2.EXBR.1260 |  | Plumbing Fixtures / Sinks / Showers / B2 / North / BR 1800 & 1802 | 2d | 2026-07-20 | 2026-07-21 | P2.B2.EXBR.1240 |  |  |  |  | 66d | 0d | 16 |  | ! | PLMB | P2-5 | PLMB | SS | JH |  | Harris |  |  |
| P2.B2.EXBR.1270 |  | Bathroom Accessories / B2 / North / BR 1800 & 1802 | 2d | 2026-07-22 | 2026-07-23 | P2.B2.EXBR.1260 |  |  |  |  | 66d | 0d | 16 |  | ! | SPECIAL | P2-5 | SPECIAL | SS | JH |  |  |  |  |
| P2.B2.EXBR.1280 |  | Work Completion List - Finishes / B2 / North / BR 1800 & 1802 | 5d | 2026-07-24 | 2026-07-30 | P2.B2.EXBR.1250, P2.B2.EXBR.1270, P2.B2.EXBR.1200 |  |  |  |  | 66d | 0d | 40 |  |  | AHJ | P2-5 | AHJ | SS | JH | To Punch |  |  |  |
| P2.B2.EXBR.1340 |  | NIH Notification to Vacate existing bathrooms | 20d | 2026-07-31 | 2026-08-27 | P2.B2.EXBR.1280 |  |  |  |  | 66d | 0d | 40 | AT45 | ! | NIH | P2-5 | NIH | SS | JH |  |  |  |  |
| P2.B2.EXBR.1290 |  | NIH Vacate Bathrooms B2-105 & B2-109 | 5d | 2026-08-28 | 2026-09-03 | P2.B2.EXBR.1340 |  |  |  |  | 66d | 0d | 40 | AT45 | ! | NIH | P2-5 | NIH |  | JH |  |  |  |  |
| P2.B2.EXBR.1300 |  | Temp Partitions, Doors, & Inspections around existing bathroom / B2 / BR 1800 & 1802 | 10d | 2026-09-04 | 2026-09-18 | P2.B2.EXBR.1290 |  |  |  |  | 66d | 0d | 40 |  |  | GYP | P2-5 | GYP |  | JH |  | Harris |  | P2.B2.01.010 |
| P2.B2.EXBR.1310 |  | Shut Down Existing Bathroom Utilities / B2 / BR 1800 & 1802 | 5d | 2026-09-21 | 2026-09-25 | P2.B2.EXBR.1300 |  |  |  |  | 66d | 0d | 40 |  |  | MEP | P2-5 | MEP-2 |  | JH |  | Harris |  | P2.B2.01.010 |
| P2.B2.EXBR.1320 |  | Demo Existing Bathroom / B2 / BR 1800 & 1802 | 10d | 2026-09-28 | 2026-10-09 | P2.B2.EXBR.1310 |  |  |  |  | 66d | 0d | 40 |  |  | DEMO.1 | P2-5 | DEMO.1 |  | JH |  | Harris |  | P2.B2.01.010 |
| P2.B2.EXBR.1330 |  | Demo Existing Building Wall South to Connect SRLM to CRC at B2 / B2 / BR 1800 & 1802 | 5d | 2026-10-12 | 2026-10-16 | P2.B2.EXBR.1320 |  |  |  |  | 66d | 0d | 40 |  |  | DEMO.1 | P2-5 | DEMO.1 |  | JH |  | Harris |  | P2.B2.01.010 |
| P2.B2.EXBR.1350 |  | Final Finishes in B2 Corridor at CRC Connection / B2 / BR 1800 & 1802 | 20d | 2026-10-19 | 2026-11-13 | P2.B2.EXBR.1330 |  |  |  |  | 66d | 78d | 40 |  |  | MEP | P2-5 | MEP-2 |  | JH |  | Harris |  | P2.B2.01.010 |

| ID | WBS | Activity | Duration | Start | Finish | Predecessors | Complete | Planned start | Planned finish | Temp Orig Dur | *NIH Resp Check* | Resp / SRLM | PHASE | RESP / Trade | Z.RESP | Testing Type | 744 | RESP UPD | Update Status |
| --- | --- | --- | --- | --- | --- | --- | --- | --- | --- | --- | --- | --- | --- | --- | --- | --- | --- | --- | --- |
|  | 3 | **B2 / MAIN ELECTRICAL ROOMS** |  | 2015-08-11 | 2026-04-07 |  |  |  |  |  |  |  |  |  |  |  |  |  |  |
|  | 1 | **Electrical Switchgear Room A - B2-3970A** |  | 2024-10-24 | 2026-03-24 |  |  |  |  |  |  |  |  |  |  |  |  |  |  |
| P2.B2.ES.A.1180 |  | OH Conduit (EF) Install / B2 / South / 3970A | 20d | 2024-10-24 A | 2025-03-17 A | P2.B2.ES.A.1020 | 100% | 2025-03-17 | 2025-04-11 | 40 | ! | ELEC | P2-5 | ELEC-3 |  |  |  |  |  |
| P2.B2.ES.A.1000 |  | Layout - All Trades / B2 / South / 3970A | 1d | 2024-10-25 A | 2024-10-28 A | P1.1.03.620, P2B.DES.825 SS, P2C.DES.235 SS | 100% | 2024-11-01 | 2024-11-01 | 40 | ! | R/I.OH | P2-5 | R/I.OH | Harris |  |  |  |  |
| P2.B2.ES.A.1010 |  | OH Structural Supports / B2 / South / 3970A | 5d | 2024-10-29 A | 2024-11-05 A | P2.B2.ES.A.1000, P2.BIM.B2.40.140 | 100% | 2024-11-04 | 2024-11-08 | 40 | ! | MISCMTL | P2-5 | MISCMTL |  | AT24 |  |  |  |
| P2.B2.ES.A.1050 |  | Frame Partitions / B2 / South / 3970A | 5d | 2024-12-10 A | 2025-02-27 A | P2.B2.ES.A.1040 | 100% | 2025-03-03 | 2025-03-07 | 40 | ! | GYP | P2-5 | GYP-1 |  |  |  |  |  |
| P2.B2.ES.A.1030 |  | CMU Dowels / B2 / South / 3970A | 5d | 2025-01-07 A | 2025-01-13 A | P2.B2.ES.A.1010, P2.B2.WC.1040 SS | 100% | 2025-02-06 | 2025-02-12 | 40 | ! | CMU | P2-5 | CMU |  | AT4 |  |  |  |
| P2.B2.ES.A.1040 |  | CMU Walls / B2 / South / 3970A | 5d | 2025-01-14 A | 2025-01-20 A | P2.B2.ES.A.1030 | 100% | 2025-02-13 | 2025-02-19 | 40 | ! | CMU | P2-5 | CMU |  | AT3 |  |  |  |
| P2.B2.ES.A.1080 |  | In Wall Inspection / B2 / South / 3970A | 5d | 2025-02-09 A | 2025-02-09 A | P2.B2.ES.A.1060 | 100% | 2025-03-17 | 2025-03-21 | 40 | ! | AHJ | P2-5 | AHJ |  |  |  |  |  |
| P2.B2.ES.A.1060 |  | In Wall MEPF Rough In / B2 / South / 3970A | 5d | 2025-02-09 A | 2025-02-15 A | P2.B2.ES.A.1050 | 100% | 2025-03-10 | 2025-03-14 | 40 | ! | R/I.IW | P2-5 | R/I.IW |  |  |  |  |  |
| P2.B2.ES.A.1100 |  | Fire Stop Top of Wall / B2 / South / 3970A | 5d | 2025-02-10 A | 2025-02-15 A | P2.B2.ES.A.1090 FF | 100% | 2025-03-24 | 2025-03-28 | 40 | ! | FIRSTOP | P2-5 | FIRSTOP |  | AT47 |  |  |  |
| P2.B2.ES.A.1090 |  | Hang-Tape-Finish / B2 / South / 3970A | 5d | 2025-02-11 A | 2025-02-20 A | P2.B2.ES.A.1080 | 100% | 2025-03-24 | 2025-03-28 | 40 | ! | GYP | P2-5 | GYP-1 |  |  |  |  |  |
| P2.B2.ES.A.1020 |  | OH Mechanical Install / B2 / South / 3970A | 5d | 2025-03-10 A | 2025-03-14 A | P2.B2.ES.A.1100 | 100% |  |  | 40 | ! | HVAC | P2-5 | HVAC | Harris |  |  |  |  |
| P2.B2.ES.A.1190 |  | Install Horizontal Bus Duct / B2 / South / 3970A | 10d | 2025-03-14 A | 2025-04-02 A | P2.B2.ES.A.1180 | 100% | 2025-05-01 | 2025-05-14 | 40 | ! | ELEC | P2-5 | ELEC-2 |  |  |  |  |  |
| P2.B2.ES.A.1170 |  | Set SWGR B2-3970A / B2 / South / 3970A | 5d | 2025-03-28 A | 2025-04-11 A | P1.B2.03.290, BP1.261.3.110, P2.B2.ES.A.1190, BP1.261.3.120 SS, P2.B2.ES.A.1020 | 100% | 2025-06-02 | 2025-06-06 | 40 | ! | ELEC | P2-5 | ELEC-2 |  |  |  |  |  |
| P2.B2.ES.A.1290 |  | OH Conduit and Busduct tie into SWGR / B2 / South / 3970A | 10d | 2025-05-09 A | 2025-05-22 A | P2.B2.ES.A.1170 | 100% | 2025-06-09 | 2025-06-20 | 40 | ! | ELEC | P2-5 | ELEC-3 |  |  |  |  |  |
| P2.B2.ES.A.1220 |  | Pull Medium Voltage Feeders / B2 / South / 3970A | 5d | 2025-05-19 A | 2025-05-22 A | BP1.260.3.140, P2.B2.ES.A.1200 | 100% | 2025-07-23 | 2025-07-29 | 80 | ! | ELEC | P2-5 | ELEC-2 |  |  | SS | SS |  |
| P2.B2.ES.A.1280 |  | Mechanical Ductwork Install / B2 / South / 3970A | 5d | 2025-05-20 A | 2025-05-30 A | P2.B2.ES.A.1210 | 100% | 2025-07-23 | 2025-07-29 | 40 | ! | HVAC | P2-5 | HVAC | Harris |  | SS | SS |  |
| P2.B2.ES.A.1200 |  | Pull Feeders / B2 / South / 3970A | 20d | 2025-05-22 A | 2025-06-06 A | BP1.260.3.110, P2.B2.ES.A.1290 | 100% | 2025-06-23 | 2025-07-21 | 40 | ! | ELEC | P2-5 | ELEC-2 |  |  | SS | SS |  |
| P2.B2.ES.A.1260 |  | Frame Leave-Out Partitions / B2 / South / 3970A | 5d | 2025-05-30 A | 2025-06-06 A | P2.B2.ES.A.1170 | 100% | 2025-06-09 | 2025-06-13 | 40 | ! | GYP | P2-5 | GYP-1 |  |  | SS | SS |  |
| P2.B2.ES.A.1270 |  | Hang-Tape-Finish Leave Out Walls / B2 / South / 3970A | 5d | 2025-05-30 A | 2025-07-08 A | P2.B2.ES.A.1260 | 100% | 2025-06-16 | 2025-06-20 | 40 | ! | GYP | P2-5 | GYP-1 |  |  | SS | SS |  |
| P2.B2.ES.A.1230 |  | Termination of Feeders at Gear / B2 / South / 3970A | 15d | 2025-06-17 A | 2025-08-29 A | P2.B2.ES.A.1220 | 100% | 2025-07-30 | 2025-08-19 | 80 | ! | ELEC | P2-5 | ELEC-2 |  |  | SS | SS |  |
| P2.B2.ES.A.1210 |  | Install Doors & Hardware / B2 / South / 3970A | 5d | 2025-07-09 A | 2025-07-15 A | P2.B2.ES.A.1270 | 100% | 2025-08-08 | 2025-08-14 | 40 | ! | AHJ | P2-5 | AHJ |  |  | SS | SS |  |
| P2.B2.ES.A.1070 |  | Fire Caulk MEPF Penetrations / B2 / South / 3970A | 5d | 2025-07-16 A | 2025-08-29 A | P2.B2.ES.A.1280 | 100% | 2025-08-15 | 2025-08-21 | 40 | ! | FIRESTO | P2-5 | FIRESTO |  | AT48 | SS | SS |  |
| P2.B2.ES.A.1240 |  | Testing & Inspection / B2 / South / 3970A | 10d | 2025-07-21 A | 2025-08-05 A | BP1.261.3.150, BP1.261.3.170, P2.B2.ES.A.1230 | 100% | 2025-08-15 | 2025-08-28 | 80 | ! | ELEC | P2-5 | ELEC-2 |  |  | SS | SS |  |
| P2.B2.ES.A.1110 |  | Paint Walls / B2 / South / 3970A | 5d | 2025-07-23 A | 2025-08-22 A | P2.B2.ES.A.1070 | 100% | 2025-08-22 | 2025-08-28 | 40 | ! | PAINT | P2-5 | PAINT-1 |  |  | SS | SS |  |
| P2.B2.ES.A.1130 |  | Lighting Install / B2 / South / 3970A | 5d | 2025-08-01 A | 2025-08-08 A | P2.B2.ES.A.1240, P2.B2.ES.A.1120 | 100% | 2025-08-18 | 2025-08-22 | 40 | ! | ELEC | P2-5 | ELEC-2 |  |  | SS | SS |  |
| P2.B2.ES.A.1140 |  | Fire Alarm/Ceiling Device Install / B2 / South / 3970A | 5d | 2025-08-22 A | 2025-08-28 A | P2.B2.ES.A.1130 | 100% | 2025-08-25 | 2025-08-29 | 40 | ! | FA | P2-5 | FA-1 |  |  | SS | SS |  |
| P2.B2.ES.A.1120 |  | HVAC - GRD's / B2 / South / 3970A | 5d | 2025-10-27 A | 2025-10-31 A | P2.B2.ES.A.1110 | 100% | 2025-12-01 | 2025-12-05 | 40 | ! | HVAC | P2-5 | HVAC | Harris |  | SS | SS | O |
| P2.B2.ES.A.1150 |  | Prep Floor for Flooring / B2 / South / 3970A | 5d | 2025-11-03 A | 2025-11-07 A | P2.B2.ES.A.1140 FF | 100% | 2025-12-01 | 2025-12-05 | 40 | ! | FLOOR | P2-5 | FLOOR |  |  | SS | SS |  |
| P2.B2.ES.A.1160 |  | Flooring / B2 / South / 3970A | 5d | 2026-01-28 A | 2026-01-30 A | P2.B2.ES.A.1150 | 100% | 2026-01-02 | 2026-01-08 | 40 | ! | FLOOR | P2-5 | FLOOR |  |  | SS | SS | O |
| P2.B2.ES.A.1250 |  | Energize SWGR B2-3970A / B2 / South / 3970A | 5d | 2026-03-24 A | 2026-03-24 A | P2.B2.ES.A.1160, FRAG.001.1010 | 100% | 2026-03-13 | 2026-03-19 | 40 | ! | ELEC | P2-5 | ELEC-2 |  |  | SS | SS | O |

| ID | WBS | Activity | Duration | Start | Finish | Predecessors | Complete | Planned start | Planned finish | Total float | Free float | Temp Orig Dur | *NIH Resp Check* | Resp / SRLM | PHASE | RESP / Trade | Z.RESP | Testing Type | 744 | RESP UPD | Update Status | Posit |
| --- | --- | --- | --- | --- | --- | --- | --- | --- | --- | --- | --- | --- | --- | --- | --- | --- | --- | --- | --- | --- | --- | --- |
|  | 2 | **Emergency Switchgear Room A - B2-3970B** |  | 2024-10-14 | 2026-04-07 |  |  |  |  |  |  |  |  |  |  |  |  |  |  |  |  |  |
| P2.B2.EMS.A.1180 |  | OH Conduit (EF) Install / B2 / South / 3970B | 20d | 2024-10-14 A | 2025-03-17 A | P2.B2.EMS.A.1020 | 100% | 2025-03-24 | 2025-04-18 |  |  | 40 | ! | ELEC | P2-5 | ELEC-3 |  |  |  |  |  |  |
| P2.B2.EMS.A.1000 |  | Layout - All Trades / B2 / South / 3970B | 1d | 2024-11-01 A | 2024-11-01 A | P2.B2.ES.A.1000 | 100% | 2024-12-02 | 2024-12-02 |  |  | 40 | ! | R/I.OH | P2-5 | R/I.OH | Harris |  |  |  |  |  |
| P2.B2.EMS.A.1010 |  | OH Structural Supports / B2 / South / 3970B | 5d | 2024-11-02 A | 2024-11-08 A | P2.BIM.B2.40.140, P2.B2.EMS.A.1000 | 100% | 2024-12-03 | 2024-12-09 |  |  | 40 | ! | MISCMTL | P2-5 | MISCMTL |  | AT24 |  |  |  |  |
| P2.B2.EMS.A.1030 |  | CMU Dowels / B2 / South / 3970B | 5d | 2025-01-09 A | 2025-01-15 A | P2.B2.ES.A.1030 FF, P2.B2.EMS.A.1010 | 100% | 2025-02-10 | 2025-02-14 |  |  | 40 | ! | CMU | P2-5 | CMU |  | AT4 |  |  |  |  |
| P2.B2.EMS.A.1090 |  | Hang-Tape-Finish / B2 / South / 3970B | 5d | 2025-01-09 A | 2025-02-27 A | P2.B2.EMS.A.1080 | 100% | 2025-03-10 | 2025-03-14 |  |  | 40 | ! | GYP | P2-5 | GYP-1 |  |  |  |  |  |  |
| P2.B2.EMS.A.1040 |  | CMU Walls / B2 / South / 3970B | 5d | 2025-01-16 A | 2025-01-22 A | P2.B2.EMS.A.1030 | 100% | 2025-02-17 | 2025-02-21 |  |  | 40 | ! | CMU | P2-5 | CMU |  | AT3 |  |  |  |  |
| P2.B2.EMS.A.1260 |  | Mechanical Ductwork Install / B2 / South / 3970B | 5d | 2025-02-03 A | 2025-05-01 A | P2.B2.EMS.A.1190 | 100% | 2025-07-30 | 2025-08-05 |  |  | 40 | ! | R/I.OH | P2-5 | R/I.OH | Harris |  | SS | SS |  |  |
| P2.B2.EMS.A.1050 |  | Frame Partitions / B2 / South / 3970B | 5d | 2025-02-10 A | 2025-02-14 A | P2.B2.ES.A.1050, P2.B2.EMS.A.1040 | 100% | 2025-03-10 | 2025-03-14 |  |  | 40 | ! | GYP | P2-5 | GYP-1 |  |  |  |  |  |  |
| P2.B2.EMS.A.1060 |  | In Wall MEPF Rough In / B2 / South / 3970B | 5d | 2025-02-17 A | 2025-02-21 A | P2.B2.EMS.A.1050 | 100% | 2025-03-17 | 2025-03-21 |  |  | 40 | ! | R/I.IW | P2-5 | R/I.IW |  |  |  |  |  |  |
| P2.B2.EMS.A.1100 |  | Fire Stop Top of Wall / B2 / South / 3970B | 5d | 2025-02-19 A | 2025-03-03 A | P2.B2.EMS.A.1090 FF | 100% | 2025-03-10 | 2025-03-14 |  |  | 40 | ! | FIRSTOP | P2-5 | FIRSTOP |  | AT47 |  |  |  |  |
| P2.B2.EMS.A.1080 |  | In Wall Inspection / B2 / South / 3970B | 5d | 2025-02-24 A | 2025-02-28 A | P2.B2.EMS.A.1060 | 100% | 2025-03-24 | 2025-03-28 |  |  | 40 | ! | AHJ | P2-5 | AHJ |  |  |  |  |  |  |
| P2.B2.EMS.A.1200 |  | Install Horizontal Bus Duct / B2 / South / 3970B | 10d | 2025-03-14 A | 2025-04-04 A | P2.B2.EMS.A.1180 | 100% | 2025-05-01 | 2025-05-14 |  |  | 40 | ! | ELEC | P2-5 | ELEC-2 |  |  |  |  |  |  |
| P2.B2.EMS.A.1020 |  | OH Mechanical Install / B2 / South / 3970B | 5d | 2025-03-17 A | 2025-03-21 A | P2.B2.EMS.A.1100 | 100% |  |  |  |  | 40 | ! | R/I.OH | P2-5 | R/I.OH | Harris |  |  |  |  |  |
| P2.B2.EMS.A.1170 |  | Set Emergency SWGR B2-3970B / B2 / South / 3970B | 5d | 2025-03-28 A | 2025-04-08 A | P1.B2.03.290, P2.B2.ES.A.1170, P2.B2.EMS.A.1200, P2.B2.EMS.A.1020 | 100% | 2025-07-01 | 2025-07-08 |  |  | 40 | ! | ELEC | P2-5 | ELEC-2 |  |  | SS | SS |  |  |
| P2.B2.EMS.A.1290 |  | OH Conduit & Busduct tie into to SWGR / B2 / South / 3970B | 10d | 2025-04-29 A | 2025-05-01 A | P2.B2.EMS.A.1170 | 100% | 2025-06-16 | 2025-06-27 |  |  | 40 | ! | ELEC | P2-5 | ELEC-3 |  |  |  |  |  |  |
| P2.B2.EMS.A.1210 |  | Pull Feeders / B2 / South / 3970B | 20d | 2025-05-22 A | 2025-06-06 A | P2.B2.EMS.A.1290 | 100% | 2025-07-09 | 2025-08-05 |  |  | 40 | ! | ELEC | P2-5 | ELEC-2 |  |  | SS | SS |  |  |
| P2.B2.EMS.A.1270 |  | Frame Leave Out Partitions / B2 / South / 3970B | 5d | 2025-05-30 A | 2025-06-18 A | P2.B2.EMS.A.1170 | 100% | 2025-06-16 | 2025-06-20 |  |  | 40 | ! | GYP | P2-5 | GYP-1 |  |  | SS | SS |  |  |
| P2.B2.EMS.A.1280 |  | Hang-Tape-Finish Leave Out Walls / B2 / South / 3970B | 5d | 2025-05-30 A | 2025-06-06 A | P2.B2.EMS.A.1270 | 100% | 2025-06-23 | 2025-06-27 |  |  | 40 | ! | GYP | P2-5 | GYP-1 |  |  | SS | SS |  |  |
| P2.B2.EMS.A.1220 |  | Pull Medium Voltage Feeders / B2 / South / 3970B | 5d | 2025-06-09 A | 2025-06-14 A | P2.B2.EMS.A.1210 | 100% | 2025-08-06 | 2025-08-12 |  |  | 80 | ! | ELEC | P2-5 | ELEC-2 |  |  | SS | SS |  |  |
| P2.B2.EMS.A.1230 |  | Termination of Feeders at Gear / B2 / South / 3970B | 15d | 2025-07-01 A | 2025-07-22 A | P2.B2.EMS.A.1220 | 100% | 2025-08-01 | 2025-08-21 |  |  | 80 | ! | ELEC | P2-5 | ELEC-2 |  |  | SS | SS |  |  |
| P2.B2.EMS.A.1190 |  | Install Doors & Hardware / B2 / South / 3970B | 5d | 2025-07-09 A | 2025-07-15 A | P2.B2.EMS.A.1280 | 100% | 2025-08-01 | 2025-08-07 |  |  | 40 | ! | DFH | P2-5 | DFH |  | AT29 | SS | SS |  |  |
| P2.B2.EMS.A.1240 |  | Testing & Inspection / B2 / South / 3970B | 9d | 2025-07-21 A | 2025-08-05 A | P2.B2.EMS.A.1230 | 100% | 2025-08-22 | 2025-09-04 |  |  | 80 | ! | ELEC | P2-5 | ELEC-2 |  |  | SS | SS |  |  |
| P2.B2.EMS.A.1110 |  | Paint Walls / B2 / South / 3970B | 5d | 2025-07-23 A | 2025-07-29 A | P2.B2.EMS.A.1070 | 100% | 2025-08-15 | 2025-08-21 |  |  | 40 | ! | PAINT | P2-5 | PAINT-1 |  |  | SS | SS |  |  |
| P2.B2.EMS.A.1070 |  | Fire Caulk MEPF Penetrations / B2 / South / 3970B | 5d | 2025-08-01 A | 2025-08-07 A | P2.B2.EMS.A.1260 | 100% |  |  |  |  | 40 | ! | FIRESTO | P2-5 | FIRESTO |  | AT48 | SS | SS |  |  |
| P2.B2.EMS.A.1130 |  | Lighting Install / B2 / South / 3970B | 5d | 2025-08-01 A | 2025-08-08 A | P2.B2.EMS.A.1240, P2.B2.EMS.A.1120 | 100% | 2025-08-15 | 2025-08-21 |  |  | 40 | ! | ELEC | P2-5 | ELEC-2 |  |  | SS | SS |  |  |
| P2.B2.EMS.A.1140 |  | Fire Alarm/Ceiling Device Install / B2 / South / 3970B | 5d | 2025-08-22 A | 2025-08-28 A | P2.B2.EMS.A.1130 | 100% |  |  |  |  | 40 | ! | FA | P2-5 | FA-1 |  |  | SS | SS |  |  |
| P2.B2.EMS.A.1120 |  | HVAC - GRD's / B2 / South / 3970B | 5d | 2025-10-27 A | 2025-10-31 A | P2.B2.EMS.A.1110 | 100% | 2025-12-01 | 2025-12-05 |  |  | 40 | ! | HVAC | P2-5 | HVAC | Harris |  | SS | SS | O |  |
| P2.B2.EMS.A.1150 |  | Prep Floor for Flooring / B2 / South / 3970B | 5d | 2025-11-10 A | 2025-11-14 A | P2.B2.EMS.A.1140 | 100% | 2025-12-08 | 2025-12-12 |  |  | 40 | ! | FLOOR | P2-5 | FLOOR |  |  | SS | SS |  |  |
| P2.B2.EMS.A.1160 |  | Flooring / B2 / South / 3970B | 5d | 2026-01-28 A | 2026-01-30 A | P2.B2.EMS.A.1150 | 100% | 2026-01-02 | 2026-01-08 |  |  | 40 | ! | FLOOR | P2-5 | FLOOR |  |  | SS | SS | O | Flooring before or after gear? |
| P2.B2.EMS.A.1250 |  | Energize SWGR B2-3970B / B2 / South / 3970B | 5d | 2026-04-01 | 2026-04-07 | P2.B2.ES.A.1250 SS, P2.B2.EMS.A.1160, P2.B2.ES.A.1250 FF, FRAG.001.1010 |  |  |  | 224d | 148d | 40 | ! | ELEC | P2-5 | ELEC-2 |  |  | SS | SS | O |  |

| ID | WBS | Activity | Duration | Start | Finish | Predecessors | Complete | Planned start | Planned finish | Temp Orig Dur | *NIH Resp Check* | Resp / SRLM | PHASE | RESP / Trade | Z.RESP | Testing Type | 744 | RESP UPD | Update Status | Posit |
| --- | --- | --- | --- | --- | --- | --- | --- | --- | --- | --- | --- | --- | --- | --- | --- | --- | --- | --- | --- | --- |
|  | 3 | **Electrical Emergency Room A - B2-3980** |  | 2024-10-14 | 2026-03-26 |  |  |  |  |  |  |  |  |  |  |  |  |  |  |  |
| P2.B2.EE.A.1180 |  | OH Conduit Install (EF) / B2 / South / 3980 | 20d | 2024-10-14 A | 2025-03-14 A | P2.B2.EE.A.1020 | 100% | 2025-03-31 | 2025-04-25 | 40 | ! | ELEC | P2-5 | ELEC-3 |  |  |  |  |  |  |
| P2.B2.EE.A.1000 |  | Layout - All Trades / B2 / South / 3980 | 1d | 2024-11-04 A | 2024-11-04 A | P2.B2.EMS.A.1000 | 100% | 2024-12-03 | 2024-12-03 | 40 | ! | R/I.OH | P2-5 | R/I.OH | Harris |  |  |  |  |  |
| P2.B2.EE.A.1010 |  | OH Structural Supports / B2 / South / 3980 | 5d | 2024-11-05 A | 2024-11-11 A | P2.BIM.B2.40.140, P2.B2.EE.A.1000 | 100% | 2024-12-04 | 2024-12-10 | 40 | ! | MISCMTL | P2-5 | MISCMTL |  | AT24 |  |  |  |  |
| P2.B2.EE.A.1090 |  | Hang-Tape-Finish / B2 / South / 3980 | 5d | 2025-01-09 A | 2025-02-14 A | P2.B2.EE.A.1080 | 100% | 2025-03-17 | 2025-03-21 | 40 | ! | GYP | P2-5 | GYP-1 |  |  |  |  |  |  |
| P2.B2.EE.A.1030 |  | CMU Dowels / B2 / South / 3980 | 5d | 2025-01-16 A | 2025-01-22 A | P2.B2.EMS.A.1030, P2.B2.EE.A.1010 | 100% | 2025-02-10 | 2025-02-14 | 40 | ! | CMU | P2-5 | CMU |  | AT4 |  |  |  |  |
| P2.B2.EE.A.1040 |  | CMU Walls / B2 / South / 3980 | 5d | 2025-01-23 A | 2025-01-29 A | P2.B2.EE.A.1030 | 100% |  |  | 40 | ! | CMU | P2-5 | CMU |  | AT3 |  |  |  |  |
| P2.B2.EE.A.1080 |  | In Wall Inspection / B2 / South / 3980 | 5d | 2025-02-03 A | 2025-02-07 A | P2.B2.EE.A.1060 FF, P2.B2.EE.A.1060 | 100% | 2025-03-10 | 2025-03-14 | 40 | ! | AHJ | P2-5 | AHJ |  |  |  |  |  |  |
| P2.B2.EE.A.1100 |  | Fire Stop Top of Wall / B2 / South / 3980 | 5d | 2025-02-14 A | 2025-02-15 A | P2.B2.EE.A.1090 FF | 100% | 2025-03-17 | 2025-03-21 | 40 | ! | FIRSTOP | P2-5 | FIRSTOP |  | AT47 |  |  |  |  |
| P2.B2.EE.A.1050 |  | Frame Partitions / B2 / South / 3980 | 5d | 2025-02-17 A | 2025-02-21 A | P2.B2.EE.A.1040, P2.B2.EMS.A.1050 | 100% | 2025-03-17 | 2025-03-21 | 40 | ! | GYP | P2-5 | GYP-1 |  |  |  |  |  |  |
| P2.B2.EE.A.1060 |  | In Wall MEPF Rough In / B2 / South / 3980 | 5d | 2025-02-24 A | 2025-02-28 A | P2.B2.EE.A.1050 | 100% | 2025-03-24 | 2025-03-28 | 40 | ! | R/I.IW | P2-5 | R/I.IW |  |  |  |  |  |  |
| P2.B2.EE.A.1190 |  | Install Horizontal Bus Duct / B2 / South / 3980 | 10d | 2025-03-14 A | 2025-04-04 A | P2.B2.EE.A.1180 | 100% | 2025-05-01 | 2025-05-14 | 40 | ! | ELEC | P2-5 | ELEC-2 |  |  |  |  |  |  |
| P2.B2.EE.A.1020 |  | OH Mechanical Install / B2 / South / 3980 | 5d | 2025-03-24 A | 2025-03-28 A | P2.B2.EE.A.1100 | 100% |  |  | 40 | ! | HVAC | P2-5 | HVAC | Harris |  |  |  |  |  |
| P2.B2.EE.A.1170 |  | Set Emergency SWGR B2-3980 / B2 / South / 3980 | 5d | 2025-05-12 A | 2025-05-27 A | P1.B2.03.290, P2.B2.EMS.A.1170, P2.B2.EE.A.1190, P2.B2.EE.A.1020 | 100% | 2025-06-16 | 2025-06-20 | 40 | ! | ELEC | P2-5 | ELEC-2 |  |  |  |  |  |  |
| P2.B2.EE.A.1210 |  | Pull Feeders / B2 / South / 3980 | 20d | 2025-06-02 A | 2025-06-30 A | P2.B2.EE.A.1290 | 100% | 2025-07-16 | 2025-08-12 | 40 | ! | ELEC | P2-5 | ELEC-2 |  |  | SS | SS |  |  |
| P2.B2.EE.A.1290 |  | OH Conduit and Busduct tie-in to SWGR / B2 / South / 3980 | 10d | 2025-06-02 A | 2025-06-13 A | P2.B2.EE.A.1170 | 100% | 2025-07-01 | 2025-07-15 | 40 | ! | ELEC | P2-5 | ELEC-3 |  |  | SS | SS |  |  |
| P2.B2.EE.A.1260 |  | Frame Leave Out Partitions / B2 / South / 3980 | 5d | 2025-06-09 A | 2025-06-13 A | P2.B2.EE.A.1170 | 100% | 2025-07-09 | 2025-07-15 | 40 | ! | GYP | P2-5 | GYP-1 |  |  | SS | SS |  |  |
| P2.B2.EE.A.1220 |  | Pull Medium Voltage Feeders / B2 / South / 3980 | 10d | 2025-06-16 A | 2025-06-30 A | P2.B2.EE.A.1210 | 100% | 2025-08-13 | 2025-08-26 | 80 | ! | ELEC | P2-5 | ELEC-2 |  |  | SS | SS |  |  |
| P2.B2.EE.A.1230 |  | Termination of Feeders at Gear / B2 / South / 3980 | 15d | 2025-06-16 A | 2025-06-30 A | P2.B2.EE.A.1220 | 100% | 2025-08-27 | 2025-09-17 | 80 | ! | ELEC | P2-5 | ELEC-2 |  |  | SS | SS |  |  |
| P2.B2.EE.A.1270 |  | Hang-Tape-Finish Leave Out Walls / B2 / South / 3980 | 5d | 2025-07-01 A | 2025-07-08 A | P2.B2.EE.A.1260 | 100% | 2025-08-01 | 2025-08-07 | 40 | ! | GYP | P2-5 | GYP-1 |  |  | SS | SS |  |  |
| P2.B2.EE.A.1200 |  | Install Doors & Hardware / B2 / South / 3980 | 5d | 2025-07-09 A | 2025-07-15 A | P2.B2.EE.A.1270 | 100% | 2025-08-08 | 2025-08-14 | 40 | ! | DFH | P2-5 | DFH |  | AT29 | SS | SS |  |  |
| P2.B2.EE.A.1280 |  | Mechanical Ductwork Install / B2 / South / 3980 | 5d | 2025-07-16 A | 2025-07-22 A | P2.B2.EE.A.1200 | 100% | 2025-08-15 | 2025-08-21 | 40 | ! | HVAC | P2-5 | HVAC | Harris |  | SS | SS |  |  |
| P2.B2.EE.A.1110 |  | Paint Walls / B2 / South / 3980 | 5d | 2025-07-21 A | 2025-07-25 A | P2.B2.EE.A.1070 | 100% | 2025-08-29 | 2025-09-05 | 40 | ! | PAINT | P2-5 | PAINT-1 |  |  | SS | SS |  |  |
| P2.B2.EE.A.1070 |  | Fire Caulk MEPF Penetrations / B2 / South / 3980 | 5d | 2025-07-23 A | 2025-08-28 A | P2.B2.EE.A.1280 | 100% | 2025-08-22 | 2025-08-28 | 40 | ! | FIRESTO | P2-5 | FIRESTO |  | AT48 | SS | SS | O |  |
| P2.B2.EE.A.1130 |  | Lighting Install / B2 / South / 3980 | 5d | 2025-08-01 A | 2025-08-08 A | P2.B2.EE.A.1240, P2.B2.EE.A.1120 | 100% | 2025-08-15 | 2025-08-21 | 40 | ! | ELEC | P2-5 | ELEC-2 |  |  | SS | SS |  |  |
| P2.B2.EE.A.1140 |  | Fire Alarm/Ceiling Device Install / B2 / South / 3980 | 5d | 2025-08-22 A | 2025-08-28 A | P2.B2.EE.A.1130 | 100% |  |  | 40 | ! | FA | P2-5 | FA-1 |  |  | SS | SS |  |  |
| P2.B2.EE.A.1120 |  | HVAC - GRD's / B2 / South / 3980 | 5d | 2025-10-27 A | 2025-10-31 A | P2.B2.EE.A.1110 | 100% | 2025-12-01 | 2025-12-05 | 40 | ! | HVAC | P2-5 | HVAC | Harris |  | SS | SS | O |  |
| P2.B2.EE.A.1240 |  | Testing & Inspection / B2 / South / 3980 | 10d | 2025-11-03 A | 2025-11-14 A | P2.B2.EE.A.1230 | 100% | 2025-12-01 | 2025-12-12 | 80 | ! | ELEC | P2-5 | ELEC-2 |  |  | SS | SS |  |  |
| P2.B2.EE.A.1150 |  | Prep Floor for Flooring / B2 / South / 3980 | 5d | 2025-11-17 A | 2025-11-21 A | P2.B2.EE.A.1140 | 100% | 2025-12-15 | 2025-12-19 | 40 | ! | FLOOR | P2-5 | FLOOR |  |  | SS | SS |  |  |
| P2.B2.EE.A.1160 |  | Flooring / B2 / South / 3980 | 5d | 2026-01-28 A | 2026-01-30 A | P2.B2.EE.A.1150 | 100% | 2026-01-02 | 2026-01-08 | 40 | ! | FLOOR | P2-5 | FLOOR |  |  | SS | SS | O | Flooring before or after gear? |
| P2.B2.EE.A.1250 |  | Energize SWGR B2-3980 / B2 / South / 3980 | 5d | 2026-03-26 A | 2026-03-26 A | P2.B2.EE.A.1160 | 100% | 2026-03-20 | 2026-03-26 | 40 | ! | ELEC | P2-5 | ELEC-2 |  |  | SS | SS | O |  |

| ID | WBS | Activity | Duration | Start | Finish | Predecessors | Complete | Planned start | Planned finish | Temp Orig Dur | *NIH Resp Check* | Resp / SRLM | PHASE | Z.RESP | RESP / Trade | Testing Type | 744 | RESP UPD | Update Status | Posit |
| --- | --- | --- | --- | --- | --- | --- | --- | --- | --- | --- | --- | --- | --- | --- | --- | --- | --- | --- | --- | --- |
|  | 4 | **Electrical Med Volt Switchgear Room A - B2-3940A** |  | 2024-10-14 | 2026-03-20 |  |  |  |  |  |  |  |  |  |  |  |  |  |  |  |
| P2.B2.EMVS.A.1280 |  | Mechanical Ductwork Install / B2 / South / 3940A | 5d | 2024-10-14 A | 2025-02-27 A | P2.B2.EMVS.A.1200 | 100% | 2025-06-30 | 2025-07-07 | 40 | ! | HVAC | P2-5 | Harris | HVAC |  |  |  |  |  |
| P2.B2.EMVS.A.1000 |  | Layout - All Trades / B2 / South / 3940A | 1d | 2024-11-04 A | 2024-11-04 A | P2.B2.EE.A.1000 | 100% | 2024-12-04 | 2024-12-04 | 40 | ! | R/I.OH | P2-5 | Harris | R/I.OH |  |  |  |  |  |
| P2.B2.EMVS.A.1010 |  | OH Structural Supports / B2 / South / 3940A | 5d | 2024-11-05 A | 2024-11-11 A | P2.BIM.B2.40.140, P2.B2.EMVS.A.1000 | 100% | 2024-12-05 | 2024-12-11 | 40 | ! | MISCMTL | P2-5 |  | MISCMTL | AT24 |  |  |  |  |
| P2.B2.EMVS.A.1180 |  | OH Conduit (EF) Install / B2 / South / 3940A | 20d | 2024-12-10 A | 2025-03-14 A | P2.B2.EMVS.A.1020 | 100% | 2025-05-01 | 2025-05-29 | 40 | ! | ELEC | P2-5 |  | ELEC-3 |  |  |  |  |  |
| P2.B2.EMVS.A.1030 |  | CMU Dowels / B2 / South / 3940A | 5d | 2025-01-23 A | 2025-01-29 A | P2.B2.EE.A.1030, P2.B2.EMVS.A.1010 | 100% | 2025-02-10 | 2025-02-14 | 40 | ! | CMU | P2-5 |  | CMU | AT4 |  |  |  |  |
| P2.B2.EMVS.A.1040 |  | CMU Walls / B2 / South / 3940A | 5d | 2025-01-30 A | 2025-02-04 A | P2.B2.EMVS.A.1030 | 100% | 2025-02-17 | 2025-02-21 | 40 | ! | CMU | P2-5 |  | CMU | AT3 |  |  |  |  |
| P2.B2.EMVS.A.1060 |  | In Wall MEPF Rough In / B2 / South / 3940A | 5d | 2025-02-10 A | 2025-02-25 A | P2.B2.EMVS.A.1050 | 100% | 2025-03-10 | 2025-03-14 | 40 | ! | R/I.IW | P2-5 |  | R/I.IW |  |  |  |  |  |
| P2.B2.EMVS.A.1080 |  | In Wall Inspection / B2 / South / 3940A | 5d | 2025-02-23 A | 2025-02-27 A | P2.B2.EMVS.A.1060 | 100% | 2025-03-17 | 2025-03-21 | 40 | ! | AHJ | P2-5 |  | AHJ |  |  |  |  |  |
| P2.B2.EMVS.A.1050 |  | Frame Partitions / B2 / South / 3940A | 5d | 2025-02-24 A | 2025-02-28 A | P2.B2.EMVS.A.1040, P2.B2.EE.A.1050 | 100% | 2025-03-24 | 2025-03-28 | 40 | ! | GYP | P2-5 |  | GYP-1 |  |  |  |  |  |
| P2.B2.EMVS.A.1090 |  | Hang-Tape-Finish / B2 / South / 3940A | 5d | 2025-02-28 A | 2025-03-04 A | P2.B2.EMVS.A.1080 | 100% | 2025-03-24 | 2025-03-28 | 40 | ! | GYP | P2-5 |  | GYP-1 |  |  |  |  |  |
| P2.B2.EMVS.A.1100 |  | Fire Stop Top of Wall / B2 / South / 3940A | 5d | 2025-02-28 A | 2025-03-04 A | P2.B2.EMVS.A.1090 FF | 100% | 2025-03-24 | 2025-03-28 | 40 | ! | FIRSTOP | P2-5 |  | FIRSTOP | AT47 |  |  |  |  |
| P2.B2.EMVS.A.1020 |  | OH Mechanical Install / B2 / South / 3940A | 5d | 2025-03-05 A | 2025-03-10 A | P2.B2.EMVS.A.1100 | 100% | 2025-03-31 | 2025-04-04 | 40 | ! | HVAC | P2-5 | Harris | HVAC |  |  |  |  |  |
| P2.B2.EMVS.A.1190 |  | Install Horizontal Bus Duct / B2 / South / 3940A | 10d | 2025-03-14 A | 2025-04-04 A | P2.B2.EMVS.A.1180 | 100% | 2025-05-30 | 2025-06-12 | 40 | ! | ELEC | P2-5 |  | ELEC-2 |  |  |  |  |  |
| P2.B2.EMVS.A.1170 |  | Set SWGR B2-3940A / B2 / South / 3940A | 5d | 2025-03-24 A | 2025-05-09 A | P1.B2.03.290, BP1.261.3.160, P2.B2.EMVS.A.1190, P2.B2.EMVS.A.1020 | 100% | 2025-06-02 | 2025-06-06 | 40 | ! | ELEC | P2-5 |  | ELEC-2 |  |  |  |  |  |
| P2.B2.EMVS.A.1290 |  | OH Conduit and Busduct tie-in to SWGR / B2 / South / 3940A | 10d | 2025-04-21 A | 2025-04-28 A | P2.B2.EMVS.A.1170 | 100% | 2025-06-09 | 2025-06-20 | 40 | ! | ELEC | P2-5 |  | ELEC-3 |  |  |  |  |  |
| P2.B2.EMVS.A.1210 |  | Pull Feeders / B2 / South / 3940A | 20d | 2025-05-30 A | 2025-06-06 A | P2.B2.EMVS.A.1290 | 100% | 2025-06-23 | 2025-07-21 | 40 | ! | ELEC | P2-5 |  | ELEC-2 |  | SS | SS |  |  |
| P2.B2.EMVS.A.1260 |  | Frame Leave Out Partitions / B2 / South / 3940A | 5d | 2025-05-30 A | 2025-09-17 A | P2.B2.EMVS.A.1170 | 100% | 2025-06-09 | 2025-06-13 | 40 | ! | GYP | P2-5 |  | GYP-1 |  | SS | SS | O |  |
| P2.B2.EMVS.A.1270 |  | Hang-Tape-Finish Leave Out Walls / B2 / South / 3940A | 5d | 2025-05-30 A | 2025-09-30 A | P2.B2.EMVS.A.1260 | 100% | 2025-06-16 | 2025-06-20 | 40 | ! | GYP | P2-5 |  | GYP-1 |  | SS | SS | O |  |
| P2.B2.EMVS.A.1220 |  | Pull Medium Voltage Feeders / B2 / South / 3940A | 5d | 2025-06-02 A | 2025-06-06 A | BP1.261.3.150, P2.B2.EMVS.A.1210 | 100% | 2025-07-29 | 2025-08-04 | 80 | ! | ELEC | P2-5 |  | ELEC-2 |  | SS | SS |  |  |
| P2.B2.EMVS.A.1230 |  | Termination of Feeders at Gear / B2 / South / 3940A | 15d | 2025-06-16 A | 2025-08-29 A | P2.B2.EMVS.A.1220 | 100% | 2025-08-05 | 2025-08-25 | 80 | ! | ELEC | P2-5 |  | ELEC-2 |  | SS | SS |  |  |
| P2.B2.EMVS.A.1200 |  | Install Doors & Hardware / B2 / South / 3940A | 5d | 2025-07-15 A | 2025-07-21 A | P2.B2.EMVS.A.1270 | 100% | 2025-08-14 | 2025-08-20 | 40 | ! | DFH | P2-5 |  | DFH | AT29 | SS | SS |  |  |
| P2.B2.EMVS.A.1240 |  | Testing & Inspection / B2 / South / 3940A | 10d | 2025-07-21 A | 2025-08-29 A | P2.B2.EMVS.A.1230 | 100% | 2025-08-08 | 2025-08-21 | 80 | ! | ELEC | P2-5 |  | ELEC-2 |  | SS | SS |  |  |
| P2.B2.EMVS.A.1130 |  | Lighting Install / B2 / South / 3940A | 5d | 2025-08-01 A | 2025-08-08 A | P2.B2.EMVS.A.1240, P2.B2.EMVS.A.1120 | 100% | 2025-09-02 | 2025-09-08 | 40 | ! | ELEC | P2-5 |  | ELEC-2 |  | SS | SS |  |  |
| P2.B2.EMVS.A.1070 |  | Fire Caulk MEPF Penetrations / B2 / South / 3940A | 5d | 2025-08-11 A | 2025-08-15 A | P2.B2.EMVS.A.1280 | 100% |  |  | 40 | ! | FIRESTO | P2-5 |  | FIRESTO | AT48 | SS | SS |  |  |
| P2.B2.EMVS.A.1110 |  | Paint Walls / B2 / South / 3940A | 5d | 2025-08-18 A | 2025-08-22 A | P2.B2.EMVS.A.1070 | 100% |  |  | 40 | ! | PAINT | P2-5 |  | PAINT-1 |  | SS | SS |  |  |
| P2.B2.EMVS.A.1140 |  | Fire Alarm/Ceiling Device Install / B2 / South / 3940A | 5d | 2025-08-22 A | 2025-08-25 A | P2.B2.EMVS.A.1130 | 100% | 2025-09-09 | 2025-09-15 | 40 | ! | FA | P2-5 |  | FA-1 |  | SS | SS |  |  |
| P2.B2.EMVS.A.1120 |  | HVAC - GRD's / B2 / South / 3940A | 5d | 2025-10-27 A | 2025-10-31 A | P2.B2.EMVS.A.1110 | 100% | 2025-12-01 | 2025-12-05 | 40 | ! | HVAC | P2-5 | Harris | HVAC |  | SS | SS | O |  |
| P2.B2.EMVS.A.1150 |  | Prep Floor for Flooring / B2 / South / 3940A | 5d | 2025-11-10 A | 2025-11-14 A | P2.B2.EMVS.A.1140 | 100% | 2025-12-08 | 2025-12-12 | 40 | ! | FLOOR | P2-5 |  | FLOOR |  | SS | SS |  |  |
| P2.B2.EMVS.A.1160 |  | Flooring / B2 / South / 3940A | 5d | 2026-01-28 A | 2026-01-30 A | P2.B2.EMVS.A.1150 | 100% | 2026-01-02 | 2026-01-08 | 40 | ! | FLOOR | P2-5 |  | FLOOR |  | SS | SS | O | Flooring before or after gear? |
| P2.B2.EMVS.A.1250 |  | Energize SWGR B2-3940A / B2 / South / 3940A | 5d | 2026-03-20 A | 2026-03-20 A | P2.B2.EMVS.A.1160, FRAG.001.1010 | 100% | 2026-03-13 | 2026-03-19 | 40 | ! | ELEC | P2-5 |  | ELEC-2 |  | SS | SS | O |  |

| ID | WBS | Activity | Duration | Start | Finish | Predecessors | Complete | Planned start | Planned finish | Temp Orig Dur | *NIH Resp Check* | Resp / SRLM | PHASE | Z.RESP | RESP / Trade | Testing Type | 744 | RESP UPD | Update Status | Posit |
| --- | --- | --- | --- | --- | --- | --- | --- | --- | --- | --- | --- | --- | --- | --- | --- | --- | --- | --- | --- | --- |
|  | 5 | **Electrical Med Volt Switchgear Room B - B2-3940B** |  | 2024-10-14 | 2026-03-20 |  |  |  |  |  |  |  |  |  |  |  |  |  |  |  |
| P2.B2.EMVS.B.1020 |  | OH Mechanical Install / B2 / South / 3940B | 5d | 2024-10-14 A | 2025-03-14 A | P2.B2.EMVS.B.1100 | 100% | 2025-05-01 | 2025-05-07 | 40 | ! | HVAC | P2-5 | Harris | HVAC |  |  |  |  |  |
| P2.B2.EMVS.B.1180 |  | OH Conduit (EF) Install / B2 / South / 3940B | 20d | 2024-10-14 A | 2025-03-14 A | P2.B2.EMVS.B.1020 | 100% | 2025-05-08 | 2025-06-05 | 40 | ! | ELEC | P2-5 |  | ELEC-3 |  |  |  |  |  |
| P2.B2.EMVS.B.1000 |  | Layout - All Trades / B2 / South / 3940B | 1d | 2024-11-04 A | 2024-11-04 A | P2.B2.EMVS.A.1000 | 100% | 2024-12-05 | 2024-12-05 | 40 | ! | R/I.OH | P2-5 | Harris | R/I.OH |  |  |  |  |  |
| P2.B2.EMVS.B.1010 |  | OH Structural Supports / B2 / South / 3940B | 5d | 2024-11-05 A | 2024-11-11 A | P2.BIM.B2.40.140, P2.B2.EMVS.B.1000 | 100% | 2024-12-06 | 2024-12-12 | 40 | ! | MISCMTL | P2-5 |  | MISCMTL | AT24 |  |  |  |  |
| P2.B2.EMVS.B.1050 |  | Frame Partitions / B2 / South / 3940B | 5d | 2024-12-12 A | 2025-02-10 A | P2.B2.EMVS.A.1050, P2.B2.EMVS.B.1040 | 100% | 2025-03-10 | 2025-03-14 | 40 | ! | GYP | P2-5 |  | GYP-1 |  |  |  |  |  |
| P2.B2.EMVS.B.1060 |  | In Wall MEPF Rough In / B2 / South / 3940B | 5d | 2024-12-15 A | 2025-02-09 A | P2.B2.EMVS.B.1050 | 100% | 2025-03-17 | 2025-03-21 | 40 | ! | R/I.IW | P2-5 |  | R/I.IW |  |  |  |  |  |
| P2.B2.EMVS.B.1080 |  | In Wall Inspection / B2 / South / 3940B | 5d | 2024-12-15 A | 2025-02-10 A | P2.B2.EMVS.B.1060 | 100% | 2025-03-24 | 2025-03-28 | 40 | ! | AHJ | P2-5 |  | AHJ |  |  |  |  |  |
| P2.B2.EMVS.B.1090 |  | Hang-Tape-Finish / B2 / South / 3940B | 5d | 2025-01-09 A | 2025-02-27 A | P2.B2.EMVS.B.1080 | 100% | 2025-03-31 | 2025-04-04 | 40 | ! | GYP | P2-5 |  | GYP-1 |  |  |  |  |  |
| P2.B2.EMVS.B.1030 |  | CMU Dowels / B2 / South / 3940B | 5d | 2025-01-30 A | 2025-02-05 A | P2.B2.EMVS.A.1030, P2.B2.EMVS.B.1010 | 100% | 2025-02-10 | 2025-02-14 | 40 | ! | CMU | P2-5 |  | CMU | AT4 |  |  |  |  |
| P2.B2.EMVS.B.1040 |  | CMU Walls / B2 / South / 3940B | 5d | 2025-02-06 A | 2025-02-12 A | P2.B2.EMVS.B.1030 | 100% | 2025-03-06 | 2025-03-12 | 40 | ! | CMU | P2-5 |  | CMU | AT3 |  |  |  |  |
| P2.B2.EMVS.B.1100 |  | Fire Stop Top of Wall / B2 / South / 3940B | 5d | 2025-02-15 A | 2025-02-27 A | P2.B2.EMVS.B.1090 FF | 100% | 2025-03-31 | 2025-04-04 | 40 | ! | FIRSTOP | P2-5 |  | FIRSTOP | AT47 |  |  |  |  |
| P2.B2.EMVS.B.1190 |  | Install Horizontal Bus Duct / B2 / South / 3940B | 11d | 2025-03-14 A | 2025-04-04 A | P2.B2.EMVS.B.1180 | 100% | 2025-06-02 | 2025-06-16 | 40 | ! | ELEC | P2-5 |  | ELEC-2 |  |  |  |  |  |
| P2.B2.EMVS.B.1170 |  | Set SWGR B2-3940B / B2 / South / 3940B | 5d | 2025-03-28 A | 2025-05-09 A | P1.B2.03.290, P2.B2.EMVS.A.1170, P2.B2.EMVS.B.1020, P2.B2.EMVS.B.1190 | 100% | 2025-06-17 | 2025-06-23 | 40 | ! | ELEC | P2-5 |  | ELEC-2 |  |  |  |  |  |
| P2.B2.EMVS.B.1280 |  | Mechanical Ductwork Install / B2 / South / 3940B | 5d | 2025-04-01 A | 2025-05-01 A | P2.B2.EMVS.B.1200 | 100% | 2025-07-22 | 2025-07-28 | 40 | ! | HVAC | P2-5 | Harris | HVAC |  | SS | SS |  |  |
| P2.B2.EMVS.B.1290 |  | OH Conduit and Busduct tie-in to SWGR / B2 / South / 3940B | 10d | 2025-04-21 A | 2025-04-28 A | P2.B2.EMVS.B.1170 | 100% | 2025-06-24 | 2025-07-08 | 40 | ! | ELEC | P2-5 |  | ELEC-3 |  |  |  |  |  |
| P2.B2.EMVS.B.1210 |  | Pull Feeders / B2 / South / 3940B | 20d | 2025-04-28 A | 2025-05-05 A | P2.B2.EMVS.B.1290 | 100% | 2025-07-01 | 2025-07-29 | 40 | ! | ELEC | P2-5 |  | ELEC-2 |  | SS | SS |  |  |
| P2.B2.EMVS.B.1220 |  | Pull Medium Voltage Feeders / B2 / South / 3940B | 5d | 2025-05-05 A | 2025-05-09 A | P2.B2.EMVS.B.1210 | 100% | 2025-07-30 | 2025-08-05 | 80 | ! | ELEC | P2-5 |  | ELEC-2 |  | SS | SS |  |  |
| P2.B2.EMVS.B.1260 |  | Frame Leave Out Partitions / B2 / South / 3940B | 5d | 2025-05-30 A | 2025-07-03 A | P2.B2.EMVS.B.1170 | 100% | 2025-06-24 | 2025-06-30 | 40 | ! | GYP | P2-5 |  | GYP-1 |  | SS | SS |  |  |
| P2.B2.EMVS.B.1230 |  | Termination of Feeders at Gear / B2 / South / 3940B | 5d | 2025-07-01 A | 2025-08-29 A | P2.B2.EMVS.B.1220 | 100% | 2025-07-01 | 2025-07-08 | 80 | ! | ELEC | P2-5 |  | ELEC-2 |  | SS | SS |  |  |
| P2.B2.EMVS.B.1270 |  | Hang-Tape-Finish Leave Out Walls / B2 / South / 3940B | 5d | 2025-07-07 A | 2025-07-11 A | P2.B2.EMVS.B.1260 | 100% | 2025-08-06 | 2025-08-12 | 40 | ! | GYP | P2-5 |  | GYP-1 |  | SS | SS |  |  |
| P2.B2.EMVS.B.1200 |  | Install Doors & Hardware / B2 / South / 3940B | 5d | 2025-07-14 A | 2025-07-18 A | P2.B2.EMVS.B.1270 | 100% | 2025-08-13 | 2025-08-19 | 40 | ! | DFH | P2-5 |  | DFH | AT29 | SS | SS |  |  |
| P2.B2.EMVS.B.1070 |  | Fire Caulk MEPF Penetrations / B2 / South / 3940B | 5d | 2025-07-21 A | 2025-08-25 A | P2.B2.EMVS.B.1280 | 100% | 2025-08-20 | 2025-08-26 | 40 | ! | FIRESTO | P2-5 |  | FIRESTO | AT48 | SS | SS |  |  |
| P2.B2.EMVS.B.1240 |  | Testing & Inspection / B2 / South / 3940B | 10d | 2025-07-21 A | 2025-11-04 A | P2.B2.EMVS.B.1230 | 100% | 2025-08-22 | 2025-09-05 | 80 | ! | ELEC | P2-5 |  | ELEC-2 |  | SS | SS |  |  |
| P2.B2.EMVS.B.1130 |  | Lighting Install / B2 / South / 3940B | 5d | 2025-08-01 A | 2025-08-08 A | P2.B2.EMVS.B.1240, P2.B2.EMVS.B.1120 | 100% | 2025-08-20 | 2025-08-26 | 40 | ! | ELEC | P2-5 |  | ELEC-2 |  | SS | SS |  |  |
| P2.B2.EMVS.B.1110 |  | Paint Walls / B2 / South / 3940B | 5d | 2025-08-06 A | 2025-08-12 A | P2.B2.EMVS.B.1070 | 100% |  |  | 40 | ! | PAINT | P2-5 |  | PAINT-1 |  | SS | SS |  |  |
| P2.B2.EMVS.B.1140 |  | Fire Alarm/Ceiling Device Install / B2 / South / 3940B | 5d | 2025-08-18 A | 2025-08-22 A | P2.B2.EMVS.B.1130 | 100% | 2025-08-27 | 2025-09-03 | 40 | ! | FA | P2-5 |  | FA-1 |  | SS | SS |  |  |
| P2.B2.EMVS.B.1120 |  | HVAC - GRD's / B2 / South / 3940B | 5d | 2025-10-27 A | 2025-10-31 A | P2.B2.EMVS.B.1110 | 100% | 2025-12-01 | 2025-12-05 | 40 | ! | HVAC | P2-5 | Harris | HVAC |  | SS | SS | O |  |
| P2.B2.EMVS.B.1150 |  | Prep Floor for Flooring / B2 / South / 3940B | 5d | 2025-11-10 A | 2025-11-14 A | P2.B2.EMVS.B.1140 | 100% | 2025-12-08 | 2025-12-12 | 40 | ! | FLOOR | P2-5 |  | FLOOR |  | SS | SS |  |  |
| P2.B2.EMVS.B.1160 |  | Flooring / B2 / South / 3940B | 5d | 2026-01-28 A | 2026-01-30 A | P2.B2.EMVS.B.1150 | 100% | 2026-01-02 | 2026-01-08 | 40 | ! | FLOOR | P2-5 |  | FLOOR |  | SS | SS | O | Flooring before or after gear? |
| P2.B2.EMVS.B.1250 |  | Energize SWGR B2-3940B / B2 / South / 3940B | 5d | 2026-03-16 A | 2026-03-20 A | P2.B2.EMVS.A.1250, P2.B2.EMVS.B.1160, FRAG.001.1010 | 100% | 2026-04-01 | 2026-04-07 | 40 | ! | ELEC | P2-5 |  | ELEC-2 |  | SS | SS | O |  |

| ID | WBS | Activity | Duration | Start | Finish | Predecessors | Complete | Planned start | Planned finish | Temp Orig Dur | *NIH Resp Check* | Resp / SRLM | PHASE | Z.RESP | RESP / Trade | Testing Type | 744 | RESP UPD | Update Status | Posit |
| --- | --- | --- | --- | --- | --- | --- | --- | --- | --- | --- | --- | --- | --- | --- | --- | --- | --- | --- | --- | --- |
|  | 9 | **Emergency Swtichgear Room A - B2-3920A** |  | 2024-10-14 | 2026-03-24 |  |  |  |  |  |  |  |  |  |  |  |  |  |  |  |
| P2.B2.EMS.B.1020 |  | OH Mechanical Install / B2 / North / 3920A | 5d | 2024-10-14 A | 2025-04-30 A | P2.B2.EMS.B.1100 | 100% | 2025-05-22 | 2025-05-29 | 40 | ! | R/I.OH | P2-5 | Harris | R/I.OH |  |  |  |  |  |
| P2.B2.EMS.B.1180 |  | OH Conduit (EF) Install / B2 / North / 3920A | 20d | 2024-10-14 A | 2025-03-18 A | P2.B2.EMS.B.1020 | 100% | 2025-05-30 | 2025-06-26 | 40 | ! | ELEC | P2-5 |  | ELEC-3 |  |  |  |  |  |
| P2.B2.EMS.B.1000 |  | Layout - All Trades / B2 / North / 3920A | 1d | 2024-11-11 A | 2024-11-11 A | P2.B2.EE.B.1000 | 100% | 2024-12-10 | 2024-12-10 | 40 | ! | R/I.OH | P2-5 | Harris | R/I.OH |  |  |  |  |  |
| P2.B2.EMS.B.1010 |  | OH Structural Supports / B2 / North / 3920A | 5d | 2024-11-12 A | 2024-11-18 A | P2.B2.EMS.B.1000, P2.BIM.B2.40.140 | 100% | 2024-12-11 | 2024-12-17 | 40 | ! | MISCMTL | P2-5 |  | MISCMTL | AT24 |  |  |  |  |
| P2.B2.EMS.B.1030 |  | CMU Dowels / B2 / North / 3920A | 5d | 2024-12-16 A | 2024-12-20 A | P2.B2.EMS.B.1010, P2.B2.EE.B.1030 | 100% | 2025-03-06 | 2025-03-12 | 40 | ! | CMU | P2-5 |  | CMU | AT4 |  |  |  |  |
| P2.B2.EMS.B.1040 |  | CMU Walls / B2 / North / 3920A | 5d | 2024-12-23 A | 2024-12-27 A | P2.B2.EMS.B.1030 | 100% | 2025-03-13 | 2025-03-19 | 40 | ! | CMU | P2-5 |  | CMU | AT3 |  |  |  |  |
| P2.B2.EMS.B.1050 |  | Frame Partitions / B2 / North / 3920A | 5d | 2024-12-24 A | 2025-02-03 A | P2.B2.EMS.B.1040, P2.B2.EE.B.1050 | 100% | 2025-03-31 | 2025-04-04 | 40 | ! | GYP | P2-5 |  | GYP-1 |  |  |  |  |  |
| P2.B2.EMS.B.1060 |  | In Wall MEPF Rough In / B2 / North / 3920A | 5d | 2025-02-03 A | 2025-02-10 A | P2.B2.EMS.B.1050 | 100% | 2025-05-01 | 2025-05-07 | 40 | ! | R/I.IW | P2-5 |  | R/I.IW |  |  |  |  |  |
| P2.B2.EMS.B.1080 |  | In Wall Inspection / B2 / North / 3920A | 5d | 2025-02-03 A | 2025-02-10 A | P2.B2.EMS.B.1060 | 100% | 2025-05-08 | 2025-05-14 | 40 | ! | AHJ | P2-5 |  | AHJ |  |  |  |  |  |
| P2.B2.EMS.B.1090 |  | Hang-Tape-Finish / B2 / North / 3920A | 5d | 2025-02-03 A | 2025-02-10 A | P2.B2.EMS.B.1080 | 100% | 2025-05-15 | 2025-05-21 | 40 | ! | GYP | P2-5 |  | GYP-1 |  |  |  |  |  |
| P2.B2.EMS.B.1100 |  | Fire Stop Top of Wall / B2 / North / 3920A | 5d | 2025-02-03 A | 2025-02-10 A | P2.B2.EMS.B.1090 FF | 100% | 2025-05-15 | 2025-05-21 | 40 | ! | FIRSTOP | P2-5 |  | FIRSTOP | AT47 |  |  |  |  |
| P2.B2.EMS.B.1190 |  | Install Horizontal Bus Duct / B2 / North / 3920A | 10d | 2025-03-25 A | 2025-04-04 A | P2.B2.EMS.B.1180 | 100% | 2025-06-02 | 2025-06-13 | 40 | ! | ELEC | P2-5 |  | ELEC-2 |  |  |  |  |  |
| P2.B2.EMS.B.1280 |  | Mechanical Ductwork Install / B2 / North / 3920A | 5d | 2025-04-21 A | 2025-05-01 A | P2.B2.EMS.B.1200 | 100% | 2025-07-30 | 2025-08-05 | 40 | ! | R/I.OH | P2-5 | Harris | R/I.OH |  | SS | SS |  |  |
| P2.B2.EMS.B.1290 |  | OH Conduit and Busduct tie-in to SWGR / B2 / North / 3920A | 10d | 2025-05-05 A | 2025-05-30 A | P2.B2.EMS.B.1170 | 100% | 2025-06-23 | 2025-07-07 | 40 | ! | ELEC | P2-5 |  | ELEC-3 |  |  |  |  |  |
| P2.B2.EMS.B.1170 |  | Set Emergency SWGR B2-3920A / B2 / North / 3920A | 5d | 2025-06-02 A | 2025-06-06 A | P2.B2.EMS.B.1020, P2.B2.EMS.B.1190, P1.B2.03.290, BP1.261.3.110, BP1.261.3.120 SS | 100% | 2025-07-01 | 2025-07-08 | 40 | ! | ELEC | P2-5 |  | ELEC-2 |  | SS | SS |  |  |
| P2.B2.EMS.B.1210 |  | Pull Feeders / B2 / North / 3920A | 20d | 2025-06-23 A | 2025-08-29 A | P2.B2.EMS.B.1290 | 100% | 2025-07-09 | 2025-08-05 | 40 | ! | ELEC | P2-5 |  | ELEC-2 |  | SS | SS |  |  |
| P2.B2.EMS.B.1260 |  | Frame Leave Out Partitions / B2 / North / 3920A | 5d | 2025-07-01 A | 2025-07-08 A | P2.B2.EMS.B.1170 | 100% | 2025-08-01 | 2025-08-07 | 40 | ! | GYP | P2-5 |  | GYP-1 |  | SS | SS |  |  |
| P2.B2.EMS.B.1270 |  | Hang-Tape-Finish Leave Out Walls / B2 / North / 3920A | 5d | 2025-07-09 A | 2025-07-15 A | P2.B2.EMS.B.1260 | 100% | 2025-08-08 | 2025-08-14 | 40 | ! | GYP | P2-5 |  | GYP-1 |  | SS | SS |  |  |
| P2.B2.EMS.B.1200 |  | Install Doors & Hardware / B2 / North / 3920A | 5d | 2025-07-16 A | 2025-07-22 A | P2.B2.EMS.B.1270 | 100% | 2025-08-15 | 2025-08-21 | 40 | ! | DFH | P2-5 |  | DFH | AT29 | SS | SS |  |  |
| P2.B2.EMS.B.1070 |  | Fire Caulk MEPF Penetrations / B2 / North / 3920A | 5d | 2025-07-21 A | 2025-08-05 A | P2.B2.EMS.B.1280 | 100% | 2025-08-22 | 2025-08-28 | 40 | ! | FIRESTO | P2-5 |  | FIRESTO | AT48 | SS | SS |  |  |
| P2.B2.EMS.B.1220 |  | Pull Medium Voltage Feeders / B2 / North / 3920A | 5d | 2025-07-23 A | 2025-08-29 A | P2.B2.EMS.B.1210 | 100% | 2025-08-22 | 2025-08-28 | 80 | ! | ELEC | P2-5 |  | ELEC-2 |  | SS | SS |  |  |
| P2.B2.EMS.B.1230 |  | Termination of Feeders at Gear / B2 / North / 3920A | 15d | 2025-07-30 A | 2025-08-29 A | P2.B2.EMS.B.1220 | 100% | 2025-08-29 | 2025-09-19 | 80 | ! | ELEC | P2-5 |  | ELEC-2 |  | SS | SS |  |  |
| P2.B2.EMS.B.1130 |  | Lighting Install / B2 / North / 3920A | 5d | 2025-08-01 A | 2025-08-08 A | P2.B2.EMS.B.1240, P2.B2.EMS.B.1120 | 100% | 2025-09-03 | 2025-09-09 | 40 | ! | ELEC | P2-5 |  | ELEC-2 |  | SS | SS |  |  |
| P2.B2.EMS.B.1110 |  | Paint Walls / B2 / North / 3920A | 5d | 2025-08-06 A | 2025-08-12 A | P2.B2.EMS.B.1070 | 100% |  |  | 40 | ! | PAINT | P2-5 |  | PAINT-1 |  | SS | SS |  |  |
| P2.B2.EMS.B.1140 |  | Fire Alarm/Ceiling Device Install / B2 / North / 3920A | 5d | 2025-08-18 A | 2025-08-22 A | P2.B2.EMS.B.1130 | 100% | 2025-09-10 | 2025-09-16 | 40 | ! | FA | P2-5 |  | FA-1 |  | SS | SS |  |  |
| P2.B2.EMS.B.1120 |  | HVAC - GRD's / B2 / North / 3920A | 5d | 2025-10-27 A | 2025-10-31 A | P2.B2.EMS.B.1110 | 100% | 2025-12-01 | 2025-12-05 | 40 | ! | HVAC | P2-5 | Harris | HVAC |  | SS | SS | O |  |
| P2.B2.EMS.B.1240 |  | Testing & Inspection / B2 / North / 3920A | 10d | 2025-11-03 A | 2025-11-14 A | P2.B2.EMS.B.1230 | 100% | 2025-12-01 | 2025-12-12 | 128 | ! | ELEC | P2-5 |  | ELEC-2 |  | SS | SS |  |  |
| P2.B2.EMS.B.1150 |  | Prep Floor for Flooring / B2 / North / 3920A | 5d | 2025-11-17 A | 2025-11-21 A | P2.B2.EMS.B.1140 | 100% | 2025-12-15 | 2025-12-19 | 40 | ! | FLOOR | P2-5 |  | FLOOR |  | SS | SS |  |  |
| P2.B2.EMS.B.1160 |  | Flooring / B2 / North / 3920A | 5d | 2026-01-28 A | 2026-01-30 A | P2.B2.EMS.B.1150 | 100% | 2026-01-02 | 2026-01-08 | 40 | ! | FLOOR | P2-5 |  | FLOOR |  | SS | SS | O | Flooring before or after gear? |
| P2.B2.EMS.B.1250 |  | Energize SWGR B2-3920A / B2 / North / 3920A | 5d | 2026-03-24 A | 2026-03-24 A | P2.B2.EMS.B.1160, P2.B2.EE.B.1250, FRAG.001.1010 | 100% | 2026-03-20 | 2026-03-26 | 40 | ! | ELEC | P2-5 |  | ELEC-2 |  | SS | SS | O |  |

| ID | WBS | Activity | Duration | Start | Finish | Predecessors | Complete | Planned start | Planned finish | Total float | Free float | Temp Orig Dur | *NIH Resp Check* | Resp / SRLM | PHASE | Z.RESP | RESP / Trade | Testing Type | 744 | RESP UPD | Update Status | Posit |
| --- | --- | --- | --- | --- | --- | --- | --- | --- | --- | --- | --- | --- | --- | --- | --- | --- | --- | --- | --- | --- | --- | --- |
|  | 11 | **Electrical Switchgear Room B - B2-3920B** |  | 2024-10-14 | 2026-04-07 |  |  |  |  |  |  |  |  |  |  |  |  |  |  |  |  |  |
| P2.B2.ES.B.1020 |  | OH Mechanical Install / B2 / North / 3920B | 5d | 2024-10-14 A | 2025-04-30 A | P2.B2.ES.B.1100 | 100% | 2025-05-08 | 2025-05-14 |  |  | 40 | ! | HVAC | P2-5 | Harris | HVAC |  |  |  |  |  |
| P2.B2.ES.B.1180 |  | OH Conduit (EF) Install to SWGR / B2 / North / 3920B | 20d | 2024-10-14 A | 2025-03-18 A | P2.B2.ES.B.1020 | 100% | 2025-05-15 | 2025-06-12 |  |  | 40 | ! | ELEC | P2-5 |  | ELEC-3 |  |  |  |  |  |
| P2.B2.ES.B.1000 |  | Layout - All Trades / B2 / North / 3920B | 1d | 2024-11-07 A | 2024-11-07 A | P2.B2.EMVS.B.1000 | 100% | 2024-12-06 | 2024-12-06 |  |  | 40 | ! | R/I.OH | P2-5 | Harris | R/I.OH |  |  |  |  |  |
| P2.B2.ES.B.1010 |  | OH Structural Supports / B2 / North / 3920B | 5d | 2024-11-08 A | 2024-11-14 A | P2.BIM.B2.40.140, P2.B2.ES.B.1000 | 100% | 2024-12-09 | 2024-12-13 |  |  | 40 | ! | MISCMTL | P2-5 |  | MISCMTL | AT24 |  |  |  |  |
| P2.B2.ES.B.1050 |  | Frame Partitions / B2 / North / 3920B | 5d | 2024-12-13 A | 2025-02-10 A | P2.B2.EMVS.B.1050, P2.B2.ES.B.1040 | 100% | 2025-03-17 | 2025-03-21 |  |  | 40 | ! | GYP | P2-5 |  | GYP-1 |  |  |  |  |  |
| P2.B2.ES.B.1060 |  | In Wall MEPF Rough In / B2 / North / 3920B | 5d | 2024-12-15 A | 2025-02-13 A | P2.B2.ES.B.1050 | 100% | 2025-03-24 | 2025-03-28 |  |  | 40 | ! | R/I.IW | P2-5 |  | R/I.IW |  |  |  |  |  |
| P2.B2.ES.B.1030 |  | CMU Dowels / B2 / North / 3920B | 5d | 2024-12-16 A | 2024-12-20 A | P2.B2.ES.B.1010 | 100% | 2025-02-20 | 2025-02-26 |  |  | 40 | ! | CMU | P2-5 |  | CMU | AT4 |  |  |  |  |
| P2.B2.ES.B.1080 |  | In Wall Inspection / B2 / North / 3920B | 5d | 2024-12-17 A | 2025-02-14 A | P2.B2.ES.B.1060 | 100% | 2025-03-31 | 2025-04-04 |  |  | 40 | ! | AHJ | P2-5 |  | AHJ |  |  |  |  |  |
| P2.B2.ES.B.1040 |  | CMU Walls / B2 / North / 3920B | 5d | 2024-12-23 A | 2024-12-27 A | P2.B2.ES.B.1030 | 100% | 2025-02-27 | 2025-03-05 |  |  | 40 | ! | CMU | P2-5 |  | CMU | AT3 |  |  |  |  |
| P2.B2.ES.B.1100 |  | Fire Stop Top of Wall / B2 / North / 3920B | 5d | 2025-01-08 A | 2025-01-09 A | P2.B2.ES.B.1090 FF | 100% | 2025-05-01 | 2025-05-07 |  |  | 40 | ! | FIRSTOP | P2-5 |  | FIRSTOP | AT47 |  |  |  |  |
| P2.B2.ES.B.1090 |  | Hang-Tape-Finish / B2 / North / 3920B | 5d | 2025-01-09 A | 2025-02-26 A | P2.B2.ES.B.1080 | 100% | 2025-05-01 | 2025-05-07 |  |  | 40 | ! | GYP | P2-5 |  | GYP-1 |  |  |  |  |  |
| P2.B2.ES.B.1190 |  | Install Horizontal Bus Duct / B2 / North / 3920B | 10d | 2025-03-25 A | 2025-04-04 A | P2.B2.ES.B.1180 | 100% | 2025-06-02 | 2025-06-13 |  |  | 40 | ! | ELEC | P2-5 |  | ELEC-2 |  |  |  |  |  |
| P2.B2.ES.B.1260 |  | Mechanical Ductwork Install / B2 / North / 3920B | 5d | 2025-04-21 A | 2025-05-01 A | P2.B2.ES.B.1200 | 100% | 2025-07-30 | 2025-08-05 |  |  | 40 | ! | HVAC | P2-5 | Harris | HVAC |  | SS | SS |  |  |
| P2.B2.ES.B.1170 |  | Set Emergency SWGR B2-3920B / B2 / North / 3920B | 5d | 2025-04-26 A | 2025-05-05 A | P2.B2.EMS.B.1170, P1.B2.03.290, P2.B2.ES.B.1020, P2.B2.ES.B.1190 | 100% | 2025-06-23 | 2025-06-27 |  |  | 40 | ! | ELEC | P2-5 |  | ELEC-2 |  |  |  |  |  |
| P2.B2.ES.B.1290 |  | OH Conduit and Busduct tie-in to SWGR / B2 / North / 3920B | 10d | 2025-05-05 A | 2025-05-22 A | P2.B2.ES.B.1170 | 100% | 2025-06-30 | 2025-07-14 |  |  | 40 | ! | ELEC | P2-5 |  | ELEC-3 |  |  |  |  |  |
| P2.B2.ES.B.1210 |  | Pull Feeders / B2 / North / 3920B | 20d | 2025-06-23 A | 2025-08-29 A | P2.B2.ES.B.1290 | 100% | 2025-07-09 | 2025-08-05 |  |  | 40 | ! | ELEC | P2-5 |  | ELEC-2 |  | SS | SS |  |  |
| P2.B2.ES.B.1270 |  | Frame Leave Out Partitions / B2 / North / 3920B | 5d | 2025-07-01 A | 2025-07-08 A | P2.B2.ES.B.1170 | 100% | 2025-08-01 | 2025-08-07 |  |  | 40 | ! | GYP | P2-5 |  | GYP-1 |  | SS | SS |  |  |
| P2.B2.ES.B.1220 |  | Pull Medium Voltage Feeders / B2 / North / 3920B | 5d | 2025-07-03 A | 2025-08-29 A | P2.B2.ES.B.1210 | 100% | 2025-08-22 | 2025-08-28 |  |  | 80 | ! | ELEC | P2-5 |  | ELEC-2 |  | SS | SS |  |  |
| P2.B2.ES.B.1280 |  | Hang-Tape-Finish Leave Out Walls / B2 / North / 3920B | 5d | 2025-07-09 A | 2025-07-15 A | P2.B2.ES.B.1270 | 100% | 2025-08-08 | 2025-08-14 |  |  | 40 | ! | GYP | P2-5 |  | GYP-1 |  | SS | SS |  |  |
| P2.B2.ES.B.1200 |  | Install Doors & Hardware / B2 / North / 3920B | 5d | 2025-07-16 A | 2025-07-22 A | P2.B2.ES.B.1280 | 100% | 2025-08-15 | 2025-08-21 |  |  | 40 | ! | DFH | P2-5 |  | DFH | AT29 | SS | SS |  |  |
| P2.B2.ES.B.1070 |  | Fire Caulk MEPF Penetrations / B2 / North / 3920B | 5d | 2025-07-21 A | 2025-08-05 A | P2.B2.ES.B.1260 | 100% | 2025-08-22 | 2025-08-28 |  |  | 40 | ! | FIRESTO | P2-5 |  | FIRESTO | AT48 | SS | SS |  |  |
| P2.B2.ES.B.1110 |  | Paint Walls / B2 / North / 3920B | 5d | 2025-07-21 A | 2025-07-25 A | P2.B2.ES.B.1070 | 100% | 2025-08-29 | 2025-09-05 |  |  | 40 | ! | PAINT | P2-5 |  | PAINT-1 |  | SS | SS |  |  |
| P2.B2.ES.B.1230 |  | Termination of Feeders at Gear / B2 / North / 3920B | 15d | 2025-07-30 A | 2025-08-29 A | P2.B2.ES.B.1220 | 100% | 2025-08-29 | 2025-09-19 |  |  | 80 | ! | ELEC | P2-5 |  | ELEC-2 |  | SS | SS |  |  |
| P2.B2.ES.B.1130 |  | Lighting Install / B2 / North / 3920B | 5d | 2025-08-01 A | 2025-08-08 A | P2.B2.ES.B.1240, P2.B2.ES.B.1120 | 100% | 2025-09-03 | 2025-09-09 |  |  | 40 | ! | ELEC | P2-5 |  | ELEC-2 |  | SS | SS |  |  |
| P2.B2.ES.B.1140 |  | Fire Alarm/Ceiling Device Install / B2 / North / 3920B | 5d | 2025-10-01 A | 2025-10-07 A | P2.B2.ES.B.1130 | 100% | 2025-10-15 | 2025-10-21 |  |  | 40 | ! | FA | P2-5 |  | FA-1 |  | SS | SS |  |  |
| P2.B2.ES.B.1120 |  | HVAC - GRD's / B2 / North / 3920B | 5d | 2025-10-27 A | 2025-10-31 A | P2.B2.ES.B.1110 | 100% | 2025-12-01 | 2025-12-05 |  |  | 40 | ! | HVAC | P2-5 | Harris | HVAC |  | SS | SS | O |  |
| P2.B2.ES.B.1240 |  | Testing & Inspection / B2 / North / 3920B | 10d | 2025-11-03 A | 2025-11-14 A | P2.B2.ES.B.1230 | 100% | 2025-12-01 | 2025-12-12 |  |  | 80 | ! | ELEC | P2-5 |  | ELEC-2 |  | SS | SS |  |  |
| P2.B2.ES.B.1150 |  | Prep Floor for Flooring / B2 / North / 3920B | 5d | 2025-11-17 A | 2025-11-21 A | P2.B2.ES.B.1140 | 100% | 2025-12-15 | 2025-12-19 |  |  | 40 | ! | FLOOR | P2-5 |  | FLOOR |  | SS | SS |  |  |
| P2.B2.ES.B.1160 |  | Flooring / B2 / North / 3920B | 5d | 2026-01-28 A | 2026-01-30 A | P2.B2.ES.B.1150 | 100% | 2026-01-02 | 2026-01-08 |  |  | 40 | ! | FLOOR | P2-5 |  | FLOOR |  | SS | SS | O | Flooring before or after gear? |
| P2.B2.ES.B.1250 |  | Energize SWGR B2-3920B / B2 / North / 3920B | 5d | 2026-04-01 | 2026-04-07 | P2.B2.EMS.B.1250, P2.B2.ES.B.1160 |  |  |  | 224d | 148d | 40 | ! | ELEC | P2-5 |  | ELEC-2 |  |  | SS | O |  |

| ID | WBS | Activity | Duration | Start | Finish | Predecessors | Complete | Planned start | Planned finish | Temp Orig Dur | Testing Type | *NIH Resp Check* | Resp / SRLM | 744 | PHASE | RESP UPD | RESP / Trade | Z.RESP | Update Status | Posit |
| --- | --- | --- | --- | --- | --- | --- | --- | --- | --- | --- | --- | --- | --- | --- | --- | --- | --- | --- | --- | --- |
|  | 10 | **Electrical Emergency Room - B2-3910** |  | 2015-08-11 | 2026-03-26 |  |  |  |  |  |  |  |  |  |  |  |  |  |  |  |
| P2.B2.EE.B.1070 |  | Fire Caulk MEPF Penetrations / B2 / North / 3910 | 5d | 2015-08-11 A | 2025-08-15 A | P2.B2.EE.B.1260 | 100% | 2025-08-11 | 2025-08-15 | 40 | AT48 | ! | FIRESTO | SS | P2-5 | SS | FIRESTO |  |  |  |
| P2.B2.EE.B.1180 |  | OH Conduit Install to SWGR / B2 / North / 3910 | 20d | 2024-10-14 A | 2025-03-18 A | P2.B2.EE.B.1020 | 100% | 2025-05-22 | 2025-06-19 | 40 |  | ! | ELEC |  | P2-5 |  | ELEC-3 |  |  |  |
| P2.B2.EE.B.1020 |  | OH Mechanical Install / B2 / North / 3910 | 5d | 2024-10-21 A | 2025-04-30 A | P2.B2.EE.B.1090 | 100% | 2025-05-15 | 2025-05-21 | 40 |  | ! | HVAC |  | P2-5 |  | HVAC | Harris |  |  |
| P2.B2.EE.B.1000 |  | Layout - All Trades / B2 / North / 3910 | 1d | 2024-11-08 A | 2024-11-08 A | P2.B2.ES.B.1000 | 100% | 2024-12-09 | 2024-12-09 | 40 |  | ! | R/I.OH |  | P2-5 |  | R/I.OH | Harris |  |  |
| P2.B2.EE.B.1010 |  | OH Structural Supports / B2 / North / 3910 | 5d | 2024-11-11 A | 2024-11-15 A | P2.BIM.B2.40.140, P2.B2.EE.B.1000 | 100% | 2024-12-10 | 2024-12-16 | 40 | AT24 | ! | MISCMTL |  | P2-5 |  | MISCMTL |  |  |  |
| P2.B2.EE.B.1050 |  | Frame Partitions / B2 / North / 3910 | 5d | 2024-12-13 A | 2025-02-03 A | P2.B2.ES.B.1050, P2.B2.EE.B.1040 | 100% | 2025-03-24 | 2025-03-28 | 40 |  | ! | GYP |  | P2-5 |  | GYP-1 |  |  |  |
| P2.B2.EE.B.1060 |  | In Wall MEPF Rough In / B2 / North / 3910 | 5d | 2024-12-14 A | 2025-02-04 A | P2.B2.EE.B.1050 | 100% | 2025-03-31 | 2025-04-04 | 40 |  | ! | R/I.IW |  | P2-5 |  | R/I.IW |  |  |  |
| P2.B2.EE.B.1030 |  | CMU Dowels / B2 / North / 3910 | 5d | 2024-12-16 A | 2024-12-20 A | P2.B2.ES.B.1030, P2.B2.EE.B.1010 | 100% | 2025-02-27 | 2025-03-05 | 40 | AT4 | ! | CMU |  | P2-5 |  | CMU |  |  |  |
| P2.B2.EE.B.1040 |  | CMU Walls / B2 / North / 3910 | 5d | 2024-12-23 A | 2024-12-27 A | P2.B2.EE.B.1030 | 100% | 2025-03-06 | 2025-03-12 | 40 | AT3 | ! | CMU |  | P2-5 |  | CMU |  |  |  |
| P2.B2.EE.B.1080 |  | In Wall Inspection / B2 / North / 3910 | 5d | 2025-02-03 A | 2025-02-13 A | P2.B2.EE.B.1060 | 100% | 2025-05-01 | 2025-05-07 | 40 |  | ! | AHJ |  | P2-5 |  | AHJ |  |  |  |
| P2.B2.EE.B.1100 |  | Fire Stop Top of Wall / B2 / North / 3910 | 5d | 2025-02-03 A | 2025-02-13 A | P2.B2.EE.B.1090 FF | 100% | 2025-05-08 | 2025-05-14 | 40 | AT47 | ! | FIRSTOP |  | P2-5 |  | FIRSTOP |  |  |  |
| P2.B2.EE.B.1090 |  | Hang-Tape-Finish / B2 / North / 3910 | 5d | 2025-02-13 A | 2025-02-27 A | P2.B2.EE.B.1080 | 100% | 2025-05-08 | 2025-05-14 | 40 |  | ! | GYP |  | P2-5 |  | GYP-1 |  |  |  |
| P2.B2.EE.B.1170 |  | Set SWGR B2-3910 / B2 / North / 3910 | 5d | 2025-05-12 A | 2025-05-28 A | BP1.260.3.300 FF, P2.B2.EE.B.1020, P2.B2.EE.B.1190 | 100% | 2025-06-23 | 2025-06-27 | 40 |  | ! | ELEC |  | P2-5 |  | ELEC-2 |  |  |  |
| P2.B2.EE.B.1290 |  | OH Conduit and Busduct tie-in to SWGR / B2 / North / 3910 | 10d | 2025-05-27 A | 2025-06-27 A | P2.B2.EE.B.1170 | 100% | 2025-06-30 | 2025-07-14 | 40 |  | ! | ELEC | SS | P2-5 | SS | ELEC-3 |  |  |  |
| P2.B2.EE.B.1190 |  | Install Horizontal Bus Duct / B2 / North / 3910 | 10d | 2025-06-02 A | 2025-06-13 A | P2.B2.EE.B.1180 | 100% | 2025-07-01 | 2025-07-15 | 40 |  | ! | ELEC | SS | P2-5 | SS | ELEC-2 |  |  |  |
| P2.B2.EE.B.1210 |  | Pull Feeders / B2 / North / 3910 | 20d | 2025-06-02 A | 2025-08-05 A | P2.B2.EE.B.1290 | 100% | 2025-07-30 | 2025-08-26 | 40 |  | ! | ELEC | SS | P2-5 | SS | ELEC-2 |  |  |  |
| P2.B2.EE.B.1220 |  | Pull Medium Voltage Feeders / B2 / North / 3910 | 5d | 2025-06-02 A | 2025-06-30 A | P2.B2.EE.B.1210 | 100% | 2025-08-27 | 2025-09-03 | 80 |  | ! | ELEC | SS | P2-5 | SS | ELEC-2 |  |  |  |
| P2.B2.EE.B.1230 |  | Termination of Feeders at Gear / B2 / North / 3910 | 15d | 2025-06-09 A | 2025-06-27 A | P2.B2.EE.B.1220 | 100% | 2025-09-04 | 2025-09-24 | 80 |  | ! | ELEC | SS | P2-5 | SS | ELEC-2 |  |  |  |
| P2.B2.EE.B.1280 |  | Hang-Tape-Finish Leave Out Walls / B2 / North / 3910 | 5d | 2025-07-10 A | 2025-07-16 A | P2.B2.EE.B.1270 | 100% | 2025-08-11 | 2025-08-15 | 40 |  | ! | GYP | SS | P2-5 | SS | GYP-1 |  |  |  |
| P2.B2.EE.B.1260 |  | Mechanical Ductwork Install / B2 / North / 3910 | 5d | 2025-07-14 A | 2025-07-21 A | P2.B2.EE.B.1200 | 100% | 2025-08-25 | 2025-08-29 | 40 |  | ! | HVAC | SS | P2-5 | SS | HVAC | Harris |  |  |
| P2.B2.EE.B.1200 |  | Install Doors & Hardware / B2 / North / 3910 | 5d | 2025-07-17 A | 2025-07-23 A | P2.B2.EE.B.1280 | 100% | 2025-08-18 | 2025-08-22 | 40 | AT29 | ! | DFH | SS | P2-5 | SS | DFH |  |  |  |
| P2.B2.EE.B.1130 |  | Lighting Install / B2 / North / 3910 | 5d | 2025-08-01 A | 2025-08-08 A | P2.B2.EE.B.1120, P2.B2.EE.B.1240 | 100% | 2025-09-02 | 2025-09-08 | 40 |  | ! | ELEC | SS | P2-5 | SS | ELEC-2 |  |  |  |
| P2.B2.EE.B.1110 |  | Paint Walls / B2 / North / 3910 | 5d | 2025-08-18 A | 2025-08-22 A | P2.B2.EE.B.1070, P2.B2.EE.B.1100 | 100% |  |  | 40 |  | ! | PAINT | SS | P2-5 | SS | PAINT-1 |  |  |  |
| P2.B2.EE.B.1140 |  | Fire Alarm/Ceiling Device Install / B2 / North / 3910 | 5d | 2025-08-18 A | 2025-08-22 A | P2.B2.EE.B.1130 | 100% | 2025-09-09 | 2025-09-15 | 40 |  | ! | FA | SS | P2-5 | SS | FA-1 |  |  |  |
| P2.B2.EE.B.1270 |  | Frame Leave Out Partitions / B2 / North / 3910 | 5d | 2025-10-01 A | 2025-10-07 A | P2.B2.EE.B.1170 | 100% |  |  | 40 |  | ! | GYP | SS | P2-5 | SS | GYP-1 |  |  |  |
| P2.B2.EE.B.1120 |  | HVAC - GRD's / B2 / North / 3910 | 5d | 2025-10-27 A | 2025-10-31 A | P2.B2.EE.B.1110 | 100% | 2025-12-01 | 2025-12-05 | 40 |  | ! | HVAC | SS | P2-5 | SS | HVAC | Harris | O |  |
| P2.B2.EE.B.1240 |  | Testing & Inspection / B2 / North / 3910 | 10d | 2025-11-03 A | 2025-11-14 A | BP1.263.3.120, P2.B2.EE.B.1230 | 100% | 2025-12-01 | 2025-12-12 | 80 |  | ! | ELEC | SS | P2-5 | SS | ELEC-2 |  |  |  |
| P2.B2.EE.B.1150 |  | Prep Floor for Flooring / B2 / North / 3910 | 5d | 2025-11-17 A | 2025-11-21 A | P2.B2.EE.B.1140 | 100% | 2025-12-15 | 2025-12-19 | 40 |  | ! | FLOOR | SS | P2-5 | SS | FLOOR |  |  |  |
| P2.B2.EE.B.1160 |  | Flooring / B2 / North / 3910 | 5d | 2026-01-28 A | 2026-01-30 A | P2.B2.EE.B.1150 | 100% | 2026-01-02 | 2026-01-08 | 40 |  | ! | FLOOR | SS | P2-5 | SS | FLOOR |  | O | Flooring before or after gear? |
| P2.B2.EE.B.1250 |  | Energize SWGR B2-3910 / B2 / North / 3910 | 5d | 2026-03-26 A | 2026-03-26 A | P2.B2.EE.B.1160, FRAG.001.1010 | 100% | 2026-03-13 | 2026-03-19 | 40 |  | ! | ELEC | SS | P2-5 | SS | ELEC-2 |  | O |  |

| ID | WBS | Activity | Type | Duration | Start | Finish | Predecessors | Complete | Remaining | Planned start | Planned finish | Total float | Free float | Temp Orig Dur | Resp / SRLM | PHASE | RESP / Trade | 744 | RESP UPD | Z.RESP | Update Status | Testing Type |
| --- | --- | --- | --- | --- | --- | --- | --- | --- | --- | --- | --- | --- | --- | --- | --- | --- | --- | --- | --- | --- | --- | --- |
|  | 4 | **House Electrical Rooms / Level B2/B1** |  |  | 2025-04-01 | 2026-04-01 |  |  |  |  |  |  |  |  |  |  |  |  |  |  |  |  |
|  | 6 | **House Electrical Room B2-5995** |  |  | 2025-04-01 | 2026-03-26 |  |  |  |  |  |  |  |  |  |  |  |  |  |  |  |  |
| P2.B2.HE.5995.1000 |  | Paint Prime & 1st Coat / B2 / South / 5995 |  | 2d | 2025-04-01 A | 2025-04-03 A | P2.B2.S.1110 | 100% |  | 2025-06-02 | 2025-06-03 |  |  | 16 | PAINT | P2-5 | PAINT-1 |  |  |  |  |  |
| P2.B2.HE.5995.1010 |  | Cans/Troughs/Backboxes/XFMRs / B2 / South / 5995 |  | 5d | 2025-07-01 A | 2025-07-08 A | P2.B2.HE.5995.1000, BP1.261.3.120 | 100% |  | 2025-08-01 | 2025-08-07 |  |  | 40 | ELEC | P2-5 | ELEC-2 | ND | ND |  |  |  |
| P2.B2.HE.5995.1020 |  | Risers and OH Conduit Connections / B2 / South / 5995 |  | 5d | 2025-08-01 A | 2025-08-07 A | P2.B2.HE.5995.1010 | 100% |  |  |  |  |  | 40 | ELEC | P2-5 | ELEC-2 | ND | ND |  |  |  |
| P2.B2.HE.5995.1030 |  | Pull Wire - In From Distribution Panels / Out to Branch Circuits / B2 / South / 5995 |  | 5d | 2025-08-08 A | 2025-08-14 A | P2.B2.HE.5995.1020 | 100% |  |  |  |  |  | 40 | ELEC | P2-5 | ELEC-2 | ND | ND |  |  |  |
| P2.B2.HE.5995.1040 |  | Panelboards, Interconnect Wiring, and Room Buildout of All Systems / B2 / South / 5995 |  | 10d | 2025-11-03 A | 2025-11-14 A | P2.B2.HE.5995.1020, BP1.262.3.100, BP1.262.3.220, BP1.265.3.900, P2.B2.S.1360 | 100% |  | 2025-12-01 | 2025-12-12 |  |  | 80 | ELEC | P2-5 | ELEC-2 | ND | ND |  |  |  |
| P2.B2.HE.5995.1120 |  | Panelboards, Interconnect Wiring, and Remaining Room Buildout of All Systems / B2 / South / 5995 |  | 5d | 2025-11-03 A | 2025-11-07 A | BP1.262.3.100, BP1.262.3.220, BP1.265.3.900 | 100% |  | 2025-12-01 | 2025-12-05 |  |  | 80 | ELEC | P2-5 | ELEC-2 |  | ND |  |  |  |
| P2.B2.HE.5995.1050 |  | Test & Terminate / B2 / South / 5995 |  | 5d | 2025-11-17 A | 2025-11-21 A | P2.B2.HE.5995.1120, P2.B2.HE.5995.1040, P2.B2.HE.5995.1030 | 100% |  | 2025-12-15 | 2025-12-19 |  |  | 40 | ELEC | P2-5 | ELEC-2 |  | ND |  |  |  |
| P2.B2.HE.5995.1060 |  | Paint - Finish Coat / B2 / South / 5995 |  | 2d | 2025-11-24 A | 2025-11-25 A | P2.B2.HE.5995.1050 | 100% |  | 2025-12-22 | 2025-12-23 |  |  | 16 | PAINT | P2-5 | PAINT-1 |  | ND |  |  |  |
| P2.B2.HE.5995.1130 |  | Paint Prime & 1st Coat - Crane Hatch / B2 / South / 5995 |  | 2d | 2025-11-24 A | 2025-11-25 A | P1.BGS.310 | 100% |  | 2025-12-19 | 2025-12-22 |  |  | 16 | PAINT | P2-5 | PAINT-1 |  | ND |  |  |  |
| P2.B2.HE.5995.1070 |  | Trim All MEPF Finishes / B2 / South / 5995 |  | 2d | 2025-11-26 A | 2025-11-26 A | P2.B2.HE.5995.1060, BP1.233.3.410 | 100% |  | 2025-12-24 | 2025-12-26 |  |  | 16 | MEP | P2-5 | MEP-2 |  | ND | Harris |  |  |
| P2.B2.HE.5995.1080 |  | Flooring / B2 / South / 5995 |  | 2d | 2026-01-28 A | 2026-01-30 A | P2.B2.HE.5995.1070 | 100% |  | 2026-01-23 | 2026-01-26 |  |  | 16 | FLOOR | P2-5 | FLOOR |  | ND |  | O |  |
| P2.B2.HE.5995.1090 |  | Doors & Hardware / B2 / South / 5995 |  | 2d | 2026-02-11 A | 2026-02-12 A | P2.B2.HE.5995.1080 | 100% |  | 2026-03-02 | 2026-03-03 |  |  | 16 | DFH | P2-5 | DFH |  | ND |  | O | AT29 |
| P2.B2.HE.5995.1100 |  | Panels Ready to Energize - Lock Doors and Limit Access / B2 / South / 5995 | milestone | 0d | 2026-03-26 A | 2026-03-26 A | P2.B2.HE.5995.1050, P2.B2.HE.5995.1130 FF, P2.B2.HE.5995.1090 FF | 100% |  | 2026-03-10 | 2026-03-10 |  |  | 0 | ELEC | P2-5 | ELEC-2 |  | ND |  | O |  |
|  | 7 | **House Electrical Room B2-5920** |  |  | 2025-04-01 | 2026-04-01 |  |  |  |  |  |  |  |  |  |  |  |  |  |  |  |  |
| P2.B2.HE.5920.1000 |  | Paint Prime & 1st Coat / B2 / South / 5920 |  | 2d | 2025-04-01 A | 2025-04-03 A | P2.B2.S.1110 | 100% |  | 2025-06-02 | 2025-06-03 |  |  | 16 | PAINT | P2-5 | PAINT-1 |  |  |  |  |  |
| P2.B2.HE.5920.1010 |  | Cans/Troughs/Backboxes/XFMRs / B2 / South / 5920 |  | 5d | 2025-07-01 A | 2025-07-08 A | P2.B2.HE.5920.1000 | 100% |  | 2025-08-01 | 2025-08-07 |  |  | 40 | ELEC | P2-5 | ELEC-2 | ND | ND |  |  |  |
| P2.B2.HE.5920.1020 |  | Risers and OH Conduit Connections / B2 / South / 5920 |  | 5d | 2025-08-01 A | 2025-08-07 A | P2.B2.HE.5920.1010 | 100% |  |  |  |  |  | 40 | ELEC | P2-5 | ELEC-2 | ND | ND |  |  |  |
| P2.B2.HE.5920.1030 |  | Pull Wire - In From Distribution Panels / Out to Branch Circuits / B2 / South / 5920 |  | 5d | 2025-08-08 A | 2025-08-14 A | P2.B2.HE.5920.1020 | 100% |  |  |  |  |  | 40 | ELEC | P2-5 | ELEC-2 | ND | ND |  |  |  |
| P2.B2.HE.5920.1040 |  | Panelboards, Interconnect Wiring, and Remaining Room Buildout of All Systems / B2 / South / 5920 |  | 10d | 2025-12-01 A | 2025-12-10 A | P2.B2.HE.5920.1020, BP1.262.3.100, BP1.262.3.220, P2.B2.S.1360 | 100% |  | 2026-01-23 | 2026-02-05 |  |  | 80 | ELEC | P2-5 | ELEC-2 | ND | ND |  | O |  |
| P2.B2.HE.5920.1060 |  | Paint - Finish Coat / B2 / South / 5920 |  | 2d | 2025-12-10 A | 2025-12-11 A | P2.B2.HE.5920.1050 | 100% |  | 2026-02-13 | 2026-02-16 |  |  | 16 | PAINT | P2-5 | PAINT-1 | ND | ND |  | O |  |
| P2.B2.HE.5920.1050 |  | Test & Terminate / B2 / South / 5920 |  | 5d | 2026-01-23 A | 2026-01-29 A | P2.B2.HE.5920.1040, P2.B2.HE.5920.1030 | 100% |  |  |  |  |  | 40 | ELEC | P2-5 | ELEC-2 | ND | ND |  | O |  |
| P2.B2.HE.5920.1070 |  | Trim All MEPF Finishes / B2 / South / 5920 |  | 2d | 2026-01-30 A | 2026-01-31 A | P2.B2.HE.5920.1060, BP1.233.3.410 | 100% |  | 2026-01-30 | 2026-02-02 |  |  | 16 | MEP | P2-5 | MEP-2 | ND | ND | Harris | O |  |
| P2.B2.HE.5920.1090 |  | Doors & Hardware / B2 / South / 5920 |  | 2d | 2026-03-12 A | 2026-03-13 A | P2.B2.HE.5920.1060 | 100% |  | 2026-03-04 | 2026-03-05 |  |  | 16 | DFH | P2-5 | DFH | ND | ND |  | O | AT29 |
| P2.B2.HE.5920.1100 |  | Panels Ready to Energize - Lock Doors and Limit Access / B2 / South / 5920 | milestone | 0d | 2026-03-17 A | 2026-03-17 A | P2.B2.HE.5920.1050, P2.B2.HE.5920.1090 FF | 100% |  | 2026-03-05 | 2026-03-05 |  |  | 0 | ELEC | P2-5 | ELEC-2 | ND | ND |  |  |  |
| P2.B2.HE.5920.1080 |  | Flooring / B2 / South / 5920 |  | 2d | 2026-03-25 A | 2026-04-01 | P2.B2.HE.5920.1070 | 50% | 1d | 2026-03-02 | 2026-03-03 | 203d | 19d | 16 | FLOOR | P2-5 | FLOOR | ND | ND |  | O |  |

| ID | WBS | Activity | Type | Duration | Start | Finish | Predecessors | Complete | Remaining | Planned start | Planned finish | Total float | Free float | Temp Orig Dur | *NIH Resp Check* | Resp / SRLM | PHASE | Z.RESP | RESP / Trade | Testing Type | Act ID Temp | 744 | RESP UPD | Update Status | Pick | NOTES | Posit | **NEAR CRITICAL** |
| --- | --- | --- | --- | --- | --- | --- | --- | --- | --- | --- | --- | --- | --- | --- | --- | --- | --- | --- | --- | --- | --- | --- | --- | --- | --- | --- | --- | --- |
|  | 1 | **Mechanical Rooms / Level B2/B1** |  |  | 2024-10-01 | 2026-07-24 |  |  |  |  |  |  |  |  |  |  |  |  |  |  |  |  |  |  |  |  |  |  |
|  | 1 | **Mechanical B2-5970 (Z1)** |  |  | 2024-10-01 | 2026-07-24 |  |  |  |  |  |  |  |  |  |  |  |  |  |  |  |  |  |  |  |  |  |  |
| P2.B2.M.5970.1140 |  | Layout - All Trades / B2 / South / 5970 |  | 5d | 2024-10-01 A | 2024-10-08 A | P1.1.03.610 | 100% |  | 2024-11-01 | 2024-11-07 |  |  | 40 | ! | R/I.OH | P2-5 | Harris | R/I.OH |  |  |  |  |  |  |  |  |  |
| P2.B2.M.5970.1380 |  | OH Fire Suppression Install / B2 / South / 5970 |  | 5d | 2024-10-15 A | 2024-10-28 A | P2.B2.M.5970.1140 SS | 100% |  | 2025-01-09 | 2025-01-15 |  |  | 40 | ! | FP | P2-5 |  | FP-1 |  |  |  |  |  |  |  |  |  |
| P2.B2.M.5970.1390 |  | OH Electrical Install / B2 / South / 5970 |  | 15d | 2024-10-15 A | 2025-02-04 A | P2.B2.M.5970.1440 FF | 100% |  | 2025-01-27 | 2025-02-14 |  |  | 40 | ! | ELEC | P2-5 |  | ELEC |  |  |  |  |  |  |  |  |  |
| P2.B2.M.5970.1400 |  | OH High Plumbing Install / B2 / South / 5970 |  | 20d | 2024-10-15 A | 2025-02-07 A | P2.B2.M.5970.1390 FF | 100% |  | 2025-03-17 | 2025-04-11 |  |  | 40 | ! | MECH | P2-5 | Harris | MECH-2 |  |  |  |  |  |  |  |  |  |
| P2.B2.M.5970.1440 |  | Paint OH Fire Suppression / B2 / South / 5970 |  | 2d | 2024-10-16 A | 2025-02-03 A | P2.B2.M.5970.1380 FF | 100% |  | 2025-01-23 | 2025-01-24 |  |  | 40 | ! | FP | P2-5 |  | FP-1 |  |  |  |  |  |  |  |  |  |
| P2.B2.M.5970.1150 |  | OH Structural Supports / B2 / South / 5970 |  | 5d | 2024-11-01 A | 2024-11-07 A | P2.B2.M.5970.1140, P2.BIM.B2.40.140 | 100% |  | 2024-12-02 | 2024-12-06 |  |  | 40 | ! | MISCMTL | P2-5 |  | MISCMTL | AT24 |  |  |  |  |  |  |  |  |
| P2.B2.M.5970.2130 |  | CMU - Drill Dowels and Lay Block (ACRF Separation Wall) / B2 / South / 5970 |  | 5d | 2024-11-01 A | 2024-11-07 A | P2.B2.M.5970.1140 | 100% |  | 2024-12-02 | 2024-12-06 |  |  | 40 |  | CMU | P2-5 |  | CMU | AT3 | P2.B2.04.20.210 |  |  |  |  |  |  |  |
| P2.B2.M.5970.1160 |  | OH Mechanical Ductwork (High) Install / B2 / South / 5970 |  | 10d | 2024-11-12 A | 2025-02-04 A | P2.B2.M.5970.1150 | 100% |  | 2024-12-10 | 2024-12-23 |  |  | 40 | ! | HVAC | P2-5 | Harris | HVAC |  |  |  |  |  |  |  |  |  |
| P2.B2.M.5970.1450 |  | OH Mechanical Piping Install (Chilled Water) / B2 / South / 5970 |  | 20d | 2025-01-31 A | 2025-04-30 A | P2.B2.M.5970.1400 SS | 100% |  | 2025-02-17 | 2025-03-14 |  |  | 40 | ! | MECH | P2-5 | Harris | MECH-2 |  |  |  |  |  |  |  |  |  |
| P2.B2.M.5970.2140 |  | CMU - Point & Patch / B2 / South / 5970 |  | 2d | 2025-02-03 A | 2025-02-04 A | P2.B2.M.5970.2130 | 100% |  | 2025-03-03 | 2025-03-04 |  |  | 16 |  | CMU | P2-5 |  | CMU |  | P2.B2.04.20.310 |  |  |  |  |  |  |  |
| P2.B2.M.5970.2150 |  | Paint - CMU Block Fill / B2 / South / 5970 |  | 2d | 2025-02-05 A | 2025-02-06 A | P2.B2.M.5970.2140 | 100% |  | 2025-03-05 | 2025-03-06 |  |  | 16 |  | PAINT | P2-5 |  | PAINT-1 |  | P2.B2.09.97.110 |  |  |  |  |  |  |  |
| P2.B2.M.5970.1210 |  | Fire Caulk MEPF Penetrations / B2 / South / 5970 |  | 5d | 2025-04-01 A | 2025-04-30 A | P2.B2.M.5970.1400 | 100% |  | 2025-05-01 | 2025-05-07 |  |  | 40 | ! | FIRESTO | P2-5 |  | FIRESTO | AT48 |  |  |  |  |  |  |  |  |
| P2.B2.M.5970.1460 |  | OH Mechanical Piping Install (Glycol) / B2 / South / 5970 |  | 20d | 2025-04-16 A | 2025-05-14 A | P2.B2.M.5970.1450 | 100% |  | 2025-05-01 | 2025-05-29 |  |  | 40 | ! | MECH | P2-5 | Harris | MECH-2 |  |  |  |  |  |  |  |  |  |
| P2.B2.M.5970.1410 |  | Insulate High MEP / B2 / South / 5970 |  | 5d | 2025-05-01 A | 2025-05-07 A | P2.B2.M.5970.1400 | 100% |  | 2025-06-02 | 2025-06-06 |  |  | 40 | ! | INSUL | P2-5 | Harris | INSUL-3 |  |  |  |  |  |  |  |  |  |
| P2.B2.M.5970.1470 |  | OH Mechanical Piping Install (Reheat) / B2 / South / 5970 |  | 20d | 2025-05-15 A | 2025-06-12 A | P2.B2.M.5970.1460 | 100% |  | 2025-06-16 | 2025-07-14 |  |  | 40 | ! | MECH | P2-5 | Harris | MECH-2 |  |  | TS | TS |  |  |  |  |  |
| P2.B2.M.5970.1480 |  | OH Mechanical Piping Install (Steam) / B2 / South / 5970 |  | 20d | 2025-06-13 A | 2025-07-11 A | P2.B2.M.5970.1470 | 100% |  | 2025-07-15 | 2025-08-11 |  |  | 40 | ! | MECH | P2-5 | Harris | MECH-2 |  |  | TS | TS |  |  |  |  |  |
| P2.B2.M.5970.1060 |  | Install Steam Station / B2 / South / 5970 |  | 5d | 2025-06-23 A | 2025-06-27 A | P2.B2.M.5970.1410, P1.B2.03.290, BP1.224.3.950, BP1.238.3.190, P2.B2.S.1120 | 100% |  | 2025-07-21 | 2025-07-25 |  |  | 40 | T.MEP.MECH | MECH | P2-5 | Harris | MECH-2 |  |  | TS | TS |  |  |  |  |  |
| P2.B2.M.5970.1430 |  | Test OH Fire Suppression / B2 / South / 5970 |  | 5d | 2025-07-26 A | 2025-07-31 A | P2.B2.M.5970.1440 | 100% |  | 2025-08-01 | 2025-08-07 |  |  | 40 | ! | FP | P2-5 |  | FP-1 |  |  | TS | TS |  |  |  |  |  |
| P2.B2.M.5970.1030 |  | Install Glycol Pre-Heat Pump & Hx Skid / B2 / South / 5970 |  | 5d | 2025-07-30 A | 2025-08-05 A | P2.B2.M.5970.1410, P1.B2.03.290, BP1.224.3.940, BP1.235.3.100, P2.B2.S.1120 | 100% |  | 2025-08-22 | 2025-08-28 |  |  | 40 | ! | MECH | P2-5 | Harris | MECH-2 |  |  | TS | TS |  |  |  |  |  |
| P2.B2.M.5970.1040 |  | Install Reheat Pump and Hx Skid / B2 / South / 5970 |  | 5d | 2025-07-30 A | 2025-08-05 A | P2.B2.M.5970.1410, P1.B2.03.290, BP1.224.3.940, BP1.235.3.100, P2.B2.S.1120 | 100% |  | 2025-08-22 | 2025-08-28 |  |  | 40 | ! | MECH | P2-5 | Harris | MECH-2 |  |  | TS | TS |  |  |  |  |  |
| P2.B2.M.5970.1050 |  | Install Clean Steam Generator Skid / B2 / South / 5970 |  | 5d | 2025-09-02 A | 2025-09-08 A | P2.B2.M.5970.1410, BP1.226.3.110, P2.B2.S.1120 | 100% |  | 2025-10-01 | 2025-10-07 |  |  | 40 | ! | FIT | P2-5 | Harris | FIT-2 |  |  |  | TS | O |  |  |  |  |
| FRG.P2.B2.M.5970.1000 |  | MP Steam Spool / B2 / South / 5970 - FRAGNET | milestone | 0d | 2025-09-17 A | 2025-09-17 A | P2.B2.M.5970.1040 | 100% |  |  |  |  |  | 80 |  | Harris Fragnet | P2-5 | Harris | FIT-2 |  | P2.B2.23.20.410 | TA | TA | O | 2 | 1 |  |  |
| FRG.P2.B2.M.5970.1010 |  | Install Remaining Steam Spool / B2 / South / 5970 - FRAGNET |  | 20d | 2025-09-18 A | 2025-10-27 A | FRG.P2.B2.M.5970.1000 | 100% |  | 2025-10-01 | 2025-10-28 |  |  | 80 |  | Harris Fragnet | P2-5 | Harris | FIT-2 |  | P2.B2.23.20.410 | TA | TA |  | 2 | 1 |  |  |
| P2.B2.M.5970.1130 |  | Risers and Distribution Connections / B2 / South / 5970 |  | 5d | 2025-09-18 A | 2025-09-30 A | FRG.P2.B2.M.5970.1000 | 100% |  | 2025-10-01 | 2025-10-07 |  |  | 40 | ! | HVAC | P2-5 | Harris | HVAC |  |  | TS | TS |  |  |  |  |  |
| P2.B2.M.5970.1500 |  | Piping Spool Pieces & Field Connections (High Purity Water) / B2 / South / 5970 |  | 15d | 2025-10-01 A | 2025-10-21 A | P2.B2.M.5970.1050 | 100% |  |  |  |  |  | 120 | ! | MECH | P2-5 | Harris | MECH-2 |  |  |  | TS |  |  |  | Tie skids together (field connections) |  |
| FRG.P2.B2.M.5970.1120 |  | Temp Cooling Offline / B2 / South / 5970 - FRAGNET | milestone | 0d | 2025-10-01 A | 2025-10-01 A | P2.B2.M.5970.1480 | 100% |  |  |  |  |  | 80 |  | Harris Fragnet | P2-5 | Harris | FIT-2 |  | P2.B2.23.20.410 | TA | TA |  | 2 |  |  |  |
| FRG.P2.B2.M.5970.1040 |  | Install Remaining Reheat Spool / B2 / South / 5970 - FRAGNET |  | 20d | 2025-10-02 A | 2025-10-29 A | FRG.P2.B2.M.5970.1120 | 100% |  |  |  |  |  | 80 |  | Harris Fragnet | P2-5 | Harris | FIT-2 |  | P2.B2.23.20.410 | TA | TA |  | 2 | 2 |  |  |
| FRG.P2.B2.M.5970.1130 |  | Set CHW System Header & Equip (Post Temp Cool) / B2 / South / 5970 - FRAGNET |  | 20d | 2025-10-02 A | 2025-10-16 A | FRG.P2.B2.M.5970.1120 | 100% |  | 2025-10-02 | 2025-10-29 |  |  | 80 |  | Harris Fragnet | P2-5 | Harris | FIT-2 |  | P2.B2.23.20.410 | TA | TA |  | 2 |  |  |  |
| FRG.P2.B2.M.5970.1140 |  | Set CHW System Header & Equip (Post Temp Cool) / B2 / South / 5970 - FRAGNET |  | 12d | 2025-10-02 A | 2025-10-16 A | FRG.P2.B2.M.5970.1130 | 100% |  | 2025-10-30 | 2025-11-14 |  |  | 80 |  | Harris Fragnet | P2-5 | Harris | FIT-2 |  | P2.B2.23.20.410 | TA | TA |  | 2 |  |  |  |
| FRG.P2.B2.M.5970.1020 |  | Install Remaining Steam Spool / B2 / South / 5970 - FRAGNET |  | 4d | 2025-10-28 A | 2025-10-31 A | FRG.P2.B2.M.5970.1010 | 100% |  |  |  |  |  | 80 |  | Harris Fragnet | P2-5 | Harris | FIT-2 |  | P2.B2.23.20.410 | TA | TA |  | 2 | 1 |  |  |
| P2.B2.M.5970.1090 |  | Piping Spool Pieces & Field Connections / B2 / South / 5970 |  | 15d | 2025-10-29 A | 2025-11-26 A | P2.B2.M.5970.1070, P2.B2.M.5970.1030, P2.B2.M.5970.1060, BP1.230.3.110 | 100% |  | 2025-10-29 | 2025-11-18 |  |  | 120 | ! | MECH | P2-5 | Harris | MECH-2 |  |  | TS | TS |  |  |  | Tie skids together (field connections) |  |
| FRG.P2.B2.M.5970.1050 |  | Install Remaining Reheat Spool / B2 / South / 5970 - FRAGNET |  | 12d | 2025-10-30 A | 2025-12-19 A | FRG.P2.B2.M.5970.1040 | 100% |  | 2025-10-30 | 2025-11-14 |  |  | 80 |  | Harris Fragnet | P2-5 | Harris | FIT-2 |  | P2.B2.23.20.410 | TA | TA | O | 2 | 2 |  |  |
| P2.B2.M.5970.1070 |  | Install Hot Water Heaters / B2 / South / 5970 |  | 5d | 2025-11-03 A | 2025-11-07 A | P2.B2.M.5970.1410, BP1.220.3.100, P1.B2.03.290, BP1.220.3.110, P2.B2.S.1120 | 100% |  | 2025-12-01 | 2025-12-05 |  |  | 40 | ! | PLMB | P2-5 | Harris | PLMB |  |  | TS | TS |  |  |  |  |  |
| P2.B2.M.5970.1510 |  | Pressure Test Systems (High Purity Water) / B2 / South / 5970 |  | 5d | 2025-11-03 A | 2025-11-07 A | P2.B2.M.5970.1500 | 100% |  | 2025-12-01 | 2025-12-05 |  |  | 40 | ! | MECH | P2-5 | Harris | MECH-2 |  |  |  | TS |  |  |  |  |  |
| FRG.P2.B2.M.5970.2100 |  | Temp Heat - Prep for Flush / B2 / South / 5970 - FRAGNET |  | 1d | 2025-11-10 A | 2025-11-14 A | FRG.P2.B2.M.5970.1050 | 100% |  | 2025-12-08 | 2025-12-08 |  |  | 80 |  | Harris Fragnet | P2-5 | Harris | FIT-2 |  | P2.B2.23.20.410 | TA | TA |  | 2 | 2 |  |  |
| P2.B2.M.5970.1000 |  | BAS Equipment Install / B2 / South / 5970 |  | 5d | 2025-12-01 A | 2025-12-05 A | BP1.250.3.110, P2.B2.M.5970.1090 | 100% |  | 2026-01-02 | 2026-01-08 |  |  | 40 |  | BAS | P2-5 | Harris | BAS-1 |  |  | TS | TS | O |  |  |  |  |
| P2.B2.M.5970.1010 |  | Control Wiring to Equipment / B2 / South / 5970 |  | 5d | 2025-12-01 A | 2025-12-12 A | P2.B2.M.5970.1000, P2.B2.M.5970.1090 | 100% |  | 2026-01-09 | 2026-01-15 |  |  | 40 |  | BAS | P2-5 | Harris | BAS-1 |  |  | TS | TS | O |  |  |  |  |
| P2.B2.M.5970.1310 |  | Electrical Tie in to Equipment / B2 / South / 5970 |  | 5d | 2025-12-01 A | 2025-12-05 A | P2.B2.M.5970.1090, P2.B2.M.5970.1040 | 100% |  | 2026-01-02 | 2026-01-08 |  |  | 40 |  | ELEC | P2-5 |  | ELEC-2 |  |  | TS | TS | O |  |  |  |  |
| P2.B2.M.5970.1020 |  | Install Chilled Water Pump Skid / B2 / South / 5970 |  | 5d | 2025-12-08 A | 2025-12-12 A | P2.B2.M.5970.1410, P1.B2.03.290, BP1.224.3.940, P2.B2.S.1120, P2.B2.M.5970.1430, FRG.P2.B2.M.5970.2100 | 100% |  | 2026-01-23 | 2026-01-29 |  |  | 40 | ! | FIT | P2-5 | Harris | FIT-2 |  |  | TS | TS | O |  |  |  |  |
| P2.B2.M.5970.1110 |  | Pressure Test Systems / B2 / South / 5970 |  | 5d | 2025-12-18 A | 2026-02-27 A | P2.B2.M.5970.1090, P2.B2.M.5970.1130, P2.B2.M.5970.1020 | 100% |  | 2026-01-30 | 2026-02-05 |  |  | 40 | ! | MECH | P2-5 | Harris | MECH-2 |  |  | TS | TS | O |  |  |  | 8.2 |
| FRG.P2.B2.M.5970.1030 |  | Glycol Spool Delivery / B2 / South / 5970 - FRAGNET | milestone | 0d | 2026-01-02 A | 2026-01-02 A | P2.B2.M.5970.1030 | 100% |  |  |  |  |  | 80 |  | Harris Fragnet | P2-5 | Harris | FIT-2 |  | P2.B2.23.20.410 | TA | TA | O | 2 | 2 |  | 7 |
| FRG.P2.B2.M.5970.1060 |  | Install Glycol Spool / B2 / South / 5970 - FRAGNET |  | 20d | 2026-01-05 A | 2026-01-30 A | FRG.P2.B2.M.5970.1030 | 100% |  | 2026-02-02 | 2026-02-27 |  |  | 80 |  | Harris Fragnet | P2-5 | Harris | FIT-2 |  | P2.B2.23.20.410 | TA | TA | O | 2 | 2 |  | 7 |
| FRG.P2.B2.M.5970.1150 |  | Install CHW & PCHW System Spools / B2 / South / 5970 - FRAGNET |  | 20d | 2026-01-20 A | 2026-02-16 A | FRG.P2.B2.M.5970.1120, FRG.P2.B2.M.5970.1140 | 100% |  | 2026-02-02 | 2026-02-27 |  |  | 80 |  | Harris Fragnet | P2-5 | Harris | FIT-2 |  | P2.B2.23.20.410 | TA | TA | O | 2 |  |  | 2.1 |
| FRG.P2.B2.M.5970.1100 |  | Install Glycol Spool / B2 / South / 5970 - FRAGNET |  | 20d | 2026-02-02 A | 2026-03-13 A | FRG.P2.B2.M.5970.1060 | 100% |  | 2026-03-03 | 2026-03-30 |  |  | 80 |  | Harris Fragnet | P2-5 | Harris | FIT-2 |  | P2.B2.23.20.410 | TA | DG | O | 2 |  |  | 7 |
| FRG.P2.B2.M.5970.1160 |  | Install CHW & PCHW System Spools / B2 / South / 5970 - FRAGNET |  | 20d | 2026-02-02 A | 2026-02-27 A | FRG.P2.B2.M.5970.1150 | 100% |  | 2026-03-02 | 2026-03-27 |  |  | 80 |  | Harris Fragnet | P2-5 | Harris | FIT-2 |  | P2.B2.23.20.410 | TA | TA | O | 2 |  |  |  |
| FRG.P2.B2.M.5970.1170 |  | Install CHW & PCHW System Spools/ B2 / South / 5970 - FRAGNET |  | 10d | 2026-03-02 A | 2026-03-16 A | FRG.P2.B2.M.5970.1160 | 100% |  | 2026-04-01 | 2026-04-14 |  |  | 80 |  | Harris Fragnet | P2-5 | Harris | FIT-2 |  | P2.B2.23.20.410 | TA | DG |  | 2 |  |  |  |
| FRG.P2.B2.M.5970.2090 |  | AHU Piping Install / B2 - FRAGNET |  | 20d | 2026-03-16 A | 2026-04-28 | FRG.P2.L7.SMT.1050 |  | 20d | 2026-03-16 | 2026-04-10 | 84d | 7d | 80 |  | Harris Fragnet | P2-5 | Harris | FIT-2 |  | P2.B2.23.20.410 | TA | DG |  | 2 |  |  |  |
| FRG.P2.B2.M.5970.1110 |  | Install Glycol Spool / B2 / South / 5970 - FRAGNET |  | 12d | 2026-03-16 A | 2026-04-02 | FRG.P2.B2.M.5970.1100 | 83% | 2d | 2026-04-01 | 2026-04-16 | 22d | 0d | 80 |  | Harris Fragnet | P2-5 | Harris | FIT-2 |  | P2.B2.23.20.410 | TA | DG |  | 2 |  |  | 7 |
| FRG.P2.B2.M.5970.1070 |  | PH Glycol & CHW/PCHW - Prep for Flushing / B2 / South / 5970 - FRAGNET |  | 12d | 2026-03-17 A | 2026-03-27 A | FRG.P2.B2.M.5970.1050, FRG.P2.B2.M.5970.1170 | 100% |  | 2026-04-15 | 2026-04-30 |  |  | 80 |  | Harris Fragnet | P2-5 | Harris | FIT-2 |  | P2.B2.23.20.410 | TA | DG |  | 2 | 2 |  |  |
| P2.B2.M.5970.1490 |  | OH Mechanical Piping Install (Humidification) / B2 / South / 5970 |  | 20d | 2026-03-18 A | 2026-04-16 | P2.B2.M.5970.1480, FRG.P2.B2.M.5970.1110 | 50% | 10d | 2026-03-18 | 2026-04-14 | 80d | 0d | 40 | ! | MECH | P2-5 | Harris | MECH-2 |  |  | TS | TS |  |  |  |  |  |
| FRG.P2.B2.M.5970.1080 |  | PH Glycol & CHW/PCHW - System Install / B2 / South / 5970 - FRAGNET |  | 15d | 2026-03-30 A | 2026-03-31 A | FRG.P2.B2.M.5970.1070 | 100% |  | 2026-05-01 | 2026-05-21 |  |  | 80 |  | Harris Fragnet | P2-5 | Harris | FIT-2 |  | P2.B2.23.20.410 | TA | DG |  | 2 |  |  |  |
| FRG.P2.B2.M.5970.1090 |  | PH Glycol & CHW/PCHW - Fill & flush/ B2 / South / 5970 - FRAGNET |  | 15d | 2026-03-31 A | 2026-04-07 | FRG.P2.B2.M.5970.1080 | 67% | 5d | 2026-04-03 | 2026-04-23 | 19d | 0d | 80 |  | Harris Fragnet | P2-5 | Harris | FIT-2 |  | P2.B2.23.20.410 | TA | DG |  | 2 |  |  |  |
| P2.B2.M.5970.1270 |  | Lighting Install / B2 / South / 5970 |  | 5d | 2026-04-01 | 2026-04-07 | P2.B2.M.5970.1390 |  |  |  |  | 184d | 0d | 40 | ! | ELEC | P2-5 |  | ELEC-2 |  |  | TS | TS | O |  |  |  |  |
| P2.B2.M.5970.2160 |  | Install Domestic Water Softener / B2 / South / 5970 |  | 5d | 2026-04-01 | 2026-04-07 | BP1.223.3.100 |  |  |  |  | 102d | 0d | 40 | ! | PLMB | P2-5 | Harris | PLMB |  |  | TS | TS | O |  |  |  |  |
| P2.B2.M.5970.1120 |  | Insulate / B2 / South / 5970 |  | 5d | 2026-04-08 | 2026-04-14 | P2.B2.M.5970.1130, P2.B2.M.5970.1110, FRG.P2.B2.M.5970.1090 |  |  |  |  | 39d |  | 40 | ! | INSUL | P2-5 | Harris | INSUL-3 |  |  | TS | TS |  |  |  |  |  |
| P2.B2.M.5970.1280 |  | Fire Alarm/Ceiling Device Install / B2 / South / 5970 |  | 5d | 2026-04-08 | 2026-04-14 | P2.B2.M.5970.1270 |  |  |  |  | 184d | 0d | 40 | ! | FA | P2-5 |  | FA-1 |  |  | TS | TS | O |  |  |  |  |
| P2.B2.M.5970.1320 |  | Ready for Start Up - Mech Equip / B2 / South / 5970 |  | 5d | 2026-04-08 | 2026-04-14 | P2.B2.M.5970.1010, P2.B2.M.5970.1310, FRG.P2.B2.M.5970.1090 |  |  |  |  | 39d | 20d | 40 |  | MECH | P2-5 | Harris | MECH-2 |  |  | TS | TS |  |  |  |  |  |
| P2.B2.M.5970.2170 |  | Install Piping for Domestic Water Softener / B2 / South / 5970 |  | 5d | 2026-04-08 | 2026-04-14 | P2.B2.M.5970.2160 |  |  |  |  | 102d | 0d | 40 | ! | PLMB | P2-5 | Harris | PLMB |  |  | TS | TS |  |  |  |  |  |
| P2.B2.M.5970.2180 |  | Install Wiring for Domestic Water Softener / B2 / South / 5970 |  | 5d | 2026-04-15 | 2026-04-21 | P2.B2.M.5970.2170 |  |  |  |  | 102d | 89d | 40 | ! | PLMB | P2-5 | Harris | PLMB |  |  | TS | TS |  |  |  |  |  |
| P2.B2.N.1560 |  | Trades Inspect & Verify R/I Work Completed to Specs / B2 / South / 5970 |  | 5d | 2026-04-15 | 2026-04-21 | P2.B2.M.5970.2150, P2.B2.M.5970.1110, P2.B2.M.5970.1270, P2.B2.M.5970.1280, P2.B2.M.5970.1130, FRG.P2.B2.M.5970.1020, FRG.P2.B2.M.5970.1170 |  |  |  |  | 184d | 0d | 40 |  | T | P2-5 |  | T |  |  | TS | TS |  |  |  |  |  |
| P2.B2.M.5970.2190 |  | Preasure Test Clean Steam (Humidification) / B2 / South / 5970 |  | 5d | 2026-04-17 | 2026-04-23 | P2.B2.M.5970.1490 |  |  |  |  | 80d | 0d | 40 | ! | MECH | P2-5 | Harris | MECH-2 |  |  | TS | TS |  |  |  |  |  |
| P2.B2.M.5970.1290 |  | Prep Floor for Flooring - Epoxy Floors / B2 / South / 5970 |  | 5d | 2026-04-22 | 2026-04-28 | P2.B2.M.5970.1210, BP7.096.3.200, P2.B2.N.1560 |  |  |  |  | 184d | 0d | 40 | ! | EPOXYF | P2-5 |  | EPOXYF |  |  | TS | TS |  |  |  |  |  |
| P2.B2.M.5970.2200 |  | Flush Clean Steam (Humidification) / B2 / South / 5970 |  | 20d | 2026-04-24 | 2026-05-21 | P2.B2.M.5970.2190 |  |  |  |  | 80d | 67d | 40 | ! | MECH | P2-5 | Harris | MECH-2 |  |  | TS | TS |  |  |  |  |  |
| P2.B2.M.5970.1300 |  | Flooring - Epoxy Floors / B2 / South / 5970 |  | 2d | 2026-04-29 | 2026-04-30 | P2.B2.M.5970.1290, P2.B2.HE.5920.1080 |  |  |  |  | 184d | 44d | 40 | ! | EPOXYF | P2-5 |  | EPOXYF |  |  | TS | TS |  |  |  |  |  |
| P2.B2.M.5970.1420 |  | Hydraulic Lift Installation / B2 / South / 5970 |  | 10d | 2026-07-06 | 2026-07-17 | BP9.111.3.110, P2.B2.S.1470, P2.B2.M.5970.1300 |  |  |  |  | 140d | 0d | 40 | ! | FLOOR | P2-5 |  | FLOOR |  |  |  | TS |  |  |  |  | 1 |
| P2.B2.M.5970 |  | Overhead Coiling Door Install / B2 / South / 5970 |  | 5d | 2026-07-20 | 2026-07-24 | BP8.083.3.100, P2.B2.S.1470, P2.B2.M.5970.1420 |  |  |  |  | 140d | 74d | 40 | ! | OHDOOR | P2-5 |  | OHDOOR |  |  | SS | TS |  |  |  |  | 1 |

| ID | WBS | Activity | Duration | Start | Finish | Predecessors | Complete | Remaining | Planned start | Planned finish | Total float | Free float | Temp Orig Dur | *NIH Resp Check* | Resp / SRLM | PHASE | Z.RESP | RESP / Trade | Testing Type | Update Status | 744 | RESP UPD | NOTES |
| --- | --- | --- | --- | --- | --- | --- | --- | --- | --- | --- | --- | --- | --- | --- | --- | --- | --- | --- | --- | --- | --- | --- | --- |
|  | 2 | **Mechanical B2-5985 (Z1)** |  | 2024-11-05 | 2026-05-14 |  |  |  |  |  |  |  |  |  |  |  |  |  |  |  |  |  |  |
| P2.B2.M.5985.1310 |  | OH Mechanical Piping Install / B2 / South / 5985 | 15d | 2024-11-05 A | 2025-04-01 A | P2.B2.M.5985.1300 FF+5d | 100% |  | 2025-03-24 | 2025-04-11 |  |  | 40 | ! | MECH | P2-5 | Harris | MECH-2 |  |  |  |  |  |
| P2.B2.M.5985.1110 |  | Layout - All Trades / B2 / South / 5985 | 5d | 2024-11-08 A | 2024-11-08 A | P2.B2.M.5970.1140 | 100% |  | 2024-12-02 | 2024-12-06 |  |  | 40 | ! | R/I.OH | P2-5 | Harris | R/I.OH |  |  |  |  |  |
| P2.B2.M.5985.1120 |  | OH Structural Supports / B2 / South / 5985 | 5d | 2024-11-08 A | 2025-01-23 A | P2.B2.M.5985.1110, P2.BIM.B2.40.140 | 100% |  | 2024-12-09 | 2024-12-13 |  |  | 40 | ! | MISCMTL | P2-5 |  | MISCMTL | AT24 |  |  |  |  |
| P2.B2.M.5985.1290 |  | OH Fire Suppression Install / B2 / South / 5985 | 5d | 2024-12-10 A | 2024-12-31 A | P2.B2.M.5970.1380 | 100% |  | 2025-02-03 | 2025-02-07 |  |  | 40 | ! | FP | P2-5 |  | FP-1 |  |  |  |  |  |
| P2.B2.M.5985.1340 |  | Paint OH Fire Suppression / B2 / South / 5985 | 2d | 2025-02-10 A | 2025-02-11 A | P2.B2.M.5985.1290 | 100% |  | 2025-03-10 | 2025-03-11 |  |  | 40 | ! | FP | P2-5 |  | FP-1 |  |  |  |  |  |
| P2.B2.M.5985.1300 |  | OH Electrical Install / B2 / South / 5985 | 10d | 2025-02-19 A | 2025-04-11 A | P2.B2.M.5985.1340 | 100% |  | 2025-03-19 | 2025-04-01 |  |  | 40 | ! | ELEC | P2-5 |  | ELEC-3 |  |  |  |  |  |
| P2.B2.M.5985.1180 |  | Fire Caulk MEPF Penetrations / B2 / South / 5985 | 5d | 2025-04-03 A | 2025-05-21 A | P2.B2.M.5985.1310, P2.B2.M.5985.1130 | 100% |  | 2025-05-22 | 2025-05-29 |  |  | 40 | ! | FIRESTO | P2-5 |  | FIRESTO | AT48 |  |  |  |  |
| P2.B2.M.5985.1130 |  | OH Mechanical Ductwork (High) Install / B2 / South / 5985 | 10d | 2025-05-27 A | 2025-09-02 A | P2.B2.M.5970.1160, P2.B2.M.5985.1120 | 100% |  | 2025-06-02 | 2025-06-13 |  |  | 40 | ! | HVAC | P2-5 | Harris | HVAC |  | O | SS | SS |  |
| P2.B2.M.5985.1060 |  | Piping Spool Pieces & Field Connections / B2 / South / 5985 | 15d | 2025-06-02 A | 2025-06-20 A | P2.B2.M.5985.1020, P2.B2.M.5985.1030 | 100% |  | 2025-07-16 | 2025-08-05 |  |  | 120 | ! | HVAC | P2-5 | Harris | HVAC |  |  | SS | SS |  |
| P2.B2.M.5985.1100 |  | Riser and Distribution Connections / B2 / South / 5985 | 15d | 2025-06-02 A | 2025-06-20 A | P2.B2.M.5985.1000 | 100% |  | 2025-08-13 | 2025-09-03 |  |  | 40 | ! | HVAC | P2-5 | Harris | HVAC |  |  | SS | SS |  |
| P2.B2.M.5985.1080 |  | Pressure Test Systems / B2 / South / 5985 | 5d | 2025-07-16 A | 2025-11-19 A | P2.B2.M.5985.1040, P2.B2.M.5985.1060 | 100% |  | 2025-08-15 | 2025-08-21 |  |  | 40 | ! | MECH | P2-5 | Harris | MECH-2 |  |  | SS | SS |  |
| P2.B2.M.5985.1330 |  | Test OH Fire Suppression / B2 / South / 5985 | 5d | 2025-07-18 A | 2025-09-09 A | P2.B2.M.5985.1290 | 100% |  | 2025-08-01 | 2025-08-07 |  |  | 40 | ! | FP | P2-5 |  | FP-1 |  | O | SS | SS |  |
| P2.B2.M.5985.1320 |  | Insulate High MEP / B2 / South / 5985 | 5d | 2025-10-31 A | 2025-12-24 A | P2.B2.M.5985.1310 | 100% |  | 2025-10-01 | 2025-10-07 |  |  | 40 | ! | INSUL | P2-5 | Harris | INSUL-3 |  | O | SS | SS |  |
| P2.B2.M.5985.1020 |  | Install Domestic Water Heat Exchanger / B2 / South / 5985 | 5d | 2025-11-17 A | 2025-11-24 A | P2.B2.M.5985.1320, P1.B2.03.290, BP1.235.3.100 | 100% |  | 2025-12-08 | 2025-12-12 |  |  | 40 | ! | PLMB | P2-5 | Harris | PLMB |  |  | SS | SS | installed mid Sept. |
| P2.B2.M.5985.1030 |  | Install Backflow Preventer Skids / B2 / South / 5985 | 5d | 2025-11-17 A | 2025-11-21 A | P2.B2.M.5985.1320, P1.B2.03.290, BP1.226.3.140 | 100% |  | 2025-12-08 | 2025-12-12 |  |  | 40 | ! | PLMB | P2-5 | Harris | PLMB |  |  | SS | SS |  |
| P2.B2.M.5985.1040 |  | Install Booster Pump (BP-1) / B2 / South / 5985 | 5d | 2025-11-17 A | 2025-11-21 A | P2.B2.M.5985.1320, P1.B2.03.290, BP1.220.3.140 | 100% |  | 2025-12-08 | 2025-12-12 |  |  | 40 | ! | PLMB | P2-5 | Harris | PLMB |  |  | SS | SS |  |
| P2.B2.M.5985.1000 |  | BAS Equipment Install / B2 / South / 5985 | 5d | 2025-12-08 A | 2025-12-12 A | P2.B2.M.5985.1060 | 100% |  | 2026-01-09 | 2026-01-15 |  |  | 40 |  | BAS | P2-5 | Harris | BAS-1 |  | O | SS | SS |  |
| P2.B2.M.5985.1010 |  | Control Wiring to Equipment / B2 / South / 5985 | 5d | 2025-12-15 A | 2026-01-29 A | P2.B2.M.5985.1000 | 100% |  | 2026-01-16 | 2026-01-22 |  |  | 40 |  | BAS | P2-5 | Harris | BAS-1 |  | O | SS | SS |  |
| P2.B2.M.5985.1090 |  | Insulate/Label / B2 / South / 5985 | 5d | 2026-03-02 A | 2026-04-07 | P2.B2.M.5985.1010, P2.B2.M.5985.1180, P2.B2.M.5985.1080, P2.B2.M.5985.1100 |  | 5d | 2026-03-02 | 2026-03-06 | 112d | 0d | 40 | ! | INSUL | P2-5 | Harris | INSUL-3 |  | O | SS | DG |  |
| P2.B2.M.5970.1330 |  | Ready for Start Up - Mech Equip / B2 / South / 5985 | 5d | 2026-04-01 | 2026-04-07 | P2.B2.M.5985.1010 |  |  |  |  | -6d | 4d | 40 |  | MECH | P2-5 | Harris | MECH-2 |  | O | SS | SS |  |
| P2.B2.M.5985.1280 |  | Electrical Tie in to Equipment / B2 / South / 5985 | 5d | 2026-04-01 | 2026-04-07 | P2.B2.M.5985.1060 |  |  |  |  | 134d | 22d | 40 |  | ELEC | P2-5 |  | ELEC-2 |  | O | SS | SS |  |
| P2.B2.M.5985.1230 |  | HVAC - GRD's / B2 / South / 5985 | 5d | 2026-04-08 | 2026-04-14 | P2.B2.M.5985.1090 |  |  |  |  | 112d | 0d | 40 | ! | HVAC | P2-5 | Harris | HVAC |  | O | SS | SS |  |
| P2.B2.M.5985.1240 |  | Lighting Install / B2 / South / 5985 | 5d | 2026-04-15 | 2026-04-21 | P2.B2.M.5985.1230 |  |  |  |  | 112d | 0d | 40 | ! | ELEC | P2-5 |  | ELEC-2 |  |  | SS | DG |  |
| P2.B2.M.5985.1250 |  | Fire Alarm/Ceiling Device Install / B2 / South / 5985 | 5d | 2026-04-22 | 2026-04-28 | P2.B2.M.5985.1240 |  |  |  |  | 112d | 0d | 40 | ! | FA | P2-5 |  | FA-1 |  |  | SS | DG |  |
| P2.B2.M.5985.1260 |  | Prep Floor for Flooring - Epoxy Floors / B2 / South / 5985 | 5d | 2026-04-29 | 2026-05-05 | P2.B2.M.5985.1250, BP7.096.3.200 |  |  |  |  | 112d | 0d | 40 | ! | EPOXYF | P2-5 |  | EPOXYF |  |  | SS | DG |  |
| P2.B2.M.5985.1270 |  | Flooring - Epoxy Floors / B2 / South / 5985 | 2d | 2026-05-06 | 2026-05-07 | P2.B2.M.5985.1260 |  |  |  |  | 112d | 0d | 40 | ! | EPOXYF | P2-5 |  | EPOXYF |  |  | SS | DG |  |
| P2.B2.N.1570 |  | Trades Inspect & Verify R/I Work Completed to Specs / B2 / South / 5985 | 5d | 2026-05-08 | 2026-05-14 | P2.B2.M.5985.1280, P2.B2.M.5985.1270 |  |  |  |  | 112d | 16d | 40 |  | T | P2-5 |  | T |  |  | SS | DG |  |

| ID | WBS | Activity | Duration | Start | Finish | Predecessors | Complete | Remaining | Planned start | Planned finish | Total float | Free float | Temp Orig Dur | *NIH Resp Check* | Resp / SRLM | PHASE | Z.RESP | RESP / Trade | Testing Type | 744 | RESP UPD | Update Status |
| --- | --- | --- | --- | --- | --- | --- | --- | --- | --- | --- | --- | --- | --- | --- | --- | --- | --- | --- | --- | --- | --- | --- |
|  | 3 | **Mechanical B2-2910 (Z2)** |  | 2024-11-08 | 2026-05-07 |  |  |  |  |  |  |  |  |  |  |  |  |  |  |  |  |  |
| P2.B2.M.2910.1040 |  | Layout - All Trades / B2 / North / 2910 | 5d | 2024-11-08 A | 2024-11-11 A | P2.B2.M.5985.1110 | 100% |  | 2024-12-02 | 2024-12-06 |  |  | 40 | ! | R/I.OH | P2-5 | Harris | R/I.OH |  |  |  |  |
| P2.B2.M.2910.1050 |  | OH Structural Supports / B2 / North / 2910 | 5d | 2024-11-22 A | 2025-01-10 A | P2.B2.M.2910.1040, P2.BIM.B2.40.140 | 100% |  | 2024-12-02 | 2024-12-06 |  |  | 40 | ! | MISCMTL | P2-5 |  | MISCMTL | AT24 |  |  |  |
| P2.B2.M.2910.1060 |  | OH Fire Suppression Install / B2 / North / 2910 | 5d | 2024-11-22 A | 2025-02-04 A | P2.B2.M.2910.1050 SS | 100% |  | 2024-12-16 | 2024-12-20 |  |  | 40 | ! | FP | P2-5 |  | FP-1 |  |  |  |  |
| P2.B2.M.2910.1230 |  | OH Electrical Install / B2 / North / 2910 | 5d | 2025-01-10 A | 2025-04-01 A | P2.B2.M.2910.1270 SS | 100% |  | 2025-02-13 | 2025-02-19 |  |  | 40 | ! | ELEC | P2-5 |  | ELEC-3 |  |  |  |  |
| P2.B2.M.2910.1270 |  | Paint OH Fire Suppression Install / B2 / North / 2910 | 2d | 2025-01-21 A | 2025-04-02 A | P2.B2.M.2910.1060 FF | 100% |  | 2025-02-11 | 2025-02-12 |  |  | 40 | ! | FP | P2-5 |  | FP-1 |  |  |  |  |
| P2.B2.M.2910.1240 |  | OH Mechanical Piping Install / B2 / North / 2910 | 15d | 2025-03-10 A | 2025-04-28 A | P2.B2.M.5970.1400, P2.B2.M.2910.1230 FF+14d | 100% |  | 2025-03-10 | 2025-03-28 |  |  | 40 | ! | MECH | P2-5 | Harris | MECH-2 |  |  |  |  |
| P2.B2.M.2910.1250 |  | Insulate High MEP / B2 / North / 2910 | 5d | 2025-07-09 A | 2025-07-15 A | P2.B2.M.2910.1240, P2.B2.M.2910.1260 | 100% |  | 2025-08-08 | 2025-08-14 |  |  | 40 | ! | INSUL | P2-5 | Harris | INSUL-3 |  | SS | SS |  |
| P2.B2.M.2910.1260 |  | Test OH Fire Suppression Install / B2 / North / 2910 | 5d | 2025-07-18 A | 2025-10-24 A | P2.B2.M.2910.1060 FF+1d, P2.B2.M.2910.1270 | 100% |  | 2025-08-01 | 2025-08-07 |  |  | 40 | ! | FP | P2-5 |  | FP-1 |  | SS | SS |  |
| P2.B2.M.2910.1220 |  | Install Equipment DUCT / B2 / North / 2910 | 10d | 2025-09-02 A | 2025-09-16 A | P2.B2.M.2910.1030 | 100% |  | 2025-10-13 | 2025-10-24 |  |  | 40 | ! | HVAC | P2-5 | Harris | HVAC |  | SS | SS | O |
| P2.B2.M.2910.1020 |  | Install AHU B2-3 & B2-4 / B2 / North / 2910 | 5d | 2025-09-15 A | 2025-09-19 A | P2.B2.M.2910.1250, BP1.237.3.200, P1.B2.03.290 | 100% |  | 2025-10-03 | 2025-10-09 |  |  | 40 | ! | HVAC | P2-5 | Harris | HVAC |  | SS | SS | O |
| P2.B2.M.2910.1030 |  | Install RF B2-T1 / B2 / North / 2910 | 5d | 2025-09-22 A | 2025-09-22 A | P2.B2.M.2910.1250, BP1.237.3.100, P1.B2.03.290 | 100% |  | 2025-10-06 | 2025-10-10 |  |  | 40 | T.MEP.MECH | HVAC | P2-5 | Harris | HVAC |  | SS | SS | O |
| P2.B2.M.2910.1000 |  | BAS Equipment Install / B2 / North / 2910 | 5d | 2025-10-01 A | 2025-10-04 A | P2.B2.M.2910.1020 | 100% |  | 2025-10-03 | 2025-10-09 |  |  | 40 |  | BAS | P2-5 | Harris | BAS-1 |  | SS | SS |  |
| P2.B2.M.2910.1210 |  | Electrical Tie in to Equipment / B2 / North / 2910 | 5d | 2025-12-01 A | 2026-04-01 | P2.B2.M.2910.1020, P2.B2.M.2910.1030 | 80% | 1d | 2026-01-02 | 2026-01-08 | 48d | 21d | 40 |  | ELEC | P2-5 |  | ELEC-2 |  | SS | SS | O |
| P2.B2.M.2910.1110 |  | Fire Caulk MEPF Penetrations / B2 / North / 2910 | 5d | 2026-03-02 A | 2026-04-07 | P2.B2.M.2910.1240 |  | 5d | 2026-03-02 | 2026-03-06 | 42d | 15d | 40 | ! | FIRESTO | P2-5 |  | FIRESTO | AT48 | SS | DG | O |
| BP1.226.2.190 |  | Install - Waste Water Tanks | 10d | 2026-03-10 A | 2026-03-11 A | P2.B2.M.2910.1030, BP1.226.2.180 | 100% |  | 2026-03-02 | 2026-03-13 |  |  | 280 |  | NIH | P01 |  | NIH |  |  | SS | O |
| P2.B2.M.2910.1010 |  | Control Wiring to Equipment / B2 / North / 2910 | 5d | 2026-04-01 | 2026-04-07 | P2.B2.M.2910.1000, P2.B2.M.2910.1030 |  |  |  |  | 44d | 17d | 40 |  | BAS | P2-5 | Harris | BAS-1 |  | SS | SS | O |
| P2.B2.M.2910.1160 |  | HVAC - GRD's / B2 / North / 2910 | 5d | 2026-04-01 | 2026-04-07 | P2.B2.M.2910.1030 |  |  |  |  | 27d | 0d | 40 | ! | HVAC | P2-5 | Harris | HVAC |  | SS | SS | O |
| P2.B2.M.2910.1170 |  | Lighting Install / B2 / North / 2910 | 5d | 2026-04-08 | 2026-04-14 | P2.B2.M.2910.1220, P2.B2.M.2910.1160 |  |  |  |  | 27d | 0d | 40 | ! | ELEC | P2-5 |  | ELEC-2 |  | SS | SS | O |
| P2.B2.M.2910.1180 |  | Fire Alarm/Ceiling Device Install / B2 / North / 2910 | 5d | 2026-04-15 | 2026-04-21 | P2.B2.M.2910.1170 |  |  |  |  | 27d | 0d | 40 | ! | FA | P2-5 |  | FA-1 |  | SS | SS | O |
| P2.B2.M.2910.1190 |  | Prep Floor for Flooring - Epoxy Floors / B2 / North / 2910 | 5d | 2026-04-22 | 2026-04-28 | P2.B2.M.2910.1180, BP7.096.3.200 |  |  |  |  | 27d | 0d | 40 | ! | EPOXYF | P2-5 |  | EPOXYF |  | SS | DG | O |
| P2.B2.M.2910.1200 |  | Flooring - Epoxy Floors / B2 / North / 2910 | 2d | 2026-04-29 | 2026-04-30 | P2.B2.M.2910.1110, P2.B2.M.2910.1190 |  |  |  |  | 27d | 0d | 40 | ! | EPOXYF | P2-5 |  | EPOXYF |  | SS | DG | O |
| P2.B2.M.5970.1340 |  | Ready for Start Up - Mech Equip / B2 / North / 2910 | 5d | 2026-05-01 | 2026-05-07 | P2.B2.M.2910.1210, P2.B2.N.1580 SS |  |  |  |  | 27d | 0d | 40 |  | MECH | P2-5 | Harris | MECH-2 |  | SS | DG |  |
| P2.B2.N.1580 |  | Trades Inspect & Verify R/I Work Completed to Specs / B2 / North / 2910 | 5d | 2026-05-01 | 2026-05-07 | P2.B2.M.2910.1010, P2.B2.M.2910.1210, P2.B2.M.2910.1200 |  |  |  |  | 27d | 0d | 40 |  | T | P2-5 |  | T |  | SS | DG |  |

| ID | WBS | Activity | Duration | Start | Finish | Predecessors | Complete | Remaining | Planned start | Planned finish | Total float | Free float | Temp Orig Dur | *NIH Resp Check* | Resp / SRLM | PHASE | Z.RESP | RESP / Trade | Testing Type | Update Status | 744 | RESP UPD |
| --- | --- | --- | --- | --- | --- | --- | --- | --- | --- | --- | --- | --- | --- | --- | --- | --- | --- | --- | --- | --- | --- | --- |
|  | 4 | **Mechanical B2-2930 (Z2)** |  | 2024-11-15 | 2026-05-27 |  |  |  |  |  |  |  |  |  |  |  |  |  |  |  |  |  |
| P2.B2.M.2930.1130 |  | Layout - All Trades / B2 / North / 2930 | 5d | 2024-11-15 A | 2024-11-21 A | P2.B2.M.2910.1040 | 100% |  | 2024-12-16 | 2024-12-20 |  |  | 40 | ! | R/I.OH | P2-5 | Harris | R/I.OH |  |  |  |  |
| P2.B2.M.2930.1140 |  | OH Structural Supports / B2 / North / 2930 | 5d | 2025-02-03 A | 2025-02-07 A | P2.B2.M.2930.1130, P2.BIM.B2.40.140 | 100% |  | 2025-03-03 | 2025-03-07 |  |  | 40 | ! | MISCMTL | P2-5 |  | MISCMTL | AT24 |  |  |  |
| P2.B2.M.2930.1150 |  | OH Fire Suppression Install / B2 / North / 2930 | 5d | 2025-02-10 A | 2025-02-14 A | P2.B2.M.2910.1060, P2.B2.M.2930.1140 | 100% |  | 2025-03-10 | 2025-03-14 |  |  | 40 | ! | FP | P2-5 |  | FP-1 |  |  |  |  |
| P2.B2.M.2930.1350 |  | Paint OH Fire Suppression / B2 / North / 2930 | 2d | 2025-02-24 A | 2025-02-25 A | P2.B2.M.2930.1150 | 100% |  | 2025-03-24 | 2025-03-25 |  |  | 40 | ! | FP | P2-5 |  | FP-1 |  |  |  |  |
| P2.B2.M.2930.1320 |  | OH Mechanical Piping Install / B2 / North / 2930 | 15d | 2025-04-29 A | 2025-09-16 A | P2.B2.M.2910.1240, P2.B2.M.2930.1310 | 100% |  | 2025-05-30 | 2025-06-19 |  |  | 40 | ! | MECH | P2-5 | Harris | MECH-2 |  | O | SS | SS |
| P2.B2.M.2930.1340 |  | Test OH Fire Suppression / B2 / North / 2930 | 5d | 2025-07-18 A | 2025-10-24 A | P2.B2.M.2930.1150, P2.B2.M.5985.1330 SS | 100% |  | 2025-08-01 | 2025-08-07 |  |  | 40 | ! | FP | P2-5 |  | FP-1 |  |  | SS | SS |
| P2.B2.M.2930.1310 |  | OH Electrical Install / B2 / North / 2930 | 10d | 2025-10-01 A | 2025-10-11 A | P2.B2.M.2930.1350, P2.B2.M.2930.1340 | 100% |  | 2025-10-03 | 2025-10-16 |  |  | 40 | ! | ELEC | P2-5 |  | ELEC-3 |  |  | SS | SS |
| P2.B2.M.2930.1030 |  | Install Med Air Skid / B2 / North / 2930 | 5d | 2025-11-17 A | 2025-11-24 A | P2.B2.M.2930.1330, BP1.226.3.900, P2.HZ.E.51 | 100% |  | 2025-12-08 | 2025-12-12 |  |  | 40 | ! | PLMB | P2-5 | Harris | PLMB |  |  |  | SS |
| P2.B2.M.2930.1040 |  | Install WAGD Skid / B2 / North / 2930 | 5d | 2025-11-17 A | 2025-11-24 A | BP1.226.3.100, P1.B2.03.290, P2.B2.M.2930.1330, P2.HZ.E.51 | 100% |  | 2025-12-08 | 2025-12-12 |  |  | 40 | ! | MECH | P2-5 | Harris | MECH-2 |  |  | SS | SS |
| P2.B2.M.2930.1330 |  | Insulate High MEP / B2 / North / 2930 | 5d | 2025-12-01 A | 2025-12-01 A | P2.B2.M.2930.1320 | 100% |  | 2026-01-02 | 2026-01-08 |  |  | 40 | ! | INSUL | P2-5 | Harris | INSUL-3 |  | O | SS | SS |
| P2.B2.M.2930.1020 |  | Install Med Vacuum Skid / B2 / North / 2930 | 5d | 2025-12-09 A | 2025-12-09 A | P1.B2.03.290, P2.B2.M.2930.1330, BP1.226.1.100, P2.HZ.E.51 | 100% |  | 2026-01-09 | 2026-01-15 |  |  | 40 | ! | PLMB | P2-5 | Harris | PLMB |  | O | SS | SS |
| P2.B2.M.2930.1050 |  | Install MVP Skid / B2 / North / 2930 | 5d | 2025-12-09 A | 2025-12-09 A | P1.B2.03.290, P2.B2.M.2930.1330, BP1.226.3.900, P2.HZ.E.51 | 100% |  | 2026-01-09 | 2026-01-15 |  |  | 40 | ! | MECH | P2-5 | Harris | MECH-2 |  | O |  | SS |
| P2.B2.M.2930.1210 |  | Fire Caulk MEPF Penetrations / B2 / North / 2930 | 5d | 2026-03-02 A | 2026-04-03 | P2.B2.M.2930.1320 | 40% | 3d | 2026-03-02 | 2026-03-06 | 36d | 22d | 40 | ! | FIRESTO | P2-5 |  | FIRESTO | AT48 | O | SS | DG |
| P2.B2.M.2930.1110 |  | Risers and Distribution Connections / B2 / North / 2930 | 5d | 2026-03-03 A | 2026-03-07 A | P2.B2.M.2930.1320 | 100% |  | 2026-05-06 | 2026-05-12 |  |  | 40 | ! | HVAC | P2-5 | Harris | HVAC |  |  |  | DG |
| P2.B2.M.2930.1070 |  | Piping Spool Pieces & Field Connections / B2 / North / 2930 | 15d | 2026-04-01 | 2026-04-21 | P2.B2.M.2930.1050 |  |  |  |  | 14d | 0d | 120 | ! | HVAC | P2-5 | Harris | HVAC |  | O |  | DG |
| P2.B2.M.2930.1100 |  | Insulate / B2 / North / 2930 | 5d | 2026-04-01 | 2026-04-07 | P2.B2.M.2930.1110 |  |  |  |  | 14d | 0d | 40 | ! | INSUL | P2-5 | Harris | INSUL-3 |  |  |  | DG |
| P2.B2.M.2930.1250 |  | Paint Walls / B2 / North / 2930 | 5d | 2026-04-08 | 2026-04-14 | P2.B2.M.2930.1100 |  |  |  |  | 14d | 0d | 40 | ! | PAINT | P2-5 |  | PAINT-1 |  |  |  | DG |
| P2.B2.M.2930.1260 |  | HVAC - GRD's / B2 / North / 2930 | 5d | 2026-04-15 | 2026-04-21 | P2.B2.M.2930.1250 |  |  |  |  | 14d | 0d | 40 | ! | HVAC | P2-5 | Harris | HVAC |  |  |  | DG |
| P2.B2.M.2930.1090 |  | Pressure Test Systems / B2 / North / 2930 | 5d | 2026-04-22 | 2026-04-28 | P2.B2.M.2930.1070 |  |  |  |  | 14d | 0d | 40 | ! | MECH | P2-5 | Harris | MECH-2 |  |  |  | SS |
| P2.B2.M.2930.1270 |  | Lighting Install / B2 / North / 2930 | 5d | 2026-04-22 | 2026-04-28 | P2.B2.M.2930.1260 |  |  |  |  | 14d | 0d | 40 | ! | ELEC | P2-5 |  | ELEC-2 |  |  |  | DG |
| P2.B2.M.2930.1000 |  | BAS Equipment Install / B2 / North / 2930 | 5d | 2026-04-29 | 2026-05-05 | P2.B2.M.2930.1030, P2.B2.M.2930.1040, P2.B2.M.2930.1020, P2.B2.M.2930.1090 |  |  |  |  | 14d | 0d | 40 |  | BAS | P2-5 | Harris | BAS-1 |  |  |  | DG |
| P2.B2.M.2930.1120 |  | Electrical Tie in to Equipment / B2 / North / 2930 | 5d | 2026-04-29 | 2026-05-05 | P2.B2.M.2930.1030, P2.B2.M.2930.1040, P2.B2.M.2930.1020, P2.B2.M.2930.1090 |  |  |  |  | 19d | 5d | 40 |  | ELEC | P2-5 |  | ELEC-2 |  |  |  | SS |
| P2.B2.M.2930.1280 |  | Fire Alarm/Ceiling Device Install / B2 / North / 2930 | 5d | 2026-04-29 | 2026-05-05 | P2.B2.M.2930.1270 |  |  |  |  | 14d | 0d | 40 | ! | FA | P2-5 |  | FA-1 |  |  |  | DG |
| P2.B2.M.2930.1010 |  | Control Wiring to Equipment / B2 / North / 2930 | 5d | 2026-05-06 | 2026-05-12 | P2.B2.M.2930.1000 |  |  |  |  | 14d | 0d | 40 |  | BAS | P2-5 | Harris | BAS-1 |  |  |  | DG |
| P2.B2.M.2930.1290 |  | Prep Floor for Flooring - Epoxy Floors / B2 / North / 2930 | 3d | 2026-05-06 | 2026-05-08 | P2.B2.M.2930.1280, P2.B2.M.2930.1210, BP7.096.3.200 |  |  |  |  | 14d | 0d | 40 | ! | EPOXYF | P2-5 |  | EPOXYF |  |  |  | DG |
| P2.B2.M.2930.1300 |  | Flooring - Epoxy Floors / B2 / North / 2930 | 2d | 2026-05-11 | 2026-05-12 | P2.B2.M.2930.1290 |  |  |  |  | 14d | 0d | 40 | ! | EPOXYF | P2-5 |  | EPOXYF |  |  |  | DG |
| P2.B2.N.1590 |  | Trades Inspect & Verify R/I Work Completed to Specs / B2 / North / 2930 | 5d | 2026-05-13 | 2026-05-19 | P2.B2.M.2930.1120, P2.B2.M.2930.1010, P2.B2.M.2930.1300 |  |  |  |  | 14d | 0d | 40 |  | T | P2-5 |  | T |  |  |  | DG |
| P2.B2.M.5970.1350 |  | Ready for Start Up - Mech Equip / B2 / North / 2930 | 5d | 2026-05-20 | 2026-05-27 | P2.B2.N.1590 |  |  |  |  | 14d | 0d | 40 |  | MECH | P2-5 | Harris | MECH-2 |  |  |  | DG |

| ID | WBS | Activity | Type | Duration | Start | Finish | Predecessors | Complete | Planned start | Planned finish | Total float | Free float | Temp Orig Dur | *NIH Resp Check* | Resp / SRLM | PHASE | Z.RESP | RESP / Trade | Testing Type | 744 | RESP UPD | Update Status | Pick | Act ID Temp |
| --- | --- | --- | --- | --- | --- | --- | --- | --- | --- | --- | --- | --- | --- | --- | --- | --- | --- | --- | --- | --- | --- | --- | --- | --- |
|  | 6 | **Mechanical B2-2801 (Z3)** |  |  | 2024-11-22 | 2026-05-29 |  |  |  |  |  |  |  |  |  |  |  |  |  |  |  |  |  |  |
| P2.B2.M.2801.1040 |  | Layout - All Trades / B2 / North / 2801 |  | 4d | 2024-11-22 A | 2024-11-27 A | P2.B2.M.2930.1130 | 100% | 2024-12-23 | 2024-12-27 |  |  | 40 | ! | R/I.OH | P2-5 | Harris | R/I.OH |  |  |  |  |  |  |
| P2.B2.M.2801.1050 |  | OH Structural Supports / B2 / North / 2801 |  | 5d | 2025-01-09 A | 2025-03-03 A | P2.B2.M.2801.1040, P2.BIM.B2.40.140 | 100% | 2025-02-03 | 2025-02-07 |  |  | 40 | ! | MISCMTL | P2-5 |  | MISCMTL | AT24 |  |  |  |  |  |
| P2.B2.M.2801.1220 |  | OH Fire Suppression Install / B2 / North / 2801 |  | 5d | 2025-01-09 A | 2025-03-03 A | P2.B2.M.5985.1290, P2.B2.M.2801.1050 FF | 100% | 2025-02-03 | 2025-02-07 |  |  | 40 | ! | FP | P2-5 |  | FP-1 |  |  |  |  |  |  |
| P2.B2.M.2801.1060 |  | OH Plumbing Install / B2 / North / 2801 |  | 10d | 2025-01-25 A | 2025-04-30 A | P2.B2.M.2801.1050 | 100% | 2025-03-04 | 2025-03-17 |  |  | 40 | ! | PLMB | P2-5 | Harris | PLMB |  |  |  |  |  |  |
| P2.B2.M.2801.1280 |  | Paint OH Fire Suppression / B2 / North / 2801 |  | 2d | 2025-04-21 A | 2025-04-30 A | P2.B2.M.2801.1220 | 100% | 2025-05-08 | 2025-05-09 |  |  | 40 | ! | FP | P2-5 |  | FP-1 |  |  |  |  |  |  |
| P2.B2.M.2801.1230 |  | OH Electrical Install / B2 / North / 2801 |  | 5d | 2025-05-08 A | 2025-06-10 A | P2.B2.M.2801.1270 | 100% | 2025-06-09 | 2025-06-13 |  |  | 40 | ! | ELEC | P2-5 |  | ELEC-3 |  | SM | SM |  |  |  |
| P2.B2.M.2801.1290 |  | OH Chilled Water Install / B2 / North / 2801 |  | 20d | 2025-06-15 A | 2025-09-24 A | P2.B2.M.2801.1230, P2.B2.M.2801.1060 | 100% | 2025-07-11 | 2025-08-07 |  |  | 40 | ! | MECH | P2-5 | Harris | MECH-2 |  | SM | SM | O |  |  |
| P2.B2.M.2801.1300 |  | OH Glycol Install / B2 / North / 2801 |  | 20d | 2025-07-30 A | 2025-09-24 A | P2.B2.M.2801.1290 | 100% | 2025-08-29 | 2025-09-26 |  |  | 40 | ! | MECH | P2-5 | Harris | MECH-2 |  | SM | SM | O |  |  |
| FRG.P2.B2.M.2801.1000 |  | Delivery and Staging - CHW/PCHW System / B2 / North / 2801 - FRAGNET |  | 20d | 2025-08-01 A | 2025-08-29 A | P2.B2.M.2801.1060 | 100% | 2025-09-02 | 2025-09-29 |  |  | 80 |  | Harris Fragnet | P2-5 | Harris | FIT-2 |  | TA | TA | O | 2 | P2.B2.23.20.410 |
| FRG.P2.B2.M.2801.1010 |  | Delivery and Staging - RH Glycol Preheat System / B2 / North / 2801 - FRAGNET |  | 20d | 2025-08-01 A | 2025-09-03 A | P2.B2.M.2801.1060 | 100% | 2025-09-02 | 2025-09-29 |  |  | 80 |  | Harris Fragnet | P2-5 | Harris | FIT-2 |  | TA | TA | O | 2 | P2.B2.23.20.410 |
| P2.B2.M.2801.1020 |  | Install AHU B2-1 & B2-2 / B2 / North / 2801 |  | 5d | 2025-09-01 A | 2025-09-18 A | P1.B2.03.290, BP1.233.3.110 | 100% | 2025-10-01 | 2025-10-07 |  |  | 40 | ! | HVAC | P2-5 | Harris | HVAC |  |  | SM |  |  |  |
| FRG.P2.B2.M.2801.1020 |  | Install Hangers - CHW/PCHW System / B2 / North / 2801 - FRAGNET |  | 20d | 2025-09-02 A | 2025-09-29 A | FRG.P2.B2.M.2801.1000 | 100% | 2025-10-01 | 2025-10-28 |  |  | 80 |  | Harris Fragnet | P2-5 | Harris | FIT-2 |  | TA | TA | O | 2 | P2.B2.23.20.410 |
| FRG.P2.B2.M.2801.1030 |  | Install Hangers - RH Glycol Preheat System / B2 / North / 2801 - FRAGNET |  | 20d | 2025-09-04 A | 2025-11-18 A | FRG.P2.B2.M.2801.1010 | 100% | 2025-10-03 | 2025-10-30 |  |  | 80 |  | Harris Fragnet | P2-5 | Harris | FIT-2 |  | TA | SM |  | 2 | P2.B2.23.20.410 |
| FRG.P2.B2.M.2801.1040 |  | Install Piping - CHW/PCHW System / B2 / North / 2801 - FRAGNET |  | 20d | 2025-09-30 A | 2025-12-05 A | FRG.P2.B2.M.2801.1020 | 100% | 2025-10-29 | 2025-11-25 |  |  | 80 |  | Harris Fragnet | P2-5 | Harris | FIT-2 |  | TA | SM | O | 2 | P2.B2.23.20.410 |
| FRG.P2.B2.M.2801.1080 |  | Staging & Install - MRI Cooling System / B2 / North / 2801 - FRAGNET |  | 20d | 2025-11-03 A | 2025-12-02 A | FRG.P2.B2.M.2801.1090 | 100% | 2025-12-01 | 2025-12-29 |  |  | 80 |  | Harris Fragnet | P2-5 | Harris | FIT-2 |  | TA | SM | O | 2 | P2.B2.23.20.410 |
| FRG.P2.B2.M.2801.1090 |  | Delivery- MRI Cooling System / B2 / North / 2801 - FRAGNET | milestone | 0d | 2025-11-03 A | 2025-11-03 A | P2.B2.M.2801.1060 FF | 100% |  |  |  |  | 80 |  | Harris Fragnet | P2-5 | Harris | FIT-2 |  | TA | SM |  | 2 | P2.B2.23.20.410 |
| FRG.P2.B2.M.2801.1070 |  | Install Hangers - Steam/Condensate System / B2 / North / 2801 - FRAGNET |  | 5d | 2025-11-10 A | 2025-11-14 A | FRG.P2.B2.M.2801.1060 | 100% | 2025-12-08 | 2025-12-12 |  |  | 80 |  | Harris Fragnet | P2-5 | Harris | FIT-2 |  | TA | SM |  | 2 | P2.B2.23.20.410 |
| P2.B2.M.2801.1310 |  | OH Humidification Install / B2 / North / 2801 |  | 20d | 2025-11-10 A | 2025-12-30 A | P2.B2.M.2801.1300 | 100% | 2025-12-08 | 2026-01-06 |  |  | 40 | ! | MECH | P2-5 | Harris | MECH-2 |  | SM | SM |  |  |  |
| FRG.P2.B2.M.2801.1110 |  | Weld Piping - CHW/PCHW System / B2 / North / 2801 - FRAGNET |  | 20d | 2025-12-01 A | 2025-12-30 A | FRG.P2.B2.M.2801.1040 | 100% | 2026-01-02 | 2026-01-29 |  |  | 80 |  | Harris Fragnet | P2-5 | Harris | FIT-2 |  | TA | SM | O | 2 | P2.B2.23.20.410 |
| P2.B2.M.2801.1270 |  | Test OH Fire Suppression / B2 / North / 2801 |  | 5d | 2025-12-01 A | 2025-12-05 A | P2.B2.M.2801.1220, P2.B2.M.2801.1280 | 100% | 2026-01-02 | 2026-01-08 |  |  | 40 | ! | FP | P2-5 |  | FP-1 |  | SM | SM | O |  |  |
| P2.B2.M.2801.1160 |  | Paint Walls / B2 / North / 2801 |  | 5d | 2025-12-05 A | 2025-12-08 A | P2.B2.M.2801.1040 | 100% | 2026-01-30 | 2026-02-05 |  |  | 40 | ! | PAINT | P2-5 |  | PAINT-1 |  |  | SM | O |  |  |
| P2.B2.M.2801.1240 |  | OH Steam Install / B2 / North / 2801 |  | 20d | 2025-12-08 A | 2026-01-15 A | P2.B2.M.2801.1310 | 100% | 2026-02-06 | 2026-03-05 |  |  | 40 | ! | MECH | P2-5 | Harris | MECH-2 |  | SM | SM |  |  |  |
| FRG.P2.B2.M.2801.1050 |  | Delivery- Steam/Condensate System Spools / B2 / North / 2801 - FRAGNET | milestone | 0d | 2025-12-08 A | 2025-12-08 A | P2.B2.M.2801.1060 FF | 100% |  |  |  |  | 80 |  | Harris Fragnet | P2-5 | Harris | FIT-2 |  | TA | SM | O | 2 | P2.B2.23.20.410 |
| FRG.P2.B2.M.2801.1060 |  | Staging - Steam/Condensate System / B2 / North / 2801 - FRAGNET |  | 5d | 2025-12-09 A | 2025-12-10 A | FRG.P2.B2.M.2801.1050 | 100% | 2026-01-02 | 2026-01-08 |  |  | 80 |  | Harris Fragnet | P2-5 | Harris | FIT-2 |  | TA | SM | O | 2 | P2.B2.23.20.410 |
| FRG.P2.B2.M.2801.1100 |  | Install Piping - Steam/Condensate System / B2 / North / 2801 - FRAGNET |  | 20d | 2025-12-10 A | 2025-12-30 A | FRG.P2.B2.M.2801.1070 | 100% | 2026-01-09 | 2026-02-05 |  |  | 80 |  | Harris Fragnet | P2-5 | Harris | FIT-2 |  | TA | SM | O | 2 | P2.B2.23.20.410 |
| P2.B2.M.2801.1000 |  | BAS Equipment Install / B2 / North / 2801 |  | 5d | 2025-12-10 A | 2026-01-08 A | P2.B2.M.2801.1020 | 100% | 2026-01-02 | 2026-01-08 |  |  | 40 |  | BAS | P2-5 | Harris | BAS-1 |  |  | SM | O |  |  |
| FRG.P2.B2.M.2801.1130 |  | Weld Piping - Steam/Condensate System / B2 / North / 2801 - FRAGNET |  | 15d | 2026-01-01 A | 2026-01-09 A | FRG.P2.B2.M.2801.1100 | 100% | 2026-02-06 | 2026-02-26 |  |  | 80 |  | Harris Fragnet | P2-5 | Harris | FIT-2 |  | TA | SM |  | 2 | P2.B2.23.20.410 |
| FRG.P2.B2.M.2801.1120 |  | Install - MRI Cooling System / B2 / North / 2801 - FRAGNET |  | 20d | 2026-01-02 A | 2026-03-31 A | FRG.P2.B2.M.2801.1080 | 100% | 2026-01-02 | 2026-01-29 |  |  | 80 |  | Harris Fragnet | P2-5 | Harris | FIT-2 |  | TA | SM | O | 2 | P2.B2.23.20.410 |
| FRG.P2.B2.M.2801.1140 |  | Remaining Weld - CHW/PCHW System / B2 / North / 2801 - FRAGNET |  | 20d | 2026-02-02 A | 2026-03-13 A | FRG.P2.B2.M.2801.1110 | 100% | 2026-03-02 | 2026-03-27 |  |  | 80 |  | Harris Fragnet | P2-5 | Harris | FIT-2 |  | TA | SM |  | 2 | P2.B2.23.20.410 |
| P2.B2.M.2801.1170 |  | HVAC - GRD's / B2 / North / 2801 |  | 5d | 2026-03-23 A | 2026-03-27 A | P2.B2.M.2801.1160 | 100% |  |  |  |  | 40 | ! | HVAC | P2-5 | Harris | HVAC |  |  | SM |  |  |  |
| FRG.P2.B2.M.2801.1150 |  | Final Connections - MRI Cooling System / B2 / North / 2801 - FRAGNET |  | 8d | 2026-04-01 | 2026-04-10 | FRG.P2.B2.M.2801.1120 |  |  |  | 12d | 0d | 80 |  | Harris Fragnet | P2-5 | Harris | FIT-2 |  | TA | SM | O | 2 | P2.B2.23.20.410 |
| FRG.P2.B2.M.2801.1170 |  | Final Connections - CHW/PCHW System/ B2 / North / 2801 - FRAGNET |  | 20d | 2026-04-01 | 2026-04-28 | FRG.P2.B2.M.2801.1140 |  |  |  | 9d | 0d | 80 |  | Harris Fragnet | P2-5 | Harris | FIT-2 |  | TA | SM |  | 2 | P2.B2.23.20.410 |
| P2.B2.M.2801.1010 |  | Control Wiring to Equipment / B2 / North / 2801 |  | 5d | 2026-04-01 | 2026-04-07 | P2.B2.M.2801.1000 |  |  |  | 14d | 0d | 40 |  | BAS | P2-5 | Harris | BAS-1 |  |  | SM | O |  |  |
| P2.B2.M.2801.1120 |  | Fire Caulk MEPF Penetrations / B2 / North / 2801 |  | 5d | 2026-04-01 | 2026-04-07 | P2.B2.M.2801.1240, P2.B2.M.2801.1270 |  |  |  | 32d | 5d | 40 | ! | FIRESTO | P2-5 |  | FIRESTO | AT48 | SM | SM |  |  |  |
| P2.B2.M.2801.1180 |  | Lighting Install / B2 / North / 2801 |  | 5d | 2026-04-01 | 2026-04-07 | P2.B2.M.2801.1170 |  |  |  | 27d | 0d | 40 | ! | ELEC | P2-5 |  | ELEC-2 |  |  | SM |  |  |  |
| P2.B2.M.2801.1250 |  | Insulate High MEP / B2 / North / 2801 |  | 10d | 2026-04-01 | 2026-04-14 | P2.B2.M.2801.1240 |  |  |  | 29d | 0d | 40 | ! | INSUL | P2-5 | Harris | INSUL-3 |  | SM | SM |  |  |  |
| P2.B2.M.2801.1190 |  | Fire Alarm/Ceiling Device Install / B2 / North / 2801 |  | 5d | 2026-04-08 | 2026-04-14 | P2.B2.M.2801.1180 |  |  |  | 27d | 0d | 40 | ! | FA | P2-5 |  | FA-1 |  |  | SM |  |  |  |
| P2.B2.M.2801.1260 |  | Insulate/Label / B2 / North / 2801 |  | 10d | 2026-04-08 | 2026-04-21 | P2.B2.M.2801.1010 |  |  |  | 14d | 5d | 40 | ! | INSUL | P2-5 | Harris | INSUL-3 |  |  | SM | O |  |  |
| FRG.P2.B2.M.2801.1160 |  | Install Remaining - Glycol Preheat / B2 / North / 2801 - FRAGNET |  | 20d | 2026-04-13 | 2026-05-08 | FRG.P2.B2.M.2801.1150 |  |  |  | 12d | 0d | 80 |  | Harris Fragnet | P2-5 | Harris | FIT-2 |  | TA | SM |  | 2 | P2.B2.23.20.410 |
| P2.B2.M.2801.1030 |  | Electrical Tie in to Equipment / B2 / North / 2801 |  | 5d | 2026-04-15 | 2026-04-21 | P2.B2.M.2801.1000, P2.B2.M.2801.1250 |  |  |  | 29d | 17d | 40 |  | ELEC | P2-5 |  | ELEC-2 |  |  | SM |  |  |  |
| P2.B2.M.2801.1200 |  | Prep Floor for Flooring - Epoxy Floors / B2 / North / 2801 |  | 5d | 2026-04-15 | 2026-04-21 | P2.B2.M.2801.1190, P2.B2.M.2801.1120, BP7.096.3.200 |  |  |  | 27d | 0d | 40 | ! | EPOXYF | P2-5 |  | EPOXYF |  |  | SM |  |  |  |
| P2.B2.M.2801.1210 |  | Flooring - Epoxy Floors / B2 / North / 2801 |  | 2d | 2026-04-22 | 2026-04-23 | P2.B2.M.2801.1200 |  |  |  | 27d | 15d | 40 | ! | EPOXYF | P2-5 |  | EPOXYF |  |  | SM |  |  |  |
| FRG.P2.B2.M.2801.1190 |  | Inspection - CHW/PCHW System / B2 / North / 2801 - FRAGNET |  | 10d | 2026-04-29 | 2026-05-12 | FRG.P2.B2.M.2801.1170, FRG.P2.B2.M.5970.1170, P2.B2.M.2801.1260 |  |  |  | 9d | 0d | 80 |  | Harris Fragnet | P2-5 | Harris | FIT-2 |  | TA | SM |  | 2 | P2.B2.23.20.410 |
| FRG.P2.B2.M.2801.1180 |  | Inspection - Glycol Preheat / B2 / North / 2801 - FRAGNET |  | 4d | 2026-05-11 | 2026-05-14 | FRG.P2.B2.M.2801.1160 |  |  |  | 12d | 0d | 80 |  | Harris Fragnet | P2-5 | Harris | FIT-2 |  | TA | SM |  | 2 | P2.B2.23.20.410 |
| P2.B2.N.1600 |  | Trades Inspect & Verify R/I Work Completed to Specs / B2 / North / 2801 |  | 5d | 2026-05-15 | 2026-05-21 | P2.B2.M.2801.1210, P2.B2.M.2801.1030, FRG.P2.B2.M.2801.1190, FRG.P2.B2.M.2801.1180, FRG.P2.B2.M.2801.1130, FRG.P2.B2.M.2801.1030 |  |  |  | 12d | 0d | 40 |  | T | P2-5 |  | T |  |  | SM |  |  |  |
| P2.B2.M.5970.1360 |  | Ready for Start Up - Mech Equip / B2 / North / 2801 |  | 5d | 2026-05-22 | 2026-05-29 | P2.B2.N.1600 |  |  |  | 12d | 0d | 40 |  | MECH | P2-5 | Harris | MECH-2 |  |  | SM |  |  |  |

Notes:
- FRG.P2.B2.M.2801.1030: NOTES: per harris schedule completion date of 10/1. confirm successors
- FRG.P2.B2.M.2801.1090: NOTES: per harris schedule completion date of 10/2. confirm successors
- FRG.P2.B2.M.2801.1050: NOTES: per harris schedule completion date of 10/2. confirm successors
- FRG.P2.B2.M.2801.1130: NOTES: Per Harris Schedule 12/5
- FRG.P2.B2.M.2801.1120: NOTES: confirm successors.
- FRG.P2.B2.M.2801.1150: NOTES: confirm successors. 12/19 per harris schedule
- FRG.P2.B2.M.2801.1160: NOTES: confirm successors.
- FRG.P2.B2.M.2801.1190: NOTES: Finish 2/5 Per Harris Schedule
- FRG.P2.B2.M.2801.1180: NOTES: confirm successors. 1/26 per Harris Schedule

| ID | WBS | Activity | Duration | Start | Finish | Predecessors | Complete | Remaining | Planned start | Planned finish | Total float | Free float | Temp Orig Dur | *NIH Resp Check* | Resp / SRLM | PHASE | Z.RESP | RESP / Trade | Testing Type | Update Status | 744 | RESP UPD |
| --- | --- | --- | --- | --- | --- | --- | --- | --- | --- | --- | --- | --- | --- | --- | --- | --- | --- | --- | --- | --- | --- | --- |
|  | 5 | **Mechanical B2.2803 (Z3)** |  | 2025-01-15 | 2026-05-27 |  |  |  |  |  |  |  |  |  |  |  |  |  |  |  |  |  |
| P2.B2.M.2803.1130 |  | Layout - All Trades / B2 / North / 2803 | 5d | 2025-01-15 A | 2025-02-07 A | P2.B2.M.2801.1040 | 100% |  | 2025-02-03 | 2025-02-07 |  |  | 40 | ! | R/I.OH | P2-5 | Harris | R/I.OH |  |  |  |  |
| P2.B2.M.2803.1140 |  | OH Structural Supports / B2 / North / 2803 | 5d | 2025-01-15 A | 2025-02-07 A | P2.BIM.B2.40.140, P2.B2.M.2803.1130 SS | 100% |  | 2025-02-10 | 2025-02-14 |  |  | 40 | ! | MISCMTL | P2-5 |  | MISCMTL | AT24 |  |  |  |
| P2.B2.M.2803.1150 |  | OH Plumbing Install / B2 / North / 2803 | 10d | 2025-01-23 A | 2025-02-17 A | P2.B2.M.2803.1140 FF+1d | 100% |  | 2025-02-24 | 2025-03-07 |  |  | 40 | ! | PLMB | P2-5 | Harris | PLMB |  |  |  |  |
| P2.B2.M.2803.1310 |  | OH Fire Suppression Install / B2 / North / 2803 | 5d | 2025-02-18 A | 2025-02-24 A | P2.B2.M.2803.1150, P2.B2.M.2801.1220 | 100% |  | 2025-03-18 | 2025-03-24 |  |  | 40 | ! | FP | P2-5 |  | FP-1 |  |  |  |  |
| P2.B2.M.2803.1370 |  | OH Process Chilled Install / B2 / North / 2803 | 20d | 2025-03-31 A | 2025-04-30 A | P2.B2.M.2803.1310 | 100% |  | 2025-05-16 | 2025-06-13 |  |  | 40 | ! | MECH | P2-5 | Harris | MECH-2 |  |  |  |  |
| P2.B2.M.2803.1360 |  | Paint OH Fire Suppression / B2 / North / 2803 | 2d | 2025-04-21 A | 2025-04-30 A | P2.B2.M.2803.1310 | 100% |  | 2025-05-08 | 2025-05-09 |  |  | 40 | ! | FP | P2-5 |  | FP-1 |  |  |  |  |
| P2.B2.M.2803.1380 |  | OH MRI Chilled Install / B2 / North / 2803 | 20d | 2025-05-01 A | 2025-05-29 A | P2.B2.M.2803.1370 | 100% |  | 2025-06-02 | 2025-06-27 |  |  | 40 | ! | MECH | P2-5 | Harris | MECH-2 |  |  |  |  |
| P2.B2.M.2803.1320 |  | OH Electrical Install / B2 / North / 2803 | 20d | 2025-05-08 A | 2025-05-29 A | P2.ETV.1010 FF | 100% |  | 2025-06-02 | 2025-06-27 |  |  | 40 | ! | ELEC | P2-5 |  | ELEC-3 |  |  |  |  |
| P2.B2.M.2803.1330 |  | OH Steam Install / B2 / North / 2803 | 20d | 2025-07-15 A | 2025-09-08 A | P2.B2.M.2803.1380, P2.B2.M.2803.1320 | 100% |  | 2025-08-01 | 2025-08-28 |  |  | 40 | ! | MECH | P2-5 | Harris | MECH-2 |  | O | SM | SM |
| P2.B2.M.2803.1400 |  | OH GMP Glycol Install / B2 / North / 2803 | 20d | 2025-07-15 A | 2025-09-22 A | P2.B2.M.2803.1330 | 100% |  | 2025-08-29 | 2025-09-26 |  |  | 40 | ! | MECH | P2-5 | Harris | MECH-2 |  | O | SM | SM |
| P2.B2.M.2803.1110 |  | Risers and Distribution Connections / B2 / North / 2803 | 20d | 2025-11-01 A | 2025-12-30 A | P2.B2.M.2803.1000 | 100% |  | 2026-04-10 | 2026-05-07 |  |  | 40 | ! | HVAC | P2-5 | Harris | HVAC |  |  | SM | SM |
| P2.B2.M.2803.1000 |  | BAS Equipment Install / B2 / North / 2803 | 5d | 2025-12-01 A | 2025-12-03 A | P2.B2.M.2803.1030 | 100% |  | 2026-04-10 | 2026-04-16 |  |  | 40 |  | BAS | P2-5 | Harris | BAS-1 |  |  | SM | SM |
| P2.B2.M.2803.1350 |  | Test OH Fire Suppression / B2 / North / 2803 | 5d | 2025-12-01 A | 2025-12-05 A | P2.B2.M.2803.1310, P2.B2.M.2803.1360 | 100% |  | 2026-01-02 | 2026-01-08 |  |  | 40 | ! | FP | P2-5 |  | FP-1 |  | O | SM | SM |
| P2.B2.M.2803.1390 |  | OH GMP Reheat Install / B2 / North / 2803 | 20d | 2025-12-01 A | 2026-04-07 | P2.B2.M.2803.1400 | 75% | 5d | 2026-01-02 | 2026-01-29 | 200d | 0d | 40 | ! | MECH | P2-5 | Harris | MECH-2 |  | O | SM | SM |
| P2.B2.M.2803.1250 |  | Paint Walls / B2 / North / 2803 | 5d | 2025-12-05 A | 2025-12-08 A | P2.B2.M.2803.1360 | 100% |  | 2026-04-24 | 2026-04-30 |  |  | 40 | ! | PAINT | P2-5 |  | PAINT-1 |  |  | SM | SM |
| P2.B2.M.2803.1030 |  | Install GMP Reheat Skid | 5d | 2026-03-02 A | 2026-03-13 A | P1.B2.03.290, BP1.224.3.940, BP1.235.3.100 | 100% |  | 2026-03-23 | 2026-03-27 |  |  | 40 | ! | MECH | P2-5 | Harris | MECH-2 |  |  | SM | SM |
| P2.B2.M.2803.1040 |  | Install MRI Cooling Skid / B2 / North / 2803 | 5d | 2026-03-02 A | 2026-03-13 A | P1.B2.03.290, BP1.224.3.940 | 100% |  | 2026-03-23 | 2026-03-27 |  |  | 40 | ! | MECH | P2-5 | Harris | MECH-2 |  |  | SM | SM |
| P2.B2.M.2803.1050 |  | Install Process Cooling Skid / B2 / North / 2803 | 5d | 2026-03-17 A | 2026-03-21 A | P1.B2.03.290, BP1.224.3.940 | 100% |  | 2026-04-15 | 2026-04-21 |  |  | 40 | ! | MECH | P2-5 | Harris | MECH-2 |  |  | SM | SM |
| P2.B2.M.2803.1010 |  | Control Wiring to Equipment / B2 / North / 2803 | 5d | 2026-04-01 | 2026-04-07 | P2.B2.M.2803.1000 |  |  |  |  | 185d | 0d | 40 |  | BAS | P2-5 | Harris | BAS-1 |  |  | SM | SM |
| P2.B2.M.2803.1090 |  | Pressure Test Systems / B2 / North / 2803 | 5d | 2026-04-01 | 2026-04-07 | P2.B2.M.2803.1050, P2.B2.M.2803.1350 |  |  |  |  | 29d | 0d | 40 | ! | MECH | P2-5 | Harris | MECH-2 |  |  | SM | SM |
| P2.B2.M.2803.1100 |  | Insulate / B2 / North / 2803 | 5d | 2026-04-08 | 2026-04-14 | P2.B2.M.2803.1110, P2.B2.M.2803.1090 |  |  |  |  | 29d | 20d | 40 | ! | INSUL | P2-5 | Harris | INSUL-3 |  |  | SM | SM |
| P2.B2.M.2803.1210 |  | Fire Caulk MEPF Penetrations / B2 / North / 2803 | 5d | 2026-04-08 | 2026-04-14 | P2.B2.M.2803.1390 |  |  |  |  | 200d | 15d | 40 | ! | FIRESTO | P2-5 |  | FIRESTO | AT48 | O | SM | SM |
| P2.B2.M.2803.1260 |  | HVAC - GRD's / B2 / North / 2803 | 5d | 2026-04-08 | 2026-04-14 | P2.B2.M.2803.1250, P2.B2.M.2803.1010 |  |  |  |  | 185d | 0d | 40 | ! | HVAC | P2-5 | Harris | HVAC |  |  | SM | SM |
| P2.B2.M.2803.1340 |  | Insulate High MEP / B2 / North / 2803 | 5d | 2026-04-08 | 2026-04-14 | P2.B2.M.2803.1390 |  |  |  |  | 209d | 45d | 40 | ! | INSUL | P2-5 | Harris | INSUL-3 | AT48 | O | SM | SM |
| P2.B2.M.2803.1270 |  | Lighting Install / B2 / North / 2803 | 5d | 2026-04-15 | 2026-04-21 | P2.B2.M.2803.1260 |  |  |  |  | 185d | 0d | 40 | ! | ELEC | P2-5 |  | ELEC-2 |  |  | SM | SM |
| P2.B2.M.2803.1280 |  | Fire Alarm/Ceiling Device Install / B2 / North / 2803 | 5d | 2026-04-22 | 2026-04-28 | P2.B2.M.2803.1270 |  |  |  |  | 185d | 0d | 40 | ! | FA | P2-5 |  | FA-1 |  |  | SM | SM |
| P2.B2.M.2803.1020 |  | Install GMP Preheat Skid | 5d | 2026-04-29 | 2026-05-05 | P1.B2.03.290, BP1.224.3.940, BP1.235.3.100, FRG.P2.B2.M.2801.1170 |  |  |  |  | 9d | 0d | 40 | ! | MECH | P2-5 | Harris | MECH-2 |  |  | SM | SM |
| P2.B2.M.2803.1290 |  | Prep Floor for Flooring - Epoxy Floors / B2 / North / 2803 | 5d | 2026-04-29 | 2026-05-05 | P2.B2.M.2803.1280, BP7.096.3.200 |  |  |  |  | 185d | 0d | 40 | ! | EPOXYF | P2-5 |  | EPOXYF |  |  |  | SM |
| P2.B2.M.2803.1120 |  | Electrical Tie in to Equipment / B2 / North / 2803 | 5d | 2026-05-06 | 2026-05-12 | P2.B2.M.2803.1050, P2.B2.M.2803.1020, P2.B2.M.2803.1030, P2.B2.M.2803.1040 |  |  |  |  | 9d | 0d | 40 |  | ELEC | P2-5 |  | ELEC-2 |  |  | SM | SM |
| P2.B2.M.2803.1300 |  | Flooring - Epoxy Floors / B2 / North / 2803 | 2d | 2026-05-06 | 2026-05-07 | P2.B2.M.2803.1210, P2.B2.M.2803.1290 |  |  |  |  | 185d | 175d | 40 | ! | EPOXYF | P2-5 |  | EPOXYF |  |  |  | SM |
| P2.B2.N.1610 |  | Trades Inspect & Verify R/I Work Completed to Specs / B2 / North / 2930 | 5d | 2026-05-13 | 2026-05-19 | P2.B2.M.2803.1100, P2.B2.M.2803.1120 |  |  |  |  | 9d | 0d | 40 |  | T | P2-5 |  | T |  |  |  | SM |
| P2.B2.M.5970.1370 |  | Ready for Start Up - Mech Equip / B2 / North / 2803 | 5d | 2026-05-20 | 2026-05-27 | P2.B2.N.1610 |  |  |  |  | 9d | 0d | 40 |  | MECH | P2-5 | Harris | MECH-2 |  |  |  | SM |

| ID | WBS | Activity | Type | Duration | Start | Finish | Predecessors | Complete | Remaining | Planned start | Planned finish | Total float | Free float | Temp Orig Dur | Resp / SRLM | PHASE | RESP / Trade | Update Status | 744 | RESP UPD | Z.RESP | Testing Type |
| --- | --- | --- | --- | --- | --- | --- | --- | --- | --- | --- | --- | --- | --- | --- | --- | --- | --- | --- | --- | --- | --- | --- |
|  | 5 | **IT Closets / Level B2/B1** |  |  | 2025-03-20 | 2026-06-11 |  |  |  |  |  |  |  |  |  |  |  |  |  |  |  |  |
|  | 1 | **IT Closet / B2-2806** |  |  | 2025-03-20 | 2026-06-11 |  |  |  |  |  |  |  |  |  |  |  |  |  |  |  |  |
| P2.B2.IT.2806.110 |  | Paint Prime & 1st Coat / B2 / North / 2806 |  | 2d | 2025-03-20 A | 2025-04-03 A | P2.B2.M.2803.1130 | 100% |  | 2025-03-05 | 2025-03-06 |  |  | 16 | PAINT | P2-5 | PAINT-1 |  |  |  |  |  |
| P2.B2.IT.2806.100 |  | Hang Plywood Backboards / B2 / North / 2806 |  | 2d | 2025-09-24 A | 2025-09-29 A | P2.B2.N.1140 | 100% |  | 2025-10-01 | 2025-10-02 |  |  | 16 | CRAFT | P2-5 | CRAFT | O | ND | ND |  |  |
| P2.B2.IT.2806.120 |  | Electrical Panels / Conduit Connections / Wire Terminations / B2 / North / 2806 |  | 5d | 2025-11-17 A | 2025-11-21 A | P2.B2.IT.2806.110, P2.B2.HE.5995.1030 FF | 100% |  | 2026-01-02 | 2026-01-08 |  |  | 40 | ELEC | P2-5 | ELEC-2 | O | ND | ND |  |  |
| P2.B2.IT.2806.150 |  | Flooring / B2 / North / 2806 |  | 5d | 2025-11-17 A | 2025-11-20 A | P2.B2.IT.2806.100 | 100% |  | 2026-01-13 | 2026-01-19 |  |  | 40 | FLOOR | P2-5 | FLOOR | O | ND | ND |  |  |
| P2.B2.IT.2806.130 |  | HVAC Equipment / B2 / North / 2806 |  | 5d | 2025-12-01 A | 2025-12-05 A | P2.B2.IT.2806.110, P2.B2.N.1300 | 100% |  | 2026-01-02 | 2026-01-08 |  |  | 40 | HVAC | P2-5 | HVAC | O | ND | ND | Harris |  |
| P2.B2.IT.2806.170 |  | OH Cable Tray / B2 / North / 2806 |  | 5d | 2026-03-30 A | 2026-04-27 | P2.B2.N.1390, P2.B2.S.1390, P2.B2.LC.1510 |  | 9d | 2026-03-30 | 2026-04-03 | 43d | 0d | 40 | ELEC | P2-5 | ELEC-2 |  | ND | ND |  |  |
| P2.B2.IT.2806.180 |  | Grounding and Bonding / B2 / North / 2806 |  | 2d | 2026-03-30 A | 2026-03-31 A | BP1.260.3.180, P2.B2.IT.2806.150 | 100% |  | 2026-03-04 | 2026-03-05 |  |  | 16 | ELEC | P2-5 | ELEC-2 | O | ND | ND |  |  |
| P2.B2.IT.2806.140 |  | Trim all MEPF / B2 / North / 2806 |  | 2d | 2026-04-01 | 2026-04-02 | BP1.233.3.410, P2.B2.IT.2806.130, P2.B2.IT.2806.120 |  |  |  |  | 60d | 17d | 16 | MEP | P2-5 | MEP-2 | O | ND | ND | Harris |  |
| P2.B2.IT.2806.260 |  | Room Ready - CIT / B2 / North / 2806 |  | 5d | 2026-04-28 | 2026-05-04 | P2.B2.IT.2806.150, P2.B2.IT.2806.170, P2.B2.IT.2806.180, P2.B2.IT.2806.140 |  |  |  |  | 43d | 0d | 40 | CIT | P2-5 | CIT |  | ND | ND |  |  |
| P2.B2.IT.2806.160 |  | Equipment Racks and Ladders / B2 / North / 2806 |  | 5d | 2026-05-05 | 2026-05-11 | P2.B2.IT.2806.150, BP1.270.3.120, P2.B2.IT.2806.260 |  |  |  |  | 43d | 0d | 40 | CIT | P2-5 | CIT |  | ND | ND |  |  |
| P2.B2.IT.2806.190 |  | Pull Wire - Backbone Cabling Into Racks / B2 / North / 2806 |  | 5d | 2026-05-12 | 2026-05-18 | P2.B2.IT.2806.160, P2.B2.IT.2806.260 |  |  |  |  | 43d | 0d | 40 | CIT | P2-5 | CIT |  | ND | ND |  |  |
| P2.B2.IT.2806.200 |  | Pull Wire - Horizontal Cabling Out to Termination Points / B2 / North / 2806 |  | 5d | 2026-05-12 | 2026-05-18 | P2.B2.IT.2806.160, P2.B2.IT.2806.260 |  |  |  |  | 43d | 0d | 40 | CIT | P2-5 | CIT |  | ND | ND |  |  |
| P2.B2.IT.2806.210 |  | Paint - Finish Coat / B2 / North / 2806 |  | 2d | 2026-05-19 | 2026-05-20 | P2.B2.IT.2806.190, P2.B2.IT.2806.200 |  |  |  |  | 43d | 0d | 16 | PAINT | P2-5 | PAINT-1 |  | ND | ND |  |  |
| P2.B2.IT.2806.220 |  | Terminations and Punch Downs - All Cabling / B2 / North / 2806 |  | 15d | 2026-05-21 | 2026-06-11 | P2.B2.IT.2806.210, P2.B2.IT.2806.160, P2.B2.IT.2806.260 |  |  |  |  | 43d | 0d | 40 | CIT | P2-5 | CIT |  | ND | ND |  |  |
| P2.B2.IT.2806.230 |  | Doors & Hardware / B2 / North / 2806 |  | 2d | 2026-05-21 | 2026-05-22 | P2.B2.IT.2806.210 |  |  |  |  | 53d | 0d | 16 | DFH | P2-5 | DFH |  | ND | ND |  | AT29 |
| P2.B2.IT.2806.240 |  | Energize Elec Panels Serving Comms Racks / B2 / North / 2806 |  | 3d | 2026-05-26 | 2026-05-28 | P2.B2.HE.5995.1100, P2.B2.IT.2806.230, CX.B2.SWGR.1010, CX.B2.MVEE.1010 |  |  |  |  | 53d | 10d | 24 | ELEC | P2-5 | ELEC-2 |  |  | ND |  |  |
| P2.B2.IT.2806.250 |  | Comms Racks In Service / B2 / North / 2806 | milestone | 0d | 2026-06-11 | 2026-06-11 | P2.B2.IT.2806.240, P2.B2.IT.2806.220 |  |  |  |  | 43d | 0d | 0 | CIT | P2-5 | CIT |  |  | ND |  |  |
|  | 3 | **IT Closet / B2-2903** |  |  | 2025-09-24 | 2026-05-29 |  |  |  |  |  |  |  |  |  |  |  |  |  |  |  |  |
| P2.B2.IT.2903.100 |  | Hang Plywood Backboards / B2 / North / 2903 |  | 2d | 2025-09-24 A | 2025-09-29 A | P2.B2.S.1140 | 100% |  | 2025-10-01 | 2025-10-02 |  |  | 16 | CRAFT | P2-5 | CRAFT | O | ND | ND |  |  |
| P2.B2.IT.2903.110 |  | Paint Prime & 1st Coat / B2 / North / 2903 |  | 2d | 2025-09-29 A | 2025-09-30 A | P2.B2.IT.2903.100 | 100% |  | 2025-10-03 | 2025-10-06 |  |  | 16 | PAINT | P2-5 | PAINT-1 | O | ND | ND |  |  |
| P2.B2.IT.2903.150 |  | Flooring / B2 / North / 2903 |  | 5d | 2025-11-17 A | 2025-11-20 A | P2.B2.IT.2903.110 | 100% |  | 2026-01-13 | 2026-01-19 |  |  | 40 | FLOOR | P2-5 | FLOOR | O | ND | ND |  |  |
| P2.B2.IT.2903.130 |  | HVAC Equipment / B2 / North / 2903 |  | 5d | 2025-12-01 A | 2025-12-05 A | P2.B2.IT.2903.110, P2.B2.S.1300 | 100% |  | 2026-01-02 | 2026-01-08 |  |  | 40 | HVAC | P2-5 | HVAC | O | ND | ND | Harris |  |
| P2.B2.IT.2903.120 |  | Electrical Panels / Conduit Connections / Wire Terminations / B2 / North / 2903 |  | 5d | 2025-12-08 A | 2025-12-12 A | P2.B2.IT.2903.110, P2.B2.HE.5920.1030 FF | 100% |  | 2026-01-02 | 2026-01-08 |  |  | 40 | ELEC | P2-5 | ELEC-2 | O | ND | ND |  |  |
| P2.B2.IT.2903.160 |  | Grounding and Bonding / B2 / North / 2903 |  | 2d | 2026-03-30 A | 2026-03-31 A | P2.B2.IT.2903.150 | 100% |  | 2026-03-04 | 2026-03-05 |  |  | 16 | ELEC | P2-5 | ELEC-2 | O | ND | ND |  |  |
| P2.B2.IT.2903.170 |  | OH Cable Tray / B2 / North / 2903 |  | 5d | 2026-03-30 A | 2026-04-21 | P2.B2.N.1390, P2.B2.S.1390, P2.B2.LC.1510 |  | 5d | 2026-03-30 | 2026-04-03 | 52d | 0d | 40 | ELEC | P2-5 | ELEC-2 |  | ND | ND |  |  |
| P2.B2.IT.2903.140 |  | Trim all MEPF / B2 / North / 2903 |  | 2d | 2026-04-01 | 2026-04-02 | P2.B2.IT.2903.120, P2.B2.IT.2903.130, BP1.233.3.410 |  |  |  |  | 65d | 13d | 16 | MEP | P2-5 | MEP-2 | O | ND | ND | Harris |  |
| P2.B2.IT.2903.180 |  | Room Ready - CIT / B2 / North / 2903 |  | 5d | 2026-04-22 | 2026-04-28 | P2.B2.IT.2903.150, P2.B2.IT.2903.170, P2.B2.IT.2903.160, P2.B2.IT.2903.140 |  |  |  |  | 52d | 0d | 40 | CIT | P2-5 | CIT |  | ND | ND |  |  |
| P2.B2.IT.2903.190 |  | Equipment Racks and Ladders / B2 / North / 2903 |  | 5d | 2026-04-29 | 2026-05-05 | P2.B2.IT.2903.180 |  |  |  |  | 52d | 0d | 40 | CIT | P2-5 | CIT |  | ND | ND |  |  |
| P2.B2.IT.2903.200 |  | Pull Wire - Backbone Cabling Into Racks / B2 / North / 2903 |  | 5d | 2026-05-06 | 2026-05-12 | P2.B2.IT.2903.190, P2.B2.IT.2903.180 |  |  |  |  | 52d | 0d | 40 | CIT | P2-5 | CIT |  | ND | ND |  |  |
| P2.B2.IT.2903.210 |  | Pull Wire - Horizontal Cabling Out to Termination Points / B2 / North / 2903 |  | 5d | 2026-05-06 | 2026-05-12 | P2.B2.IT.2903.190, P2.B2.IT.2903.180 |  |  |  |  | 52d | 0d | 40 | CIT | P2-5 | CIT |  | ND | ND |  |  |
| P2.B2.IT.2903.220 |  | Paint - Finish Coat / B2 / North / 2903 |  | 2d | 2026-05-13 | 2026-05-14 | P2.B2.IT.2903.210, P2.B2.IT.2903.200 |  |  |  |  | 52d | 0d | 16 | PAINT | P2-5 | PAINT-1 |  | ND | ND |  |  |
| P2.B2.IT.2903.230 |  | Terminations and Punch Downs - All Cabling / B2 / North / 2903 |  | 10d | 2026-05-15 | 2026-05-29 | P2.B2.IT.2903.190, P2.B2.IT.2903.180, P2.B2.IT.2903.220 |  |  |  |  | 52d | 0d | 40 | CIT | P2-5 | CIT |  | ND | ND |  |  |
| P2.B2.IT.2903.240 |  | Doors & Hardware / B2 / North / 2903 |  | 2d | 2026-05-15 | 2026-05-18 | P2.B2.IT.2903.220 |  |  |  |  | 57d | 0d | 16 | DFH | P2-5 | DFH |  | ND | ND |  | AT29 |
| P2.B2.IT.2903.250 |  | Energize Elec Panels Serving Comms Racks / B2 / North / 2903 |  | 3d | 2026-05-19 | 2026-05-21 | CX.B2.MVEE.1010, CX.B2.SWGR.1010, P2.B2.IT.2903.240, P2.B2.HE.5920.1100 |  |  |  |  | 57d | 5d | 24 | ELEC | P2-5 | ELEC-2 |  |  | ND |  |  |
| P2.B2.IT.2903.260 |  | Comms Racks In Service / B2 / North / 2903 | milestone | 0d | 2026-05-29 | 2026-05-29 | P2.B2.IT.2903.250, P2.B2.IT.2903.230 |  |  |  |  | 52d | 9d | 0 | CIT | P2-5 | CIT |  |  | ND |  |  |

| ID | WBS | Activity | Duration | Start | Finish | Predecessors | Complete | Remaining | Planned start | Planned finish | Total float | Free float | Pick | Temp Orig Dur | *NIH Resp Check* | Resp / SRLM | PHASE | Z.RESP | RESP / Trade | Update Status | 744 | RESP UPD | Testing Type |
| --- | --- | --- | --- | --- | --- | --- | --- | --- | --- | --- | --- | --- | --- | --- | --- | --- | --- | --- | --- | --- | --- | --- | --- |
|  | 1 | **FINISHES - CORE & SUPPORT SPACES / Level B2/B1** |  | 2025-03-17 | 2027-02-05 |  |  |  |  |  |  |  |  |  |  |  |  |  |  |  |  |  |  |
|  | 6 | **Bathrooms - Break Rooms - Locker Rooms / Level B2/B1** |  | 2025-03-17 | 2026-10-14 |  |  |  |  |  |  |  |  |  |  |  |  |  |  |  |  |  |  |
|  | 1 | **Toilets B2-2811A / B2-2811B / B2-2811C** |  | 2025-03-17 | 2026-07-01 |  |  |  |  |  |  |  |  |  |  |  |  |  |  |  |  |  |  |
| P2.B2.BR.2000 |  | Plumbing - Set Pipe Carriers / B2 / North / 2811 Toilets | 10d | 2025-03-17 A | 2025-04-30 A | P2.B2.EMS.A.1020 | 100% |  | 2025-03-31 | 2025-04-11 |  |  | ? | 24 | ! | PLMB | P2-5 | Harris | PLMB |  |  |  |  |
| P2.B2.BR.2020 |  | Plumbing - Test Pipe / B2 / North / 2811 Toilets | 2d | 2025-12-01 A | 2025-12-02 A | P2.B2.BR.2000 | 100% |  | 2026-01-02 | 2026-01-05 |  |  |  | 16 |  | PLMB | P2-5 | Harris | PLMB | O | SS | SS |  |
| P2.B2.BR.2070 |  | In Wall - Insulate Plumbing / B2 / North / 2811 Toilets | 2d | 2025-12-15 A | 2025-12-15 A | P2.B2.BR.2020 | 100% |  | 2026-01-16 | 2026-01-19 |  |  |  | 16 |  | INSUL | P2-5 | Harris | INSUL-3 | O | SS | SS |  |
| P2.B2.BR.2010 |  | Framing & Blocking - Walls and Hard Lid Ceilings / B2 / North / 2811 Toilets | 2d | 2026-03-02 A | 2026-04-01 | P2.B2.BR.2000 | 50% | 1d | 2026-03-02 | 2026-03-03 | 13d | 0d |  | 16 | ! | GYP | P2-5 |  | GYP-1 | O | SS | DG |  |
| P2.B2.BR.2040 |  | Trim Sprinkler Drops _ Hard Lids / B2 / North / 2811 Toilets | 2d | 2026-04-02 | 2026-04-03 | P2.B2.BR.2010 |  |  |  |  | 13d | 0d |  | 16 | ! | FP | P2-5 |  | FP-1 | O | SS | DG |  |
| P2.B2.BR.2050 |  | Duct Drops _ Hard Lids / B2 / North / 2811 Toilets | 2d | 2026-04-06 | 2026-04-07 | P2.B2.BR.2040, P2.B2.BR.2010 |  |  |  |  | 13d | 0d |  | 16 | T.R/I.IW.MECH.HVAC.SM | HVAC | P2-5 | Harris | HVAC | O | SS | DG |  |
| P2.B2.BR.2030 |  | R/I - Electrical _ Hard Lids / B2 / North / 2811 Toilets | 2d | 2026-04-08 | 2026-04-09 | P2.B2.BR.2050, P2.B2.BR.2010 |  |  |  |  | 13d | 0d |  | 16 | ! | ELEC | P2-5 |  | ELEC-3 | O | SS | SS |  |
| P2.B2.BR.2060 |  | R/I - Fire Alarm _ Hard Lids / B2 / North / 2811 Toilets | 2d | 2026-04-10 | 2026-04-13 | P2.B2.BR.2030, P2.B2.BR.2010 |  |  |  |  | 13d | 0d |  | 16 | ! | ELEC | P2-5 |  | ELEC-3 | O | SS | SS |  |
| P2.B2.BR.2080 |  | Inspection - Close In - Walls and Hard Lid Ceilings / B2 / North / 2811 Toilets | 3d | 2026-04-14 | 2026-04-16 | P2.B2.BR.2050, P2.B2.BR.2030, P2.B2.BR.2040, P2.B2.BR.2070, P2.B2.BR.2060 |  |  |  |  | 13d | 21d |  | 24 | ! | AHJ | P2-5 |  | AHJ | O | SS | DG |  |
| P2.B2.BR.2090 |  | Hang-Tape-Finish _ Walls / B2 / North / 2811 Toilets | 5d | 2026-05-18 | 2026-05-22 | P2.B2.BR.2080, P2.SUM.175, P2.B2.N.1470 SS, P2.B2.S.1470 SS, P2.B2.N.1470 FF, P2.B2.S.1470 FF |  |  |  |  | -8d | 0d |  | 40 | ! | GYP | P2-5 |  | GYP-1 | O | SS | DG |  |
| P2.B2.BR.2100 |  | Paint Prime & Final Coat _ Walls & Hard Lid Ceilings / B2 / North / 2811 Toilets | 2d | 2026-05-26 | 2026-05-27 | P2.B2.BR.2090 |  |  |  |  | 161d | 0d |  | 16 | ! | PAINT | P2-5 |  | PAINT-1 | O | SS | DG |  |
| P2.B2.BR.2140 |  | Trim - HVAC G/R/D's / B2 / North / 2811 Toilets | 2d | 2026-05-28 | 2026-05-29 | P2.B2.BR.2100 |  |  |  |  | 161d | 0d |  | 16 | ! | HVAC | P2-5 | Harris | HVAC |  | SS | DG |  |
| P2.B2.BR.2120 |  | Pull Wire & Trim Devices - Electrical / B2 / North / 2811 Toilets | 2d | 2026-06-01 | 2026-06-02 | P2.B2.BR.2140, P2.B2.BR.2100 |  |  |  |  | 161d | 0d |  | 16 | ! | ELEC | P2-5 |  | ELEC-2 |  | SS | DG |  |
| P2.B2.BR.2130 |  | Lights - Set & Terminate / B2 / North / 2811 Toilets | 2d | 2026-06-01 | 2026-06-02 | P2.B2.BR.2120 SS |  |  |  |  | 163d | 2d |  | 16 | ! | ELEC | P2-5 |  | ELEC-2 |  | SS | DG |  |
| P2.B2.BR.2110 |  | Pull Wire & Trim Devices - Fire Alarm / B2 / North / 2811 Toilets | 2d | 2026-06-03 | 2026-06-04 | P2.B2.BR.2120, P2.B2.BR.2100 |  |  |  |  | 161d | 0d |  | 16 | ! | ELEC | P2-5 |  | ELEC-2 |  | SS | DG |  |
| P2.B2.BR.2150 |  | Wall Tile / B2 / North / 2811 Toilets | 5d | 2026-06-05 | 2026-06-11 | P2.B2.BR.2130, P2.B2.BR.2140, P2.B2.BR.2110 |  |  |  |  | 161d | 0d |  | 40 | ! | TILE | P2-5 |  | TILE |  | SS | DG |  |
| P2.B2.BR.2170 |  | Plumbing Fixtures / Sinks / Showers / B2 / North / 2811 Toilets | 2d | 2026-06-12 | 2026-06-15 | BP1.224.3.100, P2.B2.BR.2150 |  |  |  |  | 161d | 0d |  | 16 | ! | PLMB | P2-5 | Harris | PLMB |  | SS | DG |  |
| P2.B2.BR.2180 |  | Bathroom Accessories / B2 / North / 2811 Toilets | 2d | 2026-06-16 | 2026-06-17 | P2.B2.BR.2170, BP7.102.3.200 |  |  |  |  | 166d | 5d |  | 16 | ! | SPECIAL | P2-5 |  | SPECIAL |  | SS | DG |  |
| P2.B2.BR.2210 |  | Flooring Prep - Epoxy Floors / B2 / North / 2811 Toilets | 3d | 2026-06-16 | 2026-06-18 | P2.B2.BR.2150, P2.B2.BR.2170, BP7.096.3.200 |  |  |  |  | 161d | 0d |  | 40 | ! | EPOXYF | P2-5 |  | EPOXYF |  | SS | DG |  |
| P2.B2.BR.2200 |  | Flooring - Epoxy Floors / B2 / North / 2811 Toilets | 2d | 2026-06-19 | 2026-06-22 | P2.B2.BR.2150, P2.B2.BR.2210 |  |  |  |  | 161d | 0d |  | 40 | ! | EPOXYF | P2-5 |  | EPOXYF |  | SS | DG |  |
| P2.B2.BR.2160 |  | Doors & Hardware / B2 / North / 2811 Toilets | 2d | 2026-06-23 | 2026-06-24 | P2.B2.BR.2150, P2.B2.BR.2200 |  |  |  |  | 161d | 0d |  | 16 | ! | DFH | P2-5 |  | DFH |  | SS | DG | AT29 |
| P2.B2.BR.2190 |  | Work Completion List - Finishes / B2 / North / 2811 Toilets | 5d | 2026-06-25 | 2026-07-01 | P2.B2.BR.2160, P2.B2.BR.2180, P2.B2.BR.2110 |  |  |  |  | 161d | 173d | To Punch | 40 |  | AHJ | P2-5 |  | AHJ |  |  | DG |  |

| ID | WBS | Activity | Duration | Start | Finish | Predecessors | Complete | Planned start | Planned finish | Total float | Free float | Pick | Temp Orig Dur | *NIH Resp Check* | Resp / SRLM | 744 | PHASE | Z.RESP | RESP UPD | RESP / Trade | Update Status | Testing Type |
| --- | --- | --- | --- | --- | --- | --- | --- | --- | --- | --- | --- | --- | --- | --- | --- | --- | --- | --- | --- | --- | --- | --- |
|  | 4 | **Lockers, Toilets, and Showers B2-2981 / B2-2989** |  | 2025-05-19 | 2026-10-14 |  |  |  |  |  |  |  |  |  |  |  |  |  |  |  |  |  |
| P2.B2.BR.1000 |  | Plumbing - Set Pipe Carriers / B2 / South / 289X Toilets | 10d | 2025-05-19 A | 2025-11-05 A | P2.B2.BR.2000, P2.B2.S.1240, P2.B2.S.1560 | 100% | 2025-06-09 | 2025-06-20 |  |  | ? | 40 | ! | PLMB | SS | P2-5 | Harris | SS | PLMB |  |  |
| P2.B2.BR.1030 |  | Plumbing - Test Pipe @ Chase Walls / B2 / South / 289X Toilets | 5d | 2025-12-01 A | 2025-12-05 A | P2.B2.BR.1000 | 100% | 2026-01-02 | 2026-01-08 |  |  |  | 40 |  | PLMB | SS | P2-5 | Harris | SS | PLMB | O |  |
| P2.B2.BR.1020 |  | Frame - Chase Walls and Hard Lid Ceilings / B2 / South / 289X Toilets | 5d | 2025-12-03 A | 2025-12-24 A | P2.B2.BR.1010, P2.B2.BR.1000 | 100% | 2026-01-16 | 2026-01-22 |  |  |  | 40 | ! | GYP | SS | P2-5 |  | SS | GYP-1 | O |  |
| P2.B2.BR.1080 |  | In Wall - Insulate Plumbing / B2 / South / 289X Toilets | 5d | 2025-12-08 A | 2025-12-12 A | P2.B2.BR.1030 | 100% | 2026-01-09 | 2026-01-15 |  |  |  | 40 |  | INSUL | SS | P2-5 | Harris | SS | INSUL-3 | O |  |
| P2.B2.BR.1010 |  | Countertop Support Framing / B2 / South / 289X Toilets | 5d | 2026-03-02 A | 2026-03-06 A | P2.B2.S.1420 | 100% |  |  |  |  | ? | 40 | T.MISCMTL | MISCMTL | SS | P2-5 |  | DG | MISCMTL | O | AT50 |
| P2.B2.BR.1050 |  | Trim Sprinkler Drops _ Hard Lids / B2 / South / 289X Toilets | 5d | 2026-03-09 A | 2026-03-13 A | P2.B2.BR.1020 | 100% |  |  |  |  |  | 40 | ! | FP | SS | P2-5 |  | DG | FP-1 | O |  |
| P2.B2.BR.1060 |  | Duct Drops _ Hard Lids / B2 / South / 289X Toilets | 5d | 2026-03-16 A | 2026-03-20 A | P2.B2.BR.1050, P2.B2.BR.1020 | 100% |  |  |  |  |  | 40 | T.R/I.IW.MECH.HVAC.SM | HVAC | SS | P2-5 | Harris | DG | HVAC | O |  |
| P2.B2.BR.1040 |  | R/I - Electrical _ Hard Lids / B2 / South / 289X Toilets | 5d | 2026-03-23 A | 2026-03-27 A | P2.B2.BR.1060, P2.B2.BR.1020 | 100% |  |  |  |  |  | 40 | ! | ELEC | SS | P2-5 |  | DG | ELEC-3 |  |  |
| P2.B2.BR.1070 |  | R/I - Fire Alarm _ Hard Lids / B2 / South / 289X Toilets | 5d | 2026-03-30 A | 2026-03-31 A | P2.B2.BR.1040, P2.B2.BR.1020 | 100% | 2026-03-30 | 2026-04-03 |  |  |  | 40 | ! | ELEC | SS | P2-5 |  | DG | ELEC-3 |  |  |
| P2.B2.BR.1090 |  | Inspection - Close In - Chase Walls and Hard Lid Ceilings / B2 / South / 289X Toilets | 5d | 2026-04-01 | 2026-04-07 | P2.B2.BR.1040, P2.B2.BR.1050, P2.B2.BR.1060, P2.B2.BR.1080, P2.B2.BR.1070 |  |  |  | 111d | 28d |  | 40 | ! | AHJ | SS | P2-5 |  | DG | AHJ |  |  |
| P2.B2.BR.1100 |  | Hang-Tape-Finish _ Hard Lids Ceilings / B2 / South / 289X Toilets | 5d | 2026-05-18 | 2026-05-22 | P2.B2.BR.1090, P2.SUM.175, P2.B2.N.1470 SS, P2.B2.S.1470 SS, P2.B2.N.1470 FF, P2.B2.S.1470 FF |  |  |  | 83d | 0d |  | 40 | ! | GYP | SS | P2-5 |  | DG | GYP-1 |  |  |
| P2.B2.BR.1110 |  | Paint Prime & 1st Coat _ Walls & Hard Lid Ceilings / B2 / South / 289X Toilets | 5d | 2026-05-26 | 2026-06-01 | P2.B2.BR.1100 |  |  |  | 83d | 0d |  | 40 | ! | PAINT | SS | P2-5 |  | DG | PAINT-1 |  |  |
| P2.B2.BR.1140 |  | Ceiling Grid / B2 / South / 289X Toilets | 5d | 2026-06-02 | 2026-06-08 | P2.B2.BR.1110 |  |  |  | 83d | 0d |  | 40 | ! | ACT | SS | P2-5 |  | DG | ACT |  |  |
| P2.B2.BR.1170 |  | Trim Sprinkler Drops _ Ceiling Tiles / B2 / South / 289X Toilets | 5d | 2026-06-09 | 2026-06-15 | P2.B2.BR.1140 FF, P2.B2.BR.1140 |  |  |  | 83d | 0d |  | 40 | ! | FP |  | P2-5 |  | DG | FP-1 |  |  |
| P2.B2.BR.1160 |  | Trim - HVAC G/R/D's / B2 / South / 289X Toilets | 5d | 2026-06-16 | 2026-06-22 | P2.B2.BR.1140, P2.B2.BR.1170 |  |  |  | 83d | 0d |  | 40 | ! | HVAC |  | P2-5 | Harris | DG | HVAC |  |  |
| P2.B2.BR.1130 |  | Pull Wire - Electrical / B2 / South / 289X Toilets | 5d | 2026-06-23 | 2026-06-29 | P2.B2.BR.1160, P2.B2.BR.1110 |  |  |  | 83d | 0d |  | 40 | ! | ELEC |  | P2-5 |  | DG | ELEC-2 |  |  |
| P2.B2.BR.1120 |  | Pull Wire - Fire Alarm / B2 / South / 289X Toilets | 5d | 2026-06-30 | 2026-07-07 | P2.B2.BR.1130, P2.B2.BR.1110 |  |  |  | 83d | 60d |  | 40 | ! | ELEC |  | P2-5 |  | DG | ELEC-2 |  |  |
| P2.B2.BR.1150 |  | Lights - Set & Terminate / B2 / South / 289X Toilets | 5d | 2026-06-30 | 2026-07-07 | P2.B2.BR.1140, P2.B2.BR.1130 |  |  |  | 88d | 0d |  | 40 | ! | ELEC |  | P2-5 |  | DG | ELEC-2 |  |  |
| P2.B2.BR.1180 |  | Inspection - Ceiling Close In - ACT Ceilings / B2 / South / 289X Toilets | 5d | 2026-07-08 | 2026-07-14 | P2.B2.BR.1160, P2.B2.BR.1150, P2.B2.BR.1170 |  |  |  | 88d | 0d |  | 40 |  | AHJ |  | P2-5 |  | DG | AHJ |  |  |
| P2.B2.BR.1190 |  | Ceiling Tiles / B2 / South / 289X Toilets | 5d | 2026-07-15 | 2026-07-21 | P2.B2.BR.1180 |  |  |  | 88d | 0d |  | 40 | ! | ACT |  | P2-5 |  | DG | ACT |  |  |
| P2.B2.BR.1200 |  | Wall Tile / B2 / South / 289X Toilets | 5d | 2026-07-22 | 2026-07-28 | P2.B2.BR.1190 |  |  |  | 88d | 0d |  | 40 | ! | TILE |  | P2-5 |  | DG | TILE |  |  |
| P2.B2.BR.2220 |  | Flooring Prep - Epoxy Floors / B2 / South / 289X Toilets | 3d | 2026-07-29 | 2026-07-31 | P2.B2.BR.1200, BP7.096.3.200 |  |  |  | 88d | 0d |  | 40 | ! | EPOXYF |  | P2-5 |  | DG | EPOXYF |  |  |
| P2.B2.BR.2230 |  | Flooring - Epoxy Floors / B2 / South / 289X Toilets | 2d | 2026-08-03 | 2026-08-04 | P2.B2.BR.2220 |  |  |  | 88d | 0d |  | 40 | ! | EPOXYF |  | P2-5 |  | DG | EPOXYF |  |  |
| P2.B2.BR.1210 |  | Paint - Finish Coat / B2 / South / 289X Toilets | 5d | 2026-08-05 | 2026-08-11 | P2.B2.BR.2230 |  |  |  | 88d | 0d |  | 40 | ! | PAINT |  | P2-5 |  | DG | PAINT-1 |  |  |
| P2.B2.BR.1220 |  | Countertops / B2 / South / 289X Toilets | 5d | 2026-08-12 | 2026-08-18 | P2.B2.BR.1210, BP7.123.3.100 |  |  |  | 88d | 0d |  | 40 | ! | MILL |  | P2-5 |  | DG | MILL |  |  |
| P2.B2.BR.1260 |  | Lockers & Benches / B2 / South / 289X Toilets | 5d | 2026-08-19 | 2026-08-25 | P2.B2.BR.1220, P2.B2.BR.1210, BP7.105.3.100 |  |  |  | 88d | 0d |  | 40 | ! | SPECIAL |  | P2-5 |  | DG | SPECIAL |  |  |
| P2.B2.BR.1270 |  | Plumbing Fixtures / Sinks / Showers / B2 / South / 289X Toilets | 5d | 2026-08-26 | 2026-09-01 | P2.B2.BR.1260, P2.B2.BR.1220, BP7.102.3.120 |  |  |  | 88d | 0d |  | 40 | ! | PLMB |  | P2-5 | Harris | DG | PLMB |  |  |
| P2.B2.BR.1250 |  | Doors & Hardware / B2 / South / 289X Toilets | 5d | 2026-09-02 | 2026-09-09 | P2.B2.BR.1270, P2.B2.BR.1210 |  |  |  | 88d | 0d |  | 40 | ! | DFH |  | P2-5 |  | DG | DFH |  | AT29 |
| P2.B2.BR.1280 |  | Toilet Partitions / B2 / South / 289X Toilets | 5d | 2026-09-10 | 2026-09-16 | P2.B2.BR.1270, P2.B2.BR.1250 |  |  |  | 88d | 0d |  | 40 | ! | SPECIAL |  | P2-5 |  | DG | SPECIAL |  |  |
| P2.B2.BR.1290 |  | Bathroom Accessories / B2 / South / 289X Toilets | 5d | 2026-09-17 | 2026-09-23 | P2.B2.BR.1270, P2.B2.BR.1280 |  |  |  | 88d | 0d |  | 40 | ! | SPECIAL |  | P2-5 |  | DG | SPECIAL |  |  |
| P2.B2.BR.1240 |  | Trim - Electrical Devices / B2 / South / 289X Toilets | 5d | 2026-09-24 | 2026-09-30 | P2.B2.BR.1290, P2.B2.BR.1210 |  |  |  | 88d | 0d |  | 40 | ! | ELEC |  | P2-5 |  | DG | ELEC-2 |  |  |
| P2.B2.BR.1230 |  | Trim - Fire Alarm Devices / B2 / South / 289X Toilets | 5d | 2026-10-01 | 2026-10-07 | P2.B2.BR.1240, P2.B2.BR.1210, P2.B2.BR.1120 |  |  |  | 88d | 0d |  | 40 | ! | FA |  | P2-5 |  | DG | FA-1 |  |  |
| P2.B2.BR.1300 |  | Work Completion List - Finishes / B2 / South / 289X Toilets | 5d | 2026-10-08 | 2026-10-14 | P2.B2.BR.1260, P2.B2.BR.1250, P2.B2.BR.1280, P2.B2.BR.1290, P2.B2.BR.1230, P2.B2.BR.1240 |  |  |  | 88d | 100d | To Punch | 40 |  | AHJ |  | P2-5 |  | DG | AHJ |  |  |

| ID | WBS | Activity | Duration | Start | Finish | Predecessors | Total float | Free float | Temp Orig Dur | Resp / SRLM | PHASE | RESP UPD | RESP / Trade | Z.RESP |
| --- | --- | --- | --- | --- | --- | --- | --- | --- | --- | --- | --- | --- | --- | --- |
|  | 4 | **Corridors & Lobbies / Level B2/B1** |  | 2026-06-16 | 2027-02-05 |  |  |  |  |  |  |  |  |  |
| P2.B2.CL.1000 |  | Paint Prime & 1st Coat Walls / B2 / Corr & Lobbies | 5d | 2026-06-16 | 2026-06-22 | P2.B2.SC.1290, P2.B2.WC.1280, P2.B2.WC.1640, P2.B2.N.1550 | 10d | 0d | 40 | PAINT | P2-5 | DG | PAINT-1 |  |
| P2.B2.CL.1010 |  | Framing - Hard Lid Ceilings / B2 / Corr & Lobbies | 10d | 2026-06-23 | 2026-07-07 | P2.B2.CL.1000 | 15d | 5d | 80 | GYP | P2-5 | DG | GYP-1 |  |
| P2.B2.CL.1020 |  | T-Grid / B2 / Corr & Lobbies | 10d | 2026-06-23 | 2026-07-07 | P2.B2.CL.1000, P2.B2.S.1550 | 10d | 0d | 80 | ACT | P2-5 | DG | ACT |  |
| P2.B2.CL.1070 |  | Trim - Sprinkler Heads @ T-Grid / B2 / Corr & Lobbies | 5d | 2026-07-02 | 2026-07-09 | P2.B2.CL.1020 FF+2d | 10d | 0d | 40 | FP | P2-5 | DG | FP-1 |  |
| P2.B2.CL.1040 |  | R/I - Trim Sprinkler Heads- All Ceilings / B2 / Corr & Lobbies | 5d | 2026-07-10 | 2026-07-16 | P2.B2.CL.1020 FF+2d, P2.B2.CL.1010 FF+2d, P2.B2.CL.1070 | 10d | 0d | 40 | FP | P2-5 | DG | FP-1 |  |
| P2.B2.CL.1050 |  | R/I - HVAC- All Ceilings / B2 / Corr & Lobbies | 5d | 2026-07-17 | 2026-07-23 | P2.B2.CL.1020 FF+2d, P2.B2.CL.1010 FF+2d, P2.B2.CL.1040 | 10d | 0d | 40 | HVAC | P2-5 | DG | HVAC | Harris |
| P2.B2.CL.1030 |  | R/I - Electrical - All Ceilings / B2 / Corr & Lobbies | 5d | 2026-07-24 | 2026-07-30 | P2.B2.CL.1020 FF+2d, P2.B2.CL.1010 FF+2d, P2.B2.CL.1050 | 10d | 0d | 40 | ELEC | P2-5 | DG | ELEC-2 |  |
| P2.B2.CL.1080 |  | R/I - Fire Alarm/Life Safety - All Ceilings / B2 / Corr & Lobbies | 5d | 2026-07-31 | 2026-08-06 | P2.B2.CL.1010 FF+2d, P2.B2.CL.1030 | 10d | 0d | 40 | FA | P2-5 | DG | FA-1 |  |
| P2.B2.CL.1100 |  | Pull Wire - Electrical / B2 / Corr & Lobbies | 10d | 2026-07-31 | 2026-08-13 | P2.B2.CL.1030 | 40d | 5d | 40 | ELEC | P2-5 | DG | ELEC-2 |  |
| P2.B2.CL.1060 |  | R/I - All Remaining Low Voltage - All Ceilings / B2 / Corr & Lobbies | 5d | 2026-08-07 | 2026-08-13 | P2.B2.CL.1020 FF+2d, P2.B2.CL.1010 FF+2d, P2.B2.CL.1080 | 10d | 0d | 40 | LOWVOLT | P2-5 | DG | LOWVOLT-1 |  |
| P2.B2.CL.1110 |  | Pull Wire - Fire Alarm / B2 / Corr & Lobbies | 5d | 2026-08-07 | 2026-08-13 | P2.B2.CL.1080 | 50d | 5d | 40 | FA | P2-5 | DG | FA-1 |  |
| P2.B2.CL.1090 |  | Inspections - Close In- All Ceilings / B2 / Corr & Lobbies | 5d | 2026-08-14 | 2026-08-20 | P2.B2.CL.1050, P2.B2.CL.1060, P2.B2.CL.1030, P2.B2.CL.1040, P2.B2.CL.1080 | 10d | 0d | 40 | AHJ | P2-5 | DG | AHJ |  |
| P2.B2.CL.1120 |  | Pull Wire - All Remianing Low Voltage Systems / B2 / Corr & Lobbies | 5d | 2026-08-14 | 2026-08-20 | P2.B2.CL.1060 | 55d | 0d | 40 | LOWVOLT | P2-5 | DG | LOWVOLT-1 |  |
| P2.B2.CL.1130 |  | Hang/Tape/Finish- Hard Lid Ceilings / B2 / Corr & Lobbies | 10d | 2026-08-21 | 2026-09-03 | P2.B2.CL.1090, P2.SUM.175 | 10d | 0d | 80 | GYP | P2-5 | DG | GYP-1 |  |
| P2.B2.CL.1140 |  | Drop Ceiling Tiles @ T-Grid / B2 / Corr & Lobbies | 5d | 2026-08-21 | 2026-08-27 | P2.B2.CL.1070, P2.B2.CL.1100, P2.B2.CL.1110, P2.B2.CL.1120 | 68d | 58d | 40 | ACT | P2-5 | DG | ACT |  |
| P2.B2.CL.1190 |  | Paint - Hard Lid Ceilings / B2 / Corr & Lobbies | 5d | 2026-09-04 | 2026-09-11 | P2.B2.CL.1130 | 10d | 0d | 40 | PAINT | P2-5 | DG | PAINT-1 |  |
| P2.B2.CL.1180 |  | Ceiling Mounted - HVAC GRD's / B2 / Corr & Lobbies | 15d | 2026-09-14 | 2026-10-02 | P2.B2.CL.1020, P2.B2.CL.1190 | 10d | 0d | 120 | HVAC | P2-5 | DG | HVAC | Harris |
| P2.B2.CL.1150 |  | Ceiling Mounted - Electrical Devices and Lights / B2 / Corr & Lobbies | 20d | 2026-09-28 | 2026-10-23 | P2.B2.CL.1100, P2.B2.CL.1190, P2.B2.CL.1180 SS+10d | 10d | 0d | 120 | ELEC | P2-5 | DG | ELEC-2 |  |
| P2.B2.CL.1160 |  | Ceiling Mounted - Fire Alarm/Life Saftey Devices / B2 / Corr & Lobbies | 15d | 2026-10-12 | 2026-10-30 | P2.B2.CL.1020, P2.B2.CL.1110, P2.B2.CL.1190, P2.B2.CL.1150 SS+10d | 10d | 0d | 120 | FA | P2-5 | DG | FA-1 |  |
| P2.B2.CL.1170 |  | Ceiling Mounted - All Low Voltage Devices / B2 / Corr & Lobbies | 15d | 2026-10-26 | 2026-11-13 | P2.B2.CL.1120, P2.B2.CL.1190, P2.B2.CL.1160 SS+10d | 10d | 0d | 120 | LOWVOLT | P2-5 | DG | LOWVOLT-1 |  |
| P2.B2.CL.1200 |  | Flooring / B2 / Corr & Lobbies | 10d | 2026-11-16 | 2026-12-01 | P2.B2.CL.1150, P2.B2.CL.1160, P2.B2.CL.1170, P2.B2.CL.1180, P2.B2.CL.1140 SS+2d | 10d | 0d | 80 | FLOOR | P2-5 | DG | FLOOR |  |
| P2.B2.CL.1210 |  | Final Paint / B2 / Corr & Lobbies | 5d | 2026-11-25 | 2026-12-03 | P2.B2.CL.1200 FF+2d, P2.B2.CL.1140, BP7.097.3.100 | 10d | 0d | 40 | PAINT | P2-5 | DG | PAINT-1 |  |
| P2.B2.CL.1220 |  | Floor Base / B2 / Corr & Lobbies | 5d | 2026-12-04 | 2026-12-10 | P2.B2.CL.1210 | 10d | 0d | 40 | FLOOR | P2-5 | DG | FLOOR |  |
| P2.B2.CL.1250 |  | Trim - HVAC - Wall Mounted Devices / B2 / Corr & Lobbies | 5d | 2026-12-11 | 2026-12-17 | P2.B2.CL.1210, P2.B2.CL.1220 | 10d | 0d | 40 | BAS | P2-5 | DG | BAS-1 | Harris |
| P2.B2.CL.1230 |  | Trim - All Electrical - Wall Mounted Devices / B2 / Corr & Lobbies | 5d | 2026-12-18 | 2026-12-24 | P2.B2.CL.1250, P2.B2.CL.1210 | 10d | 0d | 40 | ELEC | P2-5 | DG | ELEC-2 |  |
| P2.B2.CL.1240 |  | Trim - Fire Alarm - Wall Mounted Devices / B2 / Corr & Lobbies | 5d | 2026-12-28 | 2027-01-04 | P2.B2.CL.1230, P2.B2.CL.1210 | 10d | 0d | 40 | FA | P2-5 | DG | FA-1 |  |
| P2.B2.CL.1260 |  | Trim - All Remining Low Voltage Systems - Wall Mounted Devices / B2 / Corr & Lobbies | 5d | 2027-01-05 | 2027-01-11 | P2.B2.CL.1240, P2.B2.CL.1210 | 10d | 0d | 40 | LOWVOLT | P2-5 | DG | LOWVOLT-1 |  |
| P2.B2.CL.1270 |  | Building Signage / B2 / Corr & Lobbies | 5d | 2027-01-12 | 2027-01-18 | P2.B2.CL.1260, P2.B2.CL.1210, BP7.100.3.110 | 10d | 0d | 40 | SIGN | P2-5 | DG | SIGN |  |
| P2.B2.CL.1280 |  | Work Completion List / B2 / Corr & Lobbies | 5d | 2027-01-19 | 2027-01-25 | P2.B2.CL.1230, P2.B2.CL.1240, P2.B2.CL.1250, P2.B2.CL.1260, P2.B2.CL.1220, P2.B2.CL.1270, P2.B2.M.2803.1300 | 10d | 0d | 40 | T | P2-5 | DG | T |  |
| P2.B2.CL.1290 |  | Rough Clean / B2 / Corr & Lobbies | 2d | 2027-01-26 | 2027-01-27 | P2.B2.CL.1280 | 10d | 0d | 16 | FCLEAN | P2-5 | DG | FCLEAN |  |
| P2.B2.CL.1300 |  | Punchlist / B2 / Corr & Lobbies | 5d | 2027-01-28 | 2027-02-03 | P2.B2.CL.1290 | 10d | 0d | 40 | AHJ | P2-5 | DG | AHJ |  |
| P2.B2.CL.1310 |  | Final Clean / B2 / Corr & Lobbies | 2d | 2027-02-04 | 2027-02-05 | P2.B2.CL.1300, P2.B2.M.5970 | 10d | 22d | 16 | FCLEAN | P2-5 | DG | FCLEAN |  |

| ID | WBS | Activity | Duration | Start | Finish | Predecessors | Complete | Remaining | Planned start | Planned finish | Total float | Free float | Temp Orig Dur | Act ID Temp | Resp / SRLM | PHASE | Z.RESP | RESP / Trade | Testing Type | Update Status | 744 | RESP UPD | Pick | **NEAR CRITICAL** |
| --- | --- | --- | --- | --- | --- | --- | --- | --- | --- | --- | --- | --- | --- | --- | --- | --- | --- | --- | --- | --- | --- | --- | --- | --- |
|  | 4 | **LAB & CLINICAL SPACES (Below Interstitials) / LEVEL B2/B1** |  | 2025-01-01 | 2026-12-28 |  |  |  |  |  |  |  |  |  |  |  |  |  |  |  |  |  |  |  |
|  | 3 | **ROUGH IN - Lab & Clinical Spaces (25K SF) / Level B2/B1** |  | 2025-01-01 | 2026-06-22 |  |  |  |  |  |  |  |  |  |  |  |  |  |  |  |  |  |  |  |
| P2.B2.LC.1000 |  | Layout - All Trades / B2 / Lab & Clinical | 5d | 2025-01-01 A | 2025-02-10 A | P1.1.03.660, P2.B2.N.1000 | 100% |  | 2025-03-03 | 2025-03-07 |  |  | 40 | P2.B2.01.010 | R/I.OH | P2-5 | Harris | R/I.OH |  |  |  |  |  |  |
| P2.B2.LC.1290 |  | CMU - Lay Block / B2 / Lab & Clinical | 10d | 2025-01-01 A | 2025-01-02 A | P2.B2.LC.1310, P2.B2.LC.1600, P2.B2.N.1050 | 100% |  | 2025-02-24 | 2025-03-07 |  |  | 80 | P2.B2.04.20.210 | CMU | P2-5 |  | CMU | AT3 |  |  |  |  |  |
| P2.B2.LC.1310 |  | CMU - Drill_Epoxy Masonry Dowels / B2 / Lab & Clinical | 10d | 2025-01-01 A | 2025-01-01 A | P2.B2.EMS.B.1030, P2.B2.N.1040, P2.B2.LC.1000 SS | 100% |  | 2025-02-10 | 2025-02-21 |  |  | 80 | P2.B2.04.20.110 | CMU | P2-5 |  | CMU | AT4 |  |  |  |  |  |
| P2.B2.LC.1320 |  | In Wall - Electrical - CMU / B2 / Lab & Clinical | 20d | 2025-01-03 A | 2025-01-04 A | P2.B2.LC.1290 SS | 100% |  | 2025-01-02 | 2025-01-29 |  |  | 80 | P2.B2.26.05.510 | ELEC | P2-5 |  | ELEC-2 |  |  |  |  |  |  |
| P2.B2.LC.1330 |  | Paint - CMU Block Fill / B2 / Lab & Clinical | 10d | 2025-01-03 A | 2025-01-06 A | P2.B2.LC.1290 | 100% |  | 2025-03-10 | 2025-03-21 |  |  | 80 | P2.B2.09.97.110 | PAINT | P2-5 |  | PAINT-1 |  |  |  |  |  |  |
| P2.B2.LC.1350 |  | In Wall - Plumbing - CMU / B2 / Lab & Clinical | 20d | 2025-01-03 A | 2025-01-04 A | P2.B2.LC.1290 SS | 100% |  | 2025-02-10 | 2025-03-07 |  |  | 80 | P2.B2.22.05.310 | PLMB | P2-5 | Harris | PLMB |  |  |  |  |  |  |
| P2.B2.LC.1010 |  | Framing - Top Track / B2 / Lab & Clinical | 10d | 2025-01-06 A | 2025-01-18 A | P2.B2.LC.1000, P2.B2.N.1010 | 100% |  | 2025-05-01 | 2025-05-14 |  |  | 80 | P2.B2.09.21.110 | GYP | P2-5 |  | GYP-1 |  |  |  |  |  |  |
| P2.B2.LC.1600 |  | OH - Integrated Ceilings Structural Supports (Verticle Only) / B2 / Lab & Clinical | 5d | 2025-01-06 A | 2025-01-18 A | BP1.095.3.200, P2.B2.LC.1000 SS | 100% |  | 2025-02-03 | 2025-02-07 |  |  | 80 | P2.B2.05.45.110 | FORS | P2-5 | Harris | FORS |  |  |  |  |  |  |
| P2.B2.LC.1300 |  | CMU - Point & Patch / B2 / Lab & Clinical | 10d | 2025-01-07 A | 2025-01-08 A | P2.B2.LC.1350, P2.B2.LC.1320, P2.B2.LC.1330 | 100% |  | 2025-03-24 | 2025-04-04 |  |  | 80 | P2.B2.04.20.310 | CMU | P2-5 |  | CMU |  |  |  |  |  |  |
| P2.B2.LC.1340 |  | Paint Prime & 1st Coat - CMU / B2 / Lab & Clinical | 10d | 2025-01-09 A | 2025-01-15 A | P2.B2.LC.1300 SS | 100% |  | 2025-03-24 | 2025-04-04 |  |  | 80 | P2.B2.09.97.210 | PAINT | P2-5 |  | PAINT-1 |  |  |  |  |  |  |
| P2.B2.LC.2470 |  | OH - Integrated Ceilings MEP Infrastructure (Trunkline, monotrack, Etc.) / B2 / Lab & Clinical | 5d | 2025-01-12 A | 2026-02-03 A | P2.L3.LC.1610, P2.L3.LC.2480 | 100% |  | 2026-01-02 | 2026-01-08 |  |  | 80 | P2.B2.05.45.110 | FORS | P2-5 | Harris | FORS |  | O | SS | SS |  |  |
| P2.B2.LC.1020 |  | OH - Structural Supports (All Trades) / B2 / Lab & Clinical | 5d | 2025-01-13 A | 2025-01-17 A | P2.B2.LC.1000 | 100% |  | 2025-05-01 | 2025-05-07 |  |  | 80 | P2.B2.05.45.110 | R/I.OH | P2-5 | Harris | R/I.OH |  |  |  |  |  |  |
| P2.B2.LC.1030 |  | OH - MEPF - Hangers & Supports / B2 / Lab & Clinical | 10d | 2025-01-13 A | 2025-01-25 A | BP1.149.3.100, P2.B2.LC.1000, P2.BIM.B2.40.140 | 100% |  | 2025-05-01 | 2025-05-14 |  |  | 80 | P2.B2.20.05.410 | MEP | P2-5 | Harris | MEP-2 |  |  |  |  |  |  |
| P2.B2.LC.1100 |  | Framing - Priority Walls & Door Frames / B2 / Lab & Clinical | 10d | 2025-01-13 A | 2025-01-24 A | P2.B2.LC.1010, P2.B2.LC.1020, P2.B2.LC.1600, P2.B2.N.1090 | 100% |  | 2025-05-15 | 2025-05-29 |  |  | 80 | P2.B2.09.21.310 | GYP | P2-5 |  | GYP-1 |  |  |  |  |  |  |
| P2.B2.LC.1400 |  | Spray/Seal/Firestop - Head of Wall - Priority Walls / B2 / Lab & Clinical | 5d | 2025-01-20 A | 2025-01-24 A | P2.B2.LC.1100 | 100% |  | 2025-05-01 | 2025-05-07 |  |  | 80 | P2.B2.07.84.410 | FIRESTO | P2-5 |  | FIRESTO | AT47 |  |  |  |  |  |
| P2.B2.LC.1050 |  | OH - Fire Suppression / B2 / Lab & Clinical | 10d | 2025-01-27 A | 2025-02-07 A | P2.B2.LC.1020, P2.B2.N.1170 | 100% |  | 2025-06-16 | 2025-06-27 |  |  | 80 | P2.B2.21.13.210 | FP | P2-5 |  | FP-1 |  |  |  |  | 1 |  |
| P2.B2.LC.1630 |  | In Wall - Priority Wall - Backing/Blocking/Supports / B2 / Lab & Clinical | 5d | 2025-01-27 A | 2025-01-31 A | P2.B2.LC.1100 | 100% |  | 2025-05-30 | 2025-06-05 |  |  | 80 | P2.B2.09.21.510 | R/I.IW | P2-5 |  | R/I.IW |  |  |  |  |  |  |
| P2.B2.LC.1360 |  | Framing - Priority Walls - AHJ Inspections / B2 / Lab & Clinical | 5d | 2025-02-10 A | 2025-02-14 A | P2.B2.LC.1100, P2.B2.LC.1630 | 100% |  | 2025-06-06 | 2025-06-12 |  |  | 80 | P2.B2.01.43.010 | FM | P2-5 |  | FM |  |  |  |  |  |  |
| P2.B2.LC.1370 |  | Hang/Tape/Finish - Priority Walls / B2 / Lab & Clinical | 10d | 2025-02-17 A | 2025-02-28 A | P2.B2.LC.1020, P2.B2.LC.1360, P2.B2.N.1140 | 100% |  | 2025-06-13 | 2025-06-26 |  |  | 80 | P2.B2.09.21.210 | GYP | P2-5 |  | GYP-1 |  |  |  |  |  |  |
| P2.B2.LC.1380 |  | Paint Prime & 1st Coat - Priority Walls / B2 / Lab & Clinical | 10d | 2025-03-03 A | 2025-03-14 A | P2.B2.LC.1400 SS, P2.B2.LC.1370 | 100% |  | 2025-05-01 | 2025-05-14 |  |  | 80 | P2.B2.09.91.110 | PAINT | P2-5 |  | PAINT-1 |  |  |  |  |  |  |
| P2.B2.LC.1080 |  | OH - Electrical - 480/277v Distribution / B2 / Lab & Clinical | 10d | 2025-04-01 A | 2025-04-12 A | P2.B2.LC.1030, P2.B2.LC.1020 | 100% |  | 2025-06-16 | 2025-06-27 |  |  | 80 | P2.B2.26.05.210 | ELEC | P2-5 |  | ELEC-2 |  |  |  |  | 1 |  |
| P2.B2.LC.1070 |  | OH - Plumbing Piping / B2 / Lab & Clinical (South) | 20d | 2025-04-03 A | 2025-05-01 A | P2.B2.LC.1030, P2.B2.LC.1020 | 100% |  | 2025-06-16 | 2025-07-14 |  |  | 80 | P2.B2.22.14.210 | PLMB | P2-5 | Harris | PLMB |  |  |  |  | 1 |  |
| P2.B2.LC.1090 |  | OH - HVAC Piping / B2 / Lab & Clinical | 20d | 2025-04-21 A | 2025-09-03 A | P2.B2.LC.1030, P2.B2.LC.1020, P2.B2.LC.1050 | 100% |  | 2025-06-23 | 2025-07-21 |  |  | 80 | P2.B2.23.20.410 | FIT | P2-5 | Harris | FIT-2 |  | O | SS | SS | 2 |  |
| P2.B2.LC.1190 |  | Firestop - Thru Wall - Priority Walls / B2 / Lab & Clinical | 5d | 2025-05-01 A | 2025-05-07 A | P2.B2.LC.1380 | 100% |  | 2025-06-02 | 2025-06-06 |  |  | 80 | P2.B2.07.84.110 | FIRESTO | P2-5 |  | FIRESTO | AT48 |  |  |  |  |  |
| P2.B2.LC.1060 |  | OH - Hang Duct - HP Mains / B2 / Lab & Clinical | 20d | 2025-05-22 A | 2025-08-22 A | P2.B2.LC.1190, P2.B2.LC.1580 FF+5d, P2.B2.LC.1070, P2.B2.LC.1570, P2.B2.N.1210 | 100% |  | 2025-06-24 | 2025-07-22 |  |  | 80 | P2.B2.23.30.210 | HVAC | P2-5 | Harris | HVAC |  |  | SS | SS | 1 |  |
| P2.B2.LC.1570 |  | Paint - OH Fire Suppression / B2 / Lab & Clinical | 5d | 2025-05-22 A | 2025-05-30 A | P2.B2.LC.1560, P2.B2.N.1630 | 100% |  | 2025-06-09 | 2025-06-13 |  |  | 80 | P2.B2.21.13.210 | FP | P2-5 |  | FP-1 |  |  |  |  | 1 |  |
| P2.B2.LC.1580 |  | OH - Plumbing Piping / B2 / Lab & Clinical (North) | 20d | 2025-06-02 A | 2025-08-22 A | P2.B2.LC.1070 | 100% |  | 2025-07-01 | 2025-07-29 |  |  | 80 | P2.B2.22.14.210 | PLMB | P2-5 | Harris | PLMB |  |  | SS | SS | 1 |  |
| P2.B2.LC.1590 |  | OH - Quench Vent / B2 / Lab & Clinical | 20d | 2025-06-17 A | 2025-09-04 A | P2.B2.LC.1030 | 100% |  | 2025-07-01 | 2025-07-29 |  |  | 80 | P2.B2.23.30.210 | HVAC | P2-5 | Harris | HVAC |  | O | SS | SS | 1 |  |
| P2.B2.LC.1560 |  | Test - OH Fire Suppression / B2 / Lab & Clinical | 5d | 2025-07-18 A | 2026-01-06 A | P2.B2.LC.1050 | 100% |  | 2025-08-01 | 2025-08-07 |  |  | 80 | P2.B2.21.13.210 | FP | P2-5 |  | FP-1 |  | O | SS | SS | 1 |  |
| P2.B2.LC.1220 |  | OH - DALT - HP Mains / B2 / Lab & Clinical | 5d | 2025-07-23 A | 2025-09-23 A | P2.B2.LC.1060 | 100% |  | 2025-08-22 | 2025-08-28 |  |  | 80 | P2.B2.23.30.310 | TAB | P2-5 | Harris | TAB-1 |  | O | SS | SS | 2 |  |
| P2.B2.LC.1470 |  | Pull Wire - Electrical - 480/277v Distribution / B2 / Lab & Clinical | 10d | 2025-08-29 A | 2025-09-04 A | P2.B2.LC.1080 | 100% |  | 2025-08-01 | 2025-08-14 |  |  | 80 |  | ELEC | P2-5 |  | ELEC-2 |  | O | SS | SS | To Trim Devices & Term Panel |  |
| P2.B2.LC.1240 |  | OH - HVAC Piping - Test / B2 / Lab & Clinical | 10d | 2025-10-01 A | 2025-10-07 A | P2.B2.LC.1090 | 100% |  | 2025-10-01 | 2025-10-14 |  |  | 80 | P2.B2.23.20.510 | FIT | P2-5 | Harris | FIT-2 |  |  | SS | SS | 3 |  |
| P2.B2.LC.1280 |  | OH - Plumbing - Test / B2 / Lab & Clinical | 5d | 2025-10-01 A | 2025-10-07 A | P2.B2.LC.1580 | 100% |  |  |  |  |  | 80 | P2.B2.22.14.310 | PLMB | P2-5 | Harris | PLMB |  |  | SS | SS | 2 |  |
| P2.B2.LC.1250 |  | OH - Insulate HVAC Pipe / B2 / Lab & Clinical | 10d | 2025-10-20 A | 2026-02-04 A | P2.B2.LC.1040, P2.B2.LC.1240, RFP.015.1290 | 100% |  | 2025-12-26 | 2026-01-09 |  |  | 80 | P2.B2.22.07.610 | INSUL | P2-5 | Harris | INSUL-3 |  |  | SS | SS | 4 |  |
| P2.B2.LC.1270 |  | OH - Insulate Plumbing / B2 / Lab & Clinical | 10d | 2025-10-20 A | 2026-03-31 A | P2.B2.LC.1280, RFP.015.1290 | 100% |  | 2025-12-11 | 2025-12-24 |  |  | 80 | P2.B2.22.07.510 | INSUL | P2-5 | Harris | INSUL-3 |  |  | SS | DG | 3 |  |
| P2.B2.LC.1390 |  | OH - Set & Connect Mech Equipment / B2 / Lab & Clinical | 10d | 2025-11-06 A | 2025-12-15 A | P2.B2.LC.1220 | 100% |  | 2025-12-04 | 2025-12-17 |  |  | 80 | P2.B2.23.82.110 | HVAC | P2-5 | Harris | HVAC |  | O | SS | SS | 3 |  |
| P2.B2.LC.1110 |  | In Wall - Plumbing - Framing / B2 / Lab & Clinical | 20d | 2025-12-01 A | 2025-12-15 A | P2.B2.LC.1410, P2.B2.LC.2460, PCO.824.1170, RFP.015.1350 | 100% |  | 2026-03-13 | 2026-04-09 |  |  | 80 | P2.B2.22.05.410 | PLMB | P2-5 | Harris | PLMB |  |  |  | SS |  |  |
| P2.B2.LC.1120 |  | OH - Hang Duct - LP Branch / B2 / Lab & Clinical | 20d | 2025-12-01 A | 2025-12-15 A | P2.B2.LC.1220, RFP.015.1290 | 100% |  | 2026-02-27 | 2026-03-26 |  |  | 80 | P2.B2.23.30.410 | HVAC | P2-5 | Harris | HVAC |  |  | SS | SS | 3 |  |
| P2.B2.LC.1040 |  | OH - Insulate HP Duct / B2 / Lab & Clinical | 10d | 2026-02-02 A | 2026-02-13 A | P2.B2.LC.1220, RFP.015.1290 | 100% |  | 2026-03-02 | 2026-03-13 |  |  | 80 | P2.B2.23.07.310 | INSUL | P2-5 | Harris | INSUL-3 |  |  | SS | SS | 3 |  |
| P2.B2.LC.2460 |  | Chair Carrier - In Wall Rough-in / B2 / Lab & Clinical | 1d | 2026-02-09 A | 2026-02-09 A | P2.B2.LC.1410 FF, RFP.015.1350 | 100% |  | 2026-03-27 | 2026-03-27 |  |  | 120 |  | LABCASE | P2-5 |  | LABCASE |  |  |  | SS |  |  |
| P2.B2.LC.1410 |  | Framing - Balance of Framing & Door Frames / B2 / Lab & Clinical | 10d | 2026-02-16 A | 2026-03-27 A | BP5.083.3.110, RFP.015.1290, P2.L3.N.1420, P2.L3.LC.1410, P2.L3.S.1420 | 100% |  | 2026-03-16 | 2026-03-27 |  |  | 80 | A1310 | GYP | P2-5 |  | GYP-1 |  |  |  | DG |  |  |
| P2.B2.LC.1260 |  | OH - Insulate LP Duct / B2 / Lab & Clinical | 10d | 2026-03-09 A | 2026-03-31 A | P2.B2.LC.1120 | 100% |  | 2026-03-02 | 2026-03-13 |  |  | 80 | P2.B2.23.07.410 | INSUL | P2-5 | Harris | INSUL-3 |  |  | SS | DG | 4 | 8.2 |
| P2.B2.LC.1500 |  | OH - Conduit - Low Volt - Fire Alarm / B2 / Lab & Clinical | 10d | 2026-03-16 A | 2026-03-27 A | P2.B2.LC.1390, P2.B2.LC.1260 | 100% |  |  |  |  |  | 80 |  | FA | P2-5 |  | FA-1 |  |  | SS | DG | 5 |  |
| P2.B2.LC.1510 |  | OH - Conduit - Low Volt - Telecom / B2 / Lab & Clinical | 10d | 2026-03-16 A | 2026-04-07 | P2.B2.LC.1260 | 50% | 5d | 2026-03-16 | 2026-03-27 | 34d | 0d | 80 |  | ELEC | P2-5 |  | ELEC-2 |  |  | SS | DG | 5 |  |
| P2.B2.LC.1530 |  | OH - Conduit - Low Volt - Medical Services/Nurse Call (?) / B2 / Lab & Clinical | 10d | 2026-03-16 A | 2026-04-07 | BP1.283.3.200, BP1.275.3.200, BP1.275.3.100, P2.B2.LC.1260 | 50% | 5d | 2026-03-16 | 2026-03-27 | 34d | 0d | 80 |  | ELEC | P2-5 |  | ELEC-2 |  |  | SS | DG | 5 |  |
| P2.B2.LC.1130 |  | Spray/Seal/Firestop - Head of Wall / B2 / Lab & Clinical | 10d | 2026-03-16 A | 2026-03-27 A | P2.B2.LC.1340 | 100% |  | 2026-06-02 | 2026-06-15 |  |  | 80 | P2.B2.07.84.310 | FIRSAFE | P2-5 |  | FIRSAFE | AT47 |  |  | DG | To Finishes - Paint | 8.2 |
| P2.B2.LC.1150 |  | In Wall - Backing/Blocking/Supports / B2 / Lab & Clinical | 5d | 2026-03-23 A | 2026-04-02 | P2.B2.LC.1410, P2.B2.LC.2460, RFP.015.1350 | 60% | 2d | 2026-03-23 | 2026-03-27 | 22d | 18d | 80 | P2.B2.09.21.510 | R/I.IW | P2-5 |  | R/I.IW |  |  |  | DG |  |  |
| P2.B2.LC.1210 |  | OH - Electrical - Equip Tie In / B2 / Lab & Clinical | 10d | 2026-03-23 A | 2026-04-14 | P2.B2.LC.1390 |  | 10d | 2026-03-23 | 2026-04-03 | 29d | 10d | 80 | P2.B2.26.05.410 | ELEC | P2-5 |  | ELEC-2 |  | O |  | DG | 4 |  |
| P2.B2.LC.1140 |  | In Wall - Electrical - Framing / B2 / Lab & Clinical | 20d | 2026-03-30 A | 2026-04-28 | P2.B2.LC.1410, P2.B2.LC.2460, OFOI.PWS.1220 FF+5d, RFP.015.1350 |  | 20d | 2026-03-30 | 2026-04-24 | 4d | 0d | 80 | P2.B2.26.05.610 | ELEC | P2-5 |  | ELEC-2 |  |  |  | DG |  | 8.2 |
| P2.B2.LC.1230 |  | OH - HVAC Piping - Equip Tie In / B2 / Lab & Clinical | 20d | 2026-03-30 A | 2026-05-26 | P2.B2.LC.1390, P2.B2.LC.1240, CX.B2.HYDR.1000 | 5% | 19d | 2026-03-30 | 2026-04-24 | 10d | 6d | 80 | P2.B2.23.20.610 | FIT | P2-5 | Harris | FIT-2 |  |  |  | DG |  |  |
| P2.B2.LC.1440 |  | Pull Wire - Low Volt - Fire Alarm / B2 / Lab & Clinical | 10d | 2026-03-30 A | 2026-04-13 | P2.B2.LC.1500 | 10% | 9d | 2026-03-30 | 2026-04-10 | 40d | 44d | 80 |  | FA | P2-5 |  | FA-1 |  |  |  | DG | To Trim Finishes | 8.2 |
| P2.B2.LC.1200 |  | OH - Electrical - 208/120v Branch / B2 / Lab & Clinical | 10d | 2026-04-01 | 2026-04-14 | P2.B2.LC.1080, RFP.015.1290, P2.B2.LC.1260, RFP.015.1350 |  |  |  |  | 29d | 10d | 80 | P2.B2.26.05.310 | ELEC | P2-5 |  | ELEC-2 |  |  | SS | DG | 2 | 8.2 |
| P2.B2.LC.1490 |  | OH - Conduit - Low Volt - BAS/Controls / B2 / Lab & Clinical | 10d | 2026-04-01 | 2026-04-14 | P2.B2.LC.1390, P2.B2.LC.1250 |  |  |  |  | 29d | 0d | 80 |  | BAS | P2-5 | Harris | BAS-1 |  |  | SS | DG | 5 |  |
| P2.B2.LC.1520 |  | OH - Conduit - Low Volt - Security / B2 / Lab & Clinical | 10d | 2026-04-01 | 2026-04-14 | P2.B2.LC.1250 |  |  |  |  | 29d | 0d | 80 |  | ELEC | P2-5 |  | ELEC-2 |  |  | SS | DG | 5 |  |
| P2.B2.LC.1450 |  | Pull Wire - Low Volt - Telecom / B2 / Lab & Clinical | 10d | 2026-04-08 | 2026-04-21 | P2.B2.LC.1510 |  |  |  |  | 34d | 38d | 80 |  | CIT | P2-5 |  | CIT |  |  |  | DG | To Trim Finishes | 8.2 |
| P2.B2.LC.1480 |  | Pull Wire - Low Volt - Medical Services/Nurse Call (?) / B2 / Lab & Clinical | 10d | 2026-04-08 | 2026-04-21 | P2.B2.LC.1530 |  |  |  |  | 34d | 38d | 80 |  | LOWVOLT | P2-5 |  | LOWVOLT-1 |  |  |  | DG | To Trim Finishes | 8.2 |
| P2.B2.LC.1430 |  | Pull Wire - Low Volt - BAS/Controls / B2 / Lab & Clinical | 10d | 2026-04-15 | 2026-04-28 | P2.B2.LC.1490 |  |  |  |  | 29d | 10d | 80 |  | BAS | P2-5 | Harris | BAS-1 |  |  |  | DG | To Trim Finishes | 8.2 |
| P2.B2.LC.1460 |  | Pull Wire - Low Volt - Security / B2 / Lab & Clinical | 10d | 2026-04-15 | 2026-04-28 | P2.B2.LC.1520 |  |  |  |  | 29d | 33d | 80 |  | LOWVOLT | P2-5 |  | LOWVOLT-1 |  |  |  | DG | To Trim Finishes | 8.2 |
| P2.B2.LC.1170 |  | AHJ Inspections - Wall Close In / B2 / Lab & Clinical | 5d | 2026-04-29 | 2026-05-05 | P2.B2.LC.1150, P2.B2.LC.1110, P2.B2.LC.1140, P2.B2.LC.2460, RFP.015.1350 |  |  |  |  | 4d | 8d | 40 | P2.B2.01.43.110 | FM | P2-5 |  | FM |  |  |  | DG |  | 8.2 |
| P2.B2.LC.1420 |  | Pull Wire - Electrical - 208/120v Branch & Equip / B2 / Lab & Clinical | 10d | 2026-04-29 | 2026-05-12 | P2.B2.LC.1200, P2.B2.LC.1210, P2.B2.LC.1140 |  |  |  |  | 19d | 23d | 80 |  | ELEC | P2-5 |  | ELEC-2 |  |  |  | DG | To Trim Devices & Term Panel |  |
| P2.B2.LC.1180 |  | Hang-Tape-Finish - Walls / B2 / Lab & Clinical | 10d | 2026-05-18 | 2026-06-01 | P2.B2.LC.1170, BP4.134.3.130, P2.L7.S.1470, P2.L7.N.1470, P2.L1.N.1470 |  |  |  |  | -4d | 0d | 80 | P2.B2.09.21.710 | GYP | P2-5 |  | GYP-1 |  |  |  | DG |  | 8.2 |
| P2.B2.LC.1160 |  | Firestop - Thru Wall / B2 / Lab & Clinical | 10d | 2026-06-02 | 2026-06-15 | P2.B2.LC.1180, P2.B2.LC.1270 |  |  |  |  | -4d | 0d | 80 | P2.B2.07.84.210 | FIRESTO | P2-5 |  | FIRESTO | AT48 |  |  | DG | To Finishes - Paint | 8.2 |
| P2.B2.LC.1550 |  | Trades Inspect & Verify R/I Work Completed to Specs / B2 / Lab & Clinical | 5d | 2026-06-16 | 2026-06-22 | P2SUM.208 FF, P2.B2.LC.1160, P2.B2.LC.1130, P2.B2.LC.1470, P2.B2.LC.1480, P2.B2.LC.1420, P2.B2.LC.1430, P2.B2.LC.1440, P2.B2.LC.1450, P2.B2.LC.1460, P2.B2.LC.1230 |  |  |  |  | -4d | 17d | 40 |  | T | P2-5 |  | T |  |  |  | DG |  | 8.2 |

| ID | WBS | Activity | Duration | Start | Finish | Predecessors | Total float | Free float | Temp Orig Dur | Resp / SRLM | PHASE | RESP UPD | RESP / Trade | Z.RESP | *NIH Resp Check* | Act ID Temp | Testing Type |
| --- | --- | --- | --- | --- | --- | --- | --- | --- | --- | --- | --- | --- | --- | --- | --- | --- | --- |
|  | 2 | **FINISHES - Lab & Clinical Spaces / Level B2/B1** |  | 2026-05-21 | 2026-12-28 |  |  |  |  |  |  |  |  |  |  |  |  |
|  | 2 | **Decon & Sterile Storage Suites - Room Blocks B2-29.. (8K SF) / Level B2/B1** |  | 2026-05-21 | 2026-12-28 |  |  |  |  |  |  |  |  |  |  |  |  |
| P2.B2.F.LC.1210 |  | Wall Protection / B2 / Decon, Sterile | 5d | 2026-05-21 | 2026-05-28 | BP7.102.3.300, BP7.097.3.110 | 108d | 77d | 40 | WALLPRO | P2-5 | DG | WALLPRO |  |  |  |  |
| P2.B2.F.LC.1000 |  | Paint - Walls / B2 / Decon, Sterile | 5d | 2026-06-02 | 2026-06-08 | P2.B2.LC.1180 | 31d | 0d | 40 | PAINT | P2-5 | DG | PAINT-1 |  |  |  |  |
| P2.B2.F.LC.1220 |  | Plumbing Fixtures & Drinking Fountains / B2 / Decon, Sterile | 5d | 2026-06-02 | 2026-06-08 | P2.B2.LC.1180 | 106d | 75d | 40 | PLMB | P2-5 | DG | PLMB | Harris |  |  |  |
| BP1.226.2.160 |  | Install - High Purity Water Equipment - CSP | 10d | 2026-06-09 | 2026-06-22 | BP1.226.2.140, P2.B2.F.LC.1000 | 61d | 39d | 280 | NIH | P01 | DG | NIH |  |  |  |  |
| P2.B2.F.LC.1010 |  | R/I - Ceiling Assemblies & Supports - Med Equip / B2 / Decon, Sterile | 5d | 2026-06-09 | 2026-06-15 | P2.B2.F.LC.1000 | 31d | 0d | 40 | ACT | P2-5 | DG | ACT |  | ! |  |  |
| P2.B2.F.LC.1020 |  | Framing - Hard Lid Ceilings / B2 / Decon, Sterile | 5d | 2026-06-16 | 2026-06-22 | P2.B2.F.LC.1010 | 31d | 0d | 40 | GYP | P2-5 | DG | GYP-1 |  | ! |  |  |
| P2.B2.F.LC.1030 |  | R/I - Lights & Devices - Hard Lids Ceilings / B2 / Decon, Sterile | 5d | 2026-06-23 | 2026-06-29 | P2.B2.F.LC.1020 | 31d | 0d | 40 | ELEC | P2-5 | DG | ELEC-2 |  | ! |  |  |
| P2.B2.F.LC.1040 |  | R/I - Diffusers - Hard Lid Ceilings / B2 / Decon, Sterile | 5d | 2026-06-23 | 2026-06-29 | P2.B2.F.LC.1020 | 31d | 0d | 40 | HVAC | P2-5 | DG | HVAC | Harris | ! |  |  |
| P2.B2.F.LC.1050 |  | R/I - Sprinkler Heads - Hard Lid Ceilings / B2 / Decon, Sterile | 5d | 2026-06-23 | 2026-06-29 | P2.B2.F.LC.1020 | 31d | 0d | 40 | FP | P2-5 | DG | FP-1 |  | ! |  |  |
| P2.B2.F.LC.1060 |  | R/I - Fire Alarm - Hard Lid Ceilings / B2 / Decon, Sterile | 5d | 2026-06-23 | 2026-06-29 | P2.B2.F.LC.1020 | 31d | 0d | 40 | FA | P2-5 | DG | FA-1 |  |  |  |  |
| P2.B2.F.LC.1070 |  | OH Ceiling Inspection & Signoff - Hard Lid Ceilings / B2 / Decon, Sterile | 5d | 2026-06-30 | 2026-07-07 | P2.B2.F.LC.1040, P2.B2.F.LC.1050, P2.B2.F.LC.1060, P2.B2.F.LC.1030, CW.FD-MU -210 | 31d | 0d | 40 | AHJ | P2-5 | DG | AHJ |  | ! |  |  |
| P2.B2.F.LC.1080 |  | Hang-Tape-Finish _Hard Lid Ceilings / B2 / Decon, Sterile | 5d | 2026-07-08 | 2026-07-14 | P2.SUM.175, P2.B2.F.LC.1070, P2.L1.N.1470 | 31d | 0d | 40 | GYP | P2-5 | DG | GYP-1 |  | ! |  |  |
| P2.B2.F.LC.1090 |  | Paint Ceilings / B2 / Decon, Sterile | 5d | 2026-07-15 | 2026-07-21 | P2.B2.F.LC.1080 | 31d | 0d | 40 | PAINT | P2-5 | DG | PAINT-1 |  |  |  |  |
| P2.B2.F.LC.1100 |  | Waterproof Ceramic Tile / B2 / Decon, Sterile | 5d | 2026-07-22 | 2026-07-28 | P2.B2.F.LC.1090 | 31d | 0d | 40 | TILE | P2-5 | DG | TILE |  |  |  |  |
| P2.B2.F.LC.1110 |  | Ceramic Tile / B2 / Decon, Sterile | 5d | 2026-07-29 | 2026-08-04 | P2.B2.F.LC.1100 | 31d | 0d | 40 | TILE | P2-5 | DG | TILE |  |  |  |  |
| P2.B2.F.LC.1120 |  | T-Grid / B2 / Decon, Sterile | 5d | 2026-08-05 | 2026-08-11 | BP5.095.3.100, P2.B2.F.LC.1110 | 31d | 0d | 40 | ACT | P2-5 | DG | ACT |  |  |  |  |
| P2.B2.F.LC.1130 |  | Diffusers in T-Grid / B2 / Decon, Sterile | 5d | 2026-08-12 | 2026-08-18 | P2.B2.F.LC.1120 | 31d | 0d | 40 | HVAC | P2-5 | DG | HVAC | Harris |  |  |  |
| P2.B2.F.LC.1140 |  | Lights & Devices / B2 / Decon, Sterile | 5d | 2026-08-12 | 2026-08-18 | P2.B2.F.LC.1120 | 31d | 0d | 40 | ELEC | P2-5 | DG | ELEC-2 |  |  |  |  |
| P2.B2.F.LC.1150 |  | Sprinkler Heads / B2 / Decon, Sterile | 5d | 2026-08-12 | 2026-08-18 | P2.B2.F.LC.1120 | 31d | 0d | 40 | FP | P2-5 | DG | FP-1 |  |  |  |  |
| P2.B2.F.LC.1160 |  | Trim Low Voltage / B2 / Decon, Sterile | 5d | 2026-08-12 | 2026-08-18 | P2.B2.F.LC.1120 | 31d | 0d | 40 | LOWVOLT | P2-5 | DG | LOWVOLT-1 |  |  |  |  |
| P2.B2.F.LC.1170 |  | Trim Fire Alarm / B2 / Decon, Sterile | 5d | 2026-08-12 | 2026-08-18 | P2.B2.F.LC.1120 | 31d | 0d | 40 | FA | P2-5 | DG | FA-1 |  |  |  |  |
| P2.B2.F.LC.2460 |  | Ceiling Service Panel / B2 / Decon, Sterile | 5d | 2026-08-12 | 2026-08-18 | P2.B2.F.LC.1120, P2.L6.F.CS.2320 | 31d | 0d | 120 | LABCASE | P2-5 | DG | LABCASE |  |  |  |  |
| P2.B2.F.LC.1180 |  | OH Ceiling Signoff / B2 / Decon, Sterile | 10d | 2026-08-19 | 2026-09-01 | P2.B2.F.LC.1170, P2.B2.F.LC.1160, P2.B2.F.LC.1130, P2.B2.F.LC.1140, P2.B2.F.LC.1150, P2.B2.F.LC.2460 | 31d | 0d | 80 | MEP | P2-5 | DG | MEP | Harris |  |  |  |
| P2.B2.F.LC.1200 |  | Drop Ceiling Tile / B2 / Decon, Sterile | 5d | 2026-09-02 | 2026-09-09 | BP5.095.3.100, P2.B2.F.LC.2460, P2.B2.F.LC.1180 | 31d | 0d | 40 | ACT | P2-5 | DG | ACT |  |  |  |  |
| P2.B2.F.LC.1400 |  | Integrated Ceilings Panel Install (Finishes) / B2 / Lab & Clinical | 5d | 2026-09-10 | 2026-09-16 | P2.B2.F.LC.1200, P2.B2.LC.2470, BP1.095.3.220 | 31d | 0d | 80 | FORS | P2-5 | DG | FORS-1 | Harris |  | P2.B2.05.45.110 |  |
| P2.B2.F.LC.1230 |  | Trim T-Stats / B2 / Decon, Sterile | 5d | 2026-09-17 | 2026-09-23 | P2.B2.F.LC.1210, P2.B2.F.LC.1400 | 31d | 0d | 40 | BAS | P2-5 | DG | BAS-1 | Harris |  |  |  |
| P2.B2.F.LC.1240 |  | Trim Electrical / B2 / Decon, Sterile | 5d | 2026-09-17 | 2026-09-23 | P2.B2.F.LC.1230 SS, P2.B2.F.LC.1400 | 31d | 0d | 40 | ELEC | P2-5 | DG | ELEC-2 |  |  |  |  |
| P2.B2.F.LC.1250 |  | Trim Telephone/ Data / B2 / Decon, Sterile | 5d | 2026-09-17 | 2026-09-23 | P2.B2.F.LC.1240 SS, P2.B2.F.LC.1400 | 31d | 0d | 40 | LOWVOLT | P2-5 | DG | LOWVOLT-1 |  |  |  |  |
| P2.B2.F.LC.1280 |  | Floor Prep / B2 / Decon, Sterile | 5d | 2026-09-24 | 2026-09-30 | P2.B2.F.LC.1200, P2.B2.F.LC.1250, P2.B2.F.LC.1220, P2.B2.F.LC.1230, P2.B2.F.LC.1240 | 31d | 0d | 40 | FLOOR | P2-5 | DG | FLOOR |  |  |  |  |
| P2.B2.F.LC.1290 |  | Flooring / B2 / Decon, Sterile | 5d | 2026-10-01 | 2026-10-07 | P2.B2.F.LC.1280 | 31d | 0d | 40 | FLOOR | P2-5 | DG | FLOOR |  |  |  |  |
| P2.B2.F.LC.1190 |  | Casework (After Flooring) / B2 / Decon, Sterile | 2d | 2026-10-08 | 2026-10-09 | P2.B2.LC.1180, BP6.115.3.100, BP6.123.3.100, BP7.113.3.100, BP7.064.3.100, P2.B2.F.LC.1280, P2.B2.F.LC.1290, P2.B2.F.LC.1000, P2.B2.F.LC.2480 | 61d | 8d | 120 | LABCASE | P2-5 | DG | LABCASE |  |  |  |  |
| P2.B2.F.LC.1300 |  | Building Specialities / B2 / Decon, Sterile | 5d | 2026-10-08 | 2026-10-14 | P2.B2.F.LC.1290, BP7.100.3.100 | 38d | 0d | 40 | SPECIAL | P2-5 | DG | SPECIAL |  |  |  |  |
| P2.B2.F.LC.1310 |  | Interior Building Signage / B2 / Decon, Sterile | 5d | 2026-10-08 | 2026-10-14 | P2.B2.F.LC.1290 | 38d | 0d | 40 | SIGN | P2-5 | DG | SIGN |  |  |  |  |
| P2.B2.F.LC.2450 |  | Equipment (After Flooring) / B2 / Decon, Sterile | 10d | 2026-10-08 | 2026-10-21 | P2.B2.LC.1180, BP6.115.3.100, BP7.113.3.100, P2.B2.F.LC.1290 | 31d | 0d | 120 | LABCASE | P2-5 | DG | LABCASE |  |  |  |  |
| P2.B2.F.LC.1320 |  | Work Completion List - Finishes / B2 / Decon, Sterile | 5d | 2026-10-15 | 2026-10-21 | P2.B2.F.LC.1310, P2.B2.F.LC.1300 | 38d | 0d | 40 | FINISH | P2-5 | DG | FINISH |  |  |  |  |
| P2.B2.F.LC.1260 |  | Doors & Hardware / B2 / Decon, Sterile | 5d | 2026-10-22 | 2026-10-28 | BP5.083.3.120, BP5.081.3.410, P2.B2.F.LC.1190, P2.B2.F.LC.2450, BP5.081.3.420 | 53d | 15d | 40 | DFH | P2-5 | DG | DFH |  |  |  | AT29 |
| P2.B2.F.LC.1270 |  | Trim Med Gas / B2 / Decon, Sterile | 5d | 2026-10-22 | 2026-10-28 | P2.B2.F.LC.1210, P2.B2.F.LC.1400, P2.B2.F.LC.2450 | 31d | 0d | 40 | MECH | P2-5 | DG | MECH-2 | Harris |  |  |  |
| P2.B2.F.LC.1330 |  | Remaining Equipment Post Flooring / B2 / Decon, Sterile | 15d | 2026-10-22 | 2026-11-11 | P2.B2.F.LC.1320, P2.B2.F.LC.1290 | 38d | 0d | 40 | EQUIP | P2-5 | DG | EQUIP |  |  |  |  |
| P2.B2.F.LC.1340 |  | Remaining MEP Hook-Ups / B2 / Decon, Sterile | 5d | 2026-11-12 | 2026-11-18 | P2.B2.F.LC.1330 | 38d | 0d | 40 | MEP | P2-5 | DG | MEP | Harris |  |  |  |
| P2.B2.F.LC.1350 |  | OFOI Furniture & Equipment / B2 / Decon, Sterile | 5d | 2026-11-12 | 2026-11-18 | P2.B2.F.LC.1340 SS | 48d | 10d | 40 | FURN | P2-5 | DG | FURN |  |  |  |  |
| P2.B2.F.LC.1360 |  | Rough Clean / B2 / Decon, Sterile | 5d | 2026-11-19 | 2026-11-25 | P2.B2.F.LC.1340, P2.B2.F.LC.1260 | 38d | 0d | 40 | FCLEAN | P2-5 | DG | FCLEAN |  |  |  |  |
| P2.B2.F.LC.1370 |  | Prepare Punchlist / B2 / Decon, Sterile | 5d | 2026-11-30 | 2026-12-04 | P2.B2.F.LC.1340 SS, P2.B2.F.LC.1360 | 38d | 0d | 40 | QC | P2-5 | DG | QC |  |  |  |  |
| P2.B2.F.LC.1380 |  | Correct Punchlist / B2 / Decon, Sterile | 10d | 2026-12-07 | 2026-12-18 | P2.B2.F.LC.1370, P2.B2.F.LC.1350 | 38d | 0d | 80 | FINISH | P2-5 | DG | FINISH |  |  |  |  |
| P2.B2.F.LC.1390 |  | Final Clean / B2 / Decon, Sterile | 5d | 2026-12-21 | 2026-12-28 | P2.SUM.205 FF, P2.B2.F.LC.1380, P2.B2.M.5970 | 38d | 50d | 40 | QC | P2-5 | DG | QC |  |  |  |  |

| ID | WBS | Activity | Duration | Start | Finish | Predecessors | Total float | Free float | Temp Orig Dur | Resp / SRLM | PHASE | RESP UPD | RESP / Trade | Z.RESP | *NIH Resp Check* | Testing Type |
| --- | --- | --- | --- | --- | --- | --- | --- | --- | --- | --- | --- | --- | --- | --- | --- | --- |
|  | 3 | **MRI & Cath Lab Suites - Room Blocks B2-28.. (10K SF) / Level B2/B1** |  | 2026-06-02 | 2026-11-13 |  |  |  |  |  |  |  |  |  |  |  |
| P2.B2.F.LC.2190 |  | Casework (Before Flooring) / B2 / MRI & Cath | 5d | 2026-06-02 | 2026-06-08 | P2.B2.LC.1180, BP2.134.3.140, BP6.123.3.100 | 41d | 0d | 120 | LABCASE | P2-5 | DG | LABCASE |  |  |  |
| P2.B2.F.LC.2430 |  | Fumehood Equipment Install / B2 / MRI & Cath | 1d | 2026-06-08 | 2026-06-08 | P2.B2.F.LC.2190 FF | 147d | 0d | 120 | LABCASE | P2-5 | DG | LABCASE |  |  |  |
| P2.B2.F.LC.2000 |  | Paint - Walls / B2 / MRI & Cath | 5d | 2026-06-09 | 2026-06-15 | P2.B2.F.LC.2190, P2.B2.N.1470 | 41d | 0d | 40 | PAINT | P2-5 | DG | PAINT-1 |  |  |  |
| P2.B2.F.LC.2210 |  | Wall Protection / B2 / MRI & Cath | 5d | 2026-06-09 | 2026-06-15 | P2.B2.F.LC.2190, BP7.102.3.300 | 93d | 0d | 40 | WALLPRO | P2-5 | DG | WALLPRO |  |  |  |
| P2.B2.F.LC.2220 |  | Plumbing Fixtures & Drinking Fountains / B2 / MRI & Cath | 5d | 2026-06-09 | 2026-06-15 | P2.B2.F.LC.2190 | 93d | 0d | 40 | PLMB | P2-5 | DG | PLMB | Harris |  |  |
| P2.B2.F.LC.2440 |  | Fumehood Equipment MEP Connection / B2 / MRI & Cath | 1d | 2026-06-09 | 2026-06-09 | P2.B2.F.LC.2430 | 147d | 62d | 120 | LABCASE | P2-5 | DG | LABCASE |  |  |  |
| P2.B2.F.LC.2010 |  | R/I - Ceiling Assemblies & Supports - Med Equip / B2 / MRI & Cath | 5d | 2026-06-16 | 2026-06-22 | P2.B2.F.LC.2000 | 41d | 0d | 40 | ACT | P2-5 | DG | ACT |  | ! |  |
| P2.B2.F.LC.2120 |  | T-Grid / B2 / MRI & Cath | 5d | 2026-06-16 | 2026-06-22 | P2.B2.F.LC.2000 | 66d | 0d | 40 | ACT | P2-5 | DG | ACT |  |  |  |
| P2.B2.F.LC.2230 |  | Trim T-Stats / B2 / MRI & Cath | 5d | 2026-06-16 | 2026-06-22 | P2.B2.F.LC.2210, P2.B2.F.LC.2220 | 93d | 0d | 40 | BAS | P2-5 | DG | BAS-1 | Harris |  |  |
| P2.B2.F.LC.2240 |  | Trim Electrical / B2 / MRI & Cath | 5d | 2026-06-16 | 2026-06-22 | P2.B2.F.LC.2230 SS | 93d | 0d | 40 | ELEC | P2-5 | DG | ELEC-2 |  |  |  |
| P2.B2.F.LC.2250 |  | Trim Telephone/ Data / B2 / MRI & Cath | 5d | 2026-06-16 | 2026-06-22 | P2.B2.F.LC.2240 SS | 93d | 0d | 40 | LOWVOLT | P2-5 | DG | LOWVOLT-1 |  |  |  |
| P2.B2.F.LC.2470 |  | Equipment (Before Flooring) / B2 / MRI & Cath | 5d | 2026-06-16 | 2026-06-22 | P2.B2.LC.1180, P2.B2.F.LC.2000 | 96d | 55d | 120 | LABCASE | P2-5 | DG | LABCASE |  |  |  |
| P2.B2.F.LC.2020 |  | Framing - Hard Lid Ceilings / B2 / MRI & Cath | 5d | 2026-06-23 | 2026-06-29 | P2.B2.F.LC.2010, P2.B2.F.LC.2000 | 41d | 0d | 40 | GYP | P2-5 | DG | GYP-1 |  | ! |  |
| P2.B2.F.LC.2130 |  | Diffusers in T-Grid / B2 / MRI & Cath | 5d | 2026-06-23 | 2026-06-29 | P2.B2.F.LC.2120 | 66d | 25d | 40 | HVAC | P2-5 | DG | HVAC | Harris |  |  |
| P2.B2.F.LC.2150 |  | Sprinkler Heads / B2 / MRI & Cath | 5d | 2026-06-23 | 2026-06-29 | P2.B2.F.LC.2120 | 66d | 25d | 40 | FP | P2-5 | DG | FP-1 |  |  |  |
| P2.B2.F.LC.2160 |  | Trim Low Voltage / B2 / MRI & Cath | 5d | 2026-06-23 | 2026-06-29 | P2.B2.F.LC.2120 | 66d | 25d | 40 | LOWVOLT | P2-5 | DG | LOWVOLT-1 |  |  |  |
| P2.B2.F.LC.2170 |  | Trim Fire Alarm / B2 / MRI & Cath | 5d | 2026-06-23 | 2026-06-29 | P2.B2.F.LC.2120 | 66d | 25d | 40 | FA | P2-5 | DG | FA-1 |  |  |  |
| P2.B2.F.LC.2270 |  | Trim Med Gas / B2 / MRI & Cath | 5d | 2026-06-23 | 2026-06-29 | P2.B2.F.LC.2190, P2.B2.F.LC.2210, P2.B2.F.LC.2250 | 93d | 0d | 40 | MECH | P2-5 | DG | MECH-2 | Harris |  |  |
| P2.B2.F.LC.2030 |  | R/I - Lights & Devices - Hard Lids Ceilings / B2 / MRI & Cath | 5d | 2026-06-30 | 2026-07-07 | P2.B2.F.LC.2020 | 41d | 0d | 40 | ELEC | P2-5 | DG | ELEC-2 |  | ! |  |
| P2.B2.F.LC.2040 |  | R/I - Diffusers - Hard Lid Ceilings / B2 / MRI & Cath | 5d | 2026-06-30 | 2026-07-07 | P2.B2.F.LC.2020 | 41d | 0d | 40 | HVAC | P2-5 | DG | HVAC | Harris | ! |  |
| P2.B2.F.LC.2050 |  | R/I - Sprinkler Heads - Hard Lid Ceilings / B2 / MRI & Cath | 5d | 2026-06-30 | 2026-07-07 | P2.B2.F.LC.2020 | 41d | 0d | 40 | FP | P2-5 | DG | FP-1 |  | ! |  |
| P2.B2.F.LC.2060 |  | R/I - Fire Alarm - Hard Lid Ceilings / B2 / MRI & Cath | 5d | 2026-06-30 | 2026-07-07 | P2.B2.F.LC.2020 | 41d | 0d | 40 | FA | P2-5 | DG | FA-1 |  |  |  |
| P2.B2.F.LC.2410 |  | Floor Prep / B2 / MRI | 5d | 2026-06-30 | 2026-07-07 | P2.B2.F.LC.2270 | 93d | 0d | 40 | FLOOR | P2-5 | DG | FLOOR |  |  |  |
| P2.B2.F.LC.2070 |  | OH Ceiling Inspection & Signoff - Hard Lid Ceilings / B2 / MRI & Cath | 5d | 2026-07-08 | 2026-07-14 | P2.B2.F.LC.2040, P2.B2.F.LC.2050, P2.B2.F.LC.2060, P2.B2.F.LC.2030 | 41d | 0d | 40 | AHJ | P2-5 | DG | AHJ |  | ! |  |
| P2.B2.F.LC.2420 |  | Flooring / B2 / MRI | 5d | 2026-07-08 | 2026-07-14 | P2.B2.F.LC.2410, PCO.225.1270 | 93d | 1d | 40 | FLOOR | P2-5 | DG | FLOOR |  |  |  |
| P2.B2.F.LC.2260 |  | Doors & Hardware / B2 / MRI & Cath | 5d | 2026-07-09 | 2026-07-15 | BP4.134.3.100, P2.B2.F.LC.2190 | 117d | 0d | 40 | DFH | P2-5 | DG | DFH |  |  | AT29 |
| P2.B2.F.LC.2080 |  | Hang-Tape-Finish _Hard Lid Ceilings / B2 / MRI & Cath | 5d | 2026-07-15 | 2026-07-21 | P2.SUM.175, P2.B2.F.LC.2070, P2.L1.N.1470 | 41d | 0d | 40 | GYP | P2-5 | DG | GYP-1 |  | ! |  |
| P2.B2.F.LC.2300 |  | Building Specialities / B2 / MRI & Cath | 5d | 2026-07-16 | 2026-07-22 | P2.B2.F.LC.2420, P2.B2.F.LC.2260 | 117d | 0d | 40 | SPECIAL | P2-5 | DG | SPECIAL |  |  |  |
| P2.B2.F.LC.2090 |  | Paint Ceilings / B2 / MRI & Cath | 5d | 2026-07-22 | 2026-07-28 | P2.B2.F.LC.2080 | 41d | 0d | 40 | PAINT | P2-5 | DG | PAINT-1 |  |  |  |
| P2.B2.F.LC.2310 |  | Interior Building Signage / B2 / MRI & Cath | 5d | 2026-07-23 | 2026-07-29 | P2.B2.F.LC.2300 | 117d | 51d | 40 | SIGN | P2-5 | DG | SIGN |  |  |  |
| P2.B2.F.LC.2140 |  | Lights & Devices / B2 / MRI & Cath | 5d | 2026-07-29 | 2026-08-04 | P2.B2.F.LC.2120, P2.B2.F.LC.2090 | 41d | 0d | 40 | ELEC | P2-5 | DG | ELEC-2 |  |  |  |
| P2.B2.F.LC.2180 |  | OH Ceiling Signoff / B2 / MRI & Cath | 10d | 2026-08-05 | 2026-08-18 | P2.B2.F.LC.2130, P2.B2.F.LC.2140, P2.B2.F.LC.2150, P2.B2.F.LC.2170, P2.B2.F.LC.2160 | 41d | 0d | 80 | MEP | P2-5 | DG | MEP | Harris |  |  |
| P2.B2.F.LC.2200 |  | Drop Ceiling Tile / B2 / MRI & Cath | 5d | 2026-08-19 | 2026-08-25 | P2.B2.F.LC.2180 | 41d | 0d | 40 | ACT | P2-5 | DG | ACT |  |  |  |
| P2.B2.F.LC.2490 |  | Headwall - Set For MEP Tie-in / B2 / MRI & Cath | 5d | 2026-08-19 | 2026-08-25 | P2.B2.LC.1140, P2.B2.LC.1150, P2.B2.LC.1170, P2.B2.LC.1180, P2.B2.LC.1110, BP6.102.3.100 | 58d | 0d | 120 | LABCASE | P2-5 | DG | LABCASE |  |  |  |
| P2.B2.F.LC.2100 |  | Waterproof Ceramic Tile / B2 / MRI & Cath | 5d | 2026-08-26 | 2026-09-01 | P2.B2.F.LC.2090, P2.B2.F.LC.2000, P2.B2.F.LC.2200 | 41d | 0d | 40 | TILE | P2-5 | DG | TILE |  |  |  |
| P2.B2.F.LC.2510 |  | Headwall - MEP Trades Connection / B2 / MRI & Cath | 5d | 2026-08-26 | 2026-09-01 | P2.B2.F.LC.2490 | 58d | 0d | 120 | LABCASE | P2-5 | DG | LABCASE |  |  |  |
| P2.B2.F.LC.2110 |  | Ceramic Tile / B2 / MRI & Cath | 5d | 2026-09-02 | 2026-09-09 | P2.B2.F.LC.2100 | 41d | 0d | 40 | TILE | P2-5 | DG | TILE |  |  |  |
| P2.B2.F.LC.2500 |  | Headwall - Coverplate Install / B2 / MRI & Cath | 5d | 2026-09-02 | 2026-09-09 | P2.B2.F.LC.2510 | 58d | 0d | 120 | LABCASE | P2-5 | DG | LABCASE |  |  |  |
| P2.B2.F.LC.2280 |  | Floor Prep - Epoxy Floors / B2 / Cath & Animal Critical | 5d | 2026-09-10 | 2026-09-16 | P2.B2.F.LC.2190, P2.B2.F.LC.2470, P2.B2.F.LC.2200, BP7.096.3.200, P2.B2.F.LC.2110 | 41d | 0d | 40 | EPOXYF | P2-5 | DG | EPOXYF |  |  |  |
| P2.B2.F.LC.2290 |  | Flooring - Epoxy Floors / B2 / Cath & Animal Critical | 2d | 2026-09-17 | 2026-09-18 | P2.B2.F.LC.2280 | 41d | 0d | 40 | EPOXYF | P2-5 | DG | EPOXYF |  |  |  |
| P2.B2.F.LC.2480 |  | Casework (After Flooring) / B2 / MRI & Cath | 5d | 2026-09-21 | 2026-09-25 | P2.B2.F.LC.2290 | 41d | 0d | 120 | LABCASE | P2-5 | DG | LABCASE |  |  |  |
| P2.B2.F.LC.2330 |  | Remaining Equipment Post Flooring / B2 / MRI & Cath | 5d | 2026-09-28 | 2026-10-02 | P2.B2.F.LC.2420, P2.B2.F.LC.2480 | 41d | 0d | 40 | MEP | P2-5 | DG | MEP-2 |  |  |  |
| P2.B2.F.LC.2340 |  | Remaining MEP Hook-Ups / B2 / MRI & Cath | 5d | 2026-10-05 | 2026-10-09 | P2.B2.F.LC.2440, P2.B2.F.LC.2330 | 66d | 0d | 40 | MEP | P2-5 | DG | MEP | Harris |  |  |
| P2.B2.F.LC.2350 |  | OFOI Furniture & Equipment / B2 / MRI & Cath | 5d | 2026-10-05 | 2026-10-09 | P2.B2.F.LC.2340 SS, OFOI.EQUIP.B2.1040, OFOI.EQUIP.B2.1050, OFOI.EQUIP.B2.1000, OFOI.EQUIP.B2.1010, OFOI.EQUIP.B2.1020, OFOI.EQUIP.B2.1030 | 76d | 10d | 40 | FURN | P2-5 | DG | FURN |  |  |  |
| P2.B2.F.LC.2320 |  | Work Completion List - Finishes / B2 / MRI & Cath | 5d | 2026-10-12 | 2026-10-16 | P2.B2.F.LC.2310, P2.B2.F.LC.2300, P2.B2.F.LC.2500, P2.B2.F.LC.2340 | 66d | 0d | 40 | FINISH | P2-5 | DG | FINISH |  |  |  |
| P2.B2.F.LC.2360 |  | Rough Clean / B2 / MRI & Cath | 5d | 2026-10-12 | 2026-10-16 | P2.B2.F.LC.2440, P2.B2.F.LC.2340 | 66d | 0d | 40 | FCLEAN | P2-5 | DG | FCLEAN |  |  |  |
| P2.B2.F.LC.2370 |  | Prepare Punchlist / B2 / MRI & Cath | 5d | 2026-10-19 | 2026-10-23 | P2.B2.F.LC.2340 SS, P2.B2.F.LC.2360, P2.B2.F.LC.2500, P2.B2.F.LC.2320 | 66d | 0d | 40 | QC | P2-5 | DG | QC |  |  |  |
| P2.B2.F.LC.2380 |  | Correct Punchlist / B2 / MRI & Cath | 10d | 2026-10-26 | 2026-11-06 | P2.B2.F.LC.2370, P2.B2.F.LC.2350 | 66d | 0d | 80 | FINISH | P2-5 | DG | FINISH |  |  |  |
| P2.B2.F.LC.2390 |  | Final Clean / B2 / MRI & Cath | 5d | 2026-11-09 | 2026-11-13 | P2.SUM.205 FF, P2.B2.F.LC.2380, P2.B2.M.5970 | 66d | 78d | 40 | QC | P2-5 | DG | QC |  |  |  |

| ID | WBS | Activity | Duration | Start | Finish | Predecessors | Complete | Planned start | Planned finish | Total float | Free float | Temp Orig Dur | Act ID Temp | Resp / SRLM | PHASE | Z.RESP | RESP / Trade | Testing Type | Pick | 744 | RESP UPD | Update Status |
| --- | --- | --- | --- | --- | --- | --- | --- | --- | --- | --- | --- | --- | --- | --- | --- | --- | --- | --- | --- | --- | --- | --- |
|  | L1 | **L1 / BUILDOUT** |  | 2024-11-11 | 2026-12-28 |  |  |  |  |  |  |  |  |  |  |  |  |  |  |  |  |  |
|  | 2 | **CORE & SUPPORT SPACES / LEVEL 1** |  | 2024-11-11 | 2026-12-09 |  |  |  |  |  |  |  |  |  |  |  |  |  |  |  |  |  |
|  | 2 | **ROUGH IN - Core & Support Spaces / Level 1** |  | 2024-11-11 | 2026-06-17 |  |  |  |  |  |  |  |  |  |  |  |  |  |  |  |  |  |
|  | Z11 | **South (14K SF) / Level 1** |  | 2024-11-11 | 2026-06-17 |  |  |  |  |  |  |  |  |  |  |  |  |  |  |  |  |  |
| P2.L1.S.1000 |  | Layout - All Trades / L1 / South | 5d | 2024-11-11 A | 2024-11-25 A | P2.2.03.620 | 100% | 2024-12-02 | 2024-12-06 |  |  | 40 | P2.B2.01.010 | R/I.OH | P2-5 | Harris | R/I.OH |  |  |  |  |  |
| P2.L1.S.1020 |  | OH - Structural Supports (All Trades) / L1 / South | 5d | 2024-11-18 A | 2025-02-07 A | P2.L1.S.1000 | 100% | 2024-12-09 | 2024-12-13 |  |  | 80 | P2.B2.05.45.110 | R/I.OH | P2-5 | Harris | R/I.OH | AT24 |  |  |  |  |
| P2.L1.S.1030 |  | OH - MEPF - Hangers & Supports / L1 / South | 7d | 2024-11-18 A | 2025-02-07 A | P2.L1.S.1000, P2.L1.S.1020 SS, P2.BIM.L1.40.140 SS | 100% | 2025-01-15 | 2025-01-23 |  |  | 80 | P2.B2.20.05.410 | MEP | P2-5 | Harris | MEP-2 |  |  |  |  |  |
| P2.L1.S.1010 |  | Framing - Top Track / L1 / South | 10d | 2024-11-19 A | 2024-12-06 A | P2.L1.S.1000 | 100% | 2024-12-09 | 2024-12-20 |  |  | 80 | P2.B2.09.21.110 | GYP | P2-5 |  | GYP-1 |  |  |  |  |  |
| P2.L1.S.1090 |  | Framing - Priority Walls & Door Frames / L1 / South | 10d | 2024-12-09 A | 2025-01-22 A | P2.L1.S.1000, P2.L1.S.1010 | 100% | 2025-01-13 | 2025-01-24 |  |  | 80 | P2.B2.09.21.310 | GYP | P2-5 |  | GYP-1 |  |  |  |  |  |
| P2.L1.S.1130 |  | Framing - Priority Walls - AHJ Inspections / L1 / South | 5d | 2024-12-26 A | 2025-01-24 A | P2.L1.S.1570 FF, P2.L1.S.1090 SS | 100% | 2025-01-23 | 2025-01-29 |  |  | 80 | P2.B2.01.43.010 | FM | P2-5 |  | FM |  |  |  |  |  |
| P2.L1.S.1140 |  | Hang/Tape/Finish - Priority Walls / L1 / South | 10d | 2025-01-07 A | 2025-02-07 A | P2.L1.S.1130 SS+4d, P2.L1.S.1020 FF+1d | 100% | 2025-02-10 | 2025-02-21 |  |  | 80 | P2.B2.09.21.210 | GYP | P2-5 |  | GYP-1 |  |  |  |  |  |
| P2.L1.S.1160 |  | Spray/Seal/Firestop - Head of Wall - Priority Walls / L1 / South | 5d | 2025-01-07 A | 2025-02-10 A | P2.L1.S.1140 FF | 100% | 2025-02-17 | 2025-02-21 |  |  | 80 | P2.B2.07.84.410 | FIRESTO | P2-5 |  | FIRESTO | AT47 |  |  |  |  |
| P2.L1.S.1180 |  | OH - Plumbing Piping / L1 / South | 20d | 2025-01-16 A | 2025-03-31 A | P2.L1.S.1030 FF+2d, P2.B2.S.1180 SS | 100% | 2025-02-10 | 2025-03-07 |  |  | 80 | P2.B2.22.14.210 | PLMB | P2-5 | Harris | PLMB |  | 1 |  |  |  |
| P2.L1.S.1570 |  | In Wall - Priority Wall - Backing/Blocking/Supports / L1 / South | 5d | 2025-01-23 A | 2025-01-23 A | P2.L1.S.1090 | 100% | 2025-02-06 | 2025-02-12 |  |  | 80 | P2.B2.09.21.510 | R/I.IW | P2-5 |  | R/I.IW |  |  |  |  |  |
| P2.L1.S.1170 |  | OH - Fire Suppression / L1 / South | 10d | 2025-01-30 A | 2025-02-14 A | P2.B2.N.1170, P2.L1.S.1030 FF+2d | 100% | 2025-02-24 | 2025-03-07 |  |  | 80 | P2.B2.21.13.210 | FP | P2-5 |  | FP-1 |  | 1 |  |  |  |
| P2.L1.S.1190 |  | OH - Electrical - 480/277v Distribution / L1 / South | 10d | 2025-02-10 A | 2025-03-21 A | P2.L1.S.1170, P2.L1.S.1030 | 100% | 2025-03-20 | 2025-04-02 |  |  | 80 | P2.B2.26.05.210 | ELEC | P2-5 |  | ELEC-2 |  | 1 |  |  |  |
| P2.L1.S.1210 |  | OH - Hang Duct - HP Mains / L1 / South | 10d | 2025-03-03 A | 2025-03-17 A | P2.L1.S.1030 | 100% | 2025-05-06 | 2025-05-19 |  |  | 80 | P2.B2.23.30.210 | HVAC | P2-5 | Harris | HVAC |  | 1 |  |  |  |
| P2.L1.S.1260 |  | OH - DALT - HP Mains / L1 / South | 10d | 2025-03-17 A | 2025-03-31 A | P2.L1.S.1210 | 100% | 2025-05-20 | 2025-06-03 |  |  | 80 | P2.B2.23.30.310 | TAB | P2-5 | Harris | TAB-1 |  | 2 |  |  |  |
| P2.L1.S.1230 |  | OH - Electrical - 208/120v Branch / L1 / South | 10d | 2025-03-24 A | 2025-04-02 A | P2.L1.S.1190 | 100% | 2025-04-22 | 2025-05-05 |  |  | 80 | P2.B2.26.05.310 | ELEC | P2-5 |  | ELEC-2 |  | 2 |  |  |  |
| P2.L1.S.1290 |  | OH - Insulate HP Duct / L1 / South | 10d | 2025-03-24 A | 2025-03-31 A | P2.L1.S.1260 | 100% | 2025-06-04 | 2025-06-17 |  |  | 80 | P2.B2.23.07.310 | INSUL | P2-5 | Harris | INSUL-3 |  | 3 |  |  |  |
| P2.L1.S.1220 |  | OH - HVAC Piping (High) / L1 / South | 20d | 2025-03-28 A | 2025-04-17 A | P2.L1.S.1170, P2.L1.S.1030 | 100% | 2025-03-03 | 2025-03-28 |  |  | 80 | P2.B2.23.20.410 | FIT | P2-5 | Harris | FIT-2 |  | 2 |  |  |  |
| P2.L1.S.1380 |  | OH - Conduit - Low Volt - Fire Alarm / L1 / South | 10d | 2025-04-14 A | 2025-05-16 A | P2.L1.S.1350, P2.L1.S.1310 | 100% | 2025-05-30 | 2025-06-12 |  |  | 80 |  | FA | P2-5 |  | FA-1 |  | 5 |  |  |  |
| P2.L1.S.1390 |  | OH - Conduit - Low Volt - Telecom / L1 / South | 10d | 2025-04-14 A | 2025-05-02 A | P2.L1.S.1350 | 100% | 2025-05-30 | 2025-06-12 |  |  | 80 |  | ELEC | P2-5 |  | ELEC-2 |  | 5 |  |  |  |
| P2.L1.S.1410 |  | OH - Conduit - Low Volt - Medical Services/Nurse Call (?) / L1 / South | 10d | 2025-04-14 A | 2025-04-25 A | P2.L1.S.1350 | 100% | 2025-05-30 | 2025-06-12 |  |  | 80 |  | ELEC | P2-5 |  | ELEC-2 |  | 5 |  |  |  |
| P2.L1.S.1350 |  | OH - Insulate LP Duct / L1 / South | 10d | 2025-04-15 A | 2025-04-30 A | P2.L1.S.1300 | 100% | 2025-05-15 | 2025-05-29 |  |  | 80 | P2.B2.23.07.410 | INSUL | P2-5 | Harris | INSUL-3 |  | 4 |  |  |  |
| P2.L1.S.1040 |  | CMU - Drill_Epoxy Masonry Dowels / L1 / South | 10d | 2025-04-18 A | 2025-04-30 A | P2.L1.S.1000, P2.B2.N.1040, P2.FAC.2.Z1.110 | 100% | 2025-05-21 | 2025-06-04 |  |  | 80 | P2.B2.04.20.110 | CMU | P2-5 |  | CMU | AT4 |  |  |  |  |
| P2.L1.S.1300 |  | OH - Hang Duct - LP Branch / L1 / South | 10d | 2025-04-21 A | 2025-04-25 A | P2.L1.S.1260 | 100% | 2025-05-01 | 2025-05-14 |  |  | 80 | P2.B2.23.30.410 | HVAC | P2-5 | Harris | HVAC |  | 3 |  |  |  |
| P2.L1.S.1050 |  | CMU - Lay Block / L1 / South | 10d | 2025-05-01 A | 2025-05-14 A | P2.L1.S.1040, P2.B2.S.1050 | 100% | 2025-06-02 | 2025-06-13 |  |  | 80 | P2.B2.04.20.210 | CMU | P2-5 |  | CMU | AT3 |  |  |  |  |
| P2.L1.S.1060 |  | In Wall - Electrical - CMU / L1 / South | 10d | 2025-05-01 A | 2025-05-14 A | P2.L1.S.1050 SS | 100% | 2025-06-02 | 2025-06-13 |  |  | 80 | P2.B2.26.05.510 | ELEC | P2-5 |  | ELEC-2 |  |  |  |  |  |
| P2.L1.S.1070 |  | In Wall - Plumbing - CMU / L1 / South | 10d | 2025-05-01 A | 2025-05-14 A | P2.L1.S.1050 SS | 100% | 2025-06-02 | 2025-06-13 |  |  | 80 | P2.B2.22.05.310 | PLMB | P2-5 | Harris | PLMB |  |  |  |  |  |
| P2.L1.S.1150 |  | Paint Prime & 1st Coat - Priority Walls / L1 / South | 10d | 2025-05-01 A | 2025-05-14 A | P2.L1.S.1160 SS | 100% | 2025-06-02 | 2025-06-13 |  |  | 80 | P2.B2.09.91.110 | PAINT | P2-5 |  | PAINT-1 |  |  |  |  |  |
| P2.L1.S.1560 |  | OH - HVAC Piping (Low) / L1 / South | 20d | 2025-05-01 A | 2025-05-29 A | P2.L1.S.1220 | 100% | 2025-06-02 | 2025-06-27 |  |  | 80 | P2.B2.23.20.410 | FIT | P2-5 | Harris | FIT-2 |  | 2 |  |  |  |
| P2.L1.S.1100 |  | Paint - CMU Block Fill / L1 / South | 10d | 2025-05-15 A | 2025-05-29 A | P2.L1.S.1050, P2.L1.S.1060, P2.L1.S.1070 | 100% | 2025-06-16 | 2025-06-27 |  |  | 80 | P2.B2.09.97.110 | PAINT | P2-5 |  | PAINT-1 |  |  |  |  |  |
| P2.L1.S.1110 |  | CMU - Point & Patch / L1 / South | 10d | 2025-05-15 A | 2025-05-29 A | P2.L1.S.1060, P2.L1.S.1100, P2.L1.S.1070 | 100% | 2025-06-30 | 2025-07-14 |  |  | 80 | P2.B2.04.20.310 | CMU | P2-5 |  | CMU |  |  |  |  |  |
| P2.L1.S.1120 |  | Paint Prime & 1st Coat - CMU / L1 / South | 10d | 2025-05-15 A | 2025-05-29 A | P2.L1.S.1110 SS+2d | 100% | 2025-07-02 | 2025-07-16 |  |  | 80 | P2.B2.09.97.210 | PAINT | P2-5 |  | PAINT-1 |  |  |  |  |  |
| P2.L1.S.1240 |  | OH - Plumbing - Test / L1 / South | 10d | 2025-05-30 A | 2025-06-27 A | P2.L1.S.1220, P2.L1.S.1180, P2.L1.S.1560, P2.L1.S.1070 | 100% | 2025-06-30 | 2025-07-14 |  |  | 80 | P2.B2.22.14.310 | PLMB | P2-5 | Harris | PLMB |  | 2 | FM | FM |  |
| P2.L1.S.1420 |  | Framing - Balance of Framing & Door Frames / L1 / South | 10d | 2025-06-01 A | 2025-06-10 A | P2.L1.S.1280, P2.L1.S.1410, P2.L1.S.1370, P2.L1.S.1380, P2.L1.S.1390, P2.L1.S.1400 | 100% | 2025-08-20 | 2025-09-03 |  |  | 80 | A1310 | GYP | P2-5 |  | GYP-1 |  |  | FM | FM |  |
| P2.L1.S.1200 |  | Firestop - Thru Wall - Priority Walls / L1 / South | 5d | 2025-06-02 A | 2025-06-06 A | P2.L1.S.1150 | 100% | 2025-07-01 | 2025-07-08 |  |  | 80 | P2.B2.07.84.110 | FIRESTO | P2-5 |  | FIRESTO | AT48 |  | FM | FM |  |
| P2.L1.S.1270 |  | OH - HVAC Piping - Test / L1 / South | 10d | 2025-06-02 A | 2025-06-13 A | P2.L1.S.1560 | 100% | 2025-07-01 | 2025-07-15 |  |  | 80 | P2.B2.23.20.510 | FIT | P2-5 | Harris | FIT-2 |  | 3 | FM | FM |  |
| P2.L1.S.1280 |  | OH - Insulate Plumbing / L1 / South | 10d | 2025-06-16 A | 2025-07-08 A | P2.L1.S.1240 | 100% | 2025-07-15 | 2025-07-28 |  |  | 80 | P2.B2.22.07.510 | INSUL | P2-5 | Harris | INSUL-3 |  | 3 | FM | FM |  |
| P2.L1.S.1370 |  | OH - Conduit - Low Volt - BAS/Controls / L1 / South | 10d | 2025-06-16 A | 2025-07-22 A | P2.L1.S.1340, P2.L1.S.1310 | 100% | 2025-07-30 | 2025-08-12 |  |  | 80 |  | BAS | P2-5 | Harris | BAS-1 |  | 5 | FM | FM |  |
| P2.L1.S.1400 |  | OH - Conduit - Low Volt - Security / L1 / South | 10d | 2025-06-16 A | 2025-07-22 A | P2.L1.S.1340 | 100% | 2025-07-30 | 2025-08-12 |  |  | 80 |  | ELEC | P2-5 |  | ELEC-2 |  | 5 | FM | FM |  |
| P2.L1.S.1340 |  | OH - Insulate HVAC Pipe / L1 / South | 10d | 2025-07-01 A | 2025-07-15 A | P2.L1.S.1270, P2.L1.S.1290, P2.L1.S.1200 | 100% | 2025-08-01 | 2025-08-14 |  |  | 80 | P2.B2.22.07.610 | INSUL | P2-5 | Harris | INSUL-3 |  | 4 | FM | FM |  |
| P2.L1.S.1310 |  | OH - Set & Connect Mech Equipment / L1 / South | 10d | 2025-07-23 A | 2025-09-26 A | P2.L1.S.1260, P2.L1.S.1270 | 100% | 2025-08-01 | 2025-08-14 |  |  | 80 | P2.B2.23.82.110 | HVAC | P2-5 | Harris | HVAC |  | 3 | FM | FM | O |
| P2.L1.S.1480 |  | Spray/Seal/Firestop - Head of Wall / L1 / South | 10d | 2025-08-01 A | 2025-08-11 A | P2.L1.S.1470, P2.L1.S.1120 | 100% | 2025-11-11 | 2025-11-24 |  |  | 80 | P2.B2.07.84.310 | FIRSAFE | P2-5 |  | FIRSAFE | AT47 | To Finishes - Paint | FM | FM |  |
| P2.L1.S.1430 |  | In Wall - Plumbing - Framing / L1 / South | 10d | 2025-08-28 A | 2025-09-11 A | P2.L1.S.1420 | 100% |  |  |  |  | 80 | P2.B2.22.05.410 | PLMB | P2-5 | Harris | PLMB |  |  | FM | FM | O |
| P2.L1.S.1440 |  | In Wall - Electrical - Framing / L1 / South | 10d | 2025-08-28 A | 2025-09-25 A | P2.L1.S.1230, P2.L1.S.1420 | 100% | 2025-08-28 | 2025-09-11 |  |  | 80 | P2.B2.26.05.610 | ELEC | P2-5 |  | ELEC-2 |  |  | FM | FM | O |
| P2.L1.S.1450 |  | In Wall - Backing/Blocking/Supports / L1 / South | 5d | 2025-08-28 A | 2025-09-15 A | P2.L1.S.1420 | 100% | 2025-08-28 | 2025-09-04 |  |  | 80 | P2.B2.09.21.510 | R/I.IW | P2-5 |  | R/I.IW |  |  | FM | FM | O |
| P2.L1.S.1250 |  | Pull Wire - Electrical - 480/277v Distribution / L1 / South | 10d | 2025-09-29 A | 2025-11-14 A | P2.L1.S.1190, P2.1.HE.3911.1010, P2.1.HE.5959.1050, P2.1.HE.6940.1050 | 100% | 2025-10-01 | 2025-10-14 |  |  | 80 |  | ELEC | P2-5 |  | ELEC-2 |  | To Trim Devices & Term Panel | FM | JH |  |
| P2.L1.S.1360 |  | Pull Wire - Electrical - 208/120v Branch & Equip / L1 / South | 20d | 2025-09-29 A | 2025-11-14 A | P2.L1.S.1230, P2.L1.S.1320, P2.L1.S.1440 | 100% | 2025-10-21 | 2025-11-17 |  |  | 80 |  | ELEC | P2-5 |  | ELEC-2 |  | To Trim Devices & Term Panel | FM | JH |  |
| P2.L1.S.1320 |  | OH - Electrical - Equip Tie In / L1 / South | 10d | 2025-11-10 A | 2025-11-14 A | P2.L1.S.1310 | 100% | 2025-12-01 | 2025-12-12 |  |  | 80 | P2.B2.26.05.410 | ELEC | P2-5 |  | ELEC-2 |  | 4 | FM | JH |  |
| P2.L1.S.1330 |  | OH - HVAC Piping - Equip Tie In / L1 / South | 15d | 2025-12-01 A | 2025-12-15 A | P2.L1.S.1270, P2.L1.S.1310 | 100% | 2026-02-27 | 2026-03-19 |  |  | 80 | P2.B2.23.20.610 | FIT | P2-5 | Harris | FIT-2 |  |  | FM | JH |  |
| P2.L1.S.1460 |  | AHJ Inspections - Wall Close In / L1 / South | 5d | 2025-12-01 A | 2025-12-05 A | P2.L1.S.1440, P2.L1.S.1450, P2.L1.S.1430 | 100% | 2026-01-02 | 2026-01-08 |  |  | 40 | P2.B2.01.43.110 | FM | P2-5 |  | FM |  |  | FM | JH | O |
| P2.L1.S.1470 |  | Hang-Tape-Finish - Walls and Hard Lid Ceilings / L1 / South | 15d | 2025-12-08 A | 2025-12-29 A | P2.L1.S.1460, P2.SUM.175, BP5.081.3.200, P2.FAC.4.Z1.150, P2.L1.LC.1420 | 100% | 2026-01-09 | 2026-01-29 |  |  | 80 | P2.B2.09.21.710 | GYP | P2-5 |  | GYP-1 |  |  | FM | JH | O |
| P2.L1.S.1490 |  | Firestop - Thru Wall / L1 / South | 10d | 2026-04-01 | 2026-04-14 | P2.L1.S.1470 |  |  |  | 84d | 40d | 80 | P2.B2.07.84.210 | FIRESTO | P2-5 |  | FIRESTO | AT48 | To Finishes - Paint | FM | JH | O |
| P2.L1.S.1500 |  | Pull Wire - Low Volt - BAS/Controls / L1 / South | 10d | 2026-04-01 | 2026-04-14 | P2.L1.S.1470 |  |  |  | 84d | 10d | 80 |  | BAS | P2-5 | Harris | BAS-1 |  | To Trim Finishes | FM | JH | O |
| P2.L1.S.1510 |  | Pull Wire - Low Volt - Fire Alarm / L1 / South | 10d | 2026-04-01 | 2026-04-14 | P2.L1.S.1470 |  |  |  | 84d | 40d | 80 |  | FA | P2-5 |  | FA-1 |  | To Trim Finishes | FM | JH | O |
| P2.L1.S.1520 |  | Pull Wire - Low Volt - Telecom / L1 / South | 10d | 2026-04-01 | 2026-04-14 | P2.L1.S.1470 |  |  |  | 84d | 40d | 80 |  | CIT | P2-5 |  | CIT |  | To Trim Finishes | FM | JH | O |
| P2.L1.S.1530 |  | Pull Wire - Low Volt - Security / L1 / South | 10d | 2026-04-01 | 2026-04-14 | P2.L1.S.1470 |  |  |  | 84d | 40d | 80 |  | LOWVOLT | P2-5 |  | LOWVOLT-1 |  | To Trim Finishes | FM | JH | O |
| P2.L1.S.1540 |  | Pull Wire - Low Volt - Medical Services/Nurse Call (?) / L1 / South | 10d | 2026-04-01 | 2026-04-14 | P2.L1.S.1470 |  |  |  | 84d | 40d | 80 |  | LOWVOLT | P2-5 |  | LOWVOLT-1 |  | To Trim Finishes | FM | JH | O |
| P2.L1.S.1550 |  | Trades Inspect & Verify R/I Work Completed to Specs / L1 / South | 5d | 2026-06-11 | 2026-06-17 | P2.L1.S.1490, P2.L1.S.1480, P2.L1.S.1510, P2.L1.S.1520, P2.L1.S.1530, P2.L1.S.1250, P2.L1.S.1540, P2.L1.S.1360, P2.L1.S.1500, DDD2600, DDD3150, DDD2950, DDD3100, DDD2150, DDD3000, DDD3050, P2.L1.S.1330 |  |  |  | 44d | 0d | 40 |  | T | P2-5 |  | T |  |  | FM | JH |  |

| ID | WBS | Activity | Duration | Start | Finish | Predecessors | Complete | Remaining | Planned start | Planned finish | Total float | Free float | Temp Orig Dur | Act ID Temp | Resp / SRLM | PHASE | Z.RESP | RESP / Trade | Pick | Testing Type | 744 | RESP UPD | Update Status | **NEAR CRITICAL** |
| --- | --- | --- | --- | --- | --- | --- | --- | --- | --- | --- | --- | --- | --- | --- | --- | --- | --- | --- | --- | --- | --- | --- | --- | --- |
|  | Z111 | **North (15K SF) / Level 1** |  | 2024-11-25 | 2026-06-17 |  |  |  |  |  |  |  |  |  |  |  |  |  |  |  |  |  |  |  |
| P2.L1.N.1000 |  | Layout - All Trades / L1 / North | 5d | 2024-11-25 A | 2024-12-10 A | P2.2.03.630 | 100% |  | 2024-12-02 | 2024-12-06 |  |  | 40 | P2.B2.01.010 | R/I.OH | P2-5 | Harris | R/I.OH |  |  |  |  |  |  |
| P2.L1.N.1010 |  | Framing - Top Track / L1 / North | 10d | 2024-12-04 A | 2024-12-23 A | P2.L1.N.1000 | 100% |  | 2025-01-13 | 2025-01-24 |  |  | 80 | P2.B2.09.21.110 | GYP | P2-5 |  | GYP-1 |  |  |  |  |  |  |
| P2.L1.N.1030 |  | OH - MEPF - Hangers & Supports / L1 / North | 10d | 2024-12-24 A | 2025-02-19 A | P2.L1.N.1000, P2.BIM.L1.40.140 SS | 100% |  | 2025-01-02 | 2025-01-15 |  |  | 80 | P2.B2.20.05.410 | MEP | P2-5 | Harris | MEP-2 |  |  |  |  |  |  |
| P2.L1.N.1090 |  | Framing - Priority Walls & Door Frames / L1 / North | 10d | 2024-12-26 A | 2025-02-04 A | P2.L1.N.1000, P2.L1.N.1010, P2.B2.N.1090 | 100% |  | 2025-01-27 | 2025-02-07 |  |  | 80 | P2.B2.09.21.310 | GYP | P2-5 |  | GYP-1 |  |  |  |  |  |  |
| P2.L1.N.1180 |  | OH - Plumbing Piping / L1 / North | 20d | 2024-12-26 A | 2025-03-03 A | P2.L1.N.1030 SS | 100% |  | 2025-01-09 | 2025-02-05 |  |  | 80 | P2.B2.22.14.210 | PLMB | P2-5 | Harris | PLMB | 1 |  |  |  |  |  |
| P2.L1.N.1020 |  | OH - Structural Supports (All Trades) / L1 / North | 5d | 2025-01-02 A | 2025-02-19 A | P2.L1.N.1000 | 100% |  | 2025-02-03 | 2025-02-07 |  |  | 80 | P2.B2.05.45.110 | R/I.OH | P2-5 | Harris | R/I.OH |  | AT24 |  |  |  |  |
| P2.L1.N.1040 |  | CMU - Drill_Epoxy Masonry Dowels / L1 / North | 10d | 2025-01-16 A | 2025-02-01 A | P2.L1.N.1000 | 100% |  | 2025-02-17 | 2025-02-28 |  |  | 80 | P2.B2.04.20.110 | CMU | P2-5 |  | CMU |  | AT4 |  |  |  |  |
| P2.L1.N.1570 |  | In Wall - Priority Walls - Backing/Blocking/Supports / L1 / North | 5d | 2025-01-20 A | 2025-01-21 A | P2.L1.N.1090 SS | 100% |  | 2025-02-17 | 2025-02-21 |  |  | 80 | P2.B2.09.21.510 | R/I.IW | P2-5 |  | R/I.IW |  |  |  |  |  |  |
| P2.L1.N.1130 |  | Framing - Priority Walls - AHJ Inspections / L1 / North | 5d | 2025-01-22 A | 2025-02-19 A | P2.L1.N.1570, P2.L1.N.1090 FF+2d | 100% |  | 2025-02-24 | 2025-02-28 |  |  | 80 | P2.B2.01.43.010 | FM | P2-5 |  | FM |  |  |  |  |  |  |
| P2.L1.N.1140 |  | Hang/Tape/Finish - Priority Walls / L1 / North | 10d | 2025-01-22 A | 2025-02-17 A | P2.L1.N.1130 FF+2d, P2.L1.N.1020 FF | 100% |  | 2025-02-20 | 2025-03-05 |  |  | 80 | P2.B2.09.21.210 | GYP | P2-5 |  | GYP-1 |  |  |  |  |  |  |
| P2.L1.N.1160 |  | Spray/Seal/Firestop - Head of Wall - Priority Walls / L1 / North | 5d | 2025-01-23 A | 2025-01-24 A | P2.L1.N.1140 SS | 100% |  | 2025-03-06 | 2025-03-12 |  |  | 80 | P2.B2.07.84.410 | FIRESTO | P2-5 |  | FIRESTO |  | AT47 |  |  |  |  |
| P2.L1.N.1210 |  | OH - Hang Duct - HP Mains / L1 / North | 10d | 2025-02-13 A | 2025-03-14 A | P2.L1.N.1030 | 100% |  | 2025-03-24 | 2025-04-04 |  |  | 80 | P2.B2.23.30.210 | HVAC | P2-5 | Harris | HVAC | 1 |  |  |  |  |  |
| P2.L1.N.1170 |  | OH - Fire Suppression / L1 / North | 10d | 2025-02-17 A | 2025-02-28 A | P2.L1.N.1030 | 100% |  | 2025-03-17 | 2025-03-28 |  |  | 80 | P2.B2.21.13.210 | FP | P2-5 |  | FP-1 | 1 |  |  |  |  |  |
| P2.L1.N.1190 |  | OH - Electrical - 480/277v Distribution / L1 / North | 10d | 2025-02-17 A | 2025-03-20 A | P2.L1.N.1030 | 100% |  | 2025-03-17 | 2025-03-28 |  |  | 80 | P2.B2.26.05.210 | ELEC | P2-5 |  | ELEC-2 | 1 |  |  |  |  |  |
| P2.L1.N.1220 |  | OH - HVAC Piping (High) / L1 / North | 20d | 2025-03-17 A | 2025-04-14 A | P2.L1.N.1170, P2.L1.N.1030 | 100% |  | 2025-04-15 | 2025-05-12 |  |  | 80 | P2.B2.23.20.410 | FIT | P2-5 | Harris | FIT-2 | 2 |  |  |  |  |  |
| P2.L1.N.1260 |  | OH - DALT - HP Mains / L1 / North | 10d | 2025-03-17 A | 2025-04-05 A | P2.L1.N.1210 | 100% |  | 2025-05-13 | 2025-05-27 |  |  | 80 | P2.B2.23.30.310 | TAB | P2-5 | Harris | TAB-1 | 2 |  |  |  |  |  |
| P2.L1.N.1230 |  | OH - Electrical - 208/120v Branch / L1 / North | 10d | 2025-03-24 A | 2025-04-07 A | P2.L1.N.1190 | 100% |  | 2025-04-29 | 2025-05-12 |  |  | 80 | P2.B2.26.05.310 | ELEC | P2-5 |  | ELEC-2 | 2 |  |  |  |  |  |
| P2.L1.N.1290 |  | OH - Insulate HP Duct / L1 / North | 10d | 2025-03-24 A | 2025-04-07 A | P2.L1.N.1260 SS | 100% |  | 2025-05-28 | 2025-06-10 |  |  | 80 | P2.B2.23.07.310 | INSUL | P2-5 | Harris | INSUL-3 | 3 |  |  |  |  |  |
| P2.L1.N.1300 |  | OH - Hang Duct - LP Branch / L1 / North | 5d | 2025-04-14 A | 2025-04-18 A | P2.L1.N.1290, P2.L1.N.1260 | 100% |  | 2025-05-30 | 2025-06-05 |  |  | 80 | P2.B2.23.30.410 | HVAC | P2-5 | Harris | HVAC | 3 |  |  |  |  |  |
| P2.L1.N.1350 |  | OH - Insulate LP Duct / L1 / North | 10d | 2025-04-21 A | 2025-05-02 A | P2.L1.N.1300 | 100% |  | 2025-06-06 | 2025-06-19 |  |  | 80 | P2.B2.23.07.410 | INSUL | P2-5 | Harris | INSUL-3 | 4 |  |  |  |  |  |
| P2.L1.N.1150 |  | Paint Prime & 1st Coat - Priority Walls / L1 / North | 10d | 2025-05-01 A | 2025-05-14 A | P2.L1.N.1160 SS | 100% |  | 2025-06-02 | 2025-06-13 |  |  | 80 | P2.B2.09.91.110 | PAINT | P2-5 |  | PAINT-1 |  |  |  |  |  |  |
| P2.L1.N.1560 |  | OH - HVAC Piping (Low) / L1 / North | 20d | 2025-05-01 A | 2025-05-29 A | P2.L1.N.1220 | 100% |  | 2025-06-02 | 2025-06-27 |  |  | 80 | P2.B2.23.20.410 | FIT | P2-5 | Harris | FIT-2 | 2 |  |  |  |  |  |
| P2.L1.N.1050 |  | CMU - Lay Block / L1 / North | 10d | 2025-05-08 A | 2025-05-21 A | P2.L1.N.1040, P2.B2.N.1050, P2.FAC.2.Z3.110, P2.FAC.2.Z2.110, P2.FAC.2.Z1.120 | 100% |  | 2025-06-09 | 2025-06-20 |  |  | 80 | P2.B2.04.20.210 | CMU | P2-5 |  | CMU |  | AT3 |  |  |  |  |
| P2.L1.N.1060 |  | In Wall - Electrical - CMU / L1 / North | 10d | 2025-05-08 A | 2025-05-21 A | P2.L1.N.1050 SS | 100% |  | 2025-06-09 | 2025-06-20 |  |  | 80 | P2.B2.26.05.510 | ELEC | P2-5 |  | ELEC-2 |  |  |  |  |  |  |
| P2.L1.N.1070 |  | In Wall - Plumbing - CMU / L1 / North | 10d | 2025-05-08 A | 2025-05-21 A | P2.L1.N.1050 SS | 100% |  | 2025-06-09 | 2025-06-20 |  |  | 80 | P2.B2.22.05.310 | PLMB | P2-5 | Harris | PLMB |  |  |  |  |  |  |
| P2.L1.N.1380 |  | OH - Conduit - Low Volt - Fire Alarm / L1 / North | 10d | 2025-05-15 A | 2025-05-29 A | P2.L1.N.1350 | 100% |  | 2025-06-04 | 2025-06-17 |  |  | 80 |  | FA | P2-5 |  | FA-1 | 5 |  |  |  |  |  |
| P2.L1.N.1100 |  | Paint - CMU Block Fill / L1 / North | 10d | 2025-05-22 A | 2025-05-30 A | P2.L1.N.1050 | 100% |  | 2025-06-23 | 2025-07-07 |  |  | 80 | P2.B2.09.97.110 | PAINT | P2-5 |  | PAINT-1 |  |  |  |  |  |  |
| P2.L1.N.1390 |  | OH - Conduit - Low Volt - Telecom / L1 / North | 10d | 2025-05-22 A | 2025-05-30 A | P2.L1.N.1350, P2.L1.N.1380 | 100% |  | 2025-06-18 | 2025-07-01 |  |  | 80 |  | ELEC | P2-5 |  | ELEC-2 | 5 |  |  |  |  |  |
| P2.L1.N.1200 |  | Firestop - Thru Wall - Priority Walls / L1 / North | 5d | 2025-05-30 A | 2025-06-05 A | P2.L1.N.1150 | 100% |  | 2025-06-16 | 2025-06-20 |  |  | 80 | P2.B2.07.84.110 | FIRESTO | P2-5 |  | FIRESTO |  |  | FM | FM |  |  |
| P2.L1.N.1270 |  | OH - HVAC Piping - Test / L1 / North | 5d | 2025-05-30 A | 2025-06-05 A | P2.L1.N.1560 | 100% |  | 2025-06-30 | 2025-07-07 |  |  | 80 | P2.B2.23.20.510 | FIT | P2-5 | Harris | FIT-2 | 3 |  | FM | FM |  |  |
| P2.L1.N.1110 |  | CMU - Point & Patch / L1 / North | 10d | 2025-06-02 A | 2025-06-13 A | P2.L1.N.1060, P2.L1.N.1100, P2.L1.N.1070 | 100% |  | 2025-07-01 | 2025-07-15 |  |  | 80 | P2.B2.04.20.310 | CMU | P2-5 |  | CMU |  |  | FM | FM |  |  |
| P2.L1.N.1410 |  | OH - Conduit - Low Volt - Medical Services/Nurse Call (?) / L1 / North | 10d | 2025-06-02 A | 2025-06-13 A | P2.L1.N.1350, P2.L1.N.1390 | 100% |  | 2025-07-01 | 2025-07-15 |  |  | 80 |  | ELEC | P2-5 |  | ELEC-2 | 5 |  | FM | FM |  |  |
| P2.L1.N.1120 |  | Paint Prime & 1st Coat - CMU / L1 / North | 10d | 2025-06-04 A | 2025-06-17 A | P2.L1.N.1110 SS+2d | 100% |  | 2025-07-03 | 2025-07-17 |  |  | 80 | P2.B2.09.97.210 | PAINT | P2-5 |  | PAINT-1 |  |  | FM | FM |  |  |
| P2.L1.N.1240 |  | OH - Plumbing - Test / L1 / North | 10d | 2025-06-13 A | 2025-06-26 A | P2.L1.N.1180, P2.L1.S.1240 | 100% |  | 2025-07-15 | 2025-07-28 |  |  | 80 | P2.B2.22.14.310 | PLMB | P2-5 | Harris | PLMB | 2 |  | FM | FM |  |  |
| P2.L1.N.1340 |  | OH - Insulate HVAC Pipe / L1 / North | 10d | 2025-06-16 A | 2025-06-19 A | P2.L1.N.1290, P2.L1.N.1270, P2.L1.N.1200 | 100% |  | 2025-07-08 | 2025-07-21 |  |  | 80 | P2.B2.22.07.610 | INSUL | P2-5 | Harris | INSUL-3 | 4 |  | FM | FM |  |  |
| P2.L1.N.1420 |  | Framing - Balance of Framing & Door Frames / L1 / North | 10d | 2025-06-16 A | 2025-06-26 A | P2.L1.N.1280, P2.L1.N.1400, P2.L1.N.1410, P2.L1.N.1370, P2.L1.N.1380, P2.L1.N.1390 | 100% |  | 2025-08-12 | 2025-08-25 |  |  | 80 | A1310 | GYP | P2-5 |  | GYP-1 |  |  | FM | FM |  |  |
| P2.L1.N.1370 |  | OH - Conduit - Low Volt - BAS/Controls / L1 / North | 10d | 2025-06-20 A | 2025-07-22 A | P2.L1.N.1340, P2.L1.N.1310 | 100% |  | 2025-07-22 | 2025-08-04 |  |  | 80 |  | BAS | P2-5 | Harris | BAS-1 | 5 |  | FM | FM |  |  |
| P2.L1.N.1400 |  | OH - Conduit - Low Volt - Security / L1 / North | 10d | 2025-06-20 A | 2025-07-08 A | P2.L1.N.1340 | 100% |  | 2025-07-22 | 2025-08-04 |  |  | 80 |  | ELEC | P2-5 |  | ELEC-2 | 5 |  | FM | FM |  |  |
| P2.L1.N.1280 |  | OH - Insulate Plumbing / L1 / North | 10d | 2025-06-27 A | 2025-07-14 A | P2.L1.N.1240 | 100% |  | 2025-07-29 | 2025-08-11 |  |  | 80 | P2.B2.22.07.510 | INSUL | P2-5 | Harris | INSUL-3 | 3 |  | FM | FM |  |  |
| P2.L1.N.1310 |  | OH - Set & Connect Mech Equipment / L1 / North | 10d | 2025-07-09 A | 2025-07-23 A | P2.L1.N.1260, P2.L1.N.1300, P2.L1.N.1270 | 100% |  | 2025-08-01 | 2025-08-14 |  |  | 80 | P2.B2.23.82.110 | HVAC | P2-5 | Harris | HVAC | 3 |  | FM | FM |  |  |
| P2.L1.N.1430 |  | In Wall - Plumbing - Framing / L1 / North | 10d | 2025-07-23 A | 2025-08-06 A | P2.L1.N.1420 | 100% |  | 2025-08-22 | 2025-09-05 |  |  | 80 | P2.B2.22.05.410 | PLMB | P2-5 | Harris | PLMB |  |  | FM | FM |  |  |
| P2.L1.N.1440 |  | In Wall - Electrical - Framing / L1 / North | 10d | 2025-07-23 A | 2025-08-06 A | P2.L1.N.1230, P2.L1.N.1420 | 100% |  | 2025-08-22 | 2025-09-05 |  |  | 80 | P2.B2.26.05.610 | ELEC | P2-5 |  | ELEC-2 |  |  | FM | FM |  |  |
| P2.L1.N.1450 |  | In Wall - Backing/Blocking/Supports / L1 / North | 5d | 2025-07-23 A | 2025-08-06 A | P2.L1.N.1420 | 100% |  | 2025-08-22 | 2025-08-28 |  |  | 80 | P2.B2.09.21.510 | R/I.IW | P2-5 |  | R/I.IW |  |  | FM | FM |  |  |
| P2.L1.N.1480 |  | Spray/Seal/Firestop - Head of Wall / L1 / North | 10d | 2025-08-01 A | 2025-08-11 A | P2.L1.N.1120 | 100% |  | 2025-11-12 | 2025-11-25 |  |  | 80 | P2.B2.07.84.310 | FIRSAFE | P2-5 |  | FIRSAFE | To Finishes - Paint | AT47 | FM | FM |  |  |
| P2.L1.N.1250 |  | Pull Wire - Electrical - 480/277v Distribution / L1 / North | 10d | 2025-09-29 A | 2026-02-13 A | P2.L1.N.1190, P2.1.HE.2950.1050, P2.1.HE.2803.1050 | 100% |  | 2025-10-01 | 2025-10-14 |  |  | 80 |  | ELEC | P2-5 |  | ELEC-2 | To Trim Devices & Term Panel |  | FM | JH | O |  |
| P2.L1.N.1360 |  | Pull Wire - Electrical - 208/120v Branch & Equip / L1 / North | 10d | 2025-09-29 A | 2025-12-01 A | P2.L1.N.1230, P2.L1.N.1440 | 100% |  | 2025-10-29 | 2025-11-11 |  |  | 80 |  | ELEC | P2-5 |  | ELEC-2 | To Trim Devices & Term Panel |  | FM | JH | O |  |
| P2.L1.N.1320 |  | OH - Electrical - Equip Tie In / L1 / North | 10d | 2025-11-10 A | 2026-04-07 | P2.L1.N.1310 | 50% | 5d | 2025-12-01 | 2025-12-12 | 59d | 15d | 80 | P2.B2.26.05.410 | ELEC | P2-5 |  | ELEC-2 | 4 |  | FM | JH | O |  |
| P2.L1.N.1460 |  | AHJ Inspections - Wall Close In / L1 / North | 5d | 2026-02-02 A | 2026-02-02 A | P2.L1.N.1440, P2.L1.N.1450, P2.L1.N.1430 | 100% |  | 2026-03-02 | 2026-03-06 |  |  | 40 | P2.B2.01.43.110 | FM | P2-5 |  | FM |  |  | FM | JH | O | 8.2 |
| P2.L1.N.1330 |  | OH - HVAC Piping - Equip Tie In / L1 / North | 15d | 2026-03-02 A | 2026-03-27 A | P2.L1.N.1310, P2.L1.N.1270 | 100% |  | 2026-03-30 | 2026-04-17 |  |  | 80 | P2.B2.23.20.610 | FIT | P2-5 | Harris | FIT-2 |  |  | FM | JH |  |  |
| P2.L1.N.1510 |  | Pull Wire - Low Volt - Fire Alarm / L1 / North | 10d | 2026-03-16 A | 2026-04-14 | P2.L1.N.1440, P2.L1.N.1380 |  | 10d | 2026-03-02 | 2026-03-13 | 44d | 0d | 80 |  | FA | P2-5 |  | FA-1 | To Trim Finishes |  | FM | JH | O |  |
| P2.L1.N.1470 |  | Hang-Tape-Finish - Walls / L1 / North | 10d | 2026-03-30 A | 2026-04-10 | P2.L1.N.1460, P2.SUM.175, P2.FAC.4.Z2.110, P2.FAC.4.Z2.170, P2.FAC.4.Z3.110 FF, P2.FAC.4.Z3.230 FF, P2.L1.LC.1420 | 20% | 8d | 2026-04-01 | 2026-04-14 | -8d | 0d | 80 | P2.B2.09.21.710 | GYP | P2-5 |  | GYP-1 |  |  | FM | JH | O | 2.2 |
| P2.L1.N.1490 |  | Firestop - Thru Wall / L1 / North | 10d | 2026-04-13 | 2026-04-24 | P2.L1.N.1470 |  |  |  |  | 76d | 32d | 80 | P2.B2.07.84.210 | FIRESTO | P2-5 |  | FIRESTO | To Finishes - Paint | AT48 | FM | JH |  |  |
| P2.L1.N.1500 |  | Pull Wire - Low Volt - BAS/Controls / L1 / North | 10d | 2026-04-15 | 2026-04-28 | P2.L1.N.1440, P2.L1.N.1370, P2.L1.N.1510, P2.L1.N.1510 FF |  |  |  |  | 44d | 0d | 80 |  | BAS | P2-5 | Harris | BAS-1 | To Trim Finishes |  | FM | JH | O |  |
| P2.L1.N.1520 |  | Pull Wire - Low Volt - Telecom / L1 / North | 10d | 2026-04-29 | 2026-05-12 | P2.L1.N.1390, P2.L1.N.1440, P2.L1.N.1500, P2.L1.N.1360, P2.L1.N.1320 |  |  |  |  | 44d | 0d | 80 |  | CIT | P2-5 |  | CIT | To Trim Finishes |  | FM | JH | O |  |
| P2.L1.N.1530 |  | Pull Wire - Low Volt - Security / L1 / North | 10d | 2026-05-13 | 2026-05-27 | P2.L1.N.1400, P2.L1.N.1440, P2.L1.N.1520, P2.L1.N.1520 FF |  |  |  |  | 44d | 0d | 80 |  | LOWVOLT | P2-5 |  | LOWVOLT-1 | To Trim Finishes |  | FM | JH |  |  |
| P2.L1.N.1540 |  | Pull Wire - Low Volt - Medical Services/Nurse Call (?) / L1 / North | 10d | 2026-05-28 | 2026-06-10 | P2.L1.N.1440, P2.L1.N.1410, P2.L1.N.1530 |  |  |  |  | 44d | 0d | 80 |  | LOWVOLT | P2-5 |  | LOWVOLT-1 | To Trim Finishes |  |  | JH |  |  |
| P2.L1.N.1550 |  | Trades Inspect & Verify R/I Work Completed to Specs / L1 / North | 5d | 2026-06-11 | 2026-06-17 | P2.L1.N.1490, P2.L1.N.1480, P2.L1.N.1540, P2.L1.N.1500, P2.L1.N.1510, P2.L1.N.1520, P2.L1.N.1530, P2.L1.N.1250, P2.L1.N.1360, DDD2450, DDD2200, DDD2300, DDD2350, DDD2550, P2.L1.N.1330 |  |  |  |  | 44d | 0d | 40 |  | T | P2-5 |  | T |  |  |  | JH |  |  |

| ID | WBS | Activity | Type | Duration | Start | Finish | Predecessors | Complete | Planned start | Planned finish | Temp Orig Dur | Resp / SRLM | PHASE | RESP / Trade | 744 | RESP UPD | Update Status | Z.RESP | Testing Type |
| --- | --- | --- | --- | --- | --- | --- | --- | --- | --- | --- | --- | --- | --- | --- | --- | --- | --- | --- | --- |
|  | 3 | **House Electrical Rooms / Level 1** |  |  | 2025-01-07 | 2026-03-13 |  |  |  |  |  |  |  |  |  |  |  |  |  |
|  | 10 | **House Electrical Room 1-6940** |  |  | 2025-01-07 | 2026-02-26 |  |  |  |  |  |  |  |  |  |  |  |  |  |
| P2.1.HE.6940.1000 |  | Framing and Blocking / L1 / South / 6940 |  | 3d | 2025-01-07 A | 2025-03-01 A | P2.L1.S.1090 | 100% | 2025-02-03 | 2025-02-05 | 24 | GYP | P2-5 | GYP-1 |  |  |  |  |  |
| P2.1.HE.6940.1010 |  | In Wall Rough In / L1 / South / 6940 |  | 2d | 2025-01-10 A | 2025-03-31 A | P2.1.HE.6940.1000 FF+1d | 100% | 2025-02-06 | 2025-02-07 | 16 | R/I.IW | P2-5 | R/I.IW |  |  |  |  |  |
| P2.1.HE.6940.1020 |  | Inspections - Wall Close In / L1 / South / 6940 |  | 2d | 2025-05-02 A | 2025-05-02 A | P2.1.HE.6940.1010 | 100% | 2025-06-02 | 2025-06-03 | 16 | AHJ | P2-5 | AHJ |  |  |  |  |  |
| P2.1.HE.6940.1030 |  | Hang-Tape-Finish / L1 / South / 6940 |  | 5d | 2025-05-07 A | 2025-05-23 A | P2.1.HE.6940.1020 | 100% | 2025-06-04 | 2025-06-10 | 40 | GYP | P2-5 | GYP-1 |  |  |  |  |  |
| P2.1.HE.6940.1040 |  | Paint Prime & 1st Coat / L1 / South / 6940 |  | 2d | 2025-05-26 A | 2025-05-30 A | P2.1.HE.6940.1030 | 100% | 2025-06-11 | 2025-06-12 | 16 | PAINT | P2-5 | PAINT-1 |  |  |  |  |  |
| P2.1.HE.6940.1050 |  | Cans/Troughs/Backboxes/XFMRs / L1 / South / 6940 |  | 5d | 2025-06-09 A | 2025-06-10 A | P2.1.HE.6940.1040 | 100% | 2025-07-01 | 2025-07-08 | 40 | ELEC |  | ELEC-2 | ND | ND |  |  |  |
| P2.1.HE.6940.1060 |  | Risers and OH Conduit Connections / L1 / South / 6940 |  | 5d | 2025-06-16 A | 2025-06-25 A | P2.1.HE.6940.1050 | 100% | 2025-07-09 | 2025-07-15 | 40 | ELEC | P2-5 | ELEC-2 | ND | ND |  |  |  |
| P2.1.HE.6940.1070 |  | Pull Wire - In From Distribution Panels / Out to Branch Circuits / L1 / South / 6940 |  | 5d | 2025-10-07 A | 2025-10-24 A | P2.1.HE.6940.1060, P2.1.HE.6940.1080, P2.L1.S.1360 | 100% | 2025-10-01 | 2025-10-07 | 40 | ELEC | P2-5 | ELEC-2 | ND | ND |  |  |  |
| P2.1.HE.6940.1080 |  | Panelboards, Interconnect Wiring, and Remaining Room Buildout of All Systems / L1 / South / 6940 |  | 10d | 2025-10-14 A | 2025-10-24 A | BP1.262.3.100, BP1.262.3.220, P2.1.HE.6940.1060 | 100% | 2025-10-01 | 2025-10-14 | 80 | ELEC | P2-5 | ELEC-2 | ND | ND |  |  |  |
| P2.1.HE.6940.1090 |  | Test & Terminate / L1 / South / 6940 |  | 5d | 2025-11-03 A | 2025-11-07 A | P2.1.HE.6940.1070, P2.1.HE.6940.1080 | 100% | 2025-12-01 | 2025-12-05 | 40 | ELEC | P2-5 | ELEC-2 | ND | ND |  |  |  |
| P2.1.HE.6940.1100 |  | Paint - Finish Coat / L1 / South / 6940 |  | 2d | 2025-11-10 A | 2025-11-11 A | P2.1.HE.6940.1090 | 100% | 2025-12-08 | 2025-12-09 | 16 | PAINT | P2-5 | PAINT-1 | ND | ND |  |  |  |
| P2.1.HE.6940.1110 |  | Trim All MEPF Finishes / L1 / South / 6940 |  | 2d | 2025-12-01 A | 2025-12-05 A | BP1.233.3.410, P2.1.HE.6940.1100 | 100% | 2026-01-02 | 2026-01-05 | 16 | MEP | P2-5 | MEP-2 | ND | ND | O | Harris |  |
| P2.1.HE.6940.1130 |  | Doors & Hardware / L1 / South / 6940 |  | 2d | 2025-12-18 A | 2025-12-23 A | P2.1.HE.6940.1120 | 100% | 2026-01-08 | 2026-01-09 | 16 | DFH | P2-5 | DFH | ND | ND | O |  | AT29 |
| P2.1.HE.6940.1140 |  | Panels Ready to Energize - Lock Doors and Limit Access / L1 / South / 6940 | milestone | 0d | 2025-12-31 A | 2025-12-31 A | P2.1.HE.6940.1090, P2.1.HE.6940.1130 FF | 100% |  |  | 0 | ELEC | P2-5 | ELEC-2 | ND | ND | O |  |  |
| P2.1.HE.6940.1120 |  | Flooring / L1 / South / 6940 |  | 2d | 2026-02-23 A | 2026-02-26 A | P2.1.HE.6940.1110 | 100% | 2026-03-02 | 2026-03-03 | 16 | FLOOR | P2-5 | FLOOR | ND | ND | O |  |  |
|  | 9 | **House Electrical Room 1-3911** |  |  | 2025-03-24 | 2026-02-26 |  |  |  |  |  |  |  |  |  |  |  |  |  |
| P2.1.HE.3911.1070 |  | Framing and Blocking / L1 / South / 3911 |  | 3d | 2025-03-24 A | 2025-03-28 A | P2.L1.S.1090 | 100% | 2025-05-02 | 2025-05-06 | 24 | GYP | P2-5 | GYP-1 |  |  |  |  |  |
| P2.1.HE.3911.1080 |  | In Wall Rough In / L1 / South / 3911 |  | 2d | 2025-03-31 A | 2025-04-11 A | P2.1.HE.3911.1070 | 100% | 2025-05-07 | 2025-05-08 | 16 | R/I.IW | P2-5 | R/I.IW |  |  |  |  |  |
| P2.1.HE.3911.1100 |  | Inspections - Wall Close In / L1 / South / 3911 |  | 2d | 2025-04-17 A | 2025-04-18 A | P2.1.HE.3911.1080 | 100% | 2025-05-05 | 2025-05-06 | 16 | AHJ | P2-5 | AHJ |  |  |  |  |  |
| P2.1.HE.3911.1090 |  | Hang-Tape-Finish / L1 / South / 3911 |  | 5d | 2025-04-21 A | 2025-04-25 A | P2.1.HE.3911.1100 | 100% | 2025-06-17 | 2025-06-23 | 40 | GYP | P2-5 | GYP-1 |  |  |  |  |  |
| P2.1.HE.3911.1000 |  | Paint Prime & 1st Coat / L1 / South / 3911 |  | 2d | 2025-04-28 A | 2025-04-30 A | P2.1.HE.3911.1090 | 100% | 2025-06-24 | 2025-06-25 | 16 | PAINT | P2-5 | PAINT-1 |  |  |  |  |  |
| P2.1.HE.3911.1010 |  | Cans/Troughs/Backboxes/XFMRs / L1 / South / 3911 |  | 5d | 2025-06-11 A | 2025-06-12 A | P2.1.HE.3911.1000 | 100% | 2025-07-01 | 2025-07-08 | 40 | ELEC | P2-5 | ELEC-2 | ND | ND |  |  |  |
| P2.1.HE.3911.1020 |  | Risers and OH Conduit Connections / L1 / South / 3911 |  | 5d | 2025-06-16 A | 2025-06-19 A | P2.1.HE.3911.1010 | 100% | 2025-07-09 | 2025-07-15 | 40 | ELEC | P2-5 | ELEC-2 | ND | ND |  |  |  |
| P2.1.HE.3911.1030 |  | Pull Wire - In From Distribution Panels / Out to Branch Circuits / L1 / South / 3911 |  | 5d | 2025-10-06 A | 2025-10-15 A | P2.1.HE.3911.1020, P2.L1.S.1360, P2.1.HE.3911.1050 | 100% | 2025-10-01 | 2025-10-07 | 40 | ELEC | P2-5 | ELEC-2 | ND | ND |  |  |  |
| P2.1.HE.3911.1050 |  | Panelboards, Interconnect Wiring, and Remaining Room Buildout of All Systems / L1 / South / 3911 |  | 10d | 2025-10-15 A | 2025-11-04 A | BP1.262.3.100, BP1.262.3.220, P2.1.HE.3911.1020 | 100% | 2025-10-01 | 2025-10-14 | 80 | ELEC | P2-5 | ELEC-2 | ND | ND |  |  |  |
| P2.1.HE.3911.1040 |  | Test & Terminate / L1 / South / 3911 |  | 5d | 2025-11-05 A | 2025-11-11 A | P2.1.HE.3911.1050, P2.1.HE.3911.1030 | 100% | 2025-12-03 | 2025-12-09 | 40 | ELEC | P2-5 | ELEC-2 | ND | ND |  |  |  |
| P2.1.HE.3911.1110 |  | Trim All MEPF Finishes / L1 / South / 3911 |  | 2d | 2025-12-01 A | 2025-12-05 A | BP1.233.3.410, P2.1.HE.3911.1120 | 100% | 2026-01-06 | 2026-01-07 | 16 | MEP | P2-5 | MEP-2 | ND | ND | O | Harris |  |
| P2.1.HE.3911.1120 |  | Paint - Finish Coat / L1 / South / 3911 |  | 2d | 2025-12-15 A | 2025-12-16 A | P2.1.HE.3911.1040 | 100% | 2026-01-02 | 2026-01-05 | 16 | PAINT | P2-5 | PAINT-1 | ND | ND | O |  |  |
| P2.1.HE.3911.1140 |  | Doors & Hardware / L1 / South / 3911 |  | 2d | 2025-12-18 A | 2025-12-23 A | P2.1.HE.3911.1130 | 100% | 2026-01-12 | 2026-01-13 | 16 | DFH | P2-5 | DFH | ND | ND | O |  | AT29 |
| P2.1.HE.3911.1060 |  | Panels Ready to Energize - Lock Doors and Limit Access / L1 / South / 3911 | milestone | 0d | 2025-12-31 A | 2025-12-31 A | P2.1.HE.3911.1040, P2.1.HE.3911.1140 FF | 100% |  |  | 0 | ELEC | P2-5 | ELEC-2 | ND | ND | O |  |  |
| P2.1.HE.3911.1130 |  | Flooring / L1 / South / 3911 |  | 2d | 2026-02-23 A | 2026-02-26 A | P2.1.HE.3911.1110 | 100% | 2026-03-02 | 2026-03-03 | 16 | FLOOR | P2-5 | FLOOR | ND | ND | O |  |  |

| ID | WBS | Activity | Type | Duration | Start | Finish | Predecessors | Complete | Planned start | Planned finish | Temp Orig Dur | Resp / SRLM | PHASE | RESP / Trade | 744 | RESP UPD | Update Status | Z.RESP | Testing Type |
| --- | --- | --- | --- | --- | --- | --- | --- | --- | --- | --- | --- | --- | --- | --- | --- | --- | --- | --- | --- |
|  | 8 | **House Electrical Room 1-5959** |  |  | 2025-01-07 | 2026-02-26 |  |  |  |  |  |  |  |  |  |  |  |  |  |
| P2.1.HE.5959.1000 |  | Framing and Blocking / L1 / South / 5959 |  | 3d | 2025-01-07 A | 2025-03-28 A | P2.L1.S.1090 | 100% | 2025-02-03 | 2025-02-05 | 24 | GYP | P2-5 | GYP-1 |  |  |  |  |  |
| P2.1.HE.5959.1010 |  | In Wall Rough In / L1 / South / 5959 |  | 2d | 2025-01-10 A | 2025-03-31 A | P2.1.HE.5959.1000 FF+1d | 100% | 2025-01-10 | 2025-01-13 | 16 | R/I.IW | P2-5 | R/I.IW |  |  |  |  |  |
| P2.1.HE.5959.1020 |  | Inspections - Wall Close In / L1 / South / 5959 |  | 2d | 2025-04-10 A | 2025-04-10 A | P2.1.HE.5959.1010 | 100% | 2025-05-01 | 2025-05-02 | 16 | AHJ | P2-5 | AHJ |  |  |  |  |  |
| P2.1.HE.5959.1030 |  | Hang-Tape-Finish / L1 / South / 5959 |  | 5d | 2025-04-14 A | 2025-04-15 A | P2.1.HE.5959.1020, P2.FAC.2.Z1.180 | 100% | 2025-07-17 | 2025-07-23 | 40 | GYP | P2-5 | GYP-1 |  |  |  |  |  |
| P2.1.HE.5959.1040 |  | Paint Prime & 1st Coat / L1 / South / 5959 |  | 2d | 2025-04-21 A | 2025-04-22 A | P2.1.HE.5959.1030 | 100% | 2025-07-24 | 2025-07-25 | 16 | PAINT | P2-5 | PAINT-1 |  |  |  |  |  |
| P2.1.HE.5959.1050 |  | Cans/Troughs/Backboxes/XFMRs / L1 / South / 5959 |  | 5d | 2025-06-11 A | 2025-06-12 A | P2.1.HE.5959.1040 | 100% | 2025-07-01 | 2025-07-08 | 40 | ELEC | P2-5 | ELEC-2 | ND | ND |  |  |  |
| P2.1.HE.5959.1060 |  | Risers and OH Conduit Connections / L1 / South / 5959 |  | 5d | 2025-06-16 A | 2025-06-18 A | P2.1.HE.5959.1050 | 100% | 2025-07-09 | 2025-07-15 | 40 | ELEC | P2-5 | ELEC-2 | ND | ND |  |  |  |
| P2.1.HE.5959.1070 |  | Pull Wire - In From Distribution Panels / Out to Branch Circuits / L1 / South / 5959 |  | 5d | 2025-10-02 A | 2025-10-15 A | P2.1.HE.5959.1060, P2.1.HE.5959.1080, P2.L1.S.1360 | 100% | 2025-10-01 | 2025-10-07 | 40 | ELEC | P2-5 | ELEC-2 | ND | ND |  |  |  |
| P2.1.HE.5959.1080 |  | Panelboards, Interconnect Wiring, and Remaining Room Buildout of All Systems / L1 / South / 5959 |  | 10d | 2025-10-15 A | 2025-11-05 A | BP1.262.3.100, BP1.262.3.220, P2.1.HE.5959.1060 | 100% | 2025-10-01 | 2025-10-14 | 80 | ELEC | P2-5 | ELEC-2 | ND | ND |  |  |  |
| P2.1.HE.5959.1090 |  | Test & Terminate / L1 / South / 5959 |  | 5d | 2025-11-06 A | 2025-11-12 A | P2.1.HE.5959.1080, P2.1.HE.5959.1070 | 100% | 2025-12-04 | 2025-12-10 | 40 | ELEC | P2-5 | ELEC-2 | ND | ND |  |  |  |
| P2.1.HE.5959.1110 |  | Trim All MEPF Finishes / L1 / South / 5959 |  | 2d | 2025-12-08 A | 2025-12-12 A | BP1.233.3.410, P2.1.HE.5959.1100 | 100% | 2026-01-06 | 2026-01-07 | 16 | MEP | P2-5 | MEP-2 | ND | ND | O | Harris |  |
| P2.1.HE.5959.1100 |  | Paint - Finish Coat / L1 / South / 5959 |  | 2d | 2025-12-16 A | 2025-12-17 A | P2.1.HE.5959.1090 | 100% | 2026-01-02 | 2026-01-05 | 16 | PAINT | P2-5 | PAINT-1 | ND | ND | O |  |  |
| P2.1.HE.5959.1130 |  | Doors & Hardware / L1 / South / 5959 |  | 2d | 2025-12-18 A | 2025-12-23 A | P2.1.HE.5959.1120 | 100% | 2026-01-12 | 2026-01-13 | 16 | DFH | P2-5 | DFH | ND | ND | O |  | AT29 |
| P2.1.HE.5959.1140 |  | Panels Ready to Energize - Lock Doors and Limit Access / L1 / South / 5959 | milestone | 0d | 2025-12-31 A | 2025-12-31 A | P2.1.HE.5959.1090, P2.1.HE.5959.1130 FF | 100% |  |  | 0 | ELEC | P2-5 | ELEC-2 | ND | ND | O |  |  |
| P2.1.HE.5959.1120 |  | Flooring / L1 / South / 5959 |  | 2d | 2026-02-23 A | 2026-02-26 A | P2.1.HE.5959.1110 | 100% | 2026-03-02 | 2026-03-03 | 16 | FLOOR | P2-5 | FLOOR | ND | ND | O |  |  |
|  | 7 | **House Electrical Room 1-2950** |  |  | 2025-01-16 | 2026-03-13 |  |  |  |  |  |  |  |  |  |  |  |  |  |
| P2.1.HE.2950.1000 |  | Framing and Blocking / L1 / North / 2950 |  | 3d | 2025-01-16 A | 2025-03-01 A | P2.L1.N.1090 SS | 100% | 2025-02-10 | 2025-02-12 | 24 | GYP | P2-5 | GYP-1 |  |  |  |  |  |
| P2.1.HE.2950.1010 |  | In Wall Rough In / L1 / North / 2950 |  | 2d | 2025-01-21 A | 2025-03-31 A | P2.1.HE.2950.1000 FF+1d | 100% | 2025-02-13 | 2025-02-14 | 16 | R/I.IW | P2-5 | R/I.IW |  |  |  |  |  |
| P2.1.HE.2950.1020 |  | Inspections - Wall Close In / L1 / North / 2950 |  | 2d | 2025-04-10 A | 2025-04-10 A | P2.1.HE.2950.1010 | 100% | 2025-05-01 | 2025-05-02 | 16 | AHJ | P2-5 | AHJ |  |  |  |  |  |
| P2.1.HE.2950.1030 |  | Hang-Tape-Finish / L1 / North / 2950 |  | 5d | 2025-04-14 A | 2025-04-17 A | P2.1.HE.2950.1020 | 100% | 2025-05-13 | 2025-05-19 | 40 | GYP | P2-5 | GYP-1 |  |  |  |  |  |
| P2.1.HE.2950.1040 |  | Paint Prime & 1st Coat / L1 / North / 2950 |  | 2d | 2025-04-21 A | 2025-04-23 A | P2.1.HE.2950.1030 | 100% | 2025-05-20 | 2025-05-21 | 16 | PAINT | P2-5 | PAINT-1 |  |  |  |  |  |
| P2.1.HE.2950.1050 |  | Cans/Troughs/Backboxes/XFMRs / L1 / North / 2950 |  | 2d | 2025-04-24 A | 2025-05-01 A | P2.1.HE.2950.1040 | 100% | 2025-05-13 | 2025-05-14 | 40 | ELEC | P2-5 | ELEC-2 | ND | ND |  |  |  |
| P2.1.HE.2950.1060 |  | Risers and OH Conduit Connections / L1 / North / 2950 |  | 5d | 2025-05-01 A | 2025-05-06 A | P2.1.HE.2950.1050 | 100% | 2025-07-02 | 2025-07-09 | 40 | ELEC | P2-5 | ELEC-2 | ND | ND |  |  |  |
| P2.1.HE.2950.1070 |  | Pull Wire - In From Distribution Panels / Out to Branch Circuits / L1 / North / 2950 |  | 5d | 2025-10-13 A | 2025-10-24 A | P2.1.HE.2950.1060, P2.1.HE.2950.1080, P2.L1.N.1360 | 100% | 2025-10-01 | 2025-10-07 | 40 | ELEC | P2-5 | ELEC-2 | ND | ND |  |  |  |
| P2.1.HE.2950.1080 |  | Panelboards, Interconnect Wiring, and Remaining Room Buildout of All Systems / L1 / North / 2950 |  | 10d | 2025-10-24 A | 2025-11-07 A | BP1.262.3.100, BP1.262.3.220, P2.1.HE.2950.1060 | 100% | 2025-10-01 | 2025-10-14 | 80 | ELEC | P2-5 | ELEC-2 | ND | ND |  |  |  |
| P2.1.HE.2950.1090 |  | Test & Terminate / L1 / North / 2950 |  | 5d | 2025-11-10 A | 2025-11-14 A | P2.1.HE.2950.1070, P2.1.HE.2950.1080 | 100% | 2025-12-08 | 2025-12-12 | 40 | ELEC | P2-5 | ELEC-2 | ND | ND |  |  |  |
| P2.1.HE.2950.1100 |  | Paint - Finish Coat / L1 / North / 2950 |  | 2d | 2025-12-17 A | 2025-12-18 A | P2.1.HE.2950.1090 | 100% | 2026-01-30 | 2026-02-02 | 16 | PAINT | P2-5 | PAINT-1 | ND | ND | O |  |  |
| P2.1.HE.2950.1130 |  | Doors & Hardware / L1 / North / 2950 |  | 2d | 2025-12-18 A | 2025-12-23 A | P2.1.HE.2950.1120 | 100% | 2026-02-09 | 2026-02-10 | 16 | DFH | P2-5 | DFH | ND | ND | O |  | AT29 |
| P2.1.HE.2950.1110 |  | Trim All MEPF Finishes / L1 / North / 2950 |  | 2d | 2026-01-23 A | 2026-01-30 A | BP1.233.3.410, P2.1.HE.2950.1100 | 100% | 2026-01-30 | 2026-02-02 | 16 | MEP | P2-5 | MEP-2 | ND | ND | O | Harris |  |
| P2.1.HE.2950.1120 |  | Flooring / L1 / North / 2950 |  | 2d | 2026-02-23 A | 2026-02-26 A | P2.1.HE.2950.1110 | 100% | 2026-03-30 | 2026-03-31 | 16 | FLOOR | P2-5 | FLOOR | ND | ND | O |  |  |
| P2.1.HE.2950.1140 |  | Panels Ready to Energize - Lock Doors and Limit Access / L1 / North / 2950 | milestone | 0d | 2026-03-13 A | 2026-03-13 A | P2.1.HE.2950.1090, P2.1.HE.2950.1130 FF | 100% | 2026-03-31 | 2026-03-31 | 0 | ELEC | P2-5 | ELEC-2 | ND | ND | O |  |  |

| ID | WBS | Activity | Type | Duration | Start | Finish | Predecessors | Complete | Planned start | Planned finish | Total float | Free float | Temp Orig Dur | Resp / SRLM | PHASE | RESP / Trade | 744 | RESP UPD | Update Status | Z.RESP | Testing Type |
| --- | --- | --- | --- | --- | --- | --- | --- | --- | --- | --- | --- | --- | --- | --- | --- | --- | --- | --- | --- | --- | --- |
|  | 6 | **House Electrical Room 1-2803** |  |  | 2025-01-16 | 2026-02-26 |  |  |  |  |  |  |  |  |  |  |  |  |  |  |  |
| P2.1.HE.2803.1000 |  | Framing and Blocking / L1 / North / 2803 |  | 3d | 2025-01-16 A | 2025-03-01 A | P2.L1.N.1090 SS | 100% | 2025-02-10 | 2025-02-12 |  |  | 24 | GYP | P2-5 | GYP-1 |  |  |  |  |  |
| P2.1.HE.2803.1010 |  | In Wall Rough In / L1 / North / 2803 |  | 2d | 2025-01-21 A | 2025-03-31 A | P2.1.HE.2803.1000 FF+1d | 100% | 2025-02-13 | 2025-02-14 |  |  | 16 | R/I.IW | P2-5 | R/I.IW |  |  |  |  |  |
| P2.1.HE.2803.1020 |  | Inspections - Wall Close In / L1 / North / 2803 |  | 2d | 2025-04-17 A | 2025-04-17 A | P2.1.HE.2803.1010 FF+1d | 100% | 2025-02-17 | 2025-02-18 |  |  | 16 | AHJ | P2-5 | AHJ |  |  |  |  |  |
| P2.1.HE.2803.1030 |  | Hang-Tape-Finish / L1 / North / 2803 |  | 5d | 2025-04-21 A | 2025-04-25 A | P2.1.HE.2803.1020 | 100% | 2025-06-24 | 2025-06-30 |  |  | 40 | GYP | P2-5 | GYP-1 |  |  |  |  |  |
| P2.1.HE.2803.1040 |  | Paint Prime & 1st Coat / L1 / North / 2803 |  | 2d | 2025-05-26 A | 2025-05-30 A | P2.1.HE.2803.1030 | 100% | 2025-06-02 | 2025-06-03 |  |  | 16 | PAINT | P2-5 | PAINT-1 |  |  |  |  |  |
| P2.1.HE.2803.1050 |  | Cans/Troughs/Backboxes/XFMRs / L1 / North / 2803 |  | 5d | 2025-06-10 A | 2025-06-12 A | P2.1.HE.2803.1040 | 100% | 2025-07-01 | 2025-07-08 |  |  | 40 | ELEC | P2-5 | ELEC-2 | ND | ND |  |  |  |
| P2.1.HE.2803.1060 |  | Risers and OH Conduit Connections / L1 / North / 2803 |  | 5d | 2025-06-12 A | 2025-06-17 A | P2.1.HE.2803.1050 | 100% | 2025-07-09 | 2025-07-15 |  |  | 40 | ELEC | P2-5 | ELEC-2 | ND | ND |  |  |  |
| P2.1.HE.2803.1070 |  | Pull Wire - In From Distribution Panels / Out to Branch Circuits / L1 / North / 2803 |  | 5d | 2025-11-03 A | 2025-11-07 A | P2.1.HE.2803.1060, P2.1.HE.2803.1080, P2.L1.N.1360 | 100% | 2025-12-01 | 2025-12-05 |  |  | 40 | ELEC | P2-5 | ELEC-2 | ND | ND |  |  |  |
| P2.1.HE.2803.1080 |  | Panelboards, Interconnect Wiring, and Remaining Room Buildout of All Systems / L1 / North / 2803 |  | 10d | 2025-11-03 A | 2025-11-14 A | BP1.262.3.100, BP1.262.3.220, P2.1.HE.2803.1060 | 100% | 2025-12-01 | 2025-12-12 |  |  | 80 | ELEC | P2-5 | ELEC-2 | ND | ND |  |  |  |
| P2.1.HE.2803.1090 |  | Test & Terminate / L1 / North / 2803 |  | 5d | 2025-12-01 A | 2025-12-05 A | P2.1.HE.2803.1070, P2.1.HE.2803.1080 | 100% | 2026-01-30 | 2026-02-05 |  |  | 40 | ELEC | P2-5 | ELEC-2 | ND | ND | O |  |  |
| P2.1.HE.2803.1110 |  | Trim All MEPF Finishes / L1 / North / 2803 |  | 2d | 2025-12-15 A | 2025-12-19 A | BP1.233.3.410, P2.1.HE.2803.1100 | 100% | 2026-02-10 | 2026-02-11 |  |  | 16 | MEP | P2-5 | MEP-2 | ND | ND | O | Harris |  |
| P2.1.HE.2803.1100 |  | Paint - Finish Coat / L1 / North / 2803 |  | 2d | 2025-12-18 A | 2025-12-19 A | P2.1.HE.2803.1090 | 100% | 2026-02-06 | 2026-02-09 |  |  | 16 | PAINT | P2-5 | PAINT-1 | ND | ND | O |  |  |
| P2.1.HE.2803.1130 |  | Doors & Hardware / L1 / North / 2803 |  | 2d | 2025-12-18 A | 2025-12-23 A | P2.1.HE.2803.1120 | 100% | 2026-02-16 | 2026-02-17 |  |  | 16 | DFH | P2-5 | DFH | ND | ND | O |  | AT29 |
| P2.1.HE.2803.1140 |  | Panels Ready to Energize - Lock Doors and Limit Access / L1 / North / 2803 | milestone | 0d | 2025-12-31 A | 2025-12-31 A | P2.1.HE.2803.1090, P2.1.HE.2803.1130 FF | 100% |  |  |  |  | 0 | ELEC | P2-5 | ELEC-2 | ND | ND | O |  |  |
| P2.1.HE.2803.1120 |  | Flooring / L1 / North / 2803 |  | 2d | 2026-02-23 A | 2026-02-26 A | P2.1.HE.2803.1110 | 100% | 2026-03-30 | 2026-03-31 |  |  | 16 | FLOOR | P2-5 | FLOOR | ND | ND | O |  |  |
|  | 1 | **Fire Pump Room 1-6950** |  |  | 2025-07-03 | 2026-04-21 |  |  |  |  |  |  |  |  |  |  |  |  |  |  |  |
| P2.1.FP.6950.1020 |  | FRP Equip Pads / L1 / South / 6950 |  | 3d | 2025-07-03 A | 2025-07-08 A | P2.L1.S.1420 | 100% | 2025-08-05 | 2025-08-07 |  |  | 24 | STRCONC | P2-5 | STRCONC | FM | FM |  |  | AT58 |
| P2.1.FP.6950.1010 |  | Set Fire Pump and Supporting Equipment / L1 / South / 6950 |  | 5d | 2025-08-05 A | 2025-08-11 A | P2.1.FP.6950.1020, BP1.210.3.200 | 100% |  |  |  |  | 40 | FP | P2-5 | FP-1 | FM | FM |  |  |  |
| P2.1.FP.6950.1030 |  | Fire Suppression Piping and Connections / L1 / South / 6950 |  | 10d | 2025-08-15 A | 2025-08-28 A | P2.1.FP.6950.1010 | 100% |  |  |  |  | 80 | FP | P2-5 | FP-1 | FM | FM |  |  |  |
| P2.1.FP.6950.1050 |  | Fire Alarm Connections to Fire Pump and Supporting Equipment / L1 / South / 6950 |  | 5d | 2025-08-26 A | 2026-02-20 A | P2.1.FP.6950.1030 FF+2d | 100% | 2025-08-26 | 2025-09-02 |  |  | 40 | FA | P2-5 | FA-1 | FM | JH | O |  |  |
| P2.1.FP.6950.1000 |  | Paint Prime & 1st Coat / L1 / South / 6950 |  | 2d | 2026-04-01 | 2026-04-02 | P2.L1.S.1110 |  |  |  | 162d | 0d | 16 | PAINT | P2-5 | PAINT-1 | FM | JH | O |  |  |
| P2.1.FP.6950.1040 |  | Electrical Connections to Fire Pump and Supporting Equipment / L1 / South / 6950 |  | 10d | 2026-04-01 | 2026-04-14 | P2.1.FP.6950.1010 |  |  |  | 157d | 0d | 40 | ELEC | P2-5 | ELEC-2 | FM | JH | O |  |  |
| P2.1.FP.6950.1070 |  | Flooring Prep - Epoxy Floors / L1 / South / 6950 |  | 2d | 2026-04-03 | 2026-04-06 | P2.1.FP.6950.1000, P2.1.FP.6950.1010, P2.1.FP.6950.1020, BP7.096.3.200 |  |  |  | 162d | 0d | 16 | EPOXYF | P2-5 | EPOXYF | FM | JH | O |  |  |
| P2.1.FP.6950.1080 |  | Flooring - Epoxy Floors / L1 / South / 6950 |  | 1d | 2026-04-07 | 2026-04-07 | P2.1.FP.6950.1070 |  |  |  | 162d | 5d | 16 | EPOXYF | P2-5 | EPOXYF | FM | JH | O |  |  |
| P2.1.FP.6950.1060 |  | Initial Start Up Fire Pump and Supporting Equipment / L1 / South / 6950 |  | 5d | 2026-04-15 | 2026-04-21 | P2.1.FP.6950.1040, P2.1.FP.6950.1050, P2.1.FP.6950.1080 |  |  |  | 157d | 45d | 40 | FP | P2-5 | FP-1 | FM | JH | O |  |  |

| ID | WBS | Activity | Duration | Start | Finish | Predecessors | Total float | Free float | Pick | Temp Orig Dur | Resp / SRLM | PHASE | RESP UPD | RESP / Trade | *NIH Resp Check* | Z.RESP | Testing Type |
| --- | --- | --- | --- | --- | --- | --- | --- | --- | --- | --- | --- | --- | --- | --- | --- | --- | --- |
|  | 4 | **FINISHES - Core & Support Spaces / Level 1** |  | 2025-03-13 | 2026-12-09 |  |  |  |  |  |  |  |  |  |  |  |  |
|  | 7KSF | **Lobby - Storage - Support Areas (5.5K SF) / Level 1** |  | 2026-04-20 | 2026-12-04 |  |  |  |  |  |  |  |  |  |  |  |  |
|  | 1 | **Finishes** |  | 2026-04-20 | 2026-12-04 |  |  |  |  |  |  |  |  |  |  |  |  |
| P2.L1.F.CS.1000 |  | Paint Prime & 1st Coat Walls / L1 / Lobby,Storage | 5d | 2026-04-20 | 2026-04-24 | P2.L1.F.CS.2000, P2.L1.N.1470 | 20d | 0d | From R/I Work Completion | 40 | PAINT | P2-5 | JH | PAINT-1 |  |  |  |
| P2.L1.F.CS.1020 |  | R/I - Ceiling Assemblies & Supports - All Trades (A/V, Oper Part, Glass Part, etc.) / L1 / Lobby,Storage | 5d | 2026-04-27 | 2026-05-01 | P2.L1.F.CS.1000 | 53d | 0d |  | 40 | ACT | P2-5 | JH | ACT | ! |  |  |
| P2.L1.F.CS.1010 |  | T-Grid / L1 / Lobby,Storage | 5d | 2026-05-04 | 2026-05-08 | P2.L1.F.CS.1020 | 53d | 0d |  | 40 | ACT | P2-5 | JH | ACT |  |  |  |
| P2.L1.F.CS.1050 |  | Sprinkler Heads in T-Grid / L1 / Lobby,Storage | 5d | 2026-05-11 | 2026-05-15 | P2.L1.F.CS.1010 | 53d | 0d |  | 40 | FP | P2-5 | JH | FP-1 |  |  |  |
| P2.L1.F.CS.1030 |  | Diffusers in T-Grid / L1 / Lobby,Storage | 5d | 2026-05-18 | 2026-05-22 | P2.L1.F.CS.1010, P2.L1.F.CS.1050 | 53d | 0d |  | 40 | HVAC | P2-5 | JH | HVAC |  | Harris |  |
| P2.L1.F.CS.1040 |  | Lights & Elec Devices in T-Grid / L1 / Lobby,Storage | 5d | 2026-05-26 | 2026-06-01 | BP1.265.3.100, P2.L1.F.CS.1010, P2.L1.F.CS.1030 | 53d | 0d |  | 40 | ELEC | P2-5 | JH | ELEC-2 |  |  |  |
| P2.L1.F.CS.1070 |  | Fire Alarm in T-Grid / L1 / Lobby,Storage | 5d | 2026-06-02 | 2026-06-08 | P2.L1.F.CS.1010, P2.L1.F.CS.1040 | 53d | 0d |  | 40 | FA | P2-5 | JH | FA-1 |  |  |  |
| P2.L1.F.CS.1060 |  | Low Voltage in T-Grid / L1 / Lobby,Storage | 5d | 2026-06-09 | 2026-06-15 | P2.L1.F.CS.1070, P2.L1.F.CS.1010 | 53d | 0d |  | 40 | LOWVOLT | P2-5 | JH | LOWVOLT-1 |  |  |  |
| P2.L1.F.LC.3420 |  | Casework (Before Flooring) / L1 / Lobby - Storage | 5d | 2026-06-16 | 2026-06-22 | P2.L1.S.1470, P2.L1.F.CS.1060, P2.L1.F.CS.1000, BP6.123.3.100 | 53d | 0d |  | 120 | LABCASE | P2-5 | JH | LABCASE |  |  |  |
| P2.L1.F.LC.2450 |  | Fumehood Equipment Install / L1 / Chem Storage 1-6920 | 1d | 2026-06-22 | 2026-06-22 | P2.L1.F.LC.3420 FF | 53d | 0d |  | 120 | LABCASE | P2-5 | JH | LABCASE |  |  |  |
| P2.L1.F.LC.2460 |  | Fumehood Equipment MEP Connection / L1 / Chem Storage 1-6920 | 5d | 2026-06-23 | 2026-06-29 | P2.L1.F.LC.2450 | 53d | 0d |  | 120 | LABCASE | P2-5 | JH | LABCASE |  |  |  |
| P2.L1.F.CS.1080 |  | OH Ceiling Signoff / L1 / Lobby,Storage | 5d | 2026-06-30 | 2026-07-07 | P2.L1.F.CS.1070, P2.L1.F.CS.1060, P2.L1.F.CS.1050, P2.L1.F.CS.1030, P2.L1.F.CS.1040, P2.L1.F.LC.2460 | 53d | 0d |  | 40 | MEP | P2-5 | JH | MEP |  | Harris |  |
| P2.L1.F.CS.1090 |  | Millwork / L1 / Lobby,Storage | 5d | 2026-07-08 | 2026-07-14 | P2.L1.F.CS.1080, BP7.062.3.100 | 53d | 0d |  | 40 | MILL | P2-5 | JH | MILL |  |  |  |
| P2.L1.F.CS.1100 |  | Plumbing Fixtures / L1 / Lobby,Storage | 5d | 2026-07-08 | 2026-07-14 | P2.L1.F.CS.1090 FF, P2.L1.F.CS.1080 | 118d | 65d |  | 40 | PLMB | P2-5 | JH | PLMB |  | Harris |  |
| P2.L1.F.CS.1110 |  | Drop Ceiling Tile / L1 / Lobby,Storage | 5d | 2026-07-15 | 2026-07-21 | P2.L1.F.CS.1080, P2.L1.F.CS.1090, P2.L1.F.LC.2460 | 53d | 0d |  | 40 | ACT | P2-5 | JH | ACT |  |  |  |
| P2.L1.F.CS.1120 |  | Floor Prep / L1 / Lobby,Storage | 5d | 2026-07-22 | 2026-07-28 | P2.L1.F.CS.1110, P2.L1.F.CS.1090, P2.L1.F.LC.3420 | 53d | 0d |  | 40 | FLOOR | P2-5 | JH | FLOOR |  |  |  |
| P2.L1.F.CS.2300 |  | Floor Prep - Epoxy Floors / L1 / Chem Storage 1-6920 | 2d | 2026-07-22 | 2026-07-23 | P2.L1.F.CS.1110, P2.L1.F.LC.3420 | 60d | 0d |  | 40 | EPOXYF | P2-5 | JH | EPOXYF |  |  |  |
| P2.L1.F.CS.2310 |  | Floor Finishes - Epoxy Floors / L1 / Chem Storage 1-6920 | 1d | 2026-07-24 | 2026-07-24 | P2.L1.F.CS.2300 | 60d | 7d |  | 40 | EPOXYF | P2-5 | JH | EPOXYF |  |  |  |
| P2.L1.F.CS.1130 |  | Floor Finishes / L1 / Lobby,Storage | 5d | 2026-07-29 | 2026-08-04 | P2.L1.F.CS.1120, BP7.093.3.100 | 53d | 0d |  | 40 | FLOOR | P2-5 | JH | FLOOR |  |  |  |
| P2.L1.F.LC.3430 |  | Casework (After Flooring) / L1 / Lobby - Storage | 5d | 2026-08-05 | 2026-08-11 | P2.L1.F.CS.1130, P2.L1.F.CS.2310, P2.L1.F.CS.1000 | 53d | 0d |  | 120 | LABCASE | P2-5 | JH | LABCASE |  |  |  |
| P2.L1.F.CS.1140 |  | Doors & Hardware / L1 / Lobby,Storage | 5d | 2026-08-12 | 2026-08-18 | P2.L1.F.CS.1130, P2.L1.F.LC.3430, P2.L1.F.CS.2310 | 53d | 0d |  | 40 | DFH | P2-5 | JH | DFH |  |  | AT29 |
| P2.L1.F.CS.1150 |  | Paint - Finish Coat / L1 / Lobby,Storage | 5d | 2026-08-19 | 2026-08-25 | P2.L1.F.CS.1130, P2.L1.F.CS.1140, P2.L1.F.CS.2310, P2.L1.F.LC.3430 | 53d | 0d |  | 40 | PAINT | P2-5 | JH | PAINT-1 |  |  |  |
| P2.L1.F.CS.1190 |  | Interior Building Signage / L1 / Lobby,Storage | 5d | 2026-08-26 | 2026-09-01 | BP7.100.3.110, BP7.101.3.100, P2.L1.F.CS.1150 | 83d | 30d |  | 40 | SIGN | P2-5 | JH | SIGN |  |  |  |
| P2.L1.F.CS.1200 |  | Floor Base / L1 / Lobby,Storage | 5d | 2026-08-26 | 2026-09-01 | P2.L1.F.CS.1150 | 53d | 0d |  | 40 | FLOOR | P2-5 | JH | FLOOR |  |  |  |
| P2.L1.F.CS.1210 |  | Demountable Partitions / L1 / Lobby,Storage | 5d | 2026-09-02 | 2026-09-09 | BP7.102.3.130, P2.L1.F.CS.1200 | 53d | 0d |  | 40 | DPART | P2-5 | JH | DPART | TBD |  |  |
| P2.L1.F.CS.1180 |  | Building Specialities / L1 / Lobby,Storage | 5d | 2026-09-10 | 2026-09-16 | BP4.055.3.520, BP7.057.3.100, P2.L1.F.CS.1210, BP7.088.3.100, P2.L1.F.CS.1150, P2.L1.F.CS.1200 | 53d | 0d |  | 40 | SPECIAL | P2-5 | JH | SPECIAL |  |  |  |
| P2.L1.F.CS.1170 |  | Trim T-Stats / L1 / Lobby,Storage | 5d | 2026-09-17 | 2026-09-23 | P2.L1.F.CS.1180, P2.L1.F.CS.1150 | 53d | 0d |  | 40 | BAS | P2-5 | JH | BAS-1 |  | Harris |  |
| P2.L1.F.CS.1160 |  | Set AV/IT Devices and Configure / L1 / Lobby,Storage | 5d | 2026-09-24 | 2026-09-30 | BP1.274.3.100, BP1.271.3.110, P2.L1.F.CS.1170, P2.L1.F.CS.1150 | 53d | 0d |  | 40 | LOWVOLT | P2-5 | JH | LOWVOLT-1 |  |  |  |
| P2.L1.F.CS.1220 |  | Trim Electrical / L1 / Lobby,Storage | 5d | 2026-10-01 | 2026-10-07 | P2.L1.F.CS.1160, P2.L1.F.CS.1210, P2.L1.F.CS.1170 SS | 53d | 0d |  | 40 | ELEC | P2-5 | JH | ELEC-2 |  |  |  |
| P2.L1.F.CS.1230 |  | Trim Telephone/ Data / L1 / Lobby,Storage | 5d | 2026-10-08 | 2026-10-14 | P2.L1.F.CS.1220, P2.L1.F.CS.1220 SS | 53d | 0d |  | 40 | LOWVOLT | P2-5 | JH | LOWVOLT-1 |  |  |  |
| P2.L1.F.CS.1240 |  | Work Completion List - Finishes / L1 / Lobby,Storage | 5d | 2026-10-15 | 2026-10-21 | P2.L1.F.CS.1190, P2.L1.F.CS.1140, P2.L1.F.CS.1230, P2.L1.F.CS.1180, P2.L1.F.CS.1100, P2.L1.F.CS.1160, P2.L1.F.LC.3430 | 53d | 0d |  | 40 | FINISH | P2-5 | JH | FINISH |  |  |  |
| P2.L1.F.CS.1250 |  | Rough Clean / L1 / Lobby,Storage | 5d | 2026-10-22 | 2026-10-28 | P2.L1.F.CS.1240 | 53d | 0d |  | 40 | FCLEAN | P2-5 | JH | FCLEAN |  |  |  |
| P2.L1.F.CS.1260 |  | FF&E / L1 / Lobby,Storage | 5d | 2026-10-29 | 2026-11-04 | P2.L1.F.CS.1250 | 53d | 0d |  | 40 | FURN | P2-5 | JH | FURN |  |  |  |
| P2.L1.F.CS.1270 |  | Prepare Punchlist / L1 / Lobby,Storage | 5d | 2026-11-05 | 2026-11-11 | P2.L1.F.CS.1260 | 53d | 0d |  | 40 | QC | P2-5 | JH | QC |  |  |  |
| P2.L1.F.CS.1280 |  | Correct Punchlist / L1 / Lobby,Storage | 10d | 2026-11-12 | 2026-11-25 | P2.L1.F.CS.1270 | 53d | 0d |  | 80 | FINISH | P2-5 | JH | FINISH |  |  |  |
| P2.L1.F.CS.1290 |  | Final Clean / L1 / Lobby,Storage | 5d | 2026-11-30 | 2026-12-04 | P2.L1.F.CS.1280 | 53d | 65d | To QC | 40 | QC | P2-5 | JH | QC |  |  |  |

| ID | WBS | Activity | Duration | Start | Finish | Predecessors | Total float | Free float | Pick | Temp Orig Dur | Resp / SRLM | PHASE | RESP UPD | RESP / Trade | *NIH Resp Check* | Z.RESP | Testing Type |
| --- | --- | --- | --- | --- | --- | --- | --- | --- | --- | --- | --- | --- | --- | --- | --- | --- | --- |
|  | 2 | **Closeout** |  |  |  |  |  |  |  |  |  |  |  |  |  |  |  |
|  | 7KSF1 | **Offices (7K SF) / Level 1** |  | 2026-04-13 | 2026-10-21 |  |  |  |  |  |  |  |  |  |  |  |  |
|  | 1 | **Finishes** |  | 2026-04-13 | 2026-10-21 |  |  |  |  |  |  |  |  |  |  |  |  |
| P2.L1.F.CS.2000 |  | Paint Prime & 1st Coat Walls / L1 / Offices | 5d | 2026-04-13 | 2026-04-17 | P2.L1.N.1470 | 20d | 0d | From R/I Work Completion | 40 | PAINT | P2-5 | JH | PAINT-1 |  |  |  |
| P2.L1.F.CS.2020 |  | R/I - Ceiling Assemblies & Supports - All Trades (A/V, Oper Part, Glass Part, etc.) / L1 / Offices | 5d | 2026-04-20 | 2026-04-24 | P2.L1.F.CS.2000 | 83d | 0d |  | 40 | ACT | P2-5 | JH | ACT | ! |  |  |
| P2.L1.F.CS.2010 |  | T-Grid / L1 / Offices | 5d | 2026-04-27 | 2026-05-01 | P2.L1.F.CS.2020 | 83d | 0d |  | 40 | ACT | P2-5 | JH | ACT |  |  |  |
| P2.L1.F.CS.2050 |  | Sprinkler Heads in T-Grid / L1 / Offices | 5d | 2026-05-04 | 2026-05-08 | P2.L1.F.CS.2010 FF, P2.L1.F.CS.2010 | 83d | 0d |  | 40 | FP | P2-5 | JH | FP-1 |  |  |  |
| P2.L1.F.CS.2030 |  | Diffusers in T-Grid / L1 / Offices | 5d | 2026-05-11 | 2026-05-15 | P2.L1.F.CS.2010, P2.L1.F.CS.2050 | 83d | 0d |  | 40 | HVAC | P2-5 | JH | HVAC |  | Harris |  |
| P2.L1.F.CS.2040 |  | Lights & Elec Devices in T-Grid / L1 / Offices | 5d | 2026-05-18 | 2026-05-22 | P2.L1.F.CS.2010, P2.L1.F.CS.2030 | 83d | 0d |  | 40 | ELEC | P2-5 | JH | ELEC-2 |  |  |  |
| P2.L1.F.CS.2070 |  | Fire Alarm in T-Grid / L1 / Offices | 5d | 2026-05-26 | 2026-06-01 | P2.L1.F.CS.2010, P2.L1.F.CS.2040 | 83d | 0d |  | 40 | FA | P2-5 | JH | FA-1 |  |  |  |
| P2.L1.F.CS.2060 |  | Low Voltage in T-Grid / L1 / Offices | 5d | 2026-06-02 | 2026-06-08 | P2.L1.F.CS.2070, P2.L1.F.CS.2010 | 83d | 0d |  | 40 | LOWVOLT | P2-5 | JH | LOWVOLT-1 |  |  |  |
| P2.L1.F.CS.2080 |  | OH Ceiling Signoff / L1 / Offices | 5d | 2026-06-09 | 2026-06-15 | P2.L1.F.CS.2070, P2.L1.F.CS.2060, P2.L1.F.CS.2050, P2.L1.F.CS.2030, P2.L1.F.CS.2040 | 83d | 0d |  | 40 | MEP | P2-5 | JH | MEP |  | Harris |  |
| P2.L1.F.CS.2090 |  | Millwork / L1 / Offices | 5d | 2026-06-16 | 2026-06-22 | P2.L1.F.CS.2080 | 83d | 0d |  | 40 | MILL | P2-5 | JH | MILL |  |  |  |
| P2.L1.F.CS.2100 |  | Plumbing Fixtures / L1 / Offices | 5d | 2026-06-16 | 2026-06-22 | P2.L1.F.CS.2090 FF, P2.L1.F.CS.2080 | 83d | 0d |  | 40 | PLMB | P2-5 | JH | PLMB |  | Harris |  |
| P2.L1.F.CS.2110 |  | Drop Ceiling Tile / L1 / Offices | 5d | 2026-06-23 | 2026-06-29 | P2.L1.F.CS.2100, P2.L1.F.CS.2080 | 83d | 0d |  | 40 | ACT | P2-5 | JH | ACT |  |  |  |
| P2.L1.F.CS.2120 |  | Floor Prep / L1 / Offices | 5d | 2026-06-30 | 2026-07-07 | P2.L1.F.CS.2110, P2.L1.F.CS.2090 | 83d | 0d |  | 40 | FLOOR | P2-5 | JH | FLOOR |  |  |  |
| P2.L1.F.CS.2130 |  | Floor Finishes / L1 / Offices | 5d | 2026-07-08 | 2026-07-14 | BP7.096.3.100, P2.L1.F.CS.2120, BP2.079.3.100 | 83d | 0d |  | 40 | FLOOR | P2-5 | JH | FLOOR |  |  |  |
| P2.L1.F.CS.2140 |  | Doors & Hardware / L1 / Offices | 5d | 2026-07-15 | 2026-07-21 | P2.L1.F.CS.2130 | 83d | 0d |  | 40 | DFH | P2-5 | JH | DFH |  |  | AT29 |
| P2.L1.F.CS.2150 |  | Paint - Finish Coat / L1 / Offices | 5d | 2026-07-22 | 2026-07-28 | P2.L1.F.CS.2130, P2.L1.F.CS.2140 | 83d | 0d |  | 40 | PAINT | P2-5 | JH | PAINT-1 |  |  |  |
| P2.L1.F.CS.2200 |  | Floor Base / L1 / Offices | 5d | 2026-07-29 | 2026-08-04 | P2.L1.F.CS.2150 | 83d | 0d |  | 40 | FLOOR | P2-5 | JH | FLOOR |  |  |  |
| P2.L1.F.CS.2170 |  | Trim T-Stats / L1 / Offices | 5d | 2026-08-05 | 2026-08-11 | P2.L1.F.CS.2150, P2.L1.F.CS.2200 | 83d | 0d |  | 40 | BAS | P2-5 | JH | BAS-1 |  | Harris |  |
| P2.L1.F.CS.2210 |  | Demountable Partitions / L1 / Offices | 5d | 2026-08-05 | 2026-08-11 | P2.L1.F.CS.2200 | 88d | 5d |  | 40 | DPART | P2-5 | JH | DPART | TBD |  |  |
| P2.L1.F.CS.2160 |  | Set AV/IT Devices and Configure / L1 / Offices | 5d | 2026-08-12 | 2026-08-18 | P2.L1.F.CS.2170, P2.L1.F.CS.2150 | 83d | 0d |  | 40 | LOWVOLT | P2-5 | JH | LOWVOLT-1 |  |  |  |
| P2.L1.F.CS.2180 |  | Building Specialities / L1 / Offices | 5d | 2026-08-19 | 2026-08-25 | P2.L1.F.CS.2160, P2.L1.F.CS.2150 | 83d | 0d |  | 40 | SPECIAL | P2-5 | JH | SPECIAL |  |  |  |
| P2.L1.F.CS.2220 |  | Trim Electrical / L1 / Offices | 5d | 2026-08-19 | 2026-08-25 | P2.L1.F.CS.2160, P2.L1.F.CS.2210, P2.L1.F.CS.2170 SS | 83d | 0d |  | 40 | ELEC | P2-5 | JH | ELEC-2 |  |  |  |
| P2.L1.F.CS.2190 |  | Interior Building Signage / L1 / Offices | 5d | 2026-08-26 | 2026-09-01 | BP7.100.3.110, P2.L1.F.CS.2180, P2.L1.F.CS.2150, P2.L1.F.CS.2200 | 83d | 0d |  | 40 | SIGN | P2-5 | JH | SIGN |  |  |  |
| P2.L1.F.CS.2230 |  | Trim Telephone/ Data / L1 / Offices | 5d | 2026-08-26 | 2026-09-01 | P2.L1.F.CS.2220, P2.L1.F.CS.2220 SS | 83d | 0d |  | 40 | LOWVOLT | P2-5 | JH | LOWVOLT-1 |  |  |  |
| P2.L1.F.CS.2240 |  | Work Completion List - Finishes / L1 / Offices | 5d | 2026-09-02 | 2026-09-09 | P2.L1.F.CS.2190, P2.L1.F.CS.2140, P2.L1.F.CS.2230, P2.L1.F.CS.2180, P2.L1.F.CS.2100, P2.L1.F.CS.2160 | 83d | 0d |  | 40 | FINISH | P2-5 | JH | FINISH |  |  |  |
| P2.L1.F.CS.2250 |  | Rough Clean / L1 / Offices | 5d | 2026-09-10 | 2026-09-16 | P2.L1.F.CS.2240 | 83d | 0d |  | 40 | FCLEAN | P2-5 | JH | FCLEAN |  |  |  |
| P2.L1.F.CS.2260 |  | FF&E / L1 / Offices | 5d | 2026-09-17 | 2026-09-23 | P2.L1.F.CS.2250 | 83d | 0d |  | 40 | FURN | P2-5 | JH | FURN |  |  |  |
| P2.L1.F.CS.2270 |  | Prepare Punchlist / L1 / Offices | 5d | 2026-09-24 | 2026-09-30 | P2.L1.F.CS.2260 | 83d | 0d |  | 40 | QC | P2-5 | JH | QC |  |  |  |
| P2.L1.F.CS.2280 |  | Correct Punchlist / L1 / Offices | 10d | 2026-10-01 | 2026-10-14 | P2.L1.F.CS.2270 | 83d | 0d |  | 80 | FINISH | P2-5 | JH | FINISH |  |  |  |
| P2.L1.F.CS.2290 |  | Final Clean / L1 / Offices | 5d | 2026-10-15 | 2026-10-21 | P2.L1.F.CS.2280 | 83d | 95d | To QC | 40 | QC | P2-5 | JH | QC |  |  |  |

| ID | WBS | Activity | Duration | Start | Finish | Predecessors | Complete | Planned start | Planned finish | Total float | Free float | Pick | Temp Orig Dur | *NIH Resp Check* | Resp / SRLM | 744 | PHASE | Z.RESP | RESP UPD | RESP / Trade | Update Status | Testing Type |
| --- | --- | --- | --- | --- | --- | --- | --- | --- | --- | --- | --- | --- | --- | --- | --- | --- | --- | --- | --- | --- | --- | --- |
|  | 2 | **Closeout** |  |  |  |  |  |  |  |  |  |  |  |  |  |  |  |  |  |  |  |  |
|  | 1 | **Bathrooms-Break Rooms - Locker Rooms / Level 1** |  | 2025-03-13 | 2026-06-01 |  |  |  |  |  |  |  |  |  |  |  |  |  |  |  |  |  |
|  | 5 | **Toilet 1-2859** |  | 2025-06-16 | 2026-05-26 |  |  |  |  |  |  |  |  |  |  |  |  |  |  |  |  |  |
| P2.L1.BR.1000 |  | Plumbing - Set Pipe Carriers / L1 / Toilet 2859 | 3d | 2025-06-16 A | 2025-06-18 A | P2.B2.BR.1000, P2.L1.S.1240 | 100% | 2025-07-16 | 2025-07-18 |  |  | ? | 24 | ! | PLMB | FM | P2-5 | Harris | FM | PLMB |  |  |
| P2.L1.BR.1020 |  | Plumbing - Test Pipe / L1 / Toilet 2859 | 2d | 2025-06-19 A | 2025-06-20 A | P2.L1.BR.1000 | 100% | 2025-07-21 | 2025-07-22 |  |  |  | 16 |  | PLMB | FM | P2-5 | Harris | FM | PLMB |  |  |
| P2.L1.BR.1070 |  | In Wall - Insulate Plumbing / L1 / Toilet 2859 | 2d | 2025-06-23 A | 2025-06-24 A | P2.L1.BR.1020 | 100% | 2025-07-23 | 2025-07-24 |  |  |  | 16 |  | INSUL | FM | P2-5 | Harris | FM | INSUL-3 |  |  |
| P2.L1.BR.1010 |  | Framing & Blocking - Walls and Hard Lid Ceilings / L1 / Toilet 2859 | 2d | 2025-07-16 A | 2025-07-17 A | P2.L1.BR.1000 | 100% | 2025-08-15 | 2025-08-18 |  |  |  | 16 | ! | GYP | FM | P2-5 |  | FM | GYP-1 |  |  |
| P2.L1.BR.1050 |  | Duct Drops _ Hard Lids / L1 / Toilet 2859 | 2d | 2025-08-11 A | 2025-08-28 A | P2.L1.BR.1010 | 100% | 2025-10-06 | 2025-10-07 |  |  |  | 16 | T.R/I.IW.MECH.HVAC.SM | HVAC | FM | P2-5 | Harris | FM | HVAC | O |  |
| P2.L1.BR.1030 |  | R/I - Electrical _ Hard Lids / L1 / Toilet 2859 | 2d | 2026-04-01 | 2026-04-02 | P2.L1.BR.1010, P2.L1.BR.1050 |  |  |  | 88d | 0d |  | 16 | ! | ELEC | FM | P2-5 |  | JH | ELEC-3 | O |  |
| P2.L1.BR.1040 |  | Trim Sprinkler Drops _ Hard Lids / L1 / Toilet 2859 | 2d | 2026-04-01 | 2026-04-02 | P2.L1.BR.1010 |  |  |  | 90d | 2d |  | 16 | ! | FP | FM | P2-5 |  | JH | FP-1 | O |  |
| P2.L1.BR.1060 |  | R/I - Fire Alarm _ Hard Lids / L1 / Toilet 2859 | 2d | 2026-04-03 | 2026-04-06 | P2.L1.BR.1010, P2.L1.BR.1030 |  |  |  | 88d | 0d |  | 16 | ! | ELEC | FM | P2-5 |  | JH | ELEC-3 | O |  |
| P2.L1.BR.1080 |  | Inspection - Close In - Walls and Hard Lid Ceilings / L1 / Toilet 2859 | 3d | 2026-04-07 | 2026-04-09 | P2.L1.BR.1070, P2.L1.BR.1060, P2.L1.BR.1040, P2.L1.BR.1050, P2.L1.BR.1030 |  |  |  | 88d | 0d |  | 24 | ! | AHJ | FM | P2-5 |  | JH | AHJ | O |  |
| P2.L1.BR.1090 |  | Hang-Tape-Finish _ Walls / L1 / Toilet 2859 | 5d | 2026-04-10 | 2026-04-16 | P2.SUM.175, P2.L1.BR.1080, P2.L1.S.1470 SS, P2.L1.N.1470 SS, P2.L1.S.1470 FF, P2.L1.N.1470 FF |  |  |  | 88d | 0d |  | 40 | ! | GYP | FM | P2-5 |  | JH | GYP-1 | O |  |
| P2.L1.BR.1100 |  | Paint Prime & Final Coat _ Walls & Hard Lid Ceilings / L1 / Toilet 2859 | 2d | 2026-04-17 | 2026-04-20 | P2.L1.BR.1090 |  |  |  | 88d | 0d |  | 16 | ! | PAINT | FM | P2-5 |  | JH | PAINT-1 | O |  |
| P2.L1.BR.1140 |  | Trim - HVAC G/R/D's / L1 / Toilet 2859 | 2d | 2026-04-21 | 2026-04-22 | P2.L1.BR.1100 |  |  |  | 88d | 0d |  | 16 | ! | HVAC | FM | P2-5 | Harris | JH | HVAC | O |  |
| P2.L1.BR.1120 |  | Pull Wire & Trim Devices - Electrical / L1 / Toilet 2859 | 2d | 2026-04-23 | 2026-04-24 | P2.L1.BR.1140, P2.L1.BR.1100 |  |  |  | 88d | 0d |  | 16 | ! | ELEC | FM | P2-5 |  | JH | ELEC-2 | O |  |
| P2.L1.BR.1130 |  | Lights - Set & Terminate / L1 / Toilet 2859 | 2d | 2026-04-23 | 2026-04-24 | P2.L1.BR.1120 SS |  |  |  | 90d | 2d |  | 16 | ! | ELEC | FM | P2-5 |  | JH | ELEC-2 | O |  |
| P2.L1.BR.1110 |  | Pull Wire & Trim Devices - Fire Alarm / L1 / Toilet 2859 | 2d | 2026-04-27 | 2026-04-28 | P2.L1.BR.1120, P2.L1.BR.1100 |  |  |  | 88d | 0d |  | 16 | ! | ELEC | FM | P2-5 |  | JH | ELEC-2 | O |  |
| P2.L1.BR.1150 |  | Wall Tile / L1 / Toilet 2859 | 5d | 2026-04-29 | 2026-05-05 | P2.L1.BR.1140, P2.L1.BR.1130, P2.L1.BR.1110 |  |  |  | 88d | 2d |  | 40 | ! | TILE | FM | P2-5 |  | JH | TILE | O |  |
| P2.L1.BR.5260 |  | Flooring Prep - Epoxy Floors / L1 / Toilet 2859 | 1d | 2026-05-08 | 2026-05-08 | P2.L1.BR.1150, P2.L1.BR.5240 |  |  |  | 86d | 0d |  | 40 | ! | EPOXYF | FM | P2-5 |  | JH | EPOXYF |  |  |
| P2.L1.BR.5270 |  | Flooring - Epoxy Floors / L1 / Toilet 2859 | 2d | 2026-05-11 | 2026-05-12 | P2.L1.BR.5260 |  |  |  | 172d | 0d |  | 40 | ! | EPOXYF | FM | P2-5 |  | JH | EPOXYF |  |  |
| P2.L1.BR.1160 |  | Doors & Hardware / L1 / Toilet 2859 | 2d | 2026-05-13 | 2026-05-14 | P2.L1.BR.5270, P2.L1.BR.1150 |  |  |  | 172d | 2d |  | 16 | ! | DFH | FM | P2-5 |  | JH | DFH |  | AT29 |
| P2.L1.BR.1170 |  | Plumbing Fixtures / Sinks / Showers / L1 / Toilet 2859 | 2d | 2026-05-13 | 2026-05-14 | P2.L1.BR.5270, P2.L1.BR.1150 |  |  |  | 187d | 0d |  | 16 | ! | PLMB | FM | P2-5 | Harris | JH | PLMB |  |  |
| P2.L1.BR.1180 |  | Bathroom Accessories / L1 / Toilet 2859 | 2d | 2026-05-15 | 2026-05-18 | P2.L1.BR.5270, P2.L1.BR.1170 |  |  |  | 187d | 0d |  | 16 | ! | SPECIAL | FM | P2-5 |  | JH | SPECIAL |  |  |
| P2.L1.BR.1190 |  | Work Completion List - Finishes / L1 / Toilet 2859 | 5d | 2026-05-19 | 2026-05-26 | P2.L1.BR.1160, P2.L1.BR.1180, P2.L1.BR.1110 |  |  |  | 187d | 199d | To Punch | 40 |  | AHJ | FM | P2-5 |  | JH | AHJ |  |  |

| ID | WBS | Activity | Duration | Start | Finish | Predecessors | Complete | Planned start | Planned finish | Total float | Free float | Pick | Temp Orig Dur | *NIH Resp Check* | Resp / SRLM | PHASE | Z.RESP | RESP / Trade | 744 | RESP UPD | Update Status | Testing Type |
| --- | --- | --- | --- | --- | --- | --- | --- | --- | --- | --- | --- | --- | --- | --- | --- | --- | --- | --- | --- | --- | --- | --- |
|  | 4 | **Toilets 1-2804 / 1-2806** |  | 2025-03-13 | 2026-05-27 |  |  |  |  |  |  |  |  |  |  |  |  |  |  |  |  |  |
| P2.L1.BR.2000 |  | Plumbing - Set Pipe Carriers / L1 / Toilets 2804 & 06 | 3d | 2025-03-13 A | 2025-03-14 A | P2.L1.S.1180 | 100% | 2025-08-12 | 2025-08-14 |  |  | ? | 24 | ! | PLMB | P2-5 | Harris | PLMB |  |  |  |  |
| P2.L1.BR.2020 |  | Plumbing - Test Pipe / L1 / Toilets 2804 & 06 | 2d | 2025-05-30 A | 2025-06-02 A | P2.L1.BR.2000 | 100% | 2025-06-02 | 2025-06-03 |  |  |  | 16 |  | PLMB | P2-5 | Harris | PLMB | FM | FM |  |  |
| P2.L1.BR.2010 |  | Framing & Blocking - Walls and Hard Lid Ceilings / L1 / Toilets 2804 & 06 | 2d | 2025-07-23 A | 2025-07-24 A | P2.L1.BR.2000, P2.L1.N.1420 | 100% | 2025-08-22 | 2025-08-25 |  |  |  | 16 | ! | GYP | P2-5 |  | GYP-1 | FM | FM |  |  |
| P2.L1.BR.2050 |  | Duct Drops _ Hard Lids / L1 / Toilets 2804 & 06 | 2d | 2025-08-11 A | 2025-08-28 A | P2.L1.BR.2010 | 100% | 2025-10-01 | 2025-10-02 |  |  |  | 16 | T.R/I.IW.MECH.HVAC.SM | HVAC | P2-5 | Harris | HVAC | FM | FM | O |  |
| P2.L1.BR.2070 |  | In Wall - Insulate Plumbing / L1 / Toilets 2804 & 06 | 2d | 2025-09-08 A | 2025-09-15 A | P2.L1.BR.2020, P2.L1.BR.2050 | 100% | 2025-10-07 | 2025-10-08 |  |  |  | 16 |  | INSUL | P2-5 | Harris | INSUL-3 | FM | FM | O |  |
| P2.L1.BR.2030 |  | R/I - Electrical _ Hard Lids / L1 / Toilets 2804 & 06 | 2d | 2026-04-01 | 2026-04-02 | P2.L1.BR.2010, P2.L1.BR.2070 |  |  |  | 87d | 0d |  | 16 | ! | ELEC | P2-5 |  | ELEC-3 | FM | JH | O |  |
| P2.L1.BR.2040 |  | Trim Sprinkler Drops _ Hard Lids / L1 / Toilets 2804 & 06 | 2d | 2026-04-01 | 2026-04-02 | P2.L1.BR.2010 |  |  |  | 89d | 2d |  | 16 | ! | FP | P2-5 |  | FP-1 | FM | JH | O |  |
| P2.L1.BR.2060 |  | R/I - Fire Alarm _ Hard Lids / L1 / Toilets 2804 & 06 | 2d | 2026-04-03 | 2026-04-06 | P2.L1.BR.2010, P2.L1.BR.2030 |  |  |  | 87d | 0d |  | 16 | ! | ELEC | P2-5 |  | ELEC-3 | FM | JH | O |  |
| P2.L1.BR.2080 |  | Inspection - Close In - Walls and Hard Lid Ceilings / L1 / Toilets 2804 & 06 | 3d | 2026-04-07 | 2026-04-09 | P2.L1.BR.2060, P2.L1.BR.2070, P2.L1.BR.2030, P2.L1.BR.2040, P2.L1.BR.2050 |  |  |  | 87d | 0d |  | 24 | ! | AHJ | P2-5 |  | AHJ | FM | JH | O |  |
| P2.L1.BR.2090 |  | Hang-Tape-Finish _ Walls / L1 / Toilets 2804 & 06 | 5d | 2026-04-10 | 2026-04-16 | P2.SUM.175, P2.L1.BR.2080, P2.L1.S.1470 SS, P2.L1.N.1470 SS, P2.L1.S.1470 FF, P2.L1.N.1470 FF |  |  |  | 87d | 0d |  | 40 | ! | GYP | P2-5 |  | GYP-1 | FM | JH | O |  |
| P2.L1.BR.2100 |  | Paint Prime & Final Coat _ Walls & Hard Lid Ceilings / L1 / Toilets 2804 & 06 | 2d | 2026-04-17 | 2026-04-20 | P2.L1.BR.2090 |  |  |  | 87d | 0d |  | 16 | ! | PAINT | P2-5 |  | PAINT-1 | FM | JH | O |  |
| P2.L1.BR.2140 |  | Trim - HVAC G/R/D's / L1 / Toilets 2804 & 06 | 2d | 2026-04-21 | 2026-04-22 | P2.L1.BR.2100 |  |  |  | 87d | 0d |  | 16 | ! | HVAC | P2-5 | Harris | HVAC | FM | JH | O |  |
| P2.L1.BR.2120 |  | Pull Wire & Trim Devices - Electrical / L1 / Toilets 2804 & 06 | 2d | 2026-04-23 | 2026-04-24 | P2.L1.BR.2100, P2.L1.BR.2140 |  |  |  | 87d | 0d |  | 16 | ! | ELEC | P2-5 |  | ELEC-2 | FM | JH | O |  |
| P2.L1.BR.2130 |  | Lights - Set & Terminate / L1 / Toilets 2804 & 06 | 2d | 2026-04-23 | 2026-04-24 | P2.L1.BR.2120 SS |  |  |  | 89d | 2d |  | 16 | ! | ELEC | P2-5 |  | ELEC-2 | FM | JH | O |  |
| P2.L1.BR.2110 |  | Pull Wire & Trim Devices - Fire Alarm / L1 / Toilets 2804 & 06 | 2d | 2026-04-27 | 2026-04-28 | P2.L1.BR.2100, P2.L1.BR.2120 |  |  |  | 87d | 0d |  | 16 | ! | ELEC | P2-5 |  | ELEC-2 | FM | JH | O |  |
| P2.L1.BR.2150 |  | Wall Tile / L1 / Toilets 2804 & 06 | 5d | 2026-04-29 | 2026-05-05 | P2.L1.BR.2130, P2.L1.BR.2140, P2.L1.BR.2110 |  |  |  | 87d | 1d |  | 40 | ! | TILE | P2-5 |  | TILE | FM | JH | O |  |
| P2.L1.BR.5240 |  | Flooring Prep - Epoxy Floors / L1 / Toilets 2804 & 06 | 1d | 2026-05-07 | 2026-05-07 | P2.L1.BR.2150, P2.L1.BR.5280 |  |  |  | 86d | 0d |  | 40 | ! | EPOXYF | P2-5 |  | EPOXYF | FM | JH |  |  |
| P2.L1.BR.5250 |  | Flooring - Epoxy Floors / L1 / Toilets 2804 & 06 | 2d | 2026-05-08 | 2026-05-11 | P2.L1.BR.5240 |  |  |  | 173d | 0d |  | 40 | ! | EPOXYF | P2-5 |  | EPOXYF | FM | JH |  |  |
| P2.L1.BR.2160 |  | Doors & Hardware / L1 / Toilets 2804 & 06 | 2d | 2026-05-12 | 2026-05-13 | P2.L1.BR.5250, P2.L1.BR.2150 |  |  |  | 173d | 0d |  | 16 | ! | DFH | P2-5 |  | DFH | FM | JH |  | AT29 |
| P2.L1.BR.2170 |  | Plumbing Fixtures / Sinks / Showers / L1 / Toilets 2804 & 06 | 2d | 2026-05-14 | 2026-05-15 | P2.L1.BR.5250, P2.L1.BR.2150, P2.L1.BR.2160 |  |  |  | 186d | 0d |  | 16 | ! | PLMB | P2-5 | Harris | PLMB | FM | JH |  |  |
| P2.L1.BR.2180 |  | Bathroom Accessories / L1 / Toilets 2804 & 06 | 2d | 2026-05-18 | 2026-05-19 | P2.L1.BR.5250, P2.L1.BR.2170 |  |  |  | 186d | 0d |  | 16 | ! | SPECIAL | P2-5 |  | SPECIAL | FM | JH |  |  |
| P2.L1.BR.2190 |  | Work Completion List - Finishes / L1 / Toilets 2804 & 06 | 5d | 2026-05-20 | 2026-05-27 | P2.L1.BR.2180, P2.L1.BR.2160, P2.L1.BR.2110 |  |  |  | 186d | 198d | To Punch | 40 |  | AHJ | P2-5 |  | AHJ | FM | JH |  |  |
|  | 3 | **Toilet 1-2940A** |  | 2025-04-01 | 2026-05-26 |  |  |  |  |  |  |  |  |  |  |  |  |  |  |  |  |  |
| P2.L1.BR.3000 |  | Plumbing - Set Pipe Carriers / L1 / Toilets 2940A | 3d | 2025-04-01 A | 2025-04-03 A | P2.L1.BR.2000 | 100% | 2025-05-01 | 2025-05-05 |  |  | ? | 24 | ! | PLMB | P2-5 | Harris | PLMB |  |  |  |  |
| P2.L1.BR.3020 |  | Plumbing - Test Pipe / L1 / Toilets 2940A | 2d | 2025-05-01 A | 2025-05-02 A | P2.L1.BR.3000 | 100% | 2025-06-02 | 2025-06-03 |  |  |  | 16 |  | PLMB | P2-5 | Harris | PLMB |  |  |  |  |
| P2.L1.BR.3010 |  | Framing & Blocking - Walls and Hard Lid Ceilings / L1 / Toilets 2940A | 2d | 2025-07-30 A | 2025-07-31 A | P2.L1.BR.3000, P2.L1.LC.1420 | 100% | 2025-08-29 | 2025-09-02 |  |  |  | 16 | ! | GYP | P2-5 |  | GYP-1 | FM | FM |  |  |
| P2.L1.BR.3050 |  | Duct Drops _ Hard Lids / L1 / Toilets 2940A | 2d | 2025-08-11 A | 2025-08-28 A | P2.L1.BR.3010 | 100% | 2025-10-28 | 2025-10-29 |  |  |  | 16 | T.R/I.IW.MECH.HVAC.SM | HVAC | P2-5 | Harris | HVAC | FM | FM |  |  |
| P2.L1.BR.3070 |  | In Wall - Insulate Plumbing / L1 / Toilets 2940A | 2d | 2025-09-08 A | 2025-09-15 A | P2.L1.BR.3050, P2.L1.BR.3020 | 100% | 2025-11-03 | 2025-11-04 |  |  |  | 16 |  | INSUL | P2-5 | Harris | INSUL-3 | FM | FM |  |  |
| P2.L1.BR.3030 |  | R/I - Electrical _ Hard Lids / L1 / Toilets 2940A | 2d | 2026-04-01 | 2026-04-02 | P2.L1.BR.3070, P2.L1.BR.3010 |  |  |  | 86d | 0d |  | 16 | ! | ELEC | P2-5 |  | ELEC-3 | FM | JH | O |  |
| P2.L1.BR.3040 |  | Trim Sprinkler Drops _ Hard Lids / L1 / Toilets 2940A | 2d | 2026-04-01 | 2026-04-02 | P2.L1.BR.3010 |  |  |  | 88d | 2d |  | 16 | ! | FP | P2-5 |  | FP-1 | FM | JH | O |  |
| P2.L1.BR.3060 |  | R/I - Fire Alarm _ Hard Lids / L1 / Toilets 2940A | 2d | 2026-04-03 | 2026-04-06 | P2.L1.BR.3030, P2.L1.BR.3010 |  |  |  | 86d | 0d |  | 16 | ! | ELEC | P2-5 |  | ELEC-3 | FM | JH | O |  |
| P2.L1.BR.3080 |  | Inspection - Close In - Walls and Hard Lid Ceilings / L1 / Toilets 2940A | 3d | 2026-04-07 | 2026-04-09 | P2.L1.BR.3040, P2.L1.BR.3050, P2.L1.BR.3030, P2.L1.BR.3070, P2.L1.BR.3060 |  |  |  | 86d | 0d |  | 24 | ! | AHJ | P2-5 |  | AHJ | FM | JH | O |  |
| P2.L1.BR.3090 |  | Hang-Tape-Finish _ Walls / L1 / Toilets 2940A | 5d | 2026-04-10 | 2026-04-16 | P2.SUM.175, P2.L1.BR.3080, P2.L1.S.1470 SS, P2.L1.N.1470 SS, P2.L1.S.1470 FF, P2.L1.N.1470 FF |  |  |  | 86d | 0d |  | 40 | ! | GYP | P2-5 |  | GYP-1 | FM | JH | O |  |
| P2.L1.BR.3100 |  | Paint Prime & Final Coat _ Walls & Hard Lid Ceilings / L1 / Toilets 2940A | 2d | 2026-04-17 | 2026-04-20 | P2.L1.BR.3090 |  |  |  | 86d | 0d |  | 16 | ! | PAINT | P2-5 |  | PAINT-1 | FM | JH | O |  |
| P2.L1.BR.3140 |  | Trim - HVAC G/R/D's / L1 / Toilets 2940A | 2d | 2026-04-21 | 2026-04-22 | P2.L1.BR.3100 |  |  |  | 86d | 0d |  | 16 | ! | HVAC | P2-5 | Harris | HVAC | FM | JH | O |  |
| P2.L1.BR.3120 |  | Pull Wire & Trim Devices - Electrical / L1 / Toilets 2940A | 2d | 2026-04-23 | 2026-04-24 | P2.L1.BR.3100, P2.L1.BR.3140 |  |  |  | 86d | 0d |  | 16 | ! | ELEC | P2-5 |  | ELEC-2 | FM | JH | O |  |
| P2.L1.BR.3130 |  | Lights - Set & Terminate / L1 / Toilets 2940A | 2d | 2026-04-23 | 2026-04-24 | P2.L1.BR.3120 SS |  |  |  | 88d | 2d |  | 16 | ! | ELEC | P2-5 |  | ELEC-2 | FM | JH | O |  |
| P2.L1.BR.3110 |  | Pull Wire & Trim Devices - Fire Alarm / L1 / Toilets 2940A | 2d | 2026-04-27 | 2026-04-28 | P2.L1.BR.3120, P2.L1.BR.3100 |  |  |  | 86d | 0d |  | 16 | ! | ELEC | P2-5 |  | ELEC-2 | FM | JH | O |  |
| P2.L1.BR.3150 |  | Wall Tile / L1 / Toilets 2940A | 5d | 2026-04-29 | 2026-05-05 | P2.L1.BR.3130, P2.L1.BR.3110, P2.L1.BR.3140 |  |  |  | 86d | 0d |  | 40 | ! | TILE | P2-5 |  | TILE | FM | JH | O |  |
| P2.L1.BR.5280 |  | Flooring Prep - Epoxy Floors / L1 / Toilets 2940A | 1d | 2026-05-06 | 2026-05-06 | P2.L1.BR.3150 |  |  |  | 86d | 0d |  | 40 | ! | EPOXYF | P2-5 |  | EPOXYF | FM | JH |  |  |
| P2.L1.BR.5290 |  | Flooring - Epoxy Floors / L1 / Toilets 2940A | 2d | 2026-05-07 | 2026-05-08 | P2.L1.BR.5280 |  |  |  | 174d | 0d |  | 40 | ! | EPOXYF | P2-5 |  | EPOXYF | FM | JH |  |  |
| P2.L1.BR.3160 |  | Doors & Hardware / L1 / Toilets 2940A | 2d | 2026-05-11 | 2026-05-12 | P2.L1.BR.5290 |  |  |  | 174d | 0d |  | 16 | ! | DFH | P2-5 |  | DFH | FM | JH |  | AT29 |
| P2.L1.BR.3170 |  | Plumbing Fixtures / Sinks / Showers / L1 / Toilets 2940A | 2d | 2026-05-13 | 2026-05-14 | P2.L1.BR.3160, P2.L1.BR.5290 |  |  |  | 187d | 0d |  | 16 | ! | PLMB | P2-5 | Harris | PLMB | FM | JH |  |  |
| P2.L1.BR.3180 |  | Bathroom Accessories / L1 / Toilets 2940A | 2d | 2026-05-15 | 2026-05-18 | P2.L1.BR.3170 |  |  |  | 187d | 0d |  | 16 | ! | SPECIAL | P2-5 |  | SPECIAL | FM | JH |  |  |
| P2.L1.BR.3190 |  | Work Completion List - Finishes / L1 / Toilets 2940A | 5d | 2026-05-19 | 2026-05-26 | P2.L1.BR.3160, P2.L1.BR.3180, P2.L1.BR.3110 |  |  |  | 187d | 199d | To Punch | 40 |  | AHJ | P2-5 |  | AHJ | FM | JH |  |  |

| ID | WBS | Activity | Duration | Start | Finish | Predecessors | Complete | Planned start | Planned finish | Total float | Free float | Pick | Temp Orig Dur | *NIH Resp Check* | Resp / SRLM | PHASE | Z.RESP | RESP / Trade | 744 | RESP UPD | Update Status | Testing Type |
| --- | --- | --- | --- | --- | --- | --- | --- | --- | --- | --- | --- | --- | --- | --- | --- | --- | --- | --- | --- | --- | --- | --- |
|  | 1 | **Toilet 1-3902C** |  | 2025-04-04 | 2026-06-01 |  |  |  |  |  |  |  |  |  |  |  |  |  |  |  |  |  |
| P2.L1.BR.4000 |  | Plumbing - Set Pipe Carriers / L1 / Toilets 3902C | 3d | 2025-04-04 A | 2025-04-08 A | P2.L1.BR.3000 | 100% | 2025-05-06 | 2025-05-08 |  |  | ? | 24 | ! | PLMB | P2-5 | Harris | PLMB |  |  |  |  |
| P2.L1.BR.4010 |  | Framing & Blocking - Walls and Hard Lid Ceilings / L1 / Toilets 3902C | 2d | 2025-04-09 A | 2025-04-10 A | P2.L1.BR.4000 | 100% | 2025-05-09 | 2025-05-12 |  |  |  | 16 | ! | GYP | P2-5 |  | GYP-1 |  |  |  |  |
| P2.L1.BR.4020 |  | Plumbing - Test Pipe / L1 / Toilets 3902C | 2d | 2025-05-01 A | 2025-05-02 A | P2.L1.BR.4000, P2.L1.LC.1420 | 100% | 2025-07-29 | 2025-07-30 |  |  |  | 16 |  | PLMB | P2-5 | Harris | PLMB |  |  |  |  |
| P2.L1.BR.4050 |  | Duct Drops _ Hard Lids / L1 / Toilets 3902C | 2d | 2025-08-11 A | 2025-08-28 A | P2.L1.BR.4010 | 100% | 2025-10-01 | 2025-10-02 |  |  |  | 16 | T.R/I.IW.MECH.HVAC.SM | HVAC | P2-5 | Harris | HVAC | FM | FM |  |  |
| P2.L1.BR.4070 |  | In Wall - Insulate Plumbing / L1 / Toilets 3902C | 2d | 2025-09-08 A | 2025-09-15 A | P2.L1.BR.4020, P2.L1.BR.4050 | 100% | 2025-11-03 | 2025-11-04 |  |  |  | 16 |  | INSUL | P2-5 | Harris | INSUL-3 | FM | FM |  |  |
| P2.L1.BR.4030 |  | R/I - Electrical _ Hard Lids / L1 / Toilets 3902C | 2d | 2026-04-01 | 2026-04-02 | P2.L1.BR.4010, P2.L1.BR.4070 |  |  |  | 90d | 0d |  | 16 | ! | ELEC | P2-5 |  | ELEC-3 | FM | JH | O |  |
| P2.L1.BR.4040 |  | Trim Sprinkler Drops _ Hard Lids / L1 / Toilets 3902C | 2d | 2026-04-01 | 2026-04-02 | P2.L1.BR.4010, P2.L1.LC.1420 |  |  |  | 92d | 2d |  | 16 | ! | FP | P2-5 |  | FP-1 | FM | JH | O |  |
| P2.L1.BR.4060 |  | R/I - Fire Alarm _ Hard Lids / L1 / Toilets 3902C | 2d | 2026-04-03 | 2026-04-06 | P2.L1.BR.4010, P2.L1.BR.4030 |  |  |  | 90d | 0d |  | 16 | ! | ELEC | P2-5 |  | ELEC-3 | FM | JH | O |  |
| P2.L1.BR.4080 |  | Inspection - Close In - Walls and Hard Lid Ceilings / L1 / Toilets 3902C | 3d | 2026-04-07 | 2026-04-09 | P2.L1.BR.4060, P2.L1.BR.4070, P2.L1.BR.4030, P2.L1.BR.4040, P2.L1.BR.4050 |  |  |  | 90d | 0d |  | 24 | ! | AHJ | P2-5 |  | AHJ | FM | JH | O |  |
| P2.L1.BR.4090 |  | Hang-Tape-Finish _ Walls / L1 / Toilets 3902C | 5d | 2026-04-10 | 2026-04-16 | P2.SUM.175, P2.L1.BR.4080, P2.L1.S.1470 SS, P2.L1.N.1470 SS, P2.L1.S.1470 FF, P2.L1.N.1470 FF |  |  |  | 90d | 0d |  | 40 | ! | GYP | P2-5 |  | GYP-1 | FM | JH | O |  |
| P2.L1.BR.4100 |  | Paint Prime & Final Coat _ Walls & Hard Lid Ceilings / L1 / Toilets 3902C | 2d | 2026-04-17 | 2026-04-20 | P2.L1.BR.4090 |  |  |  | 90d | 0d |  | 16 | ! | PAINT | P2-5 |  | PAINT-1 | FM | JH | O |  |
| P2.L1.BR.4140 |  | Trim - HVAC G/R/D's / L1 / Toilets 3902C | 2d | 2026-04-21 | 2026-04-22 | P2.L1.BR.4100 |  |  |  | 90d | 0d |  | 16 | ! | HVAC | P2-5 | Harris | HVAC | FM | JH | O |  |
| P2.L1.BR.4120 |  | Pull Wire & Trim Devices - Electrical / L1 / Toilets 3902C | 2d | 2026-04-23 | 2026-04-24 | P2.L1.BR.4140, P2.L1.BR.4100 |  |  |  | 90d | 0d |  | 16 | ! | ELEC | P2-5 |  | ELEC-2 | FM | JH | O |  |
| P2.L1.BR.4130 |  | Lights - Set & Terminate / L1 / Toilets 3902C | 2d | 2026-04-23 | 2026-04-24 | P2.L1.BR.4120 SS |  |  |  | 92d | 2d |  | 16 | ! | ELEC | P2-5 |  | ELEC-2 | FM | JH | O |  |
| P2.L1.BR.4110 |  | Pull Wire & Trim Devices - Fire Alarm / L1 / Toilets 3902C | 2d | 2026-04-27 | 2026-04-28 | P2.L1.BR.4120, P2.L1.BR.4100 |  |  |  | 90d | 0d |  | 16 | ! | ELEC | P2-5 |  | ELEC-2 | FM | JH | O |  |
| P2.L1.BR.4150 |  | Wall Tile / L1 / Toilets 3902C | 5d | 2026-04-29 | 2026-05-05 | P2.L1.BR.4130, P2.L1.BR.4140, P2.L1.BR.4110 |  |  |  | 90d | 4d |  | 40 | ! | TILE | P2-5 |  | TILE | FM | JH | O |  |
| P2.L1.BR.5220 |  | Flooring Prep - Epoxy Floors / L1 / Toilets 3902C | 1d | 2026-05-12 | 2026-05-12 | P2.L1.BR.4140, P2.L1.BR.4150, P2.L1.BR.5200 |  |  |  | 86d | 0d |  | 40 | ! | EPOXYF | P2-5 |  | EPOXYF | FM | JH |  |  |
| P2.L1.BR.5230 |  | Flooring - Epoxy Floors / L1 / Toilets 3902C | 2d | 2026-05-13 | 2026-05-14 | P2.L1.BR.5220 |  |  |  | 86d | 0d |  | 40 | ! | EPOXYF | P2-5 |  | EPOXYF | FM | JH |  |  |
| P2.L1.BR.4160 |  | Doors & Hardware / L1 / Toilets 3902C | 2d | 2026-05-15 | 2026-05-18 | P2.L1.BR.5230, P2.L1.BR.4150 |  |  |  | 170d | 0d |  | 16 | ! | DFH | P2-5 |  | DFH | FM | JH |  | AT29 |
| P2.L1.BR.4170 |  | Plumbing Fixtures / Sinks / Showers / L1 / Toilets 3902C | 2d | 2026-05-19 | 2026-05-20 | P2.L1.BR.4150, P2.L1.BR.4160 |  |  |  | 183d | 0d |  | 16 | ! | PLMB | P2-5 | Harris | PLMB | FM | JH |  |  |
| P2.L1.BR.4180 |  | Bathroom Accessories / L1 / Toilets 3902C | 2d | 2026-05-21 | 2026-05-22 | P2.L1.BR.5230, P2.L1.BR.4170 |  |  |  | 183d | 0d |  | 16 | ! | SPECIAL | P2-5 |  | SPECIAL | FM | JH |  |  |
| P2.L1.BR.4190 |  | Work Completion List - Finishes / L1 / Toilets 3902C | 5d | 2026-05-26 | 2026-06-01 | P2.L1.BR.4180, P2.L1.BR.4160, P2.L1.BR.4110 |  |  |  | 183d | 195d | To Punch | 40 |  | AHJ | P2-5 |  | AHJ | FM | JH |  |  |
|  | 2 | **Toilet 1-2878** |  | 2025-04-09 | 2026-05-22 |  |  |  |  |  |  |  |  |  |  |  |  |  |  |  |  |  |
| P2.L1.BR.5000 |  | Plumbing - Set Pipe Carriers / L1 / Toilet 2878 | 3d | 2025-04-09 A | 2025-04-11 A | P2.L1.BR.4000 | 100% | 2025-05-09 | 2025-05-13 |  |  | ? | 24 | ! | PLMB | P2-5 | Harris | PLMB |  |  |  |  |
| P2.L1.BR.5010 |  | Framing & Blocking - Walls and Hard Lid Ceilings / L1 / Toilet 2878 | 2d | 2025-04-14 A | 2025-04-15 A | P2.L1.BR.5000 | 100% | 2025-05-14 | 2025-05-15 |  |  |  | 16 | ! | GYP | P2-5 |  | GYP-1 |  |  |  |  |
| P2.L1.BR.5020 |  | Plumbing - Test Pipe / L1 / Toilet 2878 | 2d | 2025-05-01 A | 2025-05-02 A | P2.L1.BR.5000, P2.L1.LC.1420 | 100% | 2025-07-29 | 2025-07-30 |  |  |  | 16 |  | PLMB | P2-5 | Harris | PLMB |  |  |  |  |
| P2.L1.BR.5050 |  | Duct Drops _ Hard Lids / L1 / Toilet 2878 | 2d | 2025-08-11 A | 2025-08-28 A | P2.L1.BR.5010 | 100% | 2025-10-01 | 2025-10-02 |  |  |  | 16 | T.R/I.IW.MECH.HVAC.SM | HVAC | P2-5 | Harris | HVAC | FM | FM |  |  |
| P2.L1.BR.5070 |  | In Wall - Insulate Plumbing / L1 / Toilet 2878 | 2d | 2025-09-08 A | 2025-09-15 A | P2.L1.BR.5020, P2.L1.BR.5050 | 100% | 2025-11-03 | 2025-11-04 |  |  |  | 16 |  | INSUL | P2-5 | Harris | INSUL-3 | FM | FM |  |  |
| P2.L1.BR.5030 |  | R/I - Electrical _ Hard Lids / L1 / Toilet 2878 | 2d | 2026-04-01 | 2026-04-02 | P2.L1.BR.5070, P2.L1.BR.5010 |  |  |  | 89d | 0d |  | 16 | ! | ELEC | P2-5 |  | ELEC-3 | FM | JH | O |  |
| P2.L1.BR.5040 |  | Trim Sprinkler Drops _ Hard Lids / L1 / Toilet 2878 | 2d | 2026-04-01 | 2026-04-02 | P2.L1.BR.5010, P2.L1.LC.1420 |  |  |  | 91d | 2d |  | 16 | ! | FP | P2-5 |  | FP-1 | FM | JH | O |  |
| P2.L1.BR.5060 |  | R/I - Fire Alarm _ Hard Lids / L1 / Toilet 2878 | 2d | 2026-04-03 | 2026-04-06 | P2.L1.BR.5010, P2.L1.BR.5030 |  |  |  | 89d | 0d |  | 16 | ! | ELEC | P2-5 |  | ELEC-3 | FM | JH | O |  |
| P2.L1.BR.5080 |  | Inspection - Close In - Walls and Hard Lid Ceilings / L1 / Toilet 2878 | 3d | 2026-04-07 | 2026-04-09 | P2.L1.BR.5070, P2.L1.BR.5060, P2.L1.BR.5040, P2.L1.BR.5050, P2.L1.BR.5030 |  |  |  | 89d | 0d |  | 24 | ! | AHJ | P2-5 |  | AHJ | FM | JH | O |  |
| P2.L1.BR.5090 |  | Hang-Tape-Finish _ Walls / L1 / Toilet 2878 | 5d | 2026-04-10 | 2026-04-16 | P2.SUM.175, P2.L1.BR.5080, P2.L1.S.1470 SS, P2.L1.N.1470 SS, P2.L1.S.1470 FF, P2.L1.N.1470 FF |  |  |  | 89d | 0d |  | 40 | ! | GYP | P2-5 |  | GYP-1 | FM | JH | O |  |
| P2.L1.BR.5100 |  | Paint Prime & Final Coat _ Walls & Hard Lid Ceilings / L1 / Toilet 2878 | 2d | 2026-04-17 | 2026-04-20 | P2.L1.BR.5090 |  |  |  | 89d | 0d |  | 16 | ! | PAINT | P2-5 |  | PAINT-1 | FM | JH | O |  |
| P2.L1.BR.5140 |  | Trim - HVAC G/R/D's / L1 / Toilet 2878 | 2d | 2026-04-21 | 2026-04-22 | P2.L1.BR.5100 |  |  |  | 89d | 0d |  | 16 | ! | HVAC | P2-5 | Harris | HVAC | FM | JH | O |  |
| P2.L1.BR.5120 |  | Pull Wire & Trim Devices - Electrical / L1 / Toilet 2878 | 2d | 2026-04-23 | 2026-04-24 | P2.L1.BR.5140, P2.L1.BR.5100 |  |  |  | 89d | 0d |  | 16 | ! | ELEC | P2-5 |  | ELEC-2 | FM | JH | O |  |
| P2.L1.BR.5130 |  | Lights - Set & Terminate / L1 / Toilet 2878 | 2d | 2026-04-23 | 2026-04-24 | P2.L1.BR.5120 SS |  |  |  | 91d | 2d |  | 16 | ! | ELEC | P2-5 |  | ELEC-2 | FM | JH | O |  |
| P2.L1.BR.5110 |  | Pull Wire & Trim Devices - Fire Alarm / L1 / Toilet 2878 | 2d | 2026-04-27 | 2026-04-28 | P2.L1.BR.5120, P2.L1.BR.5100 |  |  |  | 89d | 0d |  | 16 | ! | ELEC | P2-5 |  | ELEC-2 | FM | JH | O |  |
| P2.L1.BR.5150 |  | Wall Tile / L1 / Toilet 2878 | 5d | 2026-04-29 | 2026-05-05 | P2.L1.BR.5140, P2.L1.BR.5130, P2.L1.BR.5110 |  |  |  | 89d | 0d |  | 40 | ! | TILE | P2-5 |  | TILE | FM | JH | O |  |
| P2.L1.BR.5160 |  | Doors & Hardware / L1 / Toilet 2878 | 2d | 2026-05-06 | 2026-05-07 | P2.L1.BR.5150 |  |  |  | 177d | 6d |  | 16 | ! | DFH | P2-5 |  | DFH | FM | JH |  | AT29 |
| P2.L1.BR.5170 |  | Plumbing Fixtures / Sinks / Showers / L1 / Toilet 2878 | 2d | 2026-05-06 | 2026-05-07 | P2.L1.BR.5150 |  |  |  | 192d | 4d |  | 16 | ! | PLMB | P2-5 | Harris | PLMB | FM | JH |  |  |
| P2.L1.BR.5200 |  | Flooring Prep - Epoxy Floors / L1 / Toilet 2878 | 1d | 2026-05-11 | 2026-05-11 | P2.L1.BR.5260, P2.L1.BR.5140, P2.L1.BR.5150, P2.L1.BR.5130 |  |  |  | 86d | 0d |  | 40 | ! | EPOXYF | P2-5 |  | EPOXYF | FM | JH |  |  |
| P2.L1.BR.5210 |  | Flooring - Epoxy Floors / L1 / Toilet 2878 | 2d | 2026-05-12 | 2026-05-13 | P2.L1.BR.5200 |  |  |  | 188d | 0d |  | 40 | ! | EPOXYF | P2-5 |  | EPOXYF | FM | JH |  |  |
| P2.L1.BR.5180 |  | Bathroom Accessories / L1 / Toilet 2878 | 2d | 2026-05-14 | 2026-05-15 | P2.L1.BR.5210, P2.L1.BR.5170 |  |  |  | 188d | 0d |  | 16 | ! | SPECIAL | P2-5 |  | SPECIAL | FM | JH |  |  |
| P2.L1.BR.5190 |  | Work Completion List - Finishes / L1 / Toilet 2878 | 5d | 2026-05-18 | 2026-05-22 | P2.L1.BR.5160, P2.L1.BR.5180, P2.L1.BR.5110 |  |  |  | 188d | 200d | To Punch | 40 |  | AHJ | P2-5 |  | AHJ | FM | JH |  |  |

| ID | WBS | Activity | Duration | Start | Finish | Predecessors | Total float | Free float | Temp Orig Dur | Resp / SRLM | PHASE | RESP UPD | RESP / Trade | Z.RESP |
| --- | --- | --- | --- | --- | --- | --- | --- | --- | --- | --- | --- | --- | --- | --- |
|  | 6 | **Corridors & Lobbies / Level 1** |  | 2026-04-27 | 2026-12-09 |  |  |  |  |  |  |  |  |  |
| P2.L1.CL.1000 |  | Paint Prime & 1st Coat Walls / L1 / Corr & Lobbies | 5d | 2026-04-27 | 2026-05-01 | P2.L1.F.CS.1000, P2.L1.N.1470, P2.L1.S.1470 | 20d | 0d | 40 | PAINT | P2-5 | JH | PAINT-1 |  |
| P2.L1.CL.1010 |  | Framing - Hard Lid Ceilings / L1 / Corr & Lobbies | 10d | 2026-05-04 | 2026-05-15 | P2.L1.CL.1000 | 25d | 5d | 80 | GYP | P2-5 | JH | GYP-1 |  |
| P2.L1.CL.1020 |  | T-Grid / L1 / Corr & Lobbies | 10d | 2026-05-04 | 2026-05-15 | P2.L1.CL.1000 | 20d | 0d | 80 | ACT | P2-5 | JH | ACT |  |
| P2.L1.CL.1070 |  | Trim - Sprinkler Heads @ T-Grid / L1 / Corr & Lobbies | 5d | 2026-05-13 | 2026-05-19 | P2.L1.CL.1020 FF+2d | 20d | 0d | 40 | FP | P2-5 | JH | FP-1 |  |
| P2.L1.CL.1040 |  | R/I - Trim Sprinkler Heads- All Ceilings / L1 / Corr & Lobbies | 5d | 2026-05-20 | 2026-05-27 | P2.L1.CL.1020 FF+2d, P2.L1.CL.1010 FF+2d, P2.L1.CL.1070 | 20d | 0d | 40 | FP | P2-5 | JH | FP-1 |  |
| P2.L1.CL.1050 |  | R/I - HVAC- All Ceilings / L1 / Corr & Lobbies | 5d | 2026-05-28 | 2026-06-03 | P2.L1.CL.1020 FF+2d, P2.L1.CL.1010 FF+2d, P2.L1.CL.1040 | 20d | 0d | 40 | HVAC | P2-5 | JH | HVAC | Harris |
| P2.L1.CL.1030 |  | R/I - Electrical - All Ceilings / L1 / Corr & Lobbies | 5d | 2026-06-04 | 2026-06-10 | P2.L1.CL.1020 FF+2d, P2.L1.CL.1010 FF+2d, P2.L1.CL.1050 | 20d | 0d | 40 | ELEC | P2-5 | JH | ELEC-2 |  |
| P2.L1.CL.1080 |  | R/I - Fire Alarm/Life Safety - All Ceilings / L1 / Corr & Lobbies | 5d | 2026-06-11 | 2026-06-17 | P2.L1.CL.1010 FF+2d, P2.L1.CL.1030 | 20d | 0d | 40 | FA | P2-5 | JH | FA-1 |  |
| P2.L1.CL.1100 |  | Pull Wire - Electrical / L1 / Corr & Lobbies | 5d | 2026-06-11 | 2026-06-17 | P2.L1.CL.1030 | 55d | 0d | 40 | ELEC | P2-5 | JH | ELEC-2 |  |
| P2.L1.CL.1060 |  | R/I - All Remaining Low Voltage - All Ceilings / L1 / Corr & Lobbies | 5d | 2026-06-18 | 2026-06-24 | P2.L1.CL.1020 FF+2d, P2.L1.CL.1010 FF+2d, P2.L1.CL.1080 | 20d | 0d | 40 | LOWVOLT | P2-5 | JH | LOWVOLT-1 |  |
| P2.L1.CL.1110 |  | Pull Wire - Fire Alarm / L1 / Corr & Lobbies | 5d | 2026-06-18 | 2026-06-24 | P2.L1.CL.1100, P2.L1.CL.1080 | 60d | 0d | 40 | FA | P2-5 | JH | FA-1 |  |
| P2.L1.CL.1090 |  | Inspections - Close In- All Ceilings / L1 / Corr & Lobbies | 5d | 2026-06-25 | 2026-07-01 | P2.L1.CL.1050, P2.L1.CL.1060, P2.L1.CL.1030, P2.L1.CL.1040, P2.L1.CL.1080 | 20d | 0d | 40 | AHJ | P2-5 | JH | AHJ |  |
| P2.L1.CL.1120 |  | Pull Wire - All Remianing Low Voltage Systems / L1 / Corr & Lobbies | 5d | 2026-06-25 | 2026-07-01 | P2.L1.CL.1110, P2.L1.CL.1060 | 65d | 0d | 40 | LOWVOLT | P2-5 | JH | LOWVOLT-1 |  |
| P2.L1.CL.1130 |  | Hang/Tape/Finish- Hard Lid Ceilings / L1 / Corr & Lobbies | 10d | 2026-07-02 | 2026-07-16 | P2.L1.CL.1090 | 20d | 0d | 80 | GYP | P2-5 | JH | GYP-1 |  |
| P2.L1.CL.1140 |  | Drop Ceiling Tiles @ T-Grid / L1 / Corr & Lobbies | 5d | 2026-07-02 | 2026-07-09 | P2.L1.CL.1100, P2.L1.CL.1110, P2.L1.CL.1120, P2.L1.CL.1070 | 78d | 58d | 40 | ACT | P2-5 | JH | ACT |  |
| P2.L1.CL.1190 |  | Paint - Hard Lid Ceilings / L1 / Corr & Lobbies | 5d | 2026-07-17 | 2026-07-23 | P2.L1.CL.1130 | 20d | 0d | 40 | PAINT | P2-5 | JH | PAINT-1 |  |
| P2.L1.CL.1180 |  | Ceiling Mounted - HVAC GRD's / L1 / Corr & Lobbies | 15d | 2026-07-24 | 2026-08-13 | P2.L1.CL.1190, P2.L1.CL.1020 | 20d | 0d | 120 | HVAC | P2-5 | JH | HVAC | Harris |
| P2.L1.CL.1150 |  | Ceiling Mounted - Electrical Devices and Lights / L1 / Corr & Lobbies | 15d | 2026-08-07 | 2026-08-27 | P2.L1.CL.1180 SS+10d, P2.L1.CL.1100, P2.L1.CL.1190 | 20d | 0d | 120 | ELEC | P2-5 | JH | ELEC-2 |  |
| P2.L1.CL.1160 |  | Ceiling Mounted - Fire Alarm/Life Saftey Devices / L1 / Corr & Lobbies | 15d | 2026-08-21 | 2026-09-11 | P2.L1.CL.1150 SS+10d, P2.L1.CL.1110, P2.L1.CL.1190, P2.L1.CL.1020 | 20d | 0d | 120 | FA | P2-5 | JH | FA-1 |  |
| P2.L1.CL.1170 |  | Ceiling Mounted - All Low Voltage Devices / L1 / Corr & Lobbies | 15d | 2026-09-04 | 2026-09-25 | P2.L1.CL.1160 SS+10d, P2.L1.CL.1190, P2.L1.CL.1120 | 20d | 0d | 120 | LOWVOLT | P2-5 | JH | LOWVOLT-1 |  |
| P2.L1.CL.1200 |  | Prep Flooring / L1 / Corr & Lobbies | 2d | 2026-09-28 | 2026-09-29 | P2.L1.CL.1140 SS+2d, BP10.124.3.100, P2.L1.CL.1170, P2.L1.CL.1180, P2.L1.CL.1150, P2.L1.CL.1160, PCO.823.1150 | 20d | 0d | 80 | FLOOR | P2-5 | JH | FLOOR |  |
| P2.L1.CL.1330 |  | Flooring / L1 / Corr & Lobbies | 8d | 2026-09-30 | 2026-10-09 | P2.L1.CL.1200 | 20d | 0d | 80 | FLOOR | P2-5 | JH | FLOOR |  |
| P2.L1.CL.1210 |  | Final Paint / L1 / Corr & Lobbies | 5d | 2026-10-07 | 2026-10-13 | P2.L1.CL.1330 FF+2d, P2.L1.CL.1140, BP7.097.3.100 | 50d | 0d | 40 | PAINT | P2-5 | JH | PAINT-1 |  |
| P2.L1.CL.1220 |  | Floor Base / L1 / Corr & Lobbies | 5d | 2026-10-14 | 2026-10-20 | P2.L1.CL.1210 | 70d | 20d | 40 | FLOOR | P2-5 | JH | FLOOR |  |
| P2.L1.CL.1250 |  | Trim - HVAC - Wall Mounted Devices / L1 / Corr & Lobbies | 5d | 2026-10-14 | 2026-10-20 | BP1.233.3.410, P2.L1.CL.1210 | 50d | 0d | 40 | HVAC | P2-5 | JH | HVAC | Harris |
| P2.L1.CL.1230 |  | Trim - All Electrical - Wall Mounted Devices / L1 / Corr & Lobbies | 5d | 2026-10-21 | 2026-10-27 | P2.L1.CL.1250, P2.L1.CL.1210 | 50d | 0d | 40 | ELEC | P2-5 | JH | ELEC-2 |  |
| P2.L1.CL.1240 |  | Trim - Fire Alarm - Wall Mounted Devices / L1 / Corr & Lobbies | 5d | 2026-10-28 | 2026-11-03 | P2.L1.CL.1230, P2.L1.CL.1210 | 50d | 0d | 40 | FA | P2-5 | JH | FA-1 |  |
| P2.L1.CL.1260 |  | Trim - All Remining Low Voltage Systems - Wall Mounted Devices / L1 / Corr & Lobbies | 5d | 2026-11-04 | 2026-11-10 | P2.L1.CL.1240, P2.L1.CL.1210 | 50d | 0d | 40 | LOWVOLT | P2-5 | JH | LOWVOLT-1 |  |
| P2.L1.CL.1270 |  | Building Signage / L1 / Corr & Lobbies | 5d | 2026-11-11 | 2026-11-17 | P2.L1.CL.1260, P2.L1.CL.1210 | 50d | 0d | 40 | SIGN | P2-5 | JH | SIGN |  |
| P2.L1.CL.1280 |  | Work Completion List / L1 / Corr & Lobbies | 5d | 2026-11-18 | 2026-11-24 | P2.L1.CL.1270, P2.L1.CL.1230, P2.L1.CL.1240, P2.L1.CL.1250, P2.L1.CL.1260, P2.L1.CL.1220 | 50d | 0d | 40 | T | P2-5 | JH | T |  |
| P2.L1.CL.1290 |  | Rough Clean / L1 / Corr & Lobbies | 2d | 2026-11-25 | 2026-11-30 | P2.L1.CL.1280 | 50d | 0d | 16 | FCLEAN | P2-5 | JH | FCLEAN |  |
| P2.L1.CL.1300 |  | Punchlist / L1 / Corr & Lobbies | 5d | 2026-12-01 | 2026-12-07 | P2.L1.CL.1290 | 50d | 0d | 40 | AHJ | P2-5 | JH | AHJ |  |
| P2.L1.CL.1310 |  | Final Clean / L1 / Corr & Lobbies | 2d | 2026-12-08 | 2026-12-09 | P2.L1.CL.1300 | 50d | 62d | 16 | FCLEAN | P2-5 | JH | FCLEAN |  |

| ID | WBS | Activity | Duration | Start | Finish | Predecessors | Total float | Free float | Temp Orig Dur | *NIH Resp Check* | Resp / SRLM | PHASE | RESP UPD | RESP / Trade | Z.RESP | Testing Type |
| --- | --- | --- | --- | --- | --- | --- | --- | --- | --- | --- | --- | --- | --- | --- | --- | --- |
|  | L1 | **LAB & CLINICAL SPACES (Below Interstitials) / LEVEL 1** |  | 2025-02-10 | 2026-12-28 |  |  |  |  |  |  |  |  |  |  |  |
|  | 13 | **FINISHES - Lab & Clinical Spaces / Level 1** |  | 2026-04-01 | 2026-12-28 |  |  |  |  |  |  |  |  |  |  |  |
|  | 2 | **CT Suites - Room Blocks 1-39.. (6K SF) / Level 1** |  | 2026-04-01 | 2026-12-11 |  |  |  |  |  |  |  |  |  |  |  |
| P2.L1.F.LC.1010 |  | R/I - Ceiling Assemblies & Supports - Med Equip / L1 / CT Suites | 5d | 2026-04-01 | 2026-04-07 | P2.L1.LC.1450 | 96d | 0d | 40 | ! | ACT | P2-5 | JH | ACT |  |  |
| P2.L1.F.LC.1020 |  | Framing - Hard Lid Ceilings / L1 / CT Suites | 5d | 2026-04-08 | 2026-04-14 | P2.L1.F.LC.1010 | 96d | 0d | 40 | ! | GYP | P2-5 | JH | GYP-1 |  |  |
| P2.L1.F.LC.1030 |  | R/I - Lights & Devices - Hard Lids Ceilings / L1 / CT Suites | 5d | 2026-04-15 | 2026-04-21 | P2.L1.F.LC.1020 | 96d | 0d | 40 | ! | ELEC | P2-5 | JH | ELEC-2 |  |  |
| P2.L1.F.LC.1040 |  | R/I - Diffusers - Hard Lid Ceilings / L1 / CT Suites | 5d | 2026-04-15 | 2026-04-21 | P2.L1.F.LC.1020 | 96d | 0d | 40 | ! | HVAC | P2-5 | JH | HVAC | Harris |  |
| P2.L1.F.LC.1050 |  | R/I - Sprinkler Heads - Hard Lid Ceilings / L1 / CT Suites | 5d | 2026-04-15 | 2026-04-21 | P2.L1.F.LC.1020 | 96d | 0d | 40 | ! | FP | P2-5 | JH | FP-1 |  |  |
| P2.L1.F.LC.1060 |  | R/I - Fire Alarm - Hard Lid Ceilings / L1 / CT Suites | 5d | 2026-04-15 | 2026-04-21 | P2.L1.F.LC.1020 | 96d | 0d | 40 |  | FA | P2-5 | JH | FA-1 |  |  |
| P2.L1.F.LC.1070 |  | OH Ceiling Inspection & Signoff - Hard Lid Ceilings / L1 / CT Suites | 5d | 2026-04-22 | 2026-04-28 | P2.L1.F.LC.1040, P2.L1.F.LC.1050, P2.L1.F.LC.1060, P2.L1.F.LC.1030 | 96d | 0d | 40 | ! | AHJ | P2-5 | JH | AHJ |  |  |
| P2.L1.F.LC.1080 |  | Hang-Tape-Finish _Hard Lid Ceilings / L1 / CT Suites | 5d | 2026-04-29 | 2026-05-05 | P2.L1.F.LC.1070 | 96d | 0d | 40 | ! | GYP | P2-5 | JH | GYP-1 |  |  |
| P2.L1.F.LC.1090 |  | Paint Ceilings / L1 / CT Suites | 5d | 2026-05-06 | 2026-05-12 | P2.L1.F.LC.1080 | 161d | 0d | 40 |  | PAINT | P2-5 | JH | PAINT-1 |  |  |
| P2.L1.F.LC.1100 |  | Waterproof Ceramic Tile / L1 / CT Suites | 5d | 2026-05-13 | 2026-05-19 | P2.L1.F.LC.1090 | 161d | 0d | 40 |  | TILE | P2-5 | JH | TILE |  |  |
| P2.L1.F.LC.1120 |  | T-Grid / L1 / CT Suites | 5d | 2026-05-18 | 2026-05-22 | RFP.014.1040, P2.L1.F.LC.1010, P2.L1.F.LC.1080, P2.L1.CL.1020 | 88d | 0d | 40 |  | ACT | P2-5 | JH | ACT |  |  |
| P2.L1.F.LC.1110 |  | Ceramic Tile / L1 / CT Suites | 5d | 2026-05-20 | 2026-05-27 | P2.L1.F.LC.1100 | 161d | 113d | 40 |  | TILE | P2-5 | JH | TILE |  |  |
| P2.L1.F.LC.1130 |  | Diffusers in T-Grid / L1 / CT Suites | 5d | 2026-05-26 | 2026-06-01 | P2.L1.F.LC.1120 | 113d | 75d | 40 |  | HVAC | P2-5 | JH | HVAC | Harris |  |
| P2.L1.F.LC.1140 |  | Lights & Devices / L1 / CT Suites | 5d | 2026-05-26 | 2026-06-01 | P2.L1.F.LC.1120 | 113d | 75d | 40 |  | ELEC | P2-5 | JH | ELEC-2 |  |  |
| P2.L1.F.LC.1150 |  | Sprinkler Heads / L1 / CT Suites | 5d | 2026-05-26 | 2026-06-01 | P2.L1.F.LC.1120 | 113d | 75d | 40 |  | FP | P2-5 | JH | FP-1 |  |  |
| P2.L1.F.LC.1170 |  | Trim Fire Alarm / L1 / CT Suites | 5d | 2026-05-26 | 2026-06-01 | P2.L1.F.LC.1120 | 113d | 75d | 40 |  | FA | P2-5 | JH | FA-1 |  |  |
| P2.L1.F.LC.3440 |  | Headwall Set for MEP Tie in / L1 / CT Suites | 5d | 2026-08-19 | 2026-08-25 | P2.L1.LC.1450, P2.L1.LC.1470, P2.L1.LC.1430, P2.L1.LC.1440, BP6.102.3.100 | 63d | 0d | 120 |  | LABCASE | P2-5 | JH | LABCASE |  |  |
| P2.L1.F.LC.1190 |  | Casework (Before Flooring) / L1 / CT Suites | 5d | 2026-08-26 | 2026-09-01 | BP7.102.3.110, BP7.102.3.140, BP6.123.3.100 | 38d | 0d | 120 |  | LABCASE | P2-5 | JH | LABCASE |  |  |
| P2.L1.F.LC.1000 |  | Paint - Walls / L1 / CT Suites | 5d | 2026-09-02 | 2026-09-09 | P2.L1.LC.1550, P2.L1.F.LC.1190 | 38d | 0d | 40 |  | PAINT | P2-5 | JH | PAINT-1 |  |  |
| P2.L1.F.LC.1210 |  | Wall Protection / L1 / CT Suites | 5d | 2026-09-02 | 2026-09-09 | P2.L1.F.LC.1190, BP7.102.3.300 | 53d | 0d | 40 |  | WALLPRO | P2-5 | JH | WALLPRO |  |  |
| P2.L1.F.LC.1220 |  | Plumbing Fixtures & Drinking Fountains / L1 / CT Suites | 5d | 2026-09-02 | 2026-09-09 | P2.L1.F.LC.1190 | 58d | 20d | 40 |  | PLMB | P2-5 | JH | PLMB | Harris |  |
| P2.L1.F.LC.1260 |  | Doors & Hardware / L1 / CT Suites | 5d | 2026-09-02 | 2026-09-09 | P2.L1.F.LC.1190 | 58d | 20d | 40 |  | DFH | P2-5 | JH | DFH |  | AT29 |
| P2.L1.F.LC.3450 |  | Headwall MEP Tie in / L1 / CT Suites | 5d | 2026-09-02 | 2026-09-09 | P2.L1.F.LC.3440, P2.B2.F.LC.2510 | 58d | 0d | 120 |  | LABCASE | P2-5 | JH | LABCASE |  |  |
| P2.L1.F.LC.1160 |  | Trim Low Voltage / L1 / CT Suites | 5d | 2026-09-10 | 2026-09-16 | P2.L1.F.LC.1120, P2.L1.F.LC.1000 | 38d | 0d | 40 |  | LOWVOLT | P2-5 | JH | LOWVOLT-1 |  |  |
| P2.L1.F.LC.1230 |  | Trim T-Stats / L1 / CT Suites | 5d | 2026-09-10 | 2026-09-16 | P2.L1.F.LC.1210 | 53d | 0d | 40 |  | BAS | P2-5 | JH | BAS-1 | Harris |  |
| P2.L1.F.LC.1240 |  | Trim Electrical / L1 / CT Suites | 5d | 2026-09-10 | 2026-09-16 | P2.L1.F.LC.1230 SS | 53d | 0d | 40 |  | ELEC | P2-5 | JH | ELEC-2 |  |  |
| P2.L1.F.LC.1250 |  | Trim Telephone/ Data / L1 / CT Suites | 5d | 2026-09-10 | 2026-09-16 | P2.L1.F.LC.1240 SS | 53d | 15d | 40 |  | LOWVOLT | P2-5 | JH | LOWVOLT-1 |  |  |
| P2.L1.F.LC.1270 |  | Trim Med Gas / L1 / CT Suites | 5d | 2026-09-10 | 2026-09-16 | P2.L1.F.LC.1190, P2.L1.F.LC.1210 | 53d | 15d | 40 |  | MECH | P2-5 | JH | MECH-2 | Harris |  |
| P2.L1.F.LC.3460 |  | Headwall Coverplate Install / L1 / CT Suites | 5d | 2026-09-10 | 2026-09-16 | P2.L1.F.LC.3450, P2.B2.F.LC.2500 | 58d | 0d | 120 |  | LABCASE | P2-5 | JH | LABCASE |  |  |
| P2.L1.F.LC.1180 |  | OH Ceiling Signoff / L1 / CT Suites | 10d | 2026-09-17 | 2026-09-30 | P2.L1.F.LC.1150, P2.L1.F.LC.1130, P2.L1.F.LC.1140, P2.L1.F.LC.1160, P2.L1.F.LC.1170 | 38d | 0d | 80 |  | MEP | P2-5 | JH | MEP | Harris |  |
| P2.L1.F.LC.1200 |  | Drop Ceiling Tile / L1 / CT Suites | 5d | 2026-10-01 | 2026-10-07 | P2.L1.F.LC.1180 | 38d | 0d | 40 |  | ACT | P2-5 | JH | ACT |  |  |
| P2.L1.F.LC.1280 |  | Floor Prep / L1 / CT Suites | 5d | 2026-10-08 | 2026-10-14 | P2.L1.F.LC.1240, P2.L1.F.LC.1250, P2.L1.F.LC.1190, P2.L1.F.LC.1220, P2.L1.F.LC.1230, P2.L1.F.LC.1270, P2.L1.F.LC.1200, P2.L1.F.LC.1260 | 38d | 0d | 40 |  | FLOOR | P2-5 | JH | FLOOR |  |  |
| P2.L1.F.LC.1290 |  | Flooring / L1 / CT Suites | 5d | 2026-10-15 | 2026-10-21 | P2.L1.F.LC.1280 | 38d | 0d | 40 |  | FLOOR | P2-5 | JH | FLOOR |  |  |
| P2.L1.F.LC.1300 |  | Building Specialities / L1 / CT Suites | 5d | 2026-10-22 | 2026-10-28 | P2.L1.F.LC.1290 | 53d | 0d | 40 |  | SPECIAL | P2-5 | JH | SPECIAL |  |  |
| P2.L1.F.LC.1310 |  | Interior Building Signage / L1 / CT Suites | 5d | 2026-10-22 | 2026-10-28 | P2.L1.F.LC.1290 | 53d | 0d | 40 |  | SIGN | P2-5 | JH | SIGN |  |  |
| P2.L1.F.LC.1330 |  | Remaining Equipment Post Flooring / L1 / CT Suites | 5d | 2026-10-22 | 2026-10-28 | P2.L1.F.LC.1290 | 38d | 0d | 40 |  | MEP | P2-5 | JH | MEP-2 |  |  |
| P2.L1.F.LC.1320 |  | Work Completion List - Finishes / L1 / CT Suites | 5d | 2026-10-29 | 2026-11-04 | P2.L1.F.LC.1300, P2.L1.F.LC.3460, P2.L1.F.LC.1310 | 53d | 5d | 40 |  | FINISH | P2-5 | JH | FINISH |  |  |
| P2.L1.F.LC.1340 |  | Remaining MEP Hook-Ups / L1 / CT Suites | 5d | 2026-10-29 | 2026-11-04 | P2.L1.F.LC.3460, P2.L1.F.LC.1330 | 48d | 0d | 40 |  | MEP | P2-5 | JH | MEP | Harris |  |
| P2.L1.F.LC.1350 |  | OFOI Furniture & Equipment / L1 / CT Suites | 5d | 2026-10-29 | 2026-11-04 | P2.L1.F.LC.1340 SS, OFOI.EQUIP.L1.1100, OFOI.EQUIP.L1.1070, OFOI.EQUIP.L1.1080, OFOI.EQUIP.L1.1090 | 58d | 10d | 40 |  | FURN | P2-5 | JH | FURN |  |  |
| P2.L1.F.LC.1360 |  | Rough Clean / L1 / CT Suites | 5d | 2026-11-05 | 2026-11-11 | P2.L1.F.LC.3460, P2.L1.F.LC.1340, P2.L1.F.LC.1110 | 48d | 0d | 40 |  | FCLEAN | P2-5 | JH | FCLEAN |  |  |
| P2.L1.F.LC.1370 |  | Prepare Punchlist / L1 / CT Suites | 5d | 2026-11-12 | 2026-11-18 | P2.L1.F.LC.1340 SS, P2.L1.F.LC.1360, P2.L1.F.LC.1320 | 48d | 0d | 40 |  | QC | P2-5 | JH | QC |  |  |
| P2.L1.F.LC.1380 |  | Correct Punchlist / L1 / CT Suites | 10d | 2026-11-19 | 2026-12-04 | P2.L1.F.LC.1370, P2.L1.F.LC.1350 | 48d | 0d | 80 |  | FINISH | P2-5 | JH | FINISH |  |  |
| P2.L1.F.LC.1390 |  | Final Clean / L1 / CT Suites | 5d | 2026-12-07 | 2026-12-11 | P2.L1.F.LC.1380 | 48d | 60d | 40 |  | QC | P2-5 | JH | QC |  |  |

| ID | WBS | Activity | Duration | Start | Finish | Predecessors | Total float | Free float | Temp Orig Dur | Resp / SRLM | PHASE | RESP UPD | RESP / Trade | Z.RESP | Testing Type | *NIH Resp Check* |
| --- | --- | --- | --- | --- | --- | --- | --- | --- | --- | --- | --- | --- | --- | --- | --- | --- |
|  | 3 | **Control / WorkStations - Room Blocks 1-29.. (3K SF) / Level 1** |  | 2026-05-06 | 2026-12-18 |  |  |  |  |  |  |  |  |  |  |  |
| P2.L1.F.LC.2190 |  | Casework (Before Flooring) / L1 / Ctrl,Wrkstn 294X | 5d | 2026-05-06 | 2026-05-12 | P2.L1.LC.1470, BP6.123.3.100 | 86d | 0d | 120 | LABCASE | P2-5 | JH | LABCASE |  |  |  |
| P2.L1.F.LC.2220 |  | Plumbing Fixtures & Drinking Fountains / L1 / Ctrl,Wrkstn 294X | 5d | 2026-05-13 | 2026-05-19 | P2.L1.F.LC.2190 | 131d | 40d | 40 | PLMB | P2-5 | JH | PLMB | Harris |  |  |
| P2.L1.F.LC.2260 |  | Doors & Hardware / L1 / Ctrl,Wrkstn 294X | 5d | 2026-05-13 | 2026-05-19 | P2.L1.F.LC.2190 | 131d | 40d | 40 | DFH | P2-5 | JH | DFH |  | AT29 |  |
| P2.L1.F.LC.2210 |  | Wall Protection / L1 / Ctrl,Wrkstn 294X | 5d | 2026-05-21 | 2026-05-28 | P2.L1.F.LC.2190, BP7.102.3.300 | 120d | 0d | 40 | WALLPRO | P2-5 | JH | WALLPRO |  |  |  |
| P2.L1.F.LC.2000 |  | Paint - Walls / L1 / Ctrl,Wrkstn 294X | 5d | 2026-05-28 | 2026-06-03 | P2.L1.LC.1550, P2.L1.F.LC.2190 | 76d | 0d | 40 | PAINT | P2-5 | JH | PAINT-1 |  |  |  |
| P2.L1.F.LC.2230 |  | Trim T-Stats / L1 / Ctrl,Wrkstn 294X | 5d | 2026-05-29 | 2026-06-04 | P2.L1.F.LC.2210 | 120d | 0d | 40 | BAS | P2-5 | JH | BAS-1 | Harris |  |  |
| P2.L1.F.LC.2240 |  | Trim Electrical / L1 / Ctrl,Wrkstn 294X | 5d | 2026-05-29 | 2026-06-04 | P2.L1.F.LC.2230 SS | 120d | 0d | 40 | ELEC | P2-5 | JH | ELEC-2 |  |  |  |
| P2.L1.F.LC.2250 |  | Trim Telephone/ Data / L1 / Ctrl,Wrkstn 294X | 5d | 2026-05-29 | 2026-06-04 | P2.L1.F.LC.2240 SS | 120d | 29d | 40 | LOWVOLT | P2-5 | JH | LOWVOLT-1 |  |  |  |
| P2.L1.F.LC.2270 |  | Trim Med Gas / L1 / Ctrl,Wrkstn 294X | 5d | 2026-05-29 | 2026-06-04 | P2.L1.F.LC.2190, P2.L1.F.LC.2210 | 120d | 29d | 40 | MECH | P2-5 | JH | MECH-2 | Harris |  |  |
| P2.L1.F.LC.2010 |  | R/I - Ceiling Assemblies & Supports - Med Equip / L1 / Ctrl,Wrkstn 294X | 5d | 2026-06-04 | 2026-06-10 | P2.L1.F.LC.2000 | 76d | 0d | 40 | ACT | P2-5 | JH | ACT |  |  | ! |
| P2.L1.F.LC.2020 |  | Framing - Hard Lid Ceilings / L1 / Ctrl,Wrkstn 294X | 5d | 2026-06-11 | 2026-06-17 | P2.L1.F.LC.2010 | 106d | 0d | 40 | GYP | P2-5 | JH | GYP-1 |  |  | ! |
| P2.L1.F.LC.2120 |  | T-Grid / L1 / Ctrl,Wrkstn 294X | 5d | 2026-06-11 | 2026-06-17 | P2.L1.F.LC.2000, P2.L1.F.LC.2010, P2.L1.F.LC.1120 | 76d | 0d | 40 | ACT | P2-5 | JH | ACT |  |  |  |
| P2.L1.F.LC.2030 |  | R/I - Lights & Devices - Hard Lids Ceilings / L1 / Ctrl,Wrkstn 294X | 5d | 2026-06-18 | 2026-06-24 | P2.L1.F.LC.2020 | 106d | 0d | 40 | ELEC | P2-5 | JH | ELEC-2 |  |  | ! |
| P2.L1.F.LC.2040 |  | R/I - Diffusers - Hard Lid Ceilings / L1 / Ctrl,Wrkstn 294X | 5d | 2026-06-18 | 2026-06-24 | P2.L1.F.LC.2020 | 106d | 0d | 40 | HVAC | P2-5 | JH | HVAC | Harris |  | ! |
| P2.L1.F.LC.2050 |  | R/I - Sprinkler Heads - Hard Lid Ceilings / L1 / Ctrl,Wrkstn 294X | 5d | 2026-06-18 | 2026-06-24 | P2.L1.F.LC.2020 | 106d | 0d | 40 | FP | P2-5 | JH | FP-1 |  |  | ! |
| P2.L1.F.LC.2060 |  | R/I - Fire Alarm - Hard Lid Ceilings / L1 / Ctrl,Wrkstn 294X | 5d | 2026-06-18 | 2026-06-24 | P2.L1.F.LC.2020 | 106d | 0d | 40 | FA | P2-5 | JH | FA-1 |  |  |  |
| P2.L1.F.LC.2130 |  | Diffusers in T-Grid / L1 / Ctrl,Wrkstn 294X | 5d | 2026-06-18 | 2026-06-24 | P2.L1.F.LC.2120 | 91d | 0d | 40 | HVAC | P2-5 | JH | HVAC | Harris |  |  |
| P2.L1.F.LC.2140 |  | Lights & Devices / L1 / Ctrl,Wrkstn 294X | 5d | 2026-06-18 | 2026-06-24 | P2.L1.F.LC.2120 | 91d | 0d | 40 | ELEC | P2-5 | JH | ELEC-2 |  |  |  |
| P2.L1.F.LC.2150 |  | Sprinkler Heads / L1 / Ctrl,Wrkstn 294X | 5d | 2026-06-18 | 2026-06-24 | P2.L1.F.LC.2120 | 91d | 0d | 40 | FP | P2-5 | JH | FP-1 |  |  |  |
| P2.L1.F.LC.2160 |  | Trim Low Voltage / L1 / Ctrl,Wrkstn 294X | 5d | 2026-06-18 | 2026-06-24 | P2.L1.F.LC.2120 | 91d | 0d | 40 | LOWVOLT | P2-5 | JH | LOWVOLT-1 |  |  |  |
| P2.L1.F.LC.2170 |  | Trim Fire Alarm / L1 / Ctrl,Wrkstn 294X | 5d | 2026-06-18 | 2026-06-24 | P2.L1.F.LC.2120 | 91d | 0d | 40 | FA | P2-5 | JH | FA-1 |  |  |  |
| P2.L1.F.LC.2070 |  | OH Ceiling Inspection & Signoff - Hard Lid Ceilings / L1 / Ctrl,Wrkstn 294X | 5d | 2026-06-25 | 2026-07-01 | P2.L1.F.LC.2030, P2.L1.F.LC.2040, P2.L1.F.LC.2050, P2.L1.F.LC.2060 | 106d | 0d | 40 | AHJ | P2-5 | JH | AHJ |  |  | ! |
| P2.L1.F.LC.2180 |  | OH Ceiling Signoff / L1 / Ctrl,Wrkstn 294X | 10d | 2026-06-25 | 2026-07-09 | P2.L1.F.LC.2170, P2.L1.F.LC.2160, P2.L1.F.LC.2130, P2.L1.F.LC.2140, P2.L1.F.LC.2150 | 91d | 0d | 80 | MEP | P2-5 | JH | MEP | Harris |  |  |
| P2.L1.F.LC.2080 |  | Hang-Tape-Finish _Hard Lid Ceilings / L1 / Ctrl,Wrkstn 294X | 5d | 2026-07-02 | 2026-07-09 | P2.L1.F.LC.2070 | 106d | 0d | 40 | GYP | P2-5 | JH | GYP-1 |  |  | ! |
| P2.L1.F.LC.2090 |  | Paint Ceilings / L1 / Ctrl,Wrkstn 294X | 5d | 2026-07-10 | 2026-07-16 | P2.L1.F.LC.2080 | 106d | 0d | 40 | PAINT | P2-5 | JH | PAINT-1 |  |  |  |
| P2.L1.F.LC.2200 |  | Drop Ceiling Tile / L1 / Ctrl,Wrkstn 294X | 5d | 2026-07-10 | 2026-07-16 | P2.L1.F.LC.2180 | 91d | 0d | 40 | ACT | P2-5 | JH | ACT |  |  |  |
| P2.L1.F.LC.2100 |  | Waterproof Ceramic Tile / L1 / Ctrl,Wrkstn 294X | 5d | 2026-07-17 | 2026-07-23 | P2.L1.F.LC.2090 | 116d | 0d | 40 | TILE | P2-5 | JH | TILE |  |  |  |
| P2.L1.F.LC.2280 |  | Floor Prep / L1 / Ctrl,Wrkstn 294X | 5d | 2026-07-17 | 2026-07-23 | P2.L1.F.LC.2270, P2.L1.F.LC.2200, P2.L1.F.LC.2260, P2.L1.F.LC.2250, P2.L1.F.LC.2220, P2.L1.F.LC.2230, P2.L1.F.LC.2240 | 91d | 0d | 40 | FLOOR | P2-5 | JH | FLOOR |  |  |  |
| P2.L1.F.LC.3400 |  | Floor Prep - Epoxy Floors / L1 / TLT-ISO 1-294X | 3d | 2026-07-17 | 2026-07-21 | P2.L1.F.LC.2090, P2.L1.F.LC.2190 | 106d | 0d | 40 | EPOXYF | P2-5 | JH | EPOXYF |  |  |  |
| P2.L1.F.LC.3410 |  | Flooring - Epoxy Floors / L1 / TLT-ISO 1-294X | 2d | 2026-07-22 | 2026-07-23 | P2.L1.F.LC.3400 | 106d | 68d | 40 | EPOXYF | P2-5 | JH | EPOXYF |  |  |  |
| P2.L1.F.LC.2110 |  | Ceramic Tile / L1 / Ctrl,Wrkstn 294X | 5d | 2026-07-24 | 2026-07-30 | P2.L1.F.LC.2100 | 116d | 73d | 40 | TILE | P2-5 | JH | TILE |  |  |  |
| P2.L1.F.LC.2290 |  | Flooring / L1 / Ctrl,Wrkstn 294X | 5d | 2026-07-24 | 2026-07-30 | P2.L1.F.LC.2280 | 91d | 0d | 40 | FLOOR | P2-5 | JH | FLOOR |  |  |  |
| P2.L1.F.LC.2300 |  | Building Specialities / L1 / Ctrl,Wrkstn 294X | 5d | 2026-07-31 | 2026-08-06 | P2.L1.F.LC.2290 | 91d | 33d | 40 | SPECIAL | P2-5 | JH | SPECIAL |  |  |  |
| P2.L1.F.LC.2310 |  | Interior Building Signage / L1 / Ctrl,Wrkstn 294X | 5d | 2026-07-31 | 2026-08-06 | P2.L1.F.LC.2290 | 91d | 33d | 40 | SIGN | P2-5 | JH | SIGN |  |  |  |
| P2.L1.F.LC.3470 |  | Headwall Set for MEP Tie in / L1 / Ctrl,Wrkstn 294X | 5d | 2026-08-26 | 2026-09-01 | P2.L1.LC.1470, P2.L1.LC.1440, P2.L1.LC.1450, P2.L1.LC.1430, BP6.102.3.100, P2.L1.F.LC.3440 | 63d | 0d | 120 | LABCASE | P2-5 | JH | LABCASE |  |  |  |
| P2.L1.F.LC.3480 |  | Headwall MEP Tie in / L1 / Ctrl,Wrkstn 294X | 5d | 2026-09-10 | 2026-09-16 | P2.L1.F.LC.3470, P2.L1.F.LC.3450 | 58d | 0d | 120 | LABCASE | P2-5 | JH | LABCASE |  |  |  |
| P2.L1.F.LC.3490 |  | Headwall Coverplate Install / L1 / Ctrl,Wrkstn 294X | 5d | 2026-09-17 | 2026-09-23 | P2.L1.F.LC.3480, P2.L1.F.LC.3460 | 58d | 0d | 120 | LABCASE | P2-5 | JH | LABCASE |  |  |  |
| P2.L1.F.LC.2320 |  | Work Completion List - Finishes / L1 / Ctrl,Wrkstn 294X | 5d | 2026-09-24 | 2026-09-30 | P2.L1.F.LC.2310, P2.L1.F.LC.2300, P2.L1.F.LC.3490 | 58d | 20d | 40 | FINISH | P2-5 | JH | FINISH |  |  |  |
| P2.L1.F.LC.2330 |  | Remaining Equipment Post Flooring / L1 / Ctrl,Wrkstn 294X | 5d | 2026-10-29 | 2026-11-04 | P2.L1.F.LC.2320, P2.L1.F.LC.3490, P2.L1.F.LC.1330, P2.L1.F.LC.3410 | 38d | 0d | 40 | MEP | P2-5 | JH | MEP-2 |  |  |  |
| P2.L1.F.LC.2340 |  | Remaining MEP Hook-Ups / L1 / Ctrl,Wrkstn 294X | 5d | 2026-11-05 | 2026-11-11 | P2.L1.F.LC.2330, P2.L1.F.LC.3490 | 43d | 0d | 40 | MEP | P2-5 | JH | MEP | Harris |  |  |
| P2.L1.F.LC.2350 |  | OFOI Furniture & Equipment / L1 / Ctrl,Wrkstn 294X | 5d | 2026-11-05 | 2026-11-11 | P2.L1.F.LC.2340 SS | 53d | 10d | 40 | FURN | P2-5 | JH | FURN |  |  |  |
| P2.L1.F.LC.2360 |  | Rough Clean / L1 / Ctrl,Wrkstn 294X | 5d | 2026-11-12 | 2026-11-18 | P2.L1.F.LC.2340, P2.L1.F.LC.2110 | 43d | 0d | 40 | FCLEAN | P2-5 | JH | FCLEAN |  |  |  |
| P2.L1.F.LC.2370 |  | Prepare Punchlist / L1 / Ctrl,Wrkstn 294X | 5d | 2026-11-19 | 2026-11-25 | P2.L1.F.LC.2340 SS, P2.L1.F.LC.2360 | 43d | 0d | 40 | QC | P2-5 | JH | QC |  |  |  |
| P2.L1.F.LC.2380 |  | Correct Punchlist / L1 / Ctrl,Wrkstn 294X | 10d | 2026-11-30 | 2026-12-11 | P2.L1.F.LC.2370, P2.L1.F.LC.2350 | 43d | 0d | 80 | FINISH | P2-5 | JH | FINISH |  |  |  |
| P2.L1.F.LC.2390 |  | Final Clean / L1 / Ctrl,Wrkstn 294X | 5d | 2026-12-14 | 2026-12-18 | P2.L1.F.LC.2380 | 43d | 55d | 40 | QC | P2-5 | JH | QC |  |  |  |

| ID | WBS | Activity | Duration | Start | Finish | Predecessors | Total float | Free float | Temp Orig Dur | Resp / SRLM | PHASE | RESP UPD | RESP / Trade | *NIH Resp Check* | Z.RESP | Testing Type |
| --- | --- | --- | --- | --- | --- | --- | --- | --- | --- | --- | --- | --- | --- | --- | --- | --- |
|  | 4 | **MRI Suites - Room Blocks 1-28.. (13.5K SF) / Level 1** |  | 2026-05-28 | 2026-12-28 |  |  |  |  |  |  |  |  |  |  |  |
| P2.L1.F.LC.3000 |  | Paint - Walls / L1 / MRI 28XX | 5d | 2026-05-28 | 2026-06-03 | P2.L1.LC.1550 | 81d | 0d | 40 | PAINT | P2-5 | JH | PAINT-1 |  |  |  |
| P2.L1.F.LC.3010 |  | R/I - Ceiling Assemblies & Supports - Med Equip / L1 / MRI 28XX | 5d | 2026-06-04 | 2026-06-10 | CW.FD-MU -210, P2.L1.F.LC.3000 | 81d | 0d | 40 | ACT | P2-5 | JH | ACT | ! |  |  |
| P2.L1.F.LC.3020 |  | Framing - Hard Lid Ceilings / L1 / MRI 28XX | 5d | 2026-06-11 | 2026-06-17 | P2.L1.F.LC.3010 | 116d | 0d | 40 | GYP | P2-5 | JH | GYP-1 | ! |  |  |
| P2.L1.F.LC.3030 |  | R/I - Lights & Devices - Hard Lids Ceilings / L1 / MRI 28XX | 5d | 2026-06-18 | 2026-06-24 | P2.L1.F.LC.3020 | 116d | 0d | 40 | ELEC | P2-5 | JH | ELEC-2 | ! |  |  |
| P2.L1.F.LC.3040 |  | R/I - Diffusers - Hard Lid Ceilings / L1 / MRI 28XX | 5d | 2026-06-18 | 2026-06-24 | P2.L1.F.LC.3020 | 116d | 0d | 40 | HVAC | P2-5 | JH | HVAC | ! | Harris |  |
| P2.L1.F.LC.3050 |  | R/I - Sprinkler Heads - Hard Lid Ceilings / L1 / MRI 28XX | 5d | 2026-06-18 | 2026-06-24 | P2.L1.F.LC.3020 | 116d | 0d | 40 | FP | P2-5 | JH | FP-1 | ! |  |  |
| P2.L1.F.LC.3060 |  | R/I - Fire Alarm - Hard Lid Ceilings / L1 / MRI 28XX | 5d | 2026-06-18 | 2026-06-24 | P2.L1.F.LC.3020 | 116d | 0d | 40 | FA | P2-5 | JH | FA-1 |  |  |  |
| P2.L1.F.LC.3120 |  | T-Grid / L1 / MRI 28XX | 5d | 2026-06-18 | 2026-06-24 | P2.L1.F.LC.3000, P2.L1.F.LC.3010, P2.L1.F.LC.2120 | 76d | 0d | 40 | ACT | P2-5 | JH | ACT |  |  |  |
| P2.L1.F.LC.3070 |  | OH Ceiling Inspection & Signoff - Hard Lid Ceilings / L1 / MRI 28XX | 5d | 2026-06-25 | 2026-07-01 | P2.L1.F.LC.3040, P2.L1.F.LC.3050, P2.L1.F.LC.3060, P2.L1.F.LC.3030 | 116d | 0d | 40 | AHJ | P2-5 | JH | AHJ | ! |  |  |
| P2.L1.F.LC.3130 |  | Diffusers in T-Grid / L1 / MRI 28XX | 5d | 2026-06-25 | 2026-07-01 | P2.L1.F.LC.3120 | 76d | 0d | 40 | HVAC | P2-5 | JH | HVAC |  | Harris |  |
| P2.L1.F.LC.3140 |  | Lights & Devices / L1 / MRI 28XX | 5d | 2026-06-25 | 2026-07-01 | P2.L1.F.LC.3120 | 76d | 0d | 40 | ELEC | P2-5 | JH | ELEC-2 |  |  |  |
| P2.L1.F.LC.3150 |  | Sprinkler Heads / L1 / MRI 28XX | 5d | 2026-06-25 | 2026-07-01 | P2.L1.F.LC.3120 | 76d | 0d | 40 | FP | P2-5 | JH | FP-1 |  |  |  |
| P2.L1.F.LC.3160 |  | Trim Low Voltage / L1 / MRI 28XX | 5d | 2026-06-25 | 2026-07-01 | P2.L1.F.LC.3120 | 76d | 0d | 40 | LOWVOLT | P2-5 | JH | LOWVOLT-1 |  |  |  |
| P2.L1.F.LC.3170 |  | Trim Fire Alarm / L1 / MRI 28XX | 5d | 2026-06-25 | 2026-07-01 | P2.L1.F.LC.3120 | 76d | 0d | 40 | FA | P2-5 | JH | FA-1 |  |  |  |
| P2.L1.F.LC.3080 |  | Hang-Tape-Finish _Hard Lid Ceilings / L1 / MRI 28XX | 5d | 2026-07-02 | 2026-07-09 | P2.L1.F.LC.3070 | 116d | 0d | 40 | GYP | P2-5 | JH | GYP-1 | ! |  |  |
| P2.L1.F.LC.3180 |  | OH Ceiling Signoff / L1 / MRI 28XX | 10d | 2026-07-02 | 2026-07-16 | P2.L1.F.LC.3160, P2.L1.F.LC.3170, P2.L1.F.LC.3150, P2.L1.F.LC.3130, P2.L1.F.LC.3140 | 76d | 0d | 80 | MEP | P2-5 | JH | MEP |  | Harris |  |
| P2.L1.F.LC.3090 |  | Paint Ceilings / L1 / MRI 28XX | 5d | 2026-07-10 | 2026-07-16 | P2.L1.F.LC.3080 | 116d | 0d | 40 | PAINT | P2-5 | JH | PAINT-1 |  |  |  |
| P2.L1.F.LC.3100 |  | Waterproof Ceramic Tile / L1 / MRI 28XX | 5d | 2026-07-17 | 2026-07-23 | P2.L1.F.LC.3090 | 116d | 0d | 40 | TILE | P2-5 | JH | TILE |  |  |  |
| P2.L1.F.LC.3190 |  | Casework/ Equipment / L1 / MRI 28XX | 10d | 2026-07-17 | 2026-07-30 | P2.L1.F.LC.3180 | 76d | 0d | 120 | MILL | P2-5 | JH | MILL |  |  |  |
| P2.L1.F.LC.3200 |  | Drop Ceiling Tile / L1 / MRI 28XX | 5d | 2026-07-17 | 2026-07-23 | P2.L1.F.LC.3180 | 91d | 15d | 40 | ACT | P2-5 | JH | ACT |  |  |  |
| P2.L1.F.LC.3110 |  | Ceramic Tile / L1 / MRI 28XX | 5d | 2026-07-24 | 2026-07-30 | P2.L1.F.LC.3100 | 116d | 78d | 40 | TILE | P2-5 | JH | TILE |  |  |  |
| P2.L1.F.LC.3210 |  | Wall Protection / L1 / MRI 28XX | 5d | 2026-07-31 | 2026-08-06 | P2.L1.F.LC.3190 SS+10d, BP7.102.3.300 | 76d | 0d | 40 | WALLPRO | P2-5 | JH | WALLPRO |  |  |  |
| P2.L1.F.LC.3220 |  | Plumbing Fixtures & Drinking Fountains / L1 / MRI 28XX | 5d | 2026-07-31 | 2026-08-06 | P2.L1.F.LC.3190 | 81d | 5d | 40 | PLMB | P2-5 | JH | PLMB |  | Harris |  |
| P2.L1.F.LC.3260 |  | Doors & Hardware / L1 / MRI 28XX | 5d | 2026-07-31 | 2026-08-06 | P2.L1.F.LC.3190 | 81d | 5d | 40 | DFH | P2-5 | JH | DFH |  |  | AT29 |
| P2.L1.F.LC.3230 |  | Trim T-Stats / L1 / MRI 28XX | 5d | 2026-08-07 | 2026-08-13 | P2.L1.F.LC.3210 | 76d | 0d | 40 | BAS | P2-5 | JH | BAS-1 |  | Harris |  |
| P2.L1.F.LC.3240 |  | Trim Electrical / L1 / MRI 28XX | 5d | 2026-08-07 | 2026-08-13 | P2.L1.F.LC.3230 SS | 76d | 0d | 40 | ELEC | P2-5 | JH | ELEC-2 |  |  |  |
| P2.L1.F.LC.3250 |  | Trim Telephone/ Data / L1 / MRI 28XX | 5d | 2026-08-07 | 2026-08-13 | P2.L1.F.LC.3240 SS | 76d | 0d | 40 | LOWVOLT | P2-5 | JH | LOWVOLT-1 |  |  |  |
| P2.L1.F.LC.3270 |  | Trim Med Gas / L1 / MRI 28XX | 5d | 2026-08-07 | 2026-08-13 | P2.L1.F.LC.3190, P2.L1.F.LC.3210 | 76d | 0d | 40 | MECH | P2-5 | JH | MECH-2 |  | Harris |  |
| P2.L1.F.LC.3280 |  | Floor Prep / L1 / MRI 28XX | 5d | 2026-08-14 | 2026-08-20 | P2.L1.F.LC.3200, P2.L1.F.LC.3260, P2.L1.F.LC.3240, P2.L1.F.LC.3250, P2.L1.F.LC.3190, P2.L1.F.LC.3220, P2.L1.F.LC.3230, P2.L1.F.LC.3270, PCO.823.1150, PCO.225.1220 | 76d | 0d | 40 | FLOOR | P2-5 | JH | FLOOR |  |  |  |
| P2.L1.F.LC.3290 |  | Flooring / L1 / MRI 28XX | 5d | 2026-08-21 | 2026-08-27 | P2.L1.F.LC.3280 | 76d | 0d | 40 | FLOOR | P2-5 | JH | FLOOR |  |  |  |
| P2.L1.F.LC.3300 |  | Building Specialities / L1 / MRI 28XX | 5d | 2026-08-28 | 2026-09-03 | P2.L1.F.LC.3290 | 76d | 18d | 40 | SPECIAL | P2-5 | JH | SPECIAL |  |  |  |
| P2.L1.F.LC.3310 |  | Interior Building Signage / L1 / MRI 28XX | 5d | 2026-08-28 | 2026-09-03 | P2.L1.F.LC.3290 | 76d | 18d | 40 | SIGN | P2-5 | JH | SIGN |  |  |  |
| P2.L1.F.LC.3500 |  | Headwall Set for MEP Tie in / L1 / MRI 28XX | 5d | 2026-09-02 | 2026-09-09 | P2.L1.LC.1470, P2.L1.LC.1440, P2.L1.LC.1450, P2.L1.LC.1430, BP6.102.3.100, P2.L1.F.LC.3470 | 63d | 5d | 120 | LABCASE | P2-5 | JH | LABCASE |  |  |  |
| P2.L1.F.LC.3510 |  | Headwall MEP Tie in / L1 / MRI 28XX | 5d | 2026-09-17 | 2026-09-23 | P2.L1.F.LC.3500, P2.L1.F.LC.3480 | 58d | 0d | 120 | LABCASE | P2-5 | JH | LABCASE |  |  |  |
| P2.L1.F.LC.3520 |  | Headwall Coverplate Install / L1 / MRI 28XX | 5d | 2026-09-24 | 2026-09-30 | P2.L1.F.LC.3510, P2.L1.F.LC.3490 | 58d | 0d | 120 | LABCASE | P2-5 | JH | LABCASE |  |  |  |
| P2.L1.F.LC.3320 |  | Work Completion List - Finishes / L1 / MRI 28XX | 5d | 2026-10-01 | 2026-10-07 | P2.L1.F.LC.3310, P2.L1.F.LC.3300, P2.L1.F.LC.3520 | 58d | 20d | 40 | FINISH | P2-5 | JH | FINISH |  |  |  |
| P2.L1.F.LC.3330 |  | Remaining Equipment Post Flooring / L1 / MRI 28XX | 5d | 2026-11-05 | 2026-11-11 | P2.L1.F.LC.3320, P2.L1.F.LC.3520, P2.L1.F.LC.2330 | 38d | 0d | 40 | MEP | P2-5 | JH | MEP-2 |  |  |  |
| P2.L1.F.LC.3340 |  | Remaining MEP Hook-Ups / L1 / MRI 28XX | 5d | 2026-11-12 | 2026-11-18 | P2.L1.F.LC.3330, P2.L1.F.LC.3520 | 38d | 0d | 40 | MEP | P2-5 | JH | MEP |  | Harris |  |
| P2.L1.F.LC.3350 |  | OFOI Furniture & Equipment / L1 / MRI 28XX | 5d | 2026-11-12 | 2026-11-18 | P2.L1.F.LC.3340 SS, OFOI.EQUIP.L1.1030, OFOI.EQUIP.L1.1040, OFOI.EQUIP.L1.1050, OFOI.EQUIP.L1.1060, OFOI.EQUIP.L1.1000, OFOI.EQUIP.L1.1010, OFOI.EQUIP.L1.1020 | 48d | 10d | 40 | FURN | P2-5 | JH | FURN |  |  |  |
| P2.L1.F.LC.3360 |  | Rough Clean / L1 / MRI 28XX | 5d | 2026-11-19 | 2026-11-25 | P2.L1.F.LC.3340, P2.L1.F.LC.3110 | 38d | 0d | 40 | FCLEAN | P2-5 | JH | FCLEAN |  |  |  |
| P2.L1.F.LC.3370 |  | Prepare Punchlist / L1 / MRI 28XX | 5d | 2026-11-30 | 2026-12-04 | P2.L1.F.LC.3340 SS, P2.L1.F.LC.3360 | 38d | 0d | 40 | QC | P2-5 | JH | QC |  |  |  |
| P2.L1.F.LC.3380 |  | Correct Punchlist / L1 / MRI 28XX | 10d | 2026-12-07 | 2026-12-18 | P2.L1.F.LC.3370, P2.L1.F.LC.3350 | 38d | 0d | 80 | FINISH | P2-5 | JH | FINISH |  |  |  |
| P2.L1.F.LC.3390 |  | Final Clean / L1 / MRI 28XX | 5d | 2026-12-21 | 2026-12-28 | P2.L1.F.LC.3380 | 38d | 50d | 40 | QC | P2-5 | JH | QC |  |  |  |

| ID | WBS | Activity | Duration | Start | Finish | Predecessors | Complete | Remaining | Planned start | Planned finish | Total float | Free float | Temp Orig Dur | Testing Type | Act ID Temp | Resp / SRLM | PHASE | RESP / Trade | Z.RESP | Pick | Update Status | 744 | RESP UPD | **NEAR CRITICAL** |
| --- | --- | --- | --- | --- | --- | --- | --- | --- | --- | --- | --- | --- | --- | --- | --- | --- | --- | --- | --- | --- | --- | --- | --- | --- |
|  | 3 | **ROUGH IN - Lab & Clinical Spaces (22K SF) / Level 1** |  | 2025-02-10 | 2026-05-27 |  |  |  |  |  |  |  |  |  |  |  |  |  |  |  |  |  |  |  |
| P2.L1.LC.1040 |  | CMU - Drill_Epoxy Masonry Dowels / L1 / Lab & Clinical | 10d | 2025-02-10 A | 2025-02-21 A | BP4.040.3.100, P2.L1.LC.1000 | 100% |  | 2025-03-10 | 2025-03-21 |  |  | 80 | AT4 | P2.B2.04.20.110 | CMU | P2-5 | CMU |  |  |  |  |  |  |
| P2.L1.LC.1080 |  | OH - Fireproof Interstitial Steel Above / L1 / Lab & Clinical | 10d | 2025-02-10 A | 2025-02-18 A | P2.2.I.03.320, P2.L1.LC.1020, P2.L1.LC.1030 | 100% |  | 2025-03-24 | 2025-04-04 |  |  | 80 | AT49 | P2.1.09.81.140X10 | SPRAY | P2-5 | SPRAY |  |  |  |  |  |  |
| P2.L1.LC.1000 |  | Layout - All Trades / L1 / Lab & Clinical | 5d | 2025-02-15 A | 2025-03-03 A | P2.2.I.05.220, P2.2.I.03.010 | 100% |  | 2025-03-03 | 2025-03-07 |  |  | 40 |  | P2.B2.01.010 | R/I.OH | P2-5 | R/I.OH | Harris |  |  |  |  |  |
| P2.L1.LC.1010 |  | Framing - Top Track / L1 / Lab & Clinical | 10d | 2025-02-15 A | 2025-03-21 A | P2.L1.N.1010, P2.L1.LC.1000 | 100% |  | 2025-03-10 | 2025-03-21 |  |  | 80 |  | P2.B2.09.21.110 | GYP | P2-5 | GYP-1 |  |  |  |  |  |  |
| P2.L1.LC.1020 |  | OH - Structural Supports (All Trades) / L1 / Lab & Clinical | 10d | 2025-02-15 A | 2025-03-21 A | P2.L1.LC.1000 | 100% |  | 2025-03-10 | 2025-03-21 |  |  | 80 | AT24 | P2.B2.05.45.110 | R/I.OH | P2-5 | R/I.OH | Harris |  |  |  |  |  |
| P2.L1.LC.1030 |  | OH - MEPF - Hangers & Supports / L1 / Lab & Clinical | 10d | 2025-02-17 A | 2025-03-21 A | P2.L1.LC.1000, P2.BIM.L1.40.140 | 100% |  | 2025-03-10 | 2025-03-21 |  |  | 80 |  | P2.B2.20.05.410 | MEP | P2-5 | MEP-2 | Harris |  |  |  |  |  |
| P2.L1.LC.1180 |  | OH - Plumbing Piping South (High) / L1 / Lab & Clinical | 15d | 2025-02-17 A | 2025-03-21 A | P2.L1.LC.1080 | 100% |  | 2025-06-18 | 2025-07-09 |  |  | 80 |  | P2.B2.22.14.210 | PLMB | P2-5 | PLMB | Harris | 1 |  |  |  |  |
| P2.L1.LC.1560 |  | OH - Plumbing Piping North (High) / L1 / Lab & Clinical | 15d | 2025-02-18 A | 2025-03-14 A | P2.L1.LC.1180 | 100% |  | 2025-07-10 | 2025-07-30 |  |  | 80 |  | P2.B2.22.14.210 | PLMB | P2-5 | PLMB | Harris | 1 |  |  |  |  |
| P2.L1.LC.1050 |  | CMU - Lay Block / L1 / Lab & Clinical | 10d | 2025-02-24 A | 2025-02-28 A | P2.L1.LC.1040 | 100% |  | 2025-03-24 | 2025-04-04 |  |  | 80 | AT3 | P2.B2.04.20.210 | CMU | P2-5 | CMU |  |  |  |  |  |  |
| P2.L1.LC.1060 |  | In Wall - Electrical - CMU / L1 / Lab & Clinical | 10d | 2025-02-24 A | 2025-02-28 A | P2.L1.LC.1050 SS | 100% |  | 2025-03-24 | 2025-04-04 |  |  | 80 |  | P2.B2.26.05.510 | ELEC | P2-5 | ELEC-2 |  |  |  |  |  |  |
| P2.L1.LC.1070 |  | In Wall - Plumbing - CMU / L1 / Lab & Clinical | 10d | 2025-02-24 A | 2025-02-28 A | P2.L1.LC.1050 SS | 100% |  | 2025-03-24 | 2025-04-04 |  |  | 80 |  | P2.B2.22.05.310 | PLMB | P2-5 | PLMB | Harris |  |  |  |  |  |
| P2.L1.LC.1210 |  | OH - Hang Duct - HP Mains / L1 / Lab & Clinical | 10d | 2025-02-24 A | 2025-04-01 A | P2.L1.N.1210, P2.L1.LC.1080 | 100% |  | 2025-06-03 | 2025-06-16 |  |  | 80 |  | P2.B2.23.30.210 | HVAC | P2-5 | HVAC | Harris | 1 |  |  |  |  |
| P2.L1.LC.1170 |  | OH - Fire Suppression / L1 / Lab & Clinical | 10d | 2025-03-01 A | 2025-03-14 A | P2.L1.LC.1080 | 100% |  | 2025-05-20 | 2025-06-03 |  |  | 80 |  | P2.B2.21.13.210 | FP | P2-5 | FP-1 |  | 1 |  |  |  |  |
| P2.L1.LC.1100 |  | Paint - CMU Block Fill / L1 / Lab & Clinical | 10d | 2025-03-10 A | 2025-03-14 A | P2.L1.LC.1050 | 100% |  | 2025-03-10 | 2025-03-21 |  |  | 80 |  | P2.B2.09.97.110 | PAINT | P2-5 | PAINT-1 |  |  |  |  |  |  |
| P2.L1.LC.1270 |  | OH - Quench Vent Piping - Test / B2/L1 / Lab & Clinical | 5d | 2025-03-10 A | 2025-03-13 A | P2.L1.LC.1220 | 100% |  | 2025-10-01 | 2025-10-07 |  |  | 80 |  | P2.B2.23.20.510 | FIT | P2-5 | FIT-2 | Harris | 3 | O | FM | FM |  |
| P2.L1.LC.1110 |  | CMU - Point & Patch / L1 / Lab & Clinical | 10d | 2025-03-17 A | 2025-03-21 A | P2.L1.LC.1070, P2.L1.LC.1060, P2.L1.LC.1100 | 100% |  | 2025-03-24 | 2025-04-04 |  |  | 80 |  | P2.B2.04.20.310 | CMU | P2-5 | CMU |  |  |  |  |  |  |
| P2.L1.LC.1090 |  | Framing - Priority Walls & Door Frames / L1 / Lab & Clinical | 10d | 2025-03-24 A | 2025-04-23 A | P2.L1.N.1090, P2.L1.LC.1010, P2.L1.LC.1080 | 100% |  | 2025-04-07 | 2025-04-18 |  |  | 80 |  | P2.B2.09.21.310 | GYP | P2-5 | GYP-1 |  |  |  |  |  |  |
| P2.L1.LC.1120 |  | Paint Prime & 1st Coat - CMU / L1 / Lab & Clinical | 10d | 2025-03-24 A | 2025-03-28 A | P2.L1.LC.1110 SS | 100% |  | 2025-03-24 | 2025-04-04 |  |  | 80 |  | P2.B2.09.97.210 | PAINT | P2-5 | PAINT-1 |  |  |  |  |  |  |
| P2.L1.LC.1190 |  | OH - Electrical - 480/277v Distribution / L1 / Lab & Clinical | 10d | 2025-03-24 A | 2025-04-07 A | P2.L1.LC.1170, P2.L1.LC.1080 | 100% |  | 2025-06-04 | 2025-06-17 |  |  | 80 |  | P2.B2.26.05.210 | ELEC | P2-5 | ELEC-2 |  | 1 |  |  |  |  |
| P2.L1.LC.1230 |  | OH - Electrical - 208/120v Branch / L1 / Lab & Clinical | 10d | 2025-03-24 A | 2025-04-07 A | P2.L1.LC.1180 | 100% |  | 2025-06-18 | 2025-07-01 |  |  | 80 |  | P2.B2.26.05.310 | ELEC | P2-5 | ELEC-2 |  | 2 |  |  |  |  |
| P2.L1.LC.1570 |  | OH - Plumbing Piping South (Low) / L1 / Lab & Clinical | 15d | 2025-04-01 A | 2025-04-21 A | P2.L1.LC.1560 | 100% |  | 2025-05-01 | 2025-05-21 |  |  | 80 |  | P2.B2.22.14.210 | PLMB | P2-5 | PLMB | Harris | 1 |  |  |  |  |
| P2.L1.LC.1260 |  | OH - DALT - HP Mains / L1 / Lab & Clinical | 10d | 2025-04-02 A | 2025-05-02 A | P2.L1.LC.1210 | 100% |  | 2025-05-02 | 2025-05-15 |  |  | 80 |  | P2.B2.23.30.310 | TAB | P2-5 | TAB-1 | Harris | 2 |  |  |  |  |
| P2.L1.LC.1130 |  | Framing - Priority Walls - AHJ Inspections / L1 / Lab & Clinical | 5d | 2025-04-15 A | 2025-04-30 A | P2.L1.LC.1090 | 100% |  | 2025-05-15 | 2025-05-21 |  |  | 80 |  | P2.B2.01.43.010 | FM | P2-5 | FM |  |  |  |  |  |  |
| P2.L1.LC.1160 |  | Spray/Seal/Firestop - Head of Wall - Priority Walls / L1 / Lab & Clinical | 5d | 2025-04-16 A | 2025-04-23 A | P2.L1.LC.1130 | 100% |  | 2025-06-06 | 2025-06-12 |  |  | 80 | AT47 | P2.B2.07.84.410 | FIRESTO | P2-5 | FIRESTO |  |  |  |  |  |  |
| P2.L1.LC.1290 |  | OH - Insulate HP Duct / L1 / Lab & Clinical | 10d | 2025-04-16 A | 2025-04-30 A | P2.L1.LC.1210 | 100% |  | 2025-05-16 | 2025-05-30 |  |  | 80 |  | P2.B2.23.07.310 | INSUL | P2-5 | INSUL-3 | Harris | 3 |  |  |  |  |
| P2.L1.LC.1300 |  | OH - Hang Duct - LP Branch / L1 / Lab & Clinical | 10d | 2025-04-16 A | 2025-04-30 A | P2.L1.LC.1210 | 100% |  | 2025-05-16 | 2025-05-30 |  |  | 80 |  | P2.B2.23.30.410 | HVAC | P2-5 | HVAC | Harris | 3 |  |  |  |  |
| P2.L1.LC.1580 |  | OH - Plumbing Piping North (Low) / L1 / Lab & Clinical | 15d | 2025-04-22 A | 2025-05-12 A | P2.L1.LC.1570 | 100% |  | 2025-05-22 | 2025-06-12 |  |  | 80 |  | P2.B2.22.14.210 | PLMB | P2-5 | PLMB | Harris | 1 |  |  |  |  |
| P2.L1.LC.1140 |  | Hang/Tape/Finish - Priority Walls / L1 / Lab & Clinical | 10d | 2025-05-01 A | 2025-05-23 A | P2.L1.N.1140, P2.L1.LC.1130 | 100% |  | 2025-06-02 | 2025-06-13 |  |  | 80 |  | P2.B2.09.21.210 | GYP | P2-5 | GYP-1 |  |  |  |  |  |  |
| P2.L1.LC.1310 |  | OH - Set & Connect Mech Equipment / L1 / Lab & Clinical | 10d | 2025-05-05 A | 2025-05-16 A | P2.L1.LC.1260 | 100% |  | 2025-06-04 | 2025-06-17 |  |  | 80 |  | P2.B2.23.82.110 | HVAC | P2-5 | HVAC | Harris | 3 |  |  |  |  |
| P2.L1.LC.1150 |  | Paint Prime & 1st Coat - Priority Walls / L1 / Lab & Clinical | 10d | 2025-05-15 A | 2025-05-29 A | P2.L1.LC.1160 SS, P2.L1.LC.1140 | 100% |  | 2025-06-16 | 2025-06-27 |  |  | 80 |  | P2.B2.09.91.110 | PAINT | P2-5 | PAINT-1 |  |  |  |  |  |  |
| P2.L1.LC.1280 |  | OH - Insulate Plumbing / L1 / Lab & Clinical | 10d | 2025-05-19 A | 2025-05-30 A | P2.L1.LC.1240, P2.L1.LC.1150 | 100% |  | 2025-06-30 | 2025-07-14 |  |  | 80 |  | P2.B2.22.07.510 | INSUL | P2-5 | INSUL-3 | Harris | 3 |  |  |  |  |
| P2.L1.LC.1320 |  | OH - Electrical - Equip Tie In / L1 / Lab & Clinical | 10d | 2025-05-19 A | 2025-05-30 A | P2.L1.LC.1310 | 100% |  | 2025-06-18 | 2025-07-01 |  |  | 80 |  | P2.B2.26.05.410 | ELEC | P2-5 | ELEC-2 |  | 4 |  |  |  |  |
| P2.L1.LC.1240 |  | OH - Plumbing - Test / L1 / Lab & Clinical | 10d | 2025-05-27 A | 2025-05-30 A | P2.L1.LC.1580 | 100% |  | 2025-06-02 | 2025-06-13 |  |  | 80 |  | P2.B2.22.14.310 | PLMB | P2-5 | PLMB | Harris | 2 |  |  |  |  |
| P2.L1.LC.1200 |  | Firestop - Thru Wall - Priority Walls / L1 / Lab & Clinical | 5d | 2025-06-02 A | 2025-06-06 A | P2.L1.LC.1240 | 100% |  | 2025-07-01 | 2025-07-08 |  |  | 80 | AT48 | P2.B2.07.84.110 | FIRESTO | P2-5 | FIRESTO |  |  |  | FM | FM |  |
| P2.L1.LC.1340 |  | OH - Insulate HVAC Pipe / L1 / Lab & Clinical | 10d | 2025-06-02 A | 2025-06-13 A | P2.L1.LC.1290 | 100% |  | 2025-07-01 | 2025-07-15 |  |  | 80 |  | P2.B2.22.07.610 | INSUL | P2-5 | INSUL-3 | Harris | 4 |  | FM | FM |  |
| P2.L1.LC.1350 |  | OH - Insulate LP Duct / L1 / Lab & Clinical | 10d | 2025-06-02 A | 2025-06-13 A | P2.L1.LC.1300 | 100% |  | 2025-07-01 | 2025-07-15 |  |  | 80 |  | P2.B2.23.07.410 | INSUL | P2-5 | INSUL-3 | Harris | 4 |  | FM | FM |  |
| P2.L1.LC.1370 |  | OH - Conduit - Low Volt - BAS/Controls / L1 / Lab & Clinical | 10d | 2025-06-16 A | 2025-06-27 A | P2.L1.LC.1310, P2.L1.LC.1340 | 100% |  | 2025-07-16 | 2025-07-29 |  |  | 80 |  |  | BAS | P2-5 | BAS-1 | Harris | 5 |  | FM | FM |  |
| P2.L1.LC.1380 |  | OH - Conduit - Low Volt - Fire Alarm / L1 / Lab & Clinical | 10d | 2025-06-16 A | 2025-06-27 A | P2.L1.LC.1310, P2.L1.LC.1350 | 100% |  | 2025-07-16 | 2025-07-29 |  |  | 80 |  |  | FA | P2-5 | FA-1 |  | 5 |  | FM | FM |  |
| P2.L1.LC.1390 |  | OH - Conduit - Low Volt - Telecom / L1 / Lab & Clinical | 10d | 2025-06-16 A | 2025-06-27 A | P2.L1.LC.1350 | 100% |  | 2025-07-16 | 2025-07-29 |  |  | 80 |  |  | ELEC | P2-5 | ELEC-2 |  | 5 |  | FM | FM |  |
| P2.L1.LC.1400 |  | OH - Conduit - Low Volt - Security / L1 / Lab & Clinical | 10d | 2025-06-16 A | 2025-06-27 A | P2.L1.LC.1340 | 100% |  | 2025-07-16 | 2025-07-29 |  |  | 80 |  |  | ELEC | P2-5 | ELEC-2 |  | 5 |  | FM | FM |  |
| P2.L1.LC.1220 |  | OH - Quench Vent Piping / L1 / Lab & Clinical | 10d | 2025-09-09 A | 2025-09-15 A | P2.L2.INT.N.2120, P2.B2.LC.1590, P2.L1.LC.1180, P2.L1.LC.1170, P2.L1.LC.1080 | 100% |  | 2025-10-08 | 2025-10-21 |  |  | 80 |  | P2.B2.23.20.410 | FIT | P2-5 | FIT-2 | Harris | 2 | O | FM | FM |  |
| P2.L1.LC.1430 |  | In Wall - Plumbing - Framing / L1 / Lab & Clinical | 10d | 2025-09-15 A | 2025-09-26 A | RFP.014.1040, P2.L1.LC.1420 SS | 100% |  | 2025-10-28 | 2025-11-10 |  |  | 80 |  | P2.B2.22.05.410 | PLMB | P2-5 | PLMB | Harris |  |  | FM | FM |  |
| P2.L1.LC.1420 |  | Framing - Balance of Framing & Door Frames / L1 / Lab & Clinical | 10d | 2025-09-22 A | 2025-11-14 A | P2.L1.LC.1280, P2.L1.LC.1380, P2.L1.LC.1390, P2.L1.LC.1400, P2.L1.LC.1370, P2.L6.S.1420, P2.L6.N.1420 | 100% |  | 2025-10-27 | 2025-11-07 |  |  | 80 |  | A1310 | GYP | P2-5 | GYP-1 |  |  |  | FM | JH |  |
| P2.L1.LC.1410 |  | OH - Conduit - Low Volt - Medical Services/Nurse Call (?) / L1 / Lab & Clinical | 10d | 2025-11-10 A | 2025-11-14 A | P2.L1.LC.1350 | 100% |  | 2025-12-01 | 2025-12-12 |  |  | 80 |  |  | ELEC | P2-5 | ELEC-2 |  | 5 |  | FM | JH |  |
| P2.L1.LC.1450 |  | In Wall - Backing/Blocking/Supports / L1 / Lab & Clinical | 10d | 2025-12-08 A | 2026-02-26 A | P2.L1.LC.1420, RFP.014.1040 | 100% |  | 2026-01-29 | 2026-02-11 |  |  | 80 |  | P2.B2.09.21.510 | R/I.IW | P2-5 | R/I.IW |  |  | O | FM | JH |  |
| P2.L1.LC.1250 |  | Pull Wire - Electrical - 480/277v Distribution / L1 / Lab & Clinical | 10d | 2026-03-02 A | 2026-03-13 A | P2.L1.LC.1190, P2.L1.LC.1380 | 100% |  |  |  |  |  | 80 |  |  | ELEC | P2-5 | ELEC-2 |  | To Trim Devices & Term Panel | O | FM | JH |  |
| P2.L1.LC.1440 |  | In Wall - Electrical - Framing / L1 / Lab & Clinical | 10d | 2026-03-02 A | 2026-04-14 | P2.L1.LC.1420, P2.L1.LC.1230, RFP.014.1040 |  | 10d | 2026-03-06 | 2026-03-19 | 59d | 0d | 80 |  | P2.B2.26.05.610 | ELEC | P2-5 | ELEC-2 |  |  | O | FM | JH |  |
| P2.L1.LC.1500 |  | Pull Wire - Low Volt - BAS/Controls / L1 / Lab & Clinical | 10d | 2026-04-01 | 2026-04-14 | P2.L1.LC.1370 |  |  |  |  | 84d | 10d | 80 |  |  | BAS | P2-5 | BAS-1 | Harris | To Trim Finishes |  |  | JH | 5 |
| P2.L1.LC.1510 |  | Pull Wire - Low Volt - Fire Alarm / L1 / Lab & Clinical | 10d | 2026-04-01 | 2026-04-14 | P2.L1.LC.1380 |  |  |  |  | 84d | 25d | 80 |  |  | FA | P2-5 | FA-1 |  | To Trim Finishes |  |  | JH | 5 |
| P2.L1.LC.1520 |  | Pull Wire - Low Volt - Telecom / L1 / Lab & Clinical | 10d | 2026-04-01 | 2026-04-14 | P2.L1.LC.1390 |  |  |  |  | 84d | 25d | 80 |  |  | CIT | P2-5 | CIT |  | To Trim Finishes |  |  | JH | 5 |
| P2.L1.LC.1530 |  | Pull Wire - Low Volt - Security / L1 / Lab & Clinical | 10d | 2026-04-01 | 2026-04-14 | P2.L1.LC.1400 |  |  |  |  | 84d | 25d | 80 |  |  | LOWVOLT | P2-5 | LOWVOLT-1 |  | To Trim Finishes |  |  | JH | 5 |
| P2.L1.LC.1540 |  | Pull Wire - Low Volt - Medical Services/Nurse Call (?) / L1 / Lab & Clinical | 10d | 2026-04-01 | 2026-04-14 | P2.L1.LC.1410 |  |  |  |  | 84d | 25d | 80 |  |  | LOWVOLT | P2-5 | LOWVOLT-1 |  | To Trim Finishes |  |  | JH | 5 |
| P2.L1.LC.1360 |  | Pull Wire - Electrical - 208/120v Branch & Equip / L1 / Lab & Clinical | 10d | 2026-04-15 | 2026-04-28 | P2.L1.LC.1320, P2.L1.LC.1230, P2.L1.LC.1440 |  |  |  |  | 74d | 15d | 80 |  |  | ELEC | P2-5 | ELEC-2 |  | To Trim Devices & Term Panel |  | FM | JH |  |
| P2.L1.LC.1460 |  | AHJ Inspections - Wall Close In / L1 / Lab & Clinical | 5d | 2026-04-15 | 2026-04-21 | P2.L1.LC.1440, P2.L1.LC.1450, P2.L1.LC.1430, RFP.014.1040 |  |  |  |  | 59d | 0d | 40 |  | P2.B2.01.43.110 | FM | P2-5 | FM |  |  |  |  | JH | 5 |
| P2.L1.LC.1470 |  | Hang-Tape-Finish - Walls / L1 / Lab & Clinical | 10d | 2026-04-22 | 2026-05-05 | P2.SUM.175, P2.L1.LC.1460, BP4.134.3.130 |  |  |  |  | 59d | 0d | 80 |  | P2.B2.09.21.710 | GYP | P2-5 | GYP-1 |  |  |  |  | JH | 5 |
| P2.L1.LC.1330 |  | OH - HVAC Piping - Equip Tie In / L1 / Lab & Clinical | 10d | 2026-04-29 | 2026-05-12 | P2.L1.LC.1310, CX.B2.HYDR.1000 |  |  |  |  | 64d | 5d | 80 |  | P2.B2.23.20.610 | FIT | P2-5 | FIT-2 | Harris |  |  |  | JH |  |
| P2.L1.LC.1480 |  | Spray/Seal/Firestop - Head of Wall / L1 / Lab & Clinical | 10d | 2026-05-06 | 2026-05-19 | P2.L1.LC.1120, P2.L1.LC.1470 |  |  |  |  | 59d | 0d | 80 | AT47 | P2.B2.07.84.310 | FIRSAFE | P2-5 | FIRSAFE |  | To Finishes - Paint |  |  | JH | 5 |
| P2.L1.LC.1490 |  | Firestop - Thru Wall / L1 / Lab & Clinical | 10d | 2026-05-06 | 2026-05-19 | P2.L1.LC.1470, P2.L1.LC.1200 |  |  |  |  | 59d | 0d | 80 | AT48 | P2.B2.07.84.210 | FIRESTO | P2-5 | FIRESTO |  | To Finishes - Paint |  |  | JH | 5 |
| P2.L1.LC.1550 |  | Trades Inspect & Verify R/I Work Completed to Specs / L1 / Lab & Clinical | 5d | 2026-05-20 | 2026-05-27 | P2.L1.LC.1480, P2.L1.LC.1490, P2.L1.LC.1520, P2.L1.LC.1530, P2.L1.LC.1250, P2.L1.LC.1540, P2.L1.LC.1360, P2.L1.LC.1500, P2.L1.LC.1510, P2.L1.LC.1330 |  |  |  |  | 59d | 0d | 40 |  |  | T | P2-5 | T |  |  |  |  | JH | 5 |

| ID | WBS | Activity | Type | Duration | Start | Finish | Predecessors | Complete | Planned start | Planned finish | Total float | Free float | Temp Orig Dur | Resp / SRLM | PHASE | Z.RESP | RESP / Trade | 744 | RESP UPD | Act ID Temp | Testing Type | Update Status | *NIH Resp Check* | Pick |
| --- | --- | --- | --- | --- | --- | --- | --- | --- | --- | --- | --- | --- | --- | --- | --- | --- | --- | --- | --- | --- | --- | --- | --- | --- |
|  | 1 | **MECHANICAL TOWERS / LEVEL 1** |  |  | 2025-05-14 | 2026-04-23 |  |  |  |  |  |  |  |  |  |  |  |  |  |  |  |  |  |  |
|  | 8 | **East Mechanical Tower / Rough In & Finish (3K SF) / Level 1** |  |  | 2025-05-14 | 2026-04-23 |  |  |  |  |  |  |  |  |  |  |  |  |  |  |  |  |  |  |
| P2.L1.EMT.1070 |  | Set & Connect - Mech Equipment / L1 - E. Mech Tower |  | 10d | 2025-05-14 A | 2025-05-16 A | BP1.237.3.200 | 100% | 2025-06-02 | 2025-06-13 |  |  | 80 | HVAC | P2-5 | Harris | HVAC |  |  |  |  |  |  |  |
| P2.L1.EMT.1000 |  | Insulation - Exterior Wall Assembly / L1 - E. Mech Tower |  | 5d | 2025-06-11 A | 2025-06-30 A | P2.FAC.2.Z3.130 | 100% | 2025-07-03 | 2025-07-10 |  |  | 40 | INSUL | P2-5 |  | INSUL-1 | SM | SM |  |  |  |  |  |
| P2.L1.EMT.1020 |  | In Wall - Electrical - CMU / L1 - E. Mech Tower |  | 10d | 2025-07-03 A | 2025-07-05 A | P2.L1.EMT.1010 SS | 100% | 2025-08-01 | 2025-08-14 |  |  | 80 | ELEC | P2-5 |  | ELEC-2 | SM | SM | P2.B2.26.05.510 |  |  |  |  |
| P2.L1.EMT.1030 |  | In Wall - Mech/Plumbing - CMU / L1 - E. Mech Tower |  | 10d | 2025-07-03 A | 2025-07-05 A | P2.L1.EMT.1010 SS | 100% | 2025-08-01 | 2025-08-14 |  |  | 80 | PLMB | P2-5 | Harris | PLMB | SM | SM | P2.B2.22.05.310 |  |  |  |  |
| P2.L1.EMT.1010 |  | CMU - Lay Block / L1 - E. Mech Tower |  | 10d | 2025-08-21 A | 2025-08-27 A | BP4.040.3.100, P2.L1.EMT.1000 | 100% | 2025-08-01 | 2025-08-14 |  |  | 80 | CMU | P2-5 |  | CMU | SM | SM | P2.B2.04.20.210 | AT3 |  |  |  |
| P2.L1.EMT.1040 |  | Paint - CMU Block Fill / L1 - E. Mech Tower |  | 10d | 2025-08-27 A | 2025-09-10 A | P2.L1.EMT.1010 | 100% | 2025-08-15 | 2025-08-28 |  |  | 80 | PAINT | P2-5 |  | PAINT-1 | SM | SM | P2.B2.09.97.110 |  | O |  |  |
| P2.L1.EMT.1100 |  | HVAC Piping Connections to Shaft Riser / L1 - E. Mech Tower |  | 5d | 2025-09-02 A | 2025-09-15 A | P2.L1.EMT.1070 | 100% | 2025-12-12 | 2025-12-18 |  |  | 40 | HVAC | P2-5 | Harris | HVAC |  | SM |  |  |  | ! |  |
| P2.L1.EMT.1105 |  | HVAC Duct Connections to Shaft Riser / L1 - E. Mech Tower |  | 5d | 2025-09-02 A | 2025-09-15 A | P2.L1.EMT.1070 | 100% | 2025-12-12 | 2025-12-18 |  |  | 40 | HVAC | P2-5 | Harris | HVAC |  | SM |  |  |  | ! |  |
| P2.L1.EMT.1050 |  | CMU - Point & Patch / L1 - E. Mech Tower |  | 10d | 2025-09-11 A | 2025-09-12 A | P2.L1.EMT.1030, P2.L1.EMT.1020, P2.L1.EMT.1040 | 100% | 2025-10-10 | 2025-10-23 |  |  | 80 | CMU | P2-5 |  | CMU | SM | SM | P2.B2.04.20.310 |  | O |  |  |
| P2.L1.EMT.1060 |  | Paint Prime & 1st Coat - CMU / L1 - E. Mech Tower |  | 10d | 2025-09-11 A | 2025-09-12 A | P2.L1.EMT.1050 SS | 100% | 2025-10-10 | 2025-10-23 |  |  | 80 | PAINT | P2-5 |  | PAINT-1 | SM | SM | P2.B2.09.97.210 |  | O |  |  |
| P2.L1.EMT.1080 |  | Set & Connect - Elect Panels and Equipment / L1 - E. Mech Tower |  | 5d | 2025-09-15 A | 2025-09-26 A | P2.L1.EMT.1060 | 100% | 2025-10-24 | 2025-10-30 |  |  | 40 | ELEC | P2-5 |  | ELEC-2 | SM | SM |  |  | O |  |  |
| P2.L1.EMT.1120 |  | BAS - Equip Tie In / L1 - E. Mech Tower |  | 5d | 2025-10-01 A | 2025-10-07 A | P2.L1.EMT.1070, P2.L1.EMT.1060 | 100% |  |  |  |  | 40 | BAS | P2-5 | Harris | BAS-1 | SM | SM |  |  |  |  |  |
| P2.L1.EMT.1140 |  | Pull Wire - In From Distribution Panels / Out to Branch Circuits / L1 - E. Mech Tower |  | 5d | 2025-10-15 A | 2025-10-30 A | P2.L1.EMT.1090 | 100% | 2025-10-22 | 2025-10-28 |  |  | 40 | ELEC | P2-5 |  | ELEC-2 | SM | SM |  |  |  |  |  |
| FRG.P2.L1.EMT.1000 |  | AHU Piping Install / L1 - E. Mech Tower - FRAGNET |  | 10d | 2025-10-21 A | 2025-11-03 A | P2.L1.EMT.1070 | 100% | 2026-02-13 | 2026-02-26 |  |  | 80 | Harris Fragnet | P2-5 | Harris | FIT-2 | TA | SM | P2.B2.23.20.410 |  |  |  | 2 |
| P2.L1.EMT.1110 |  | HVAC Piping - Equip Tie In / L1 - E. Mech Tower |  | 10d | 2025-12-01 A | 2025-12-11 A | P2.L1.EMT.1070 | 100% | 2026-02-27 | 2026-03-12 |  |  | 80 | FIT | P2-5 | Harris | FIT-2 | SM | SM | P2.B2.23.20.610 |  |  |  |  |
| P2.L1.EMT.1090 |  | Panelboards, Interconnect Wiring, and Remaining Room Buildout of All Elec/FA Systems / L1 - E. Mech Tower |  | 10d | 2025-12-08 A | 2025-12-19 A | BP1.262.3.200, BP1.262.3.100, P2.L1.EMT.1080 | 100% | 2026-01-09 | 2026-01-22 |  |  | 80 | ELEC | P2-5 |  | ELEC-2 | SM | SM |  |  | O |  |  |
| P2.L1.EMT.1130 |  | Test/Inspect Duct & Piping / L1 - E. Mech Tower |  | 5d | 2025-12-10 A | 2025-12-15 A | P2.L1.EMT.1100, P2.L1.EMT.1105 | 100% | 2026-02-24 | 2026-03-02 |  |  | 40 | MECH | P2-5 | Harris | MECH-2 |  | SM |  |  |  | ! |  |
| P2.L1.EMT.1150 |  | Insulate HVAC / Plumbing Pipe / L1 - E. Mech Tower |  | 5d | 2026-04-01 | 2026-04-07 | P2.L1.EMT.1130, P2.L1.EMT.1110 |  |  |  | 94d | 2d | 40 | INSUL | P2-5 | Harris | INSUL-3 |  | SM |  |  |  | ! |  |
| P2.L1.EMT.1160 |  | Electrical Tie in to Equipment / L1 - E. Mech Tower |  | 5d | 2026-04-01 | 2026-04-07 | P2.L1.EMT.1140, P2.L1.EMT.1070 |  |  |  | 92d | 0d | 40 | ELEC | P2-5 |  | ELEC-2 | SM | SM |  |  | O |  |  |
| P2.L1.EMT.1170 |  | Test & Terminate / L1 - E. Mech Tower |  | 5d | 2026-04-01 | 2026-04-07 | P2.L1.EMT.1140 |  |  |  | 92d | 0d | 40 | ELEC | P2-5 |  | ELEC-2 | SM | SM |  |  | O |  |  |
| P2.L1.EMT.1250 |  | Flooring Prep - Epoxy Floors / L1 - E. Mech Tower |  | 3d | 2026-04-01 | 2026-04-03 | P2.L1.EMT.1080, BP7.096.3.200 |  |  |  | 17d | 0d | 16 | EPOXYF | P2-5 |  | EPOXYF | SM | SM |  |  | O |  |  |
| P2.L1.EMT.1200 |  | Flooring - Epoxy Floors / L1 - E. Mech Tower |  | 2d | 2026-04-06 | 2026-04-07 | P2.L1.EMT.1250 |  |  |  | 17d | 0d | 16 | EPOXYF | P2-5 |  | EPOXYF | SM | SM |  |  | O |  |  |
| P2.L1.EMT.1180 |  | Paint - Finish Coat / L1 - E. Mech Tower |  | 2d | 2026-04-08 | 2026-04-09 | P2.L1.EMT.1170 |  |  |  | 92d | 0d | 16 | PAINT | P2-5 |  | PAINT-1 | SM | SM |  |  | O |  |  |
| P2.L1.EMT.1210 |  | Doors & Hardware / L1 - E. Mech Tower |  | 2d | 2026-04-08 | 2026-04-09 | P2.L1.EMT.1200, P2.L1.EMT.1160 |  |  |  | 92d | 0d | 16 | DFH | P2-5 |  | DFH | SM | SM |  | AT29 | O |  |  |
| P2.L1.EMT.1190 |  | Trim All MEPF Finishes / L1 - E. Mech Tower |  | 2d | 2026-04-10 | 2026-04-13 | BP1.233.3.410, P2.L1.EMT.1180 |  |  |  | 140d | 8d | 16 | MEP | P2-5 | Harris | MEP-2 | SM | SM |  |  |  |  |  |
| P2.L1.EMT.1220 |  | Trades Inspect & Verify R/I Work Completed to Specs / L1 - E. Mech Tower |  | 5d | 2026-04-10 | 2026-04-16 | P2.L1.EMT.1150, P2.L1.EMT.1210, P2.L1.EMT.1120, P2.L1.EMT.1180 |  |  |  | 92d | 0d | 40 | T | P2-5 |  | T |  | SM |  |  |  |  |  |
| P2.L1.EMT.1240 |  | Energize Elec Panels - Lock Doors and Limit Access / L1 - E. Mech Tower |  | 5d | 2026-04-17 | 2026-04-23 | P2.L1.EMT.1220, CX.B2.MVEE.1010, CX.B2.SWGR.1010, FRG.P2.L1.EMT.1000 |  |  |  | 92d | 0d | 40 | ELEC | P2-5 |  | ELEC-2 |  | SM |  |  |  |  |  |
| P2.L1.EMT.1230 |  | HVAC System Ready for Start Up / L1 - E. Mech Tower | milestone | 0d | 2026-04-23 | 2026-04-23 | P2.L1.EMT.1190 FF, P2.L1.EMT.1160 FF, P2.L1.EMT.1240, FRG.P2.L1.EMT.1000 |  |  |  | 132d | 48d | 0 | MECH | P2-5 | Harris | MECH-2 |  | SM |  |  |  |  |  |

| ID | WBS | Activity | Duration | Start | Finish | Predecessors | Complete | Planned start | Planned finish | Total float | Free float | Temp Orig Dur | Act ID Temp | Resp / SRLM | PHASE | Z.RESP | RESP / Trade | Pick | Testing Type | 744 | RESP UPD | Update Status | **NEAR CRITICAL** |
| --- | --- | --- | --- | --- | --- | --- | --- | --- | --- | --- | --- | --- | --- | --- | --- | --- | --- | --- | --- | --- | --- | --- | --- |
|  | L2 | **L2 / BUILDOUT** |  | 2024-11-20 | 2027-01-26 |  |  |  |  |  |  |  |  |  |  |  |  |  |  |  |  |  |  |
|  | L2 | **CORE & SUPPORT SPACES / LEVEL 2** |  | 2024-11-20 | 2027-01-26 |  |  |  |  |  |  |  |  |  |  |  |  |  |  |  |  |  |  |
|  | 1 | **ROUGH IN - Core & Support Spaces / Level 2** |  | 2024-11-20 | 2026-08-18 |  |  |  |  |  |  |  |  |  |  |  |  |  |  |  |  |  |  |
|  | Z1 | **South (9K SF) / Level 2** |  | 2024-11-20 | 2026-08-18 |  |  |  |  |  |  |  |  |  |  |  |  |  |  |  |  |  |  |
| P2.L2.S.1000 |  | Layout - All Trades / L2 / South | 5d | 2024-11-20 A | 2025-01-20 A | P2.3.03.610, P2.HZ.W.31 SS | 100% | 2024-12-04 | 2024-12-10 |  |  | 40 | P2.B2.01.010 | R/I.OH | P2-5 | Harris | R/I.OH |  |  |  |  |  |  |
| P2.L2.S.1010 |  | Framing - Top Track / L2 / South | 10d | 2024-12-16 A | 2024-12-31 A | P2.L2.S.1000 SS, P2.L1.S.1010 | 100% | 2025-01-03 | 2025-01-16 |  |  | 80 | P2.B2.09.21.110 | GYP | P2-5 |  | GYP-1 |  |  |  |  |  |  |
| P2.L2.S.1030 |  | OH - MEPF - Hangers & Supports / L2 / South | 10d | 2025-01-02 A | 2025-03-03 A | P2.L2.S.1000 SS, P2.BIM.L2.40.140 SS | 100% | 2025-02-03 | 2025-02-14 |  |  | 80 | P2.B2.20.05.410 | MEP | P2-5 | Harris | MEP-2 |  |  |  |  |  |  |
| P2.L2.S.1170 |  | OH - Fire Suppression / L2 / South | 10d | 2025-01-02 A | 2025-02-18 A | P2.L2.S.1030 FF+2d | 100% | 2025-04-07 | 2025-04-18 |  |  | 80 | P2.B2.21.13.210 | FP | P2-5 |  | FP-1 | 1 |  |  |  |  |  |
| P2.L2.S.1180 |  | OH - Plumbing Piping / L2 / South | 20d | 2025-01-02 A | 2025-03-03 A | P2.L1.S.1180 SS, P2.L2.S.1030 FF+2d | 100% | 2025-04-07 | 2025-05-02 |  |  | 80 | P2.B2.22.14.210 | PLMB | P2-5 | Harris | PLMB | 1 |  |  |  |  |  |
| P2.L2.S.1020 |  | OH - Structural Supports (All Trades) / L2 / South | 5d | 2025-01-09 A | 2025-02-07 A | P2.L2.S.1000 FF+3d | 100% | 2025-02-10 | 2025-02-14 |  |  | 80 | P2.B2.05.45.110 | R/I.OH | P2-5 | Harris | R/I.OH |  | AT24 |  |  |  |  |
| P2.L2.S.1090 |  | Framing - Priority Walls & Door Frames / L2 / South | 15d | 2025-01-27 A | 2025-02-07 A | P2.L2.S.1030 SS, P2.L1.S.1090 SS, P2.L2.S.1010 | 100% | 2025-02-03 | 2025-02-21 |  |  | 80 | P2.B2.09.21.310 | GYP | P2-5 |  | GYP-1 |  |  |  |  |  |  |
| P2.L2.S.1130 |  | Framing - Priority Walls - AHJ Inspections / L2 / South | 10d | 2025-01-31 A | 2025-02-14 A | P2.L2.S.1090 FF+2d | 100% | 2025-02-24 | 2025-03-07 |  |  | 80 | P2.B2.01.43.010 | FM | P2-5 |  | FM |  |  |  |  |  |  |
| P2.L2.S.1140 |  | Hang/Tape/Finish - Priority Walls / L2 / South | 10d | 2025-02-12 A | 2025-02-26 A | P2.L2.S.1020, P2.L2.S.1130 | 100% | 2025-03-26 | 2025-04-08 |  |  | 80 | P2.B2.09.21.210 | GYP | P2-5 |  | GYP-1 |  |  |  |  |  |  |
| P2.L2.S.1220 |  | OH - HVAC Piping (High) / L2 / South | 20d | 2025-02-19 A | 2025-03-14 A | P2.L2.S.1030, P2.L2.S.1170 | 100% | 2025-03-19 | 2025-04-15 |  |  | 80 | P2.B2.23.20.410 | FIT | P2-5 | Harris | FIT-2 | 2 |  |  |  |  |  |
| P2.L2.S.1160 |  | Spray/Seal/Firestop - Head of Wall - Priority Walls / L2 / South | 5d | 2025-03-03 A | 2025-03-03 A | P2.L2.S.1140 | 100% | 2025-03-03 | 2025-03-07 |  |  | 80 | P2.B2.07.84.410 | FIRESTO | P2-5 |  | FIRESTO |  | AT47 |  |  |  |  |
| P2.L2.S.1190 |  | OH - Electrical - 480/277v Distribution / L2 / South | 10d | 2025-03-17 A | 2025-04-07 A | P2.L2.S.1030 | 100% | 2025-03-17 | 2025-03-28 |  |  | 80 | P2.B2.26.05.210 | ELEC | P2-5 |  | ELEC-2 | 1 |  |  |  |  |  |
| P2.L2.S.1210 |  | OH - Hang Duct - HP Mains / L2 / South | 10d | 2025-03-24 A | 2025-04-21 A | P2.L1.S.1210, P2.L2.S.1030 | 100% | 2025-05-20 | 2025-06-03 |  |  | 80 | P2.B2.23.30.210 | HVAC | P2-5 | Harris | HVAC | 1 |  |  |  |  |  |
| P2.L2.S.1230 |  | OH - Electrical - 208/120v Branch / L2 / South | 10d | 2025-03-31 A | 2025-04-25 A | P2.L2.S.1190 SS | 100% | 2025-03-31 | 2025-04-11 |  |  | 80 | P2.B2.26.05.310 | ELEC | P2-5 |  | ELEC-2 | 2 |  |  |  |  |  |
| P2.L2.S.1560 |  | OH - HVAC Piping (Low) / L2 / South | 20d | 2025-04-14 A | 2025-05-09 A | P2.L2.S.1220 | 100% | 2025-05-01 | 2025-05-29 |  |  | 80 | P2.B2.23.20.410 | FIT | P2-5 | Harris | FIT-2 | 2 |  |  |  |  |  |
| P2.L2.S.1150 |  | Paint Prime & 1st Coat - Priority Walls / L2 / South | 10d | 2025-05-01 A | 2025-05-14 A | P2.L2.S.1160 SS | 100% | 2025-06-02 | 2025-06-13 |  |  | 80 | P2.B2.09.91.110 | PAINT | P2-5 |  | PAINT-1 |  |  |  |  |  |  |
| P2.L2.S.1260 |  | OH - DALT - HP Mains / L2 / South | 10d | 2025-05-01 A | 2025-05-14 A | P2.L2.S.1210 | 100% | 2025-06-02 | 2025-06-13 |  |  | 80 | P2.B2.23.30.310 | TAB | P2-5 | Harris | TAB-1 | 2 |  |  |  |  |  |
| P2.L2.S.1290 |  | OH - Insulate HP Duct / L2 / South | 10d | 2025-05-15 A | 2025-05-29 A | P2.L2.S.1260 | 100% | 2025-06-16 | 2025-06-27 |  |  | 80 | P2.B2.23.07.310 | INSUL | P2-5 | Harris | INSUL-3 | 3 |  |  |  |  |  |
| P2.L2.S.1300 |  | OH - Hang Duct - LP Branch / L2 / South | 20d | 2025-05-20 A | 2025-06-16 A | P2.L2.S.1260 | 100% | 2025-06-16 | 2025-07-14 |  |  | 80 | P2.B2.23.30.410 | HVAC | P2-5 | Harris | HVAC | 3 |  | FM | FM |  |  |
| P2.L2.S.1200 |  | Firestop - Thru Wall - Priority Walls / L2 / South | 5d | 2025-05-30 A | 2025-08-04 A | P2.L2.S.1150, P2.L2.S.1280 | 100% | 2025-06-30 | 2025-07-07 |  |  | 80 | P2.B2.07.84.110 | FIRESTO | P2-5 |  | FIRESTO |  | AT48 | FM | FM |  |  |
| P2.L2.S.1240 |  | OH - Plumbing - Test / L2 / South | 10d | 2025-05-30 A | 2025-06-12 A | P2.L2.S.1180 | 100% | 2025-06-02 | 2025-06-13 |  |  | 80 | P2.B2.22.14.310 | PLMB | P2-5 | Harris | PLMB | 2 |  | FM | FM |  |  |
| P2.L2.S.1280 |  | OH - Insulate Plumbing / L2 / South | 10d | 2025-06-13 A | 2025-07-08 A | P2.L2.S.1240 | 100% | 2025-07-15 | 2025-07-28 |  |  | 80 | P2.B2.22.07.510 | INSUL | P2-5 | Harris | INSUL-3 | 3 |  | FM | FM |  |  |
| P2.L2.S.1350 |  | OH - Insulate LP Duct / L2 / South | 10d | 2025-06-17 A | 2025-09-05 A | P2.L2.S.1300 | 100% | 2025-07-17 | 2025-07-30 |  |  | 80 | P2.B2.23.07.410 | INSUL | P2-5 | Harris | INSUL-3 | 4 |  | FM | FM | O |  |
| P2.L2.S.1270 |  | OH - HVAC Piping - Test / L2 / South | 10d | 2025-06-23 A | 2025-07-14 A | P2.L2.S.1560 | 100% | 2025-07-01 | 2025-07-15 |  |  | 80 | P2.B2.23.20.510 | FIT | P2-5 | Harris | FIT-2 | 3 |  | FM | FM |  |  |
| P2.L2.S.1400 |  | OH - Conduit - Low Volt - Security / L2 / South | 10d | 2025-06-30 A | 2025-08-21 A | P2.L2.S.1340 | 100% | 2025-07-30 | 2025-08-12 |  |  | 80 |  | ELEC | P2-5 |  | ELEC-2 | 5 |  | FM | FM |  |  |
| P2.L2.S.1380 |  | OH - Conduit - Low Volt - Fire Alarm / L2 / South | 10d | 2025-07-09 A | 2025-07-22 A | P2.L2.S.1350 | 100% | 2025-08-08 | 2025-08-21 |  |  | 80 |  | FA | P2-5 |  | FA-1 | 5 |  | FM | FM |  |  |
| P2.L2.S.1390 |  | OH - Conduit - Low Volt - Telecom / L2 / South | 10d | 2025-07-09 A | 2025-08-08 A | P2.L2.S.1350 | 100% | 2025-08-08 | 2025-08-21 |  |  | 80 |  | ELEC | P2-5 |  | ELEC-2 | 5 |  | FM | FM |  |  |
| FRG.P2.L2.S.1830 |  | HVAC Piping - Hanging Copper Racks / L2 / South - FRAGNET | 20d | 2025-08-01 A | 2025-08-29 A | P2.L2.S.1270 | 100% | 2025-09-10 | 2025-10-07 |  |  | 80 | P2.B2.23.20.410 | Harris Fragnet | P2-5 | Harris | FIT-2 | 2 |  | TA | TA | O |  |
| P2.L2.S.1340 |  | OH - Insulate HVAC Pipe / L2 / South | 10d | 2025-08-01 A | 2025-09-15 A | P2.L2.S.1290, P2.L2.S.1270, FRG.P2.L2.S.1830 | 100% | 2025-10-01 | 2025-10-14 |  |  | 80 | P2.B2.22.07.610 | INSUL | P2-5 | Harris | INSUL-3 | 4 |  | FM | FM | O |  |
| P2.L2.S.1370 |  | OH - Conduit - Low Volt - BAS/Controls / L2 / South | 10d | 2025-09-01 A | 2025-09-15 A | P2.L2.S.1310, P2.L2.S.1340 | 100% | 2025-10-22 | 2025-11-04 |  |  | 80 |  | BAS | P2-5 | Harris | BAS-1 | 5 |  | FM | FM | O |  |
| P2.L2.S.1420 |  | Framing - Balance of Framing & Door Frames / L2 / South | 10d | 2025-09-01 A | 2025-09-15 A | P2.L2.S.1280, P2.L2.S.1410, P2.L2.S.1370, P2.L2.S.1380, P2.L2.S.1390, P2.L2.S.1400 | 100% | 2025-11-05 | 2025-11-18 |  |  | 80 | A1310 | GYP | P2-5 |  | GYP-1 |  |  | FM | FM |  |  |
| P2.L2.S.1410 |  | OH - Conduit - Low Volt - Medical Services/Nurse Call (?) / L2 / South | 10d | 2025-09-08 A | 2025-09-19 A | P2.L2.S.1350 | 100% | 2025-10-07 | 2025-10-20 |  |  | 80 |  | ELEC | P2-5 |  | ELEC-2 | 5 |  | FM | FM | O |  |
| P2.L2.S.1310 |  | OH - Set & Connect Mech Equipment / L2 / South | 15d | 2025-09-10 A | 2025-09-22 A | P2.L2.S.1260, P2.L2.S.1270 | 100% | 2025-10-01 | 2025-10-21 |  |  | 80 | P2.B2.23.82.110 | HVAC | P2-5 | Harris | HVAC | 3 |  | FM | FM | O |  |
| P2.L2.S.1430 |  | In Wall - Plumbing - Framing / L2 / South | 10d | 2025-09-15 A | 2025-09-26 A | P2.L2.S.1420 | 100% | 2025-10-01 | 2025-10-14 |  |  | 80 | P2.B2.22.05.410 | PLMB | P2-5 | Harris | PLMB |  |  | FM | FM |  |  |
| P2.L2.S.1440 |  | In Wall - Electrical - Framing / L2 / South | 10d | 2025-10-01 A | 2025-10-14 A | P2.L2.S.1420, P2.L2.S.1230 | 100% |  |  |  |  | 80 | P2.B2.26.05.610 | ELEC | P2-5 |  | ELEC-2 |  |  | FM | FM |  |  |
| P2.L2.S.1450 |  | In Wall - Backing/Blocking/Supports / L2 / South | 10d | 2025-10-01 A | 2025-10-14 A | P2.L2.S.1420 | 100% |  |  |  |  | 80 | P2.B2.09.21.510 | R/I.IW | P2-5 |  | R/I.IW |  |  | FM | FM |  |  |
| P2.L2.S.1480 |  | Spray/Seal/Firestop - Head of Wall / L2 / South | 10d | 2026-03-09 A | 2026-03-13 A | P2.L2.S.1420 | 100% | 2026-08-05 | 2026-08-18 |  |  | 80 | P2.B2.07.84.310 | FIRSAFE | P2-5 |  | FIRSAFE | To Finishes - Paint | AT47 | FM | JH |  |  |
| P2.L2.S.1250 |  | Pull Wire - Electrical - 480/277v Distribution / L2 / South | 10d | 2026-04-01 | 2026-04-14 | P2.L2.S.1190, P2.2.HE.5959.1050, P2.2.HE.5966.1050 |  |  |  | 132d | 83d | 80 |  | ELEC | P2-5 |  | ELEC-2 | To Trim Devices & Term Panel |  | FM | JH | O |  |
| P2.L2.S.1320 |  | OH - Electrical - Equip Tie In / L2 / South | 10d | 2026-04-01 | 2026-04-14 | P2.L2.S.1310 |  |  |  | 112d | 0d | 80 | P2.B2.26.05.410 | ELEC | P2-5 |  | ELEC-2 | 4 |  | FM | JH | O |  |
| P2.L2.S.1460 |  | AHJ Inspections - Wall Close In / L2 / South | 5d | 2026-04-01 | 2026-04-07 | P2.L2.S.1440, P2.L2.S.1450, P2.L2.S.1430, P2.L2.S.1200 |  |  |  | 55d | 63d | 40 | P2.B2.01.43.110 | FM | P2-5 |  | FM |  |  | FM | JH | O |  |
| P2.L2.S.1500 |  | Pull Wire - Low Volt - BAS/Controls / L2 / South | 10d | 2026-04-01 | 2026-04-14 | P2.L2.S.1370 |  |  |  | 29d | 28d | 80 |  | BAS | P2-5 | Harris | BAS-1 | To Trim Finishes |  | FM | JH |  |  |
| P2.L2.S.1510 |  | Pull Wire - Low Volt - Fire Alarm / L2 / South | 10d | 2026-04-01 | 2026-04-14 | P2.L2.S.1380 |  |  |  | 132d | 83d | 80 |  | FA | P2-5 |  | FA-1 | To Trim Finishes |  | FM | JH |  |  |
| P2.L2.S.1520 |  | Pull Wire - Low Volt - Telecom / L2 / South | 10d | 2026-04-01 | 2026-04-14 | P2.L2.S.1390 |  |  |  | 132d | 83d | 80 |  | CIT | P2-5 |  | CIT | To Trim Finishes |  |  | JH |  |  |
| P2.L2.S.1530 |  | Pull Wire - Low Volt - Security / L2 / South | 10d | 2026-04-01 | 2026-04-14 | P2.L2.S.1400 |  |  |  | 132d | 83d | 80 |  | LOWVOLT | P2-5 |  | LOWVOLT-1 | To Trim Finishes |  | FM | JH |  |  |
| P2.L2.S.1540 |  | Pull Wire - Low Volt - Medical Services/Nurse Call (?) / L2 / South | 10d | 2026-04-01 | 2026-04-14 | P2.L2.S.1410 |  |  |  | 132d | 83d | 80 |  | LOWVOLT | P2-5 |  | LOWVOLT-1 | To Trim Finishes |  |  | JH |  |  |
| P2.L2.S.1360 |  | Pull Wire - Electrical - 208/120v Branch & Equip / L2 / South | 20d | 2026-04-15 | 2026-05-12 | P2.L2.S.1320, P2.L2.S.1230, P2.L2.S.1440 |  |  |  | 112d | 63d | 80 |  | ELEC | P2-5 |  | ELEC-2 | To Trim Devices & Term Panel |  | FM | JH | O |  |
| P2.L2.S.1330 |  | OH - HVAC Piping - Equip Tie In / L2 / South | 10d | 2026-04-29 | 2026-05-12 | P2.L2.S.1310, P2.L2.S.1270, CX.B2.HYDR.1000 |  |  |  | 112d | 63d | 80 | P2.B2.23.20.610 | FIT | P2-5 | Harris | FIT-2 |  |  | FM | JH |  |  |
| P2.L2.S.1470 |  | Hang-Tape-Finish - Walls / L2 / South | 15d | 2026-07-08 | 2026-07-28 | P2.SUM.175, P2.L2.S.1460, P2.L1.S.1470, P2.L1.N.1470, P2.L3.S.1470, P2.L3.N.1470 |  |  |  | -8d | 0d | 80 | P2.B2.09.21.710 | GYP | P2-5 |  | GYP-1 |  |  | FM | JH |  | 2.2 |
| P2.L2.S.1490 |  | Firestop - Thru Wall / L2 / South | 10d | 2026-07-29 | 2026-08-11 | P2.L2.S.1470 |  |  |  | 49d | 0d | 80 | P2.B2.07.84.210 | FIRESTO | P2-5 |  | FIRESTO | To Finishes - Paint | AT48 | FM | JH |  |  |
| P2.L2.S.1550 |  | Trades Inspect & Verify R/I Work Completed to Specs / L2 / South | 5d | 2026-08-12 | 2026-08-18 | P2.L2.S.1510, P2.L2.S.1520, P2.L2.S.1530, P2.L2.S.1250, P2.L2.S.1540, P2.L2.S.1360, P2.L2.S.1500, P2.L2.S.1480, P2.L2.S.1490, P2.L2.S.1330 |  |  |  | 49d | 0d | 40 |  | T | P2-5 |  | T |  |  |  | JH |  |  |

Notes:
- FRG.P2.L2.S.1830: NOTES: 8/28 finish per Harris schedule
- P2.L2.S.1340: NOTES: Unactualized Start per remaining activities in Harris schedule

| ID | WBS | Activity | Duration | Start | Finish | Predecessors | Complete | Planned start | Planned finish | Total float | Free float | Temp Orig Dur | Act ID Temp | Resp / SRLM | PHASE | Z.RESP | RESP / Trade | Testing Type | Pick | 744 | RESP UPD | Update Status | **NEAR CRITICAL** |
| --- | --- | --- | --- | --- | --- | --- | --- | --- | --- | --- | --- | --- | --- | --- | --- | --- | --- | --- | --- | --- | --- | --- | --- |
|  | Z11 | **North (16K SF) / Level 2** |  | 2025-01-08 | 2026-08-18 |  |  |  |  |  |  |  |  |  |  |  |  |  |  |  |  |  |  |
| P2.L2.N.1000 |  | Layout - All Trades / L2 / North | 5d | 2025-01-08 A | 2025-01-31 A | P2.3.03.620 | 100% | 2025-02-03 | 2025-02-07 |  |  | 40 | P2.B2.01.010 | R/I.OH | P2-5 | Harris | R/I.OH |  |  |  |  |  |  |
| P2.L2.N.1010 |  | Framing - Top Track / L2 / North | 10d | 2025-01-09 A | 2025-01-20 A | P2.L1.N.1010, P2.L2.N.1000 | 100% | 2025-02-10 | 2025-02-21 |  |  | 80 | P2.B2.09.21.110 | GYP | P2-5 |  | GYP-1 |  |  |  |  |  |  |
| P2.L2.N.1020 |  | OH - Structural Supports (All Trades) / L2 / North | 5d | 2025-01-09 A | 2025-02-07 A | P2.L2.N.1000 | 100% | 2025-02-10 | 2025-02-14 |  |  | 80 | P2.B2.05.45.110 | R/I.OH | P2-5 | Harris | R/I.OH | AT24 |  |  |  |  |  |
| P2.L2.N.1030 |  | OH - MEPF - Hangers & Supports / L2 / North | 10d | 2025-01-09 A | 2025-02-13 A | P2.BIM.L2.40.140, P2.L2.N.1000 | 100% | 2025-02-10 | 2025-02-21 |  |  | 80 | P2.B2.20.05.410 | MEP | P2-5 | Harris | MEP-2 |  |  |  |  |  |  |
| P2.L2.N.1100 |  | Framing - Priority Walls & Door Frames / L2 / North | 10d | 2025-01-20 A | 2025-02-11 A | P2.L2.N.1010 FF, P2.L1.N.1090 FF, P2.L2.N.1030 SS | 100% | 2025-02-24 | 2025-03-07 |  |  | 80 | P2.B2.09.21.310 | GYP | P2-5 |  | GYP-1 |  |  |  |  |  |  |
| P2.L2.N.1070 |  | OH - Plumbing Piping / L2 / North | 20d | 2025-01-23 A | 2025-03-03 A | P2.L2.N.1030 FF+2d, P2.L1.N.1180 SS | 100% | 2025-02-24 | 2025-03-21 |  |  | 80 | P2.B2.22.14.210 | PLMB | P2-5 | Harris | PLMB |  | 1 |  |  |  |  |
| P2.L2.N.1360 |  | Framing - Priority Walls - AHJ Inspections / L2 / North | 5d | 2025-02-11 A | 2025-02-28 A | P2.L2.N.1100 | 100% | 2025-03-13 | 2025-03-19 |  |  | 80 | P2.B2.01.43.010 | FM | P2-5 |  | FM |  |  |  |  |  |  |
| P2.L2.N.1370 |  | Hang/Tape/Finish - Priority Walls / L2 / North | 10d | 2025-02-11 A | 2025-02-27 A | P2.L2.N.1020, P2.L2.N.1360 | 100% | 2025-03-20 | 2025-04-02 |  |  | 80 | P2.B2.09.21.210 | GYP | P2-5 |  | GYP-1 |  |  |  |  |  |  |
| P2.L2.N.1400 |  | Spray/Seal/Firestop - Head of Wall - Priority Walls / L2 / North | 5d | 2025-03-03 A | 2025-03-03 A | P2.L2.N.1370 | 100% | 2025-03-03 | 2025-03-07 |  |  | 80 | P2.B2.07.84.410 | FIRESTO | P2-5 |  | FIRESTO | AT47 |  |  |  |  |  |
| P2.L2.N.1050 |  | OH - Fire Suppression / L2 / North | 10d | 2025-03-17 A | 2025-03-28 A | P2.L2.N.1030 | 100% |  |  |  |  | 80 | P2.B2.21.13.210 | FP | P2-5 |  | FP-1 |  | 1 |  |  |  |  |
| P2.L2.N.1090 |  | OH - HVAC Piping (High) / L2 / North | 20d | 2025-03-26 A | 2025-04-21 A | P2.L2.N.1070, P2.L2.N.1030 | 100% | 2025-03-24 | 2025-04-18 |  |  | 80 | P2.B2.23.20.410 | FIT | P2-5 | Harris | FIT-2 |  | 2 |  |  |  |  |
| P2.L2.N.1080 |  | OH - Electrical - 480/277v Distribution / L2 / North | 10d | 2025-03-31 A | 2025-04-21 A | P2.L2.N.1030 | 100% | 2025-03-17 | 2025-03-28 |  |  | 80 | P2.B2.26.05.210 | ELEC | P2-5 |  | ELEC-2 |  | 1 |  |  |  |  |
| P2.L2.N.1200 |  | OH - Electrical - 208/120v Branch / L2 / North | 10d | 2025-03-31 A | 2025-04-17 A | P2.L2.N.1080 SS | 100% | 2025-03-31 | 2025-04-11 |  |  | 80 | P2.B2.26.05.310 | ELEC | P2-5 |  | ELEC-2 |  | 2 |  |  |  |  |
| P2.L2.N.1060 |  | OH - Hang Duct - HP Mains / L2 / North | 10d | 2025-04-22 A | 2025-05-27 A | P2.L1.N.1210, P2.L2.N.1190, P2.L2.N.1030 | 100% | 2025-05-22 | 2025-06-05 |  |  | 80 | P2.B2.23.30.210 | HVAC | P2-5 | Harris | HVAC |  | 1 |  |  |  |  |
| P2.L2.N.1380 |  | Paint Prime & 1st Coat - Priority Walls / L2 / North | 10d | 2025-05-01 A | 2025-05-14 A | P2.L2.N.1400 FF | 100% | 2025-06-02 | 2025-06-13 |  |  | 80 | P2.B2.09.91.110 | PAINT | P2-5 |  | PAINT-1 |  |  |  |  |  |  |
| P2.L2.N.1560 |  | OH - HVAC Piping (Low) / L2 / North | 20d | 2025-05-20 A | 2025-06-16 A | P2.L2.N.1090 | 100% | 2025-06-02 | 2025-06-27 |  |  | 80 | P2.B2.23.20.410 | FIT | P2-5 | Harris | FIT-2 |  | 2 | FM | FM |  |  |
| P2.L2.N.1280 |  | OH - Plumbing - Test / L2 / North | 10d | 2025-05-30 A | 2025-06-12 A | P2.L2.N.1070 | 100% | 2025-06-02 | 2025-06-13 |  |  | 80 | P2.B2.22.14.310 | PLMB | P2-5 | Harris | PLMB |  | 2 | FM | FM |  |  |
| P2.L2.N.1220 |  | OH - DALT - HP Mains / L2 / North | 10d | 2025-06-09 A | 2025-06-20 A | P2.L2.N.1060 | 100% | 2025-07-09 | 2025-07-22 |  |  | 80 | P2.B2.23.30.310 | TAB | P2-5 | Harris | TAB-1 |  | 2 | FM | FM |  |  |
| P2.L2.N.1040 |  | OH - Insulate HP Duct / L2 / North | 10d | 2025-06-23 A | 2025-07-18 A | P2.L2.N.1220 | 100% | 2025-07-23 | 2025-08-05 |  |  | 80 | P2.B2.23.07.310 | INSUL | P2-5 | Harris | INSUL-3 |  | 3 | FM | FM |  |  |
| P2.L2.N.1120 |  | OH - Hang Duct - LP Branch / L2 / North | 15d | 2025-06-23 A | 2025-09-20 A | P2.L2.N.1220 | 100% | 2025-07-23 | 2025-08-12 |  |  | 80 | P2.B2.23.30.410 | HVAC | P2-5 | Harris | HVAC |  | 3 | FM | FM | O |  |
| P2.L2.N.1270 |  | OH - Insulate Plumbing / L2 / North | 10d | 2025-07-01 A | 2025-07-15 A | P2.L2.N.1280 | 100% | 2025-08-01 | 2025-08-14 |  |  | 80 | P2.B2.22.07.510 | INSUL | P2-5 | Harris | INSUL-3 |  | 3 | FM | FM |  |  |
| P2.L2.N.1490 |  | OH - Conduit - Low Volt - BAS/Controls / L2 / North | 10d | 2025-08-28 A | 2025-09-15 A | P2.L2.N.1390, P2.L2.N.1250 | 100% | 2025-08-28 | 2025-09-11 |  |  | 80 |  | BAS | P2-5 | Harris | BAS-1 |  | 5 | FM | FM | O |  |
| P2.L2.N.1500 |  | OH - Conduit - Low Volt - Fire Alarm / L2 / North | 10d | 2025-08-28 A | 2025-09-15 A | P2.L2.N.1390, P2.L2.N.1260 | 100% | 2025-08-28 | 2025-09-11 |  |  | 80 |  | FA | P2-5 |  | FA-1 |  | 5 | FM | FM | O |  |
| P2.L2.N.1510 |  | OH - Conduit - Low Volt - Telecom / L2 / North | 10d | 2025-08-28 A | 2025-09-15 A | P2.L2.N.1260 | 100% | 2025-09-29 | 2025-10-10 |  |  | 80 |  | ELEC | P2-5 |  | ELEC-2 |  | 5 | FM | FM | O |  |
| P2.L2.N.1520 |  | OH - Conduit - Low Volt - Security / L2 / North | 10d | 2025-08-28 A | 2025-09-15 A | P2.L2.N.1250 | 100% | 2025-08-28 | 2025-09-11 |  |  | 80 |  | ELEC | P2-5 |  | ELEC-2 |  | 5 | FM | FM | O |  |
| P2.L2.N.1530 |  | OH - Conduit - Low Volt - Medical Services/Nurse Call (?) / L2 / North | 10d | 2025-08-28 A | 2025-09-15 A | P2.L2.N.1260 | 100% | 2025-09-29 | 2025-10-10 |  |  | 80 |  | ELEC | P2-5 |  | ELEC-2 |  | 5 | FM | FM | O |  |
| P2.L2.N.1240 |  | OH - HVAC Piping - Test / L2 / North | 10d | 2025-09-22 A | 2025-09-26 A | P2.L2.N.1560 | 100% | 2025-10-01 | 2025-10-14 |  |  | 80 | P2.B2.23.20.510 | FIT | P2-5 | Harris | FIT-2 |  | 3 | FM | FM | O |  |
| P2.L2.N.1250 |  | OH - Insulate HVAC Pipe / L2 / North | 10d | 2025-09-26 A | 2025-09-30 A | P2.L2.N.1240, P2.L2.N.1040 | 100% | 2025-10-08 | 2025-10-21 |  |  | 80 | P2.B2.22.07.610 | INSUL | P2-5 | Harris | INSUL-3 |  | 4 | FM | FM | O |  |
| P2.L2.N.1190 |  | Firestop - Thru Wall - Priority Walls / L2 / North | 5d | 2025-10-01 A | 2025-10-07 A | P2.L2.N.1380 | 100% |  |  |  |  | 80 | P2.B2.07.84.110 | FIRESTO | P2-5 |  | FIRESTO | AT48 |  | FM | FM |  |  |
| P2.L2.N.1410 |  | Framing - Balance of Framing & Door Frames / L2 / North | 10d | 2025-10-27 A | 2025-11-07 A | P2.L7.S.1420, P2.L7.LC.1420, P2.L7.N.1420 | 100% |  |  |  |  | 80 | A1310 | GYP | P2-5 |  | GYP-1 |  |  | FM | JH |  |  |
| P2.L2.N.1110 |  | In Wall - Plumbing - Framing / L2 / North | 10d | 2025-11-01 A | 2025-11-11 A | P2.L2.N.1410 | 100% | 2025-12-08 | 2025-12-19 |  |  | 80 | P2.B2.22.05.410 | PLMB | P2-5 | Harris | PLMB |  |  | FM | JH |  |  |
| P2.L2.N.1260 |  | OH - Insulate LP Duct / L2 / North | 10d | 2025-11-03 A | 2025-11-14 A | P2.L2.N.1120 | 100% | 2025-12-01 | 2025-12-12 |  |  | 80 | P2.B2.23.07.410 | INSUL | P2-5 | Harris | INSUL-3 |  | 4 | FM | JH |  |  |
| P2.L2.N.1390 |  | OH - Set & Connect Mech Equipment / L2 / North | 15d | 2025-11-03 A | 2025-11-14 A | P2.L2.N.1220 | 100% | 2025-12-01 | 2025-12-19 |  |  | 80 | P2.B2.23.82.110 | HVAC | P2-5 | Harris | HVAC |  | 3 | FM | JH |  |  |
| P2.L2.N.1140 |  | In Wall - Electrical - Framing / L2 / North | 10d | 2025-11-10 A | 2025-11-21 A | P2.L2.N.1200, P2.L2.N.1410 | 100% | 2025-12-08 | 2025-12-19 |  |  | 80 | P2.B2.26.05.610 | ELEC | P2-5 |  | ELEC-2 |  |  | FM | JH |  |  |
| P2.L2.N.1150 |  | In Wall - Backing/Blocking/Supports / L2 / North | 10d | 2025-11-10 A | 2025-11-21 A | P2.L2.N.1410 | 100% | 2025-12-08 | 2025-12-19 |  |  | 80 | P2.B2.09.21.510 | R/I.IW | P2-5 |  | R/I.IW |  |  | FM | JH |  |  |
| P2.L2.N.1130 |  | Spray/Seal/Firestop - Head of Wall / L2 / North | 10d | 2026-03-23 A | 2026-03-31 A | P2.L2.N.1100 | 100% | 2026-08-21 | 2026-09-03 |  |  | 80 | P2.B2.07.84.310 | FIRSAFE | P2-5 |  | FIRSAFE | AT47 | To Finishes - Paint |  | JH |  |  |
| P2.L2.N.1170 |  | AHJ Inspections - Wall Close In / L2 / North | 5d | 2026-04-01 | 2026-04-07 | P2.L2.N.1140, P2.L2.N.1150, P2.L2.N.1110 |  |  |  | 55d | 63d | 40 | P2.B2.01.43.110 | FM | P2-5 |  | FM |  |  | FM | JH | O |  |
| P2.L2.N.1210 |  | OH - Electrical - Equip Tie In / L2 / North | 10d | 2026-04-01 | 2026-04-14 | P2.L2.N.1390 |  |  |  | 112d | 0d | 80 | P2.B2.26.05.410 | ELEC | P2-5 |  | ELEC-2 |  | 4 | FM | JH | O |  |
| P2.L2.N.1430 |  | Pull Wire - Low Volt - BAS/Controls / L2 / North | 10d | 2026-04-01 | 2026-04-14 | P2.L2.N.1490 |  |  |  | 29d | 28d | 80 |  | BAS | P2-5 | Harris | BAS-1 |  | To Trim Finishes |  | JH |  |  |
| P2.L2.N.1440 |  | Pull Wire - Low Volt - Fire Alarm / L2 / North | 10d | 2026-04-01 | 2026-04-14 | P2.L2.N.1500 |  |  |  | 132d | 83d | 80 |  | FA | P2-5 |  | FA-1 |  | To Trim Finishes |  | JH |  |  |
| P2.L2.N.1450 |  | Pull Wire - Low Volt - Telecom / L2 / North | 10d | 2026-04-01 | 2026-04-14 | P2.L2.N.1510 |  |  |  | 132d | 83d | 80 |  | CIT | P2-5 |  | CIT |  | To Trim Finishes |  | JH |  |  |
| P2.L2.N.1460 |  | Pull Wire - Low Volt - Security / L2 / North | 10d | 2026-04-01 | 2026-04-14 | P2.L2.N.1520 |  |  |  | 132d | 83d | 80 |  | LOWVOLT | P2-5 |  | LOWVOLT-1 |  | To Trim Finishes |  | JH |  |  |
| P2.L2.N.1470 |  | Pull Wire - Electrical - 480/277v Distribution / L2 / North | 10d | 2026-04-01 | 2026-04-14 | P2.L2.N.1080, P2.2.HE.2803.1050, P2.2.HE.2949.1050 |  |  |  | 132d | 83d | 80 |  | ELEC | P2-5 |  | ELEC-2 |  | To Trim Devices & Term Panel | FM | JH | O |  |
| P2.L2.N.1480 |  | Pull Wire - Low Volt - Medical Services/Nurse Call (?) / L2 / North | 10d | 2026-04-01 | 2026-04-14 | P2.L2.N.1530 |  |  |  | 132d | 83d | 80 |  | LOWVOLT | P2-5 |  | LOWVOLT-1 |  | To Trim Finishes |  | JH |  |  |
| P2.L2.N.1420 |  | Pull Wire - Electrical - 208/120v Branch & Equip / L2 / North | 20d | 2026-04-15 | 2026-05-12 | P2.L2.N.1200, P2.L2.N.1210, P2.L2.N.1140 |  |  |  | 112d | 63d | 80 |  | ELEC | P2-5 |  | ELEC-2 |  | To Trim Devices & Term Panel | FM | JH | O |  |
| P2.L2.N.1230 |  | OH - HVAC Piping - Equip Tie In / L2 / North | 15d | 2026-04-29 | 2026-05-19 | P2.L2.N.1240, P2.L2.N.1390, CX.B2.HYDR.1000 |  |  |  | 107d | 58d | 80 | P2.B2.23.20.610 | FIT | P2-5 | Harris | FIT-2 |  |  | FM | JH |  |  |
| P2.L2.N.1180 |  | Hang-Tape-Finish - Walls / L2 / North | 15d | 2026-07-08 | 2026-07-28 | P2.SUM.175, P2.L2.N.1170, P2.L1.S.1470, P2.L1.N.1470, P2.L3.S.1470, P2.L3.N.1470 |  |  |  | -8d | 0d | 80 | P2.B2.09.21.710 | GYP | P2-5 |  | GYP-1 |  |  |  | JH |  | 2.2 |
| P2.L2.N.1160 |  | Firestop - Thru Wall / L2 / North | 10d | 2026-07-29 | 2026-08-11 | P2.L2.N.1180, P2.L2.N.1050, P2.L2.N.1270 |  |  |  | 49d | 0d | 80 | P2.B2.07.84.210 | FIRESTO | P2-5 |  | FIRESTO | AT48 | To Finishes - Paint |  | JH |  |  |
| P2.L2.N.1550 |  | Trades Inspect & Verify R/I Work Completed to Specs / L2 / North | 5d | 2026-08-12 | 2026-08-18 | P2.L2.N.1160, P2.L2.N.1130, P2.L2.N.1480, P2.L2.N.1430, P2.L2.N.1440, P2.L2.N.1450, P2.L2.N.1460, P2.L2.N.1470, P2.L2.N.1420, DDD2800, P2.L2.N.1230 |  |  |  | 49d | 0d | 40 |  | T | P2-5 |  | T |  |  |  | JH |  |  |

| ID | WBS | Activity | Type | Duration | Start | Finish | Predecessors | Complete | Planned start | Planned finish | Total float | Free float | Temp Orig Dur | Resp / SRLM | PHASE | RESP / Trade | 744 | RESP UPD | Update Status | Z.RESP | Testing Type |
| --- | --- | --- | --- | --- | --- | --- | --- | --- | --- | --- | --- | --- | --- | --- | --- | --- | --- | --- | --- | --- | --- |
|  | 4 | **House Electrical Rooms / Level 2** |  |  | 2025-01-23 | 2026-04-01 |  |  |  |  |  |  |  |  |  |  |  |  |  |  |  |
|  | 7 | **House Electrical Room / 2-5959** |  |  | 2025-01-23 | 2025-12-31 |  |  |  |  |  |  |  |  |  |  |  |  |  |  |  |
| P2.2.HE.5959.1000 |  | Framing and Blocking / L2 / South / 5959 |  | 3d | 2025-01-23 A | 2025-03-03 A | P2.L2.S.1090 FF+2d | 100% | 2025-02-24 | 2025-02-26 |  |  | 24 | GYP | P2-5 | GYP-1 |  |  |  |  |  |
| P2.2.HE.5959.1010 |  | In Wall Rough In / L2 / South / 5959 |  | 2d | 2025-04-14 A | 2025-04-25 A | P2.2.HE.5959.1000 | 100% | 2025-05-01 | 2025-05-02 |  |  | 16 | R/I.IW | P2-5 | R/I.IW |  |  |  |  |  |
| P2.2.HE.5959.1020 |  | Inspections - Wall Close In / L2 / South / 5959 |  | 2d | 2025-04-24 A | 2025-04-24 A | P2.2.HE.5959.1010 | 100% | 2025-05-05 | 2025-05-06 |  |  | 16 | AHJ | P2-5 | AHJ |  |  |  |  |  |
| P2.2.HE.5959.1030 |  | Hang-Tape-Finish / L2 / South / 5959 |  | 5d | 2025-05-21 A | 2025-05-26 A | P2.2.HE.5959.1020, P2.FAC.2.Z1.180, P2.L11.5-9.140 | 100% | 2025-06-25 | 2025-07-01 |  |  | 40 | GYP | P2-5 | GYP-1 |  |  |  |  |  |
| P2.2.HE.5959.1040 |  | Paint Prime & 1st Coat / L2 / South / 5959 |  | 2d | 2025-05-26 A | 2025-05-30 A | P2.2.HE.5959.1030 | 100% | 2025-07-02 | 2025-07-03 |  |  | 16 | PAINT | P2-5 | PAINT-1 |  |  |  |  |  |
| P2.2.HE.5959.1050 |  | Cans/Troughs/Backboxes/XFMRs / L2 / South / 5959 |  | 5d | 2025-06-17 A | 2025-06-19 A | P2.2.HE.5959.1040 | 100% | 2025-09-11 | 2025-09-17 |  |  | 40 | ELEC | P2-5 | ELEC-2 | ND | ND |  |  |  |
| P2.2.HE.5959.1060 |  | Risers and OH Conduit Connections / L2 / South / 5959 |  | 5d | 2025-06-23 A | 2025-06-30 A | P2.2.HE.5959.1050 | 100% | 2025-09-18 | 2025-09-24 |  |  | 40 | ELEC | P2-5 | ELEC-2 | ND | ND |  |  |  |
| P2.2.HE.5959.1070 |  | Pull Wire - In From Distribution Panels / Out to Branch Circuits / L2 / South / 5959 |  | 5d | 2025-11-03 A | 2025-11-07 A | P2.2.HE.5959.1060, P2.L2.INT.S.1270 | 100% | 2025-12-01 | 2025-12-05 |  |  | 40 | ELEC | P2-5 | ELEC-2 | ND | ND |  |  |  |
| P2.2.HE.5959.1080 |  | Panelboards, Interconnect Wiring, and Remaining Room Buildout of All Systems / L2 / South / 5959 |  | 10d | 2025-11-03 A | 2025-11-14 A | BP1.262.3.100, BP1.262.3.220, P2.2.HE.5959.1060 | 100% | 2025-12-01 | 2025-12-12 |  |  | 80 | ELEC | P2-5 | ELEC-2 | ND | ND |  |  |  |
| P2.2.HE.5959.1090 |  | Test & Terminate / L2 / South / 5959 |  | 5d | 2025-12-01 A | 2025-12-05 A | P2.2.HE.5959.1080, P2.2.HE.5959.1070 | 100% | 2026-02-13 | 2026-02-19 |  |  | 40 | ELEC | P2-5 | ELEC-2 | ND | ND | O |  |  |
| P2.2.HE.5959.1120 |  | Flooring / L2 / South / 5959 |  | 2d | 2025-12-01 A | 2025-12-05 A | P2.2.HE.5959.1110 | 100% | 2026-02-26 | 2026-02-27 |  |  | 16 | FLOOR | P2-5 | FLOOR | ND | ND | O |  |  |
| P2.2.HE.5959.1100 |  | Paint - Finish Coat / L2 / South / 5959 |  | 2d | 2025-12-08 A | 2025-12-12 A | P2.2.HE.5959.1090 | 100% | 2026-02-20 | 2026-02-23 |  |  | 16 | PAINT | P2-5 | PAINT-1 | ND | ND | O |  |  |
| P2.2.HE.5959.1110 |  | Trim All MEPF Finishes / L2 / South / 5959 |  | 2d | 2025-12-16 A | 2025-12-19 A | BP1.233.3.410, P2.2.HE.5959.1100 | 100% | 2026-02-24 | 2026-02-25 |  |  | 16 | MEP | P2-5 | MEP-2 | ND | ND | O | Harris |  |
| P2.2.HE.5959.1130 |  | Doors & Hardware / L2 / South / 5959 |  | 2d | 2025-12-18 A | 2025-12-23 A | P2.2.HE.5959.1120 | 100% | 2026-03-02 | 2026-03-03 |  |  | 16 | DFH | P2-5 | DFH | ND | ND | O |  | AT29 |
| P2.2.HE.5959.1140 |  | Panels Ready to Energize - Lock Doors and Limit Access / L2 / South / 5959 | milestone | 0d | 2025-12-31 A | 2025-12-31 A | P2.2.HE.5959.1090, P2.2.HE.5959.1130 FF | 100% |  |  |  |  | 0 | ELEC | P2-5 | ELEC-2 | ND | ND | O |  |  |
|  | 3 | **House Electrical Room / 2-2803** |  |  | 2025-04-10 | 2026-04-01 |  |  |  |  |  |  |  |  |  |  |  |  |  |  |  |
| P2.2.HE.2803.1000 |  | Framing and Blocking / L2 / North / 2803 |  | 3d | 2025-04-10 A | 2025-04-15 A | P2.L2.N.1100 | 100% | 2025-05-09 | 2025-05-13 |  |  | 24 | GYP | P2-5 | GYP-1 |  |  |  |  |  |
| P2.2.HE.2803.1010 |  | In Wall Rough In / L2 / North / 2803 |  | 2d | 2025-04-16 A | 2025-04-25 A | P2.2.HE.2803.1000 | 100% | 2025-05-14 | 2025-05-15 |  |  | 16 | R/I.IW | P2-5 | R/I.IW |  |  |  |  |  |
| P2.2.HE.2803.1020 |  | Inspections - Wall Close In / L2 / North / 2803 |  | 2d | 2025-04-24 A | 2025-04-24 A | P2.2.HE.2803.1010 | 100% | 2025-05-16 | 2025-05-19 |  |  | 16 | AHJ | P2-5 | AHJ |  |  |  |  |  |
| P2.2.HE.2803.1030 |  | Hang-Tape-Finish / L2 / North / 2803 |  | 5d | 2025-05-09 A | 2025-05-19 A | P2.2.HE.2803.1020, P2.FAC.2.Z1.190, P2.MR.2-8.140 | 100% | 2025-07-24 | 2025-07-30 |  |  | 40 | GYP | P2-5 | GYP-1 |  |  |  |  |  |
| P2.2.HE.2803.1040 |  | Paint Prime & 1st Coat / L2 / North / 2803 |  | 2d | 2025-05-26 A | 2025-05-30 A | P2.2.HE.2803.1030 | 100% | 2025-07-31 | 2025-08-01 |  |  | 16 | PAINT | P2-5 | PAINT-1 |  |  |  |  |  |
| P2.2.HE.2803.1050 |  | Cans/Troughs/Backboxes/XFMRs / L2 / North / 2803 |  | 5d | 2025-07-14 A | 2025-07-17 A | P2.2.HE.2803.1040 | 100% | 2025-08-12 | 2025-08-18 |  |  | 40 | ELEC | P2-5 | ELEC-2 | ND | ND |  |  |  |
| P2.2.HE.2803.1060 |  | Risers and OH Conduit Connections / L2 / North / 2803 |  | 5d | 2025-07-14 A | 2025-07-17 A | P2.2.HE.2803.1050 | 100% | 2025-08-19 | 2025-08-25 |  |  | 40 | ELEC | P2-5 | ELEC-2 | ND | ND |  |  |  |
| P2.2.HE.2803.1070 |  | Pull Wire - In From Distribution Panels / Out to Branch Circuits / L2 / North / 2803 |  | 5d | 2025-11-05 A | 2025-11-11 A | P2.2.HE.2803.1060, P2.L2.INT.N.1270 | 100% | 2025-12-03 | 2025-12-09 |  |  | 40 | ELEC | P2-5 | ELEC-2 | ND | ND |  |  |  |
| P2.2.HE.2803.1080 |  | Panelboards, Interconnect Wiring, and Remaining Room Buildout of All Systems / L2 / North / 2803 |  | 10d | 2025-11-05 A | 2025-11-18 A | BP1.262.3.100, BP1.262.3.220, P2.2.HE.2803.1060 | 100% | 2025-12-03 | 2025-12-16 |  |  | 80 | ELEC | P2-5 | ELEC-2 | ND | ND |  |  |  |
| P2.2.HE.2803.1090 |  | Test & Terminate / L2 / North / 2803 |  | 5d | 2025-12-01 A | 2025-12-05 A | P2.2.HE.2803.1080, P2.2.HE.2803.1070 | 100% | 2026-02-13 | 2026-02-19 |  |  | 40 | ELEC | P2-5 | ELEC-2 | ND | ND | O |  |  |
| P2.2.HE.2803.1100 |  | Paint - Finish Coat / L2 / North / 2803 |  | 2d | 2025-12-08 A | 2025-12-12 A | P2.2.HE.2803.1090 | 100% | 2026-02-20 | 2026-02-23 |  |  | 16 | PAINT | P2-5 | PAINT-1 | ND | ND | O |  |  |
| P2.2.HE.2803.1110 |  | Trim All MEPF Finishes / L2 / North / 2803 |  | 2d | 2025-12-18 A | 2025-12-22 A | BP1.233.3.410, P2.2.HE.2803.1100 | 100% | 2026-02-24 | 2026-02-25 |  |  | 16 | MEP | P2-5 | MEP-2 | ND | ND | O | Harris |  |
| P2.2.HE.2803.1130 |  | Doors & Hardware / L2 / North / 2803 |  | 2d | 2025-12-18 A | 2025-12-23 A | P2.2.HE.2803.1120 | 100% | 2026-03-02 | 2026-03-03 |  |  | 16 | DFH | P2-5 | DFH | ND | ND | O |  | AT29 |
| P2.2.HE.2803.1120 |  | Flooring / L2 / North / 2803 |  | 2d | 2026-03-02 A | 2026-03-03 A | P2.2.HE.2803.1110 | 100% |  |  |  |  | 16 | FLOOR | P2-5 | FLOOR | ND | ND | O |  |  |
| P2.2.HE.2803.1140 |  | Panels Ready to Energize - Lock Doors and Limit Access / L2 / North / 2803 | milestone | 0d | 2026-04-01 | 2026-04-01 | P2.2.HE.2803.1090, P2.2.HE.2803.1130 FF |  |  |  | 39d | 0d | 0 | ELEC | P2-5 | ELEC-2 | ND | ND | O |  |  |

| ID | WBS | Activity | Type | Duration | Start | Finish | Predecessors | Complete | Planned start | Planned finish | Temp Orig Dur | Resp / SRLM | PHASE | RESP / Trade | 744 | RESP UPD | Update Status | Z.RESP | Testing Type |
| --- | --- | --- | --- | --- | --- | --- | --- | --- | --- | --- | --- | --- | --- | --- | --- | --- | --- | --- | --- |
|  | 2 | **House Electrical Room / 2-2949** |  |  | 2025-04-10 | 2025-12-31 |  |  |  |  |  |  |  |  |  |  |  |  |  |
| P2.2.HE.2949.1000 |  | Framing and Blocking / L2 / North / 2949 |  | 3d | 2025-04-10 A | 2025-04-15 A | P2.L2.N.1100 | 100% | 2025-05-13 | 2025-05-15 | 24 | GYP | P2-5 | GYP-1 |  |  |  |  |  |
| P2.2.HE.2949.1010 |  | In Wall Rough In / L2 / North / 2949 |  | 2d | 2025-04-16 A | 2025-04-25 A | P2.2.HE.2949.1000 | 100% | 2025-05-16 | 2025-05-19 | 16 | R/I.IW | P2-5 | R/I.IW |  |  |  |  |  |
| P2.2.HE.2949.1020 |  | Inspections - Wall Close In / L2 / North / 2949 |  | 2d | 2025-04-24 A | 2025-04-24 A | P2.2.HE.2949.1010 | 100% | 2025-05-20 | 2025-05-21 | 16 | AHJ | P2-5 | AHJ |  |  |  |  |  |
| P2.2.HE.2949.1030 |  | Hang-Tape-Finish / L2 / North / 2949 |  | 5d | 2025-04-25 A | 2025-05-05 A | P2.2.HE.2949.1020, P2.MR.W.160 | 100% | 2025-05-22 | 2025-05-29 | 40 | GYP | P2-5 | GYP-1 |  |  |  |  |  |
| P2.2.HE.2949.1040 |  | Paint Prime & 1st Coat / L2 / North / 2949 |  | 2d | 2025-05-05 A | 2025-05-07 A | P2.2.HE.2949.1030 | 100% | 2025-06-03 | 2025-06-04 | 16 | PAINT | P2-5 | PAINT-1 |  |  |  |  |  |
| P2.2.HE.2949.1050 |  | Cans/Troughs/Backboxes/XFMRs / L2 / North / 2949 |  | 5d | 2025-06-05 A | 2025-06-11 A | P2.2.HE.2949.1040 | 100% | 2025-07-01 | 2025-07-08 | 40 | ELEC | P2-5 | ELEC-2 | ND | ND |  |  |  |
| P2.2.HE.2949.1060 |  | Risers and OH Conduit Connections / L2 / North / 2949 |  | 5d | 2025-06-05 A | 2025-06-12 A | P2.2.HE.2949.1050 | 100% | 2025-07-09 | 2025-07-15 | 40 | ELEC | P2-5 | ELEC-2 | ND | ND |  |  |  |
| P2.2.HE.2949.1070 |  | Pull Wire - In From Distribution Panels / Out to Branch Circuits / L2 / North / 2949 |  | 5d | 2025-11-03 A | 2025-11-07 A | P2.2.HE.2949.1060, P2.L2.INT.N.1270 | 100% | 2025-12-01 | 2025-12-05 | 40 | ELEC | P2-5 | ELEC-2 | ND | ND |  |  |  |
| P2.2.HE.2949.1080 |  | Panelboards, Interconnect Wiring, and Remaining Room Buildout of All Systems / L2 / North / 2949 |  | 10d | 2025-11-03 A | 2025-11-14 A | BP1.262.3.100, BP1.262.3.220, P2.2.HE.2949.1060 | 100% | 2025-12-01 | 2025-12-12 | 80 | ELEC | P2-5 | ELEC-2 | ND | ND |  |  |  |
| P2.2.HE.2949.1090 |  | Test & Terminate / L2 / North / 2949 |  | 5d | 2025-12-01 A | 2025-12-05 A | P2.2.HE.2949.1070, P2.2.HE.2949.1080 | 100% | 2026-02-13 | 2026-02-19 | 40 | ELEC | P2-5 | ELEC-2 | ND | ND | O |  |  |
| P2.2.HE.2949.1120 |  | Flooring / L2 / North / 2949 |  | 2d | 2025-12-01 A | 2025-12-05 A | P2.2.HE.2949.1110 | 100% | 2026-02-26 | 2026-02-27 | 16 | FLOOR | P2-5 | FLOOR | ND | ND | O |  |  |
| P2.2.HE.2949.1100 |  | Paint - Finish Coat / L2 / North / 2949 |  | 2d | 2025-12-08 A | 2025-12-12 A | P2.2.HE.2949.1090 | 100% | 2026-02-20 | 2026-02-23 | 16 | PAINT | P2-5 | PAINT-1 | ND | ND | O |  |  |
| P2.2.HE.2949.1110 |  | Trim All MEPF Finishes / L2 / North / 2949 |  | 2d | 2025-12-15 A | 2025-12-17 A | P2.2.HE.2949.1100, BP1.233.3.410 | 100% | 2026-02-24 | 2026-02-25 | 16 | MEP | P2-5 | MEP-2 | ND | ND | O | Harris |  |
| P2.2.HE.2949.1130 |  | Doors & Hardware / L2 / North / 2949 |  | 2d | 2025-12-18 A | 2025-12-23 A | P2.2.HE.2949.1120 | 100% | 2026-03-02 | 2026-03-03 | 16 | DFH | P2-5 | DFH | ND | ND | O |  | AT29 |
| P2.2.HE.2949.1140 |  | Panels Ready to Energize - Lock Doors and Limit Access / L2 / North / 2949 | milestone | 0d | 2025-12-31 A | 2025-12-31 A | P2.2.HE.2949.1090, P2.2.HE.2949.1130 FF | 100% |  |  | 0 | ELEC | P2-5 | ELEC-2 | ND | ND | O |  |  |
|  | 1 | **House Electrical Room / 2-5966** |  |  | 2025-01-23 | 2026-03-04 |  |  |  |  |  |  |  |  |  |  |  |  |  |
| P2.2.HE.5966.1000 |  | Framing and Blocking / L2 / South / 5966 |  | 3d | 2025-01-23 A | 2025-03-15 A | P2.L2.S.1090 SS | 100% | 2025-02-24 | 2025-02-26 | 24 | GYP | P2-5 | GYP-1 |  |  |  |  |  |
| P2.2.HE.5966.1010 |  | In Wall Rough In / L2 / South / 5966 |  | 2d | 2025-01-28 A | 2025-03-16 A | P2.2.HE.5966.1000 FF+1d | 100% | 2025-02-27 | 2025-02-28 | 16 | R/I.IW | P2-5 | R/I.IW |  |  |  |  |  |
| P2.2.HE.5966.1020 |  | Inspections - Wall Close In / L2 / South / 5966 |  | 2d | 2025-04-24 A | 2025-04-24 A | P2.2.HE.5966.1010 | 100% | 2025-05-01 | 2025-05-02 | 16 | AHJ | P2-5 | AHJ |  |  |  |  |  |
| P2.2.HE.5966.1030 |  | Hang-Tape-Finish / L2 / South / 5966 |  | 5d | 2025-05-19 A | 2025-05-26 A | P2.2.HE.5966.1020, P2.LR.L7.170 | 100% | 2025-06-12 | 2025-06-18 | 40 | GYP | P2-5 | GYP-1 |  |  |  |  |  |
| P2.2.HE.5966.1040 |  | Paint Prime & 1st Coat / L2 / South / 5966 |  | 2d | 2025-05-26 A | 2025-05-30 A | P2.2.HE.5966.1030 | 100% | 2025-06-19 | 2025-06-20 | 16 | PAINT | P2-5 | PAINT-1 |  |  |  |  |  |
| P2.2.HE.5966.1050 |  | Cans/Troughs/Backboxes/XFMRs / L2 / South / 5966 |  | 5d | 2025-07-14 A | 2025-07-17 A | P2.2.HE.5966.1040 | 100% | 2025-08-28 | 2025-09-04 | 40 | ELEC | P2-5 | ELEC-2 | ND | ND |  |  |  |
| P2.2.HE.5966.1060 |  | Risers and OH Conduit Connections / L2 / South / 5966 |  | 5d | 2025-07-14 A | 2025-07-17 A | P2.2.HE.5966.1050 | 100% | 2025-09-05 | 2025-09-11 | 40 | ELEC | P2-5 | ELEC-2 | ND | ND |  |  |  |
| P2.2.HE.5966.1070 |  | Pull Wire - In From Distribution Panels / Out to Branch Circuits / L2 / South / 5966 |  | 5d | 2025-11-10 A | 2025-11-14 A | P2.2.HE.5966.1060, P2.L2.INT.S.1270 | 100% | 2025-12-08 | 2025-12-12 | 40 | ELEC | P2-5 | ELEC-2 | ND | ND |  |  |  |
| P2.2.HE.5966.1080 |  | Panelboards, Interconnect Wiring, and Remaining Room Buildout of All Systems / L2 / South / 5966 |  | 10d | 2025-11-10 A | 2025-11-21 A | P2.2.HE.5966.1060, BP1.262.3.100, BP1.262.3.220 | 100% | 2025-12-08 | 2025-12-19 | 80 | ELEC | P2-5 | ELEC-2 | ND | ND |  |  |  |
| P2.2.HE.5966.1100 |  | Paint - Finish Coat / L2 / South / 5966 |  | 2d | 2025-12-08 A | 2025-12-12 A | P2.2.HE.5966.1090 | 100% | 2026-02-20 | 2026-02-23 | 16 | PAINT | P2-5 | PAINT-1 | ND | ND | O |  |  |
| P2.2.HE.5966.1090 |  | Test & Terminate / L2 / South / 5966 |  | 5d | 2025-12-10 A | 2025-12-16 A | P2.2.HE.5966.1070, P2.2.HE.5966.1080 | 100% | 2026-02-13 | 2026-02-19 | 40 | ELEC | P2-5 | ELEC-2 | ND | ND | O |  |  |
| P2.2.HE.5966.1110 |  | Trim All MEPF Finishes / L2 / South / 5966 |  | 2d | 2025-12-16 A | 2025-12-22 A | P2.2.HE.5966.1100, BP1.233.3.410 | 100% | 2026-02-24 | 2026-02-25 | 16 | MEP | P2-5 | MEP-2 | ND | ND | O | Harris |  |
| P2.2.HE.5966.1130 |  | Doors & Hardware / L2 / South / 5966 |  | 2d | 2025-12-18 A | 2025-12-23 A | P2.2.HE.5966.1120 | 100% | 2026-03-02 | 2026-03-03 | 16 | DFH | P2-5 | DFH | ND | ND | O |  | AT29 |
| P2.2.HE.5966.1140 |  | Panels Ready to Energize - Lock Doors and Limit Access / L2 / South / 5966 | milestone | 0d | 2025-12-31 A | 2025-12-31 A | P2.2.HE.5966.1090, P2.2.HE.5966.1130 FF | 100% |  |  | 0 | ELEC | P2-5 | ELEC-2 | ND | ND | O |  |  |
| P2.2.HE.5966.1120 |  | Flooring / L2 / South / 5966 |  | 2d | 2026-03-03 A | 2026-03-04 A | P2.2.HE.5966.1110 | 100% |  |  | 16 | FLOOR | P2-5 | FLOOR | ND | ND | O |  |  |

| ID | WBS | Activity | Type | Duration | Start | Finish | Predecessors | Complete | Planned start | Planned finish | Total float | Free float | Temp Orig Dur | Resp / SRLM | 744 | PHASE | RESP UPD | RESP / Trade | Update Status | Z.RESP | Testing Type |
| --- | --- | --- | --- | --- | --- | --- | --- | --- | --- | --- | --- | --- | --- | --- | --- | --- | --- | --- | --- | --- | --- |
|  | 2 | **IT Closets / Level 2** |  |  | 2024-12-24 | 2026-06-10 |  |  |  |  |  |  |  |  |  |  |  |  |  |  |  |
|  | 1 | **IT Closet 2-5957** |  |  | 2025-07-02 | 2026-05-21 |  |  |  |  |  |  |  |  |  |  |  |  |  |  |  |
| P2.2.IT.5957.100 |  | Hang Plywood Backboards / L2 / South / 5957 |  | 2d | 2025-07-02 A | 2025-07-03 A | P2.L2.S.1140 | 100% | 2025-08-01 | 2025-08-04 |  |  | 16 | CRAFT | ND | P2-5 | ND | CRAFT |  |  |  |
| P2.2.IT.5957.110 |  | Paint Prime & 1st Coat / L2 / South / 5957 |  | 2d | 2025-09-16 A | 2025-09-18 A | P2.2.IT.5957.100 | 100% | 2025-10-01 | 2025-10-02 |  |  | 16 | PAINT | ND | P2-5 | ND | PAINT-1 | O |  |  |
| P2.2.IT.5957.130 |  | HVAC Equipment & Service Connections / L2 / South / 5957 |  | 5d | 2025-09-25 A | 2025-09-30 A | P2.2.IT.5957.110, P2.L2.S.1300 | 100% | 2025-10-01 | 2025-10-07 |  |  | 40 | HVAC | ND | P2-5 | ND | HVAC | O | Harris |  |
| P2.2.IT.5957.120 |  | Electrical Panels / Conduit Connections / Wire Terminations / L2 / South / 5957 |  | 5d | 2025-10-06 A | 2025-10-08 A | P2.2.IT.5957.110, P2.2.HE.5959.1070 FF | 100% | 2025-10-03 | 2025-10-09 |  |  | 40 | ELEC | ND | P2-5 | ND | ELEC-2 |  |  |  |
| P2.2.IT.5957.150 |  | Flooring / L2 / South / 5957 |  | 5d | 2025-11-17 A | 2025-11-21 A | P2.2.IT.5957.110 | 100% | 2026-02-17 | 2026-02-23 |  |  | 40 | FLOOR | ND | P2-5 | ND | FLOOR | O |  |  |
| P2.2.IT.5957.230 |  | Doors & Hardware / L2 / South / 5957 |  | 2d | 2025-12-18 A | 2025-12-23 A | P2.2.IT.5957.110 | 100% | 2026-03-23 | 2026-03-24 |  |  | 16 | DFH | ND | P2-5 | ND | DFH |  |  | AT29 |
| P2.2.IT.5957.140 |  | Trim all MEPF / L2 / South / 5957 |  | 2d | 2026-04-01 | 2026-04-02 | P2.2.IT.5957.120, BP1.233.3.410, P2.2.IT.5957.130 |  |  |  | 138d | 18d | 16 | MEP | ND | P2-5 | ND | MEP-2 | O | Harris |  |
| P2.2.IT.5957.170 |  | OH Cable Tray / L2 / South / 5957 |  | 5d | 2026-04-01 | 2026-04-07 | P2.L2.S.1390, P2.L2.N.1510, P2.L2.INT.S.1340, P2.L2.INT.N.1340 |  |  |  | 120d | 0d | 40 | ELEC | ND | P2-5 | ND | ELEC-2 | O |  |  |
| P2.2.IT.5957.180 |  | Grounding and Bonding / L2 / South / 5957 |  | 2d | 2026-04-01 | 2026-04-02 | P2.2.IT.5957.150 |  |  |  | 123d | 3d | 16 | ELEC | ND | P2-5 | ND | ELEC-2 | O |  |  |
| P2.2.IT.5957.240 |  | Energize Elec Panels Serving Comms Racks / L2 / South / 5957 |  | 3d | 2026-04-01 | 2026-04-03 | P2.2.IT.5957.230, P2.2.HE.5959.1140 |  |  |  | 154d | 34d | 24 | ELEC | ND | P2-5 | ND | ELEC-2 |  |  |  |
| P2.2.IT.5957.260 |  | Room Ready - CIT / L2 / South / 5957 |  | 5d | 2026-04-08 | 2026-04-14 | P2.2.IT.5957.150, P2.2.IT.5957.170, P2.2.IT.5957.180 |  |  |  | 120d | 0d | 40 | CIT | ND | P2-5 | ND | CIT | O |  |  |
| P2.2.IT.5957.160 |  | Equipment Racks and Ladders / L2 / South / 5957 |  | 5d | 2026-04-15 | 2026-04-21 | P2.2.IT.5957.150, P2.2.IT.5957.260 |  |  |  | 120d | 0d | 40 | CIT | ND | P2-5 | ND | CIT | O |  |  |
| P2.2.IT.5957.190 |  | Pull Wire - Backbone Cabling Into Racks / L2 / South / 5957 |  | 5d | 2026-04-22 | 2026-04-28 | P2.2.IT.5957.160, P2.2.IT.5957.260 |  |  |  | 120d | 0d | 40 | CIT | ND | P2-5 | ND | CIT |  |  |  |
| P2.2.IT.5957.200 |  | Pull Wire - Horizontal Cabling Out to Termination Points / L2 / South / 5957 |  | 5d | 2026-04-22 | 2026-04-28 | P2.2.IT.5957.160, P2.2.IT.5957.260 |  |  |  | 120d | 0d | 40 | CIT | ND | P2-5 | ND | CIT |  |  |  |
| P2.2.IT.5957.210 |  | Paint - Finish Coat / L2 / South / 5957 |  | 2d | 2026-04-29 | 2026-04-30 | P2.2.IT.5957.190, P2.2.IT.5957.200, P2.2.IT.5957.140 |  |  |  | 120d | 0d | 16 | PAINT | ND | P2-5 | ND | PAINT-1 |  |  |  |
| P2.2.IT.5957.220 |  | Terminations and Punch Downs - All Cabling / L2 / South / 5957 |  | 15d | 2026-05-01 | 2026-05-21 | P2.2.IT.5957.210, P2.2.IT.5957.160, P2.2.IT.5957.260 |  |  |  | 120d | 0d | 40 | CIT | ND | P2-5 | ND | CIT |  |  |  |
| P2.2.IT.5957.250 |  | Comms Racks In Service / L2 / South / 5957 | milestone | 0d | 2026-05-21 | 2026-05-21 | P2.2.IT.5957.220, P2.2.IT.5957.240 |  |  |  | 120d | 68d | 0 | CIT | ND | P2-5 | ND | CIT |  |  |  |
|  | 2 | **IT Closet 2-2818** |  |  | 2025-08-11 | 2026-05-21 |  |  |  |  |  |  |  |  |  |  |  |  |  |  |  |
| P2.2.IT.2818.130 |  | HVAC Equipment / L2 / North / 2818 |  | 5d | 2025-08-11 A | 2025-08-18 A | P2.2.IT.2818.110, P2.L2.N.1120 | 100% | 2025-10-08 | 2025-10-14 |  |  | 40 | HVAC | ND | P2-5 | ND | HVAC | O | Harris |  |
| P2.2.IT.2818.100 |  | Hang Plywood Backboards / L2 / North / 2818 |  | 2d | 2025-09-16 A | 2025-09-18 A | P2.L2.N.1370 | 100% | 2025-10-01 | 2025-10-02 |  |  | 16 | CRAFT | ND | P2-5 | ND | CRAFT | O |  |  |
| P2.2.IT.2818.110 |  | Paint Prime & 1st Coat / L2 / North / 2818 |  | 2d | 2025-09-18 A | 2025-09-22 A | P2.2.IT.2818.100 | 100% | 2025-10-03 | 2025-10-06 |  |  | 16 | PAINT | ND | P2-5 | ND | PAINT-1 | O |  |  |
| P2.2.IT.2818.150 |  | Flooring / L2 / North / 2818 |  | 5d | 2025-11-17 A | 2025-11-21 A | P2.2.IT.2818.110 | 100% | 2026-02-17 | 2026-02-23 |  |  | 40 | FLOOR | ND | P2-5 | ND | FLOOR | O |  |  |
| P2.2.IT.2818.120 |  | Electrical Panels / Conduit Connections / Wire Terminations / L2 / North / 2818 |  | 5d | 2025-12-08 A | 2025-12-11 A | P2.2.IT.2818.110, P2.2.HE.2803.1070 FF | 100% | 2026-02-06 | 2026-02-12 |  |  | 40 | ELEC | ND | P2-5 | ND | ELEC-2 | O |  |  |
| P2.2.IT.2818.230 |  | Doors & Hardware / L2 / North / 2818 |  | 2d | 2025-12-18 A | 2025-12-23 A | P2.2.IT.2818.150 | 100% | 2026-03-23 | 2026-03-24 |  |  | 16 | DFH | ND | P2-5 | ND | DFH |  |  | AT29 |
| P2.2.IT.2818.140 |  | Trim all MEPF / L2 / North / 2818 |  | 2d | 2026-04-01 | 2026-04-02 | P2.2.IT.2818.130, BP1.233.3.410, P2.2.IT.2818.120 |  |  |  | 128d | 8d | 16 | MEP | ND | P2-5 | ND | MEP-2 | O | Harris |  |
| P2.2.IT.2818.170 |  | OH Cable Tray / L2 / North / 2818 |  | 5d | 2026-04-01 | 2026-04-07 | P2.L2.N.1510, P2.L2.S.1390, P2.L2.INT.S.1340, P2.L2.INT.N.1340 |  |  |  | 120d | 0d | 40 | ELEC | ND | P2-5 | ND | ELEC-2 | O |  |  |
| P2.2.IT.2818.180 |  | Grounding and Bonding / L2 / North / 2818 |  | 2d | 2026-04-01 | 2026-04-02 | P2.2.IT.2818.150 |  |  |  | 123d | 3d | 16 | ELEC | ND | P2-5 | ND | ELEC-2 | O |  |  |
| P2.2.IT.2818.240 |  | Energize Elec Panels Serving Comms Racks / L2 / North / 2818 |  | 3d | 2026-04-01 | 2026-04-03 | P2.2.IT.2818.230, P2.2.HE.2803.1140 |  |  |  | 154d | 34d | 24 | ELEC | ND | P2-5 | ND | ELEC-2 |  |  |  |
| P2.2.IT.2818.260 |  | Room Ready - CIT / L2 / North / 2818 |  | 5d | 2026-04-08 | 2026-04-14 | P2.2.IT.2818.150, P2.2.IT.2818.170, P2.2.IT.2818.180 |  |  |  | 120d | 0d | 40 | CIT | ND | P2-5 | ND | CIT | O |  |  |
| P2.2.IT.2818.160 |  | Equipment Racks and Ladders / L2 / North / 2818 |  | 5d | 2026-04-15 | 2026-04-21 | P2.2.IT.2818.150, P2.2.IT.2818.260, P2.2.IT.2818.140 |  |  |  | 120d | 0d | 40 | CIT | ND | P2-5 | ND | CIT | O |  |  |
| P2.2.IT.2818.190 |  | Pull Wire - Backbone Cabling Into Racks / L2 / North / 2818 |  | 5d | 2026-04-22 | 2026-04-28 | P2.2.IT.2818.160, P2.2.IT.2818.260 |  |  |  | 120d | 0d | 40 | CIT | ND | P2-5 | ND | CIT |  |  |  |
| P2.2.IT.2818.200 |  | Pull Wire - Horizontal Cabling Out to Termination Points / L2 / North / 2818 |  | 5d | 2026-04-22 | 2026-04-28 | P2.2.IT.2818.160, P2.2.IT.2818.260 |  |  |  | 120d | 0d | 40 | CIT | ND | P2-5 | ND | CIT |  |  |  |
| P2.2.IT.2818.210 |  | Paint - Finish Coat / L2 / North / 2818 |  | 2d | 2026-04-29 | 2026-04-30 | P2.2.IT.2818.190, P2.2.IT.2818.200 |  |  |  | 120d | 0d | 16 | PAINT | ND | P2-5 | ND | PAINT-1 |  |  |  |
| P2.2.IT.2818.220 |  | Terminations and Punch Downs - All Cabling / L2 / North / 2818 |  | 15d | 2026-05-01 | 2026-05-21 | P2.2.IT.2818.210, P2.2.IT.2818.160, P2.2.IT.2818.260 |  |  |  | 120d | 0d | 40 | CIT | ND | P2-5 | ND | CIT |  |  |  |
| P2.2.IT.2818.250 |  | Comms Racks In Service / L2 / North / 2818 | milestone | 0d | 2026-05-21 | 2026-05-21 | P2.2.IT.2818.240, P2.2.IT.2818.220 |  |  |  | 120d | 68d | 0 | CIT | ND | P2-5 | ND | CIT |  |  |  |

| ID | WBS | Activity | Type | Duration | Start | Finish | Predecessors | Complete | Planned start | Planned finish | Total float | Free float | Temp Orig Dur | Testing Type | *NIH Resp Check* | Resp / SRLM | PHASE | RESP / Trade | 744 | RESP UPD | Z.RESP | Update Status |
| --- | --- | --- | --- | --- | --- | --- | --- | --- | --- | --- | --- | --- | --- | --- | --- | --- | --- | --- | --- | --- | --- | --- |
|  | 3 | **IT Closet 2-3910** |  |  | 2024-12-24 | 2026-06-10 |  |  |  |  |  |  |  |  |  |  |  |  |  |  |  |  |
| P2.2.IT.3910.260 |  | Work-Plan Investigation of Level 2F510-18 Lab Offices for Demo, Utility Re-route, and Temp Partition (IT Closet 2-3910) |  | 20d | 2024-12-24 A | 2025-01-23 A | P2C.DES.205 | 100% | 2025-01-03 | 2025-01-30 |  |  | 40 | AT45 | ! | HP | P2-5 | HP |  |  |  |  |
| P2.2.IT.3910.270 |  | Work-Plan Development for Demo, Utility Re-route, and Temp Partition (IT Closet 2-3910) |  | 20d | 2025-01-23 A | 2025-02-14 A | P2.2.IT.3910.260 | 100% | 2025-02-24 | 2025-03-21 |  |  | 40 | AT45 | ! | HP | P2-5 | HP |  |  |  |  |
| P2.2.IT.3910.280 |  | NIH Notification - Review and Approval of Demo and Temp Partition Work Plan (IT Closet 2-3910) |  | 20d | 2025-02-19 A | 2025-04-01 A | P2.2.IT.3910.270 | 100% | 2025-03-20 | 2025-04-16 |  |  | 40 | AT45 | ! | NIH | P2-5 | NIH |  |  |  |  |
| P2.2.IT.3910.290 |  | NIH Vacate Lab Offices 2F510, 2F512, 2F514, 2F516, 2F516A & Storage 2F518 |  | 9d | 2025-05-01 A | 2025-08-04 A | P2.2.IT.3910.280 | 100% | 2025-06-02 | 2025-06-12 |  |  | 40 | AT45 | ! | NIH | P2-5 | NIH | ND | ND |  |  |
| P2.2.IT.3910.300 |  | Temp Barracades & Opening to SRLM Interstitial (IT Closet 2-3910) |  | 5d | 2025-08-04 A | 2025-08-11 A | P2.2.IT.3910.290 | 100% | 2025-09-02 | 2025-09-08 |  |  | 40 | AT45 | ! | HP | P2-5 | HP | ND | ND |  |  |
| P2.2.IT.3910.130 |  | HVAC Equipment / L2 / South / 3910 |  | 5d | 2025-08-11 A | 2025-08-18 A | P2.L2.S.1300 | 100% | 2025-10-07 | 2025-10-13 |  |  | 40 |  |  | HVAC | P2-5 | HVAC | ND | ND | Harris |  |
| P2.2.IT.3910.310 |  | Utility Shut-downs and Rerouting (IT Closet 2-3910) |  | 10d | 2025-08-12 A | 2025-09-30 A | P2.2.IT.3910.300 | 100% | 2025-09-09 | 2025-09-22 |  |  | 40 | AT45 | ! | MEP | P2-5 | MEP-2 | ND | ND |  | O |
| P2.2.IT.3910.320 |  | Demo Existing Walls and Ceiling |  | 10d | 2025-09-15 A | 2025-09-23 A | P2.2.IT.3910.310 | 100% | 2025-10-14 | 2025-10-27 |  |  | 40 | AT45 | ! | DEMO.1 | P2-5 | DEMO.1 | ND | ND |  | O |
| P2.2.IT.3910.330 |  | Work Plan Completion Inspection |  | 5d | 2025-09-24 A | 2025-09-30 A | P2.2.IT.3910.320 | 100% | 2025-10-28 | 2025-11-03 |  |  | 40 | AT45 | ! | NIH | P2-5 | NIH | ND | ND |  | O |
| P2.2.IT.3910.100 |  | Hang Plywood Backboards / L2 / South / 3910 |  | 2d | 2026-04-01 | 2026-04-02 | P2.2.IT.3910.330, P2.L2.N.1370 |  |  |  | 107d | 0d | 16 |  |  | CRAFT | P2-5 | CRAFT | ND | JH |  | O |
| P2.2.IT.3910.110 |  | Paint Prime & 1st Coat / L2 / South / 3910 |  | 2d | 2026-04-03 | 2026-04-06 | P2.2.IT.3910.100 |  |  |  | 107d | 0d | 16 |  |  | PAINT | P2-5 | PAINT-1 | ND | JH |  | O |
| P2.2.IT.3910.120 |  | Electrical Panels / Conduit Connections / Wire Terminations / L2 / South / 3910 |  | 5d | 2026-04-07 | 2026-04-13 | P2.2.IT.3910.110, P2.2.HE.2949.1070 FF |  |  |  | 107d | 0d | 40 |  |  | ELEC | P2-5 | ELEC-2 | ND | JH |  | O |
| P2.2.IT.3910.140 |  | Trim all MEPF / L2 / South / 3910 |  | 2d | 2026-04-14 | 2026-04-15 | P2.2.IT.3910.120, BP1.233.3.410, P2.2.IT.3910.130 |  |  |  | 107d | 0d | 16 |  |  | MEP | P2-5 | MEP-2 | ND | JH | Harris | O |
| P2.2.IT.3910.170 |  | OH Cable Tray / L2 / South / 3910 |  | 5d | 2026-04-14 | 2026-04-20 | P2.L2.S.1390, P2.2.IT.3910.120, P2.L2.N.1510, P2.L2.INT.S.1340, P2.L2.INT.N.1340 |  |  |  | 111d | 4d | 40 |  |  | ELEC | P2-5 | ELEC-2 | ND | JH |  | O |
| P2.2.IT.3910.150 |  | Flooring / L2 / South / 3910 |  | 5d | 2026-04-16 | 2026-04-22 | P2.2.IT.3910.140 |  |  |  | 107d | 0d | 40 |  |  | FLOOR | P2-5 | FLOOR | ND | JH |  | O |
| P2.2.IT.3910.180 |  | Grounding and Bonding / L2 / South / 3910 |  | 2d | 2026-04-23 | 2026-04-24 | P2.2.IT.3910.150 |  |  |  | 107d | 0d | 16 |  |  | ELEC | P2-5 | ELEC-2 | ND | JH |  | O |
| P2.2.IT.3910.340 |  | Room Ready - CIT / L2 / South / 3910 |  | 5d | 2026-04-27 | 2026-05-01 | P2.2.IT.3910.150, P2.2.IT.3910.170, P2.2.IT.3910.180 |  |  |  | 107d | 0d | 40 |  |  | CIT | P2-5 | CIT | ND | JH |  | O |
| P2.2.IT.3910.160 |  | Equipment Racks and Ladders / L2 / South / 3910 |  | 5d | 2026-05-04 | 2026-05-08 | P2.2.IT.3910.150, P2.2.IT.3910.340 |  |  |  | 107d | 0d | 40 |  |  | CIT | P2-5 | CIT | ND | JH |  |  |
| P2.2.IT.3910.190 |  | Pull Wire - Backbone Cabling Into Racks / L2 / South / 3910 |  | 5d | 2026-05-11 | 2026-05-15 | P2.2.IT.3910.160, P2.2.IT.3910.340 |  |  |  | 107d | 0d | 40 |  |  | CIT | P2-5 | CIT | ND | JH |  |  |
| P2.2.IT.3910.200 |  | Pull Wire - Horizontal Cabling Out to Termination Points / L2 / South / 3910 |  | 5d | 2026-05-11 | 2026-05-15 | P2.2.IT.3910.160, P2.2.IT.3910.340 |  |  |  | 107d | 0d | 40 |  |  | CIT | P2-5 | CIT | ND | JH |  |  |
| P2.2.IT.3910.210 |  | Paint - Finish Coat / L2 / South / 3910 |  | 2d | 2026-05-18 | 2026-05-19 | P2.2.IT.3910.190, P2.2.IT.3910.200 |  |  |  | 107d | 0d | 16 |  |  | PAINT | P2-5 | PAINT-1 | ND | JH |  |  |
| P2.2.IT.3910.220 |  | Terminations and Punch Downs - All Cabling / L2 / South / 3910 |  | 15d | 2026-05-20 | 2026-06-10 | P2.2.IT.3910.210, P2.2.IT.3910.160, P2.2.IT.3910.340 |  |  |  | 107d | 0d | 40 |  |  | CIT | P2-5 | CIT | ND | JH |  |  |
| P2.2.IT.3910.230 |  | Doors & Hardware / L2 / South / 3910 |  | 2d | 2026-05-20 | 2026-05-21 | P2.2.IT.3910.210 |  |  |  | 117d | 0d | 16 | AT29 |  | DFH | P2-5 | DFH | ND | JH |  |  |
| P2.2.IT.3910.240 |  | Energize Elec Panels Serving Comms Racks / L2 / South / 3910 |  | 3d | 2026-05-22 | 2026-05-27 | P2.2.IT.3910.230, P2.2.HE.2949.1140 |  |  |  | 117d | 10d | 24 |  |  | ELEC | P2-5 | ELEC-2 | ND | JH |  |  |
| P2.2.IT.3910.250 |  | Comms Racks In Service / L2 / South / 3910 | milestone | 0d | 2026-06-10 | 2026-06-10 | P2.2.IT.3910.220, P2.2.IT.3910.240 |  |  |  | 107d | 55d | 0 |  |  | CIT | P2-5 | CIT | ND | JH |  |  |

| ID | WBS | Activity | Duration | Start | Finish | Predecessors | Total float | Free float | Pick | Temp Orig Dur | Resp / SRLM | PHASE | RESP UPD | RESP / Trade | *NIH Resp Check* | Z.RESP | Testing Type |
| --- | --- | --- | --- | --- | --- | --- | --- | --- | --- | --- | --- | --- | --- | --- | --- | --- | --- |
|  | 2 | **FINISHES - CORE & SUPPORT SPACES / Level 2** |  | 2025-05-15 | 2027-01-26 |  |  |  |  |  |  |  |  |  |  |  |  |
|  | 7KSF | **DPM/IR Area (5K SF) / Level 2** |  | 2026-07-29 | 2027-01-26 |  |  |  |  |  |  |  |  |  |  |  |  |
|  | 1 | **Finishes** |  | 2026-07-29 | 2027-01-26 |  |  |  |  |  |  |  |  |  |  |  |  |
| P2.L2.F.CS.1000 |  | Paint Prime & 1st Coat Walls / L2 / DPM/IR | 5d | 2026-07-29 | 2026-08-04 | P2.L2.F.CS.2000 SS, P2.L2.S.1470 | 7d | 0d | From R/I Work Completion | 40 | PAINT | P2-5 | JH | PAINT-1 |  |  |  |
| P2.L2.F.CS.1010 |  | T-Grid / L2 / DPM/IR | 5d | 2026-08-05 | 2026-08-11 | P2.L2.F.CS.1000 | 18d | 0d |  | 40 | ACT | P2-5 | JH | ACT |  |  |  |
| P2.L2.F.CS.1020 |  | R/I - Ceiling Assemblies & Supports - All Trades (A/V, Oper Part, Glass Part, etc.) / L2 / DPM/IR | 5d | 2026-08-05 | 2026-08-11 | P2.L2.F.CS.1000 | 28d | 10d |  | 40 | ACT | P2-5 | JH | ACT | ! |  |  |
| P2.L2.F.CS.1030 |  | Diffusers in T-Grid / L2 / DPM/IR | 5d | 2026-08-12 | 2026-08-18 | P2.L2.F.CS.1010 | 18d | 0d |  | 40 | HVAC | P2-5 | JH | HVAC |  | Harris |  |
| P2.L2.F.CS.1040 |  | Lights & Elec Devices in T-Grid / L2 / DPM/IR | 5d | 2026-08-12 | 2026-08-18 | P2.L2.F.CS.1010 | 18d | 0d |  | 40 | ELEC | P2-5 | JH | ELEC-2 |  |  |  |
| P2.L2.F.CS.1050 |  | Sprinkler Heads in T-Grid / L2 / DPM/IR | 5d | 2026-08-12 | 2026-08-18 | P2.L2.F.CS.1010 | 18d | 0d |  | 40 | FP | P2-5 | JH | FP-1 |  |  |  |
| P2.L2.F.CS.1060 |  | Low Voltage in T-Grid / L2 / DPM/IR | 5d | 2026-08-12 | 2026-08-18 | P2.L2.F.CS.1010 | 18d | 0d |  | 40 | LOWVOLT | P2-5 | JH | LOWVOLT-1 |  |  |  |
| P2.L2.F.CS.1070 |  | Fire Alarm in T-Grid / L2 / DPM/IR | 5d | 2026-08-12 | 2026-08-18 | P2.L2.F.CS.1010 | 18d | 0d |  | 40 | FA | P2-5 | JH | FA-1 |  |  |  |
| P2.L2.F.CS.1080 |  | OH Ceiling Signoff / L2 / DPM/IR | 5d | 2026-08-19 | 2026-08-25 | P2.L2.F.CS.1060, P2.L2.F.CS.1070, P2.L2.F.CS.1030, P2.L2.F.CS.1040, P2.L2.F.CS.1050 | 18d | 0d |  | 40 | MEP | P2-5 | JH | MEP |  | Harris |  |
| P2.L2.F.CS.1110 |  | Drop Ceiling Tile / L2 / DPM/IR | 5d | 2026-08-26 | 2026-09-01 | P2.L2.F.CS.1080, P2.L2.F.CS.1020 | 18d | 0d |  | 40 | ACT | P2-5 | JH | ACT |  |  |  |
| P2.L2.F.CS.1090 |  | Millwork / L2 / DPM/IR | 5d | 2026-09-02 | 2026-09-09 | P2.L2.F.CS.1110, P2.L2.F.CS.1080 | 18d | 0d |  | 40 | MILL | P2-5 | JH | MILL |  |  |  |
| P2.L2.F.CS.1100 |  | Plumbing Fixtures / L2 / DPM/IR | 5d | 2026-09-10 | 2026-09-16 | P2.L2.F.CS.1090, P2.L2.F.CS.1080, P2.L2.F.CS.1090 FF | 18d | 0d |  | 40 | PLMB | P2-5 | JH | PLMB |  | Harris |  |
| P2.L2.F.CS.1120 |  | Floor Prep / L2 / DPM/IR | 5d | 2026-09-17 | 2026-09-23 | P2.L2.F.CS.1110, P2.L2.F.CS.1090, P2.L2.F.CS.1100 | 18d | 0d |  | 40 | FLOOR | P2-5 | JH | FLOOR |  |  |  |
| P2.L2.F.CS.2300 |  | Floor Prep - Epoxy Floors / L2 / Showers & Lockers | 1d | 2026-09-17 | 2026-09-17 | P2.L2.F.CS.1110, P2.L2.F.CS.1090, P2.L2.F.CS.1100 | 23d | 0d |  | 40 | EPOXYF | P2-5 | JH | EPOXYF |  |  |  |
| P2.L2.F.CS.2310 |  | Floor - Epoxy Floors / L2 / Showers & Lockers | 4d | 2026-09-18 | 2026-09-23 | P2.L2.F.CS.2300 | 23d | 5d |  | 40 | EPOXYF | P2-5 | JH | EPOXYF |  |  |  |
| P2.L2.F.CS.1130 |  | Floor Finishes / L2 / DPM/IR | 5d | 2026-09-24 | 2026-09-30 | P2.L2.F.CS.1120 | 18d | 0d |  | 40 | FLOOR | P2-5 | JH | FLOOR |  |  |  |
| P2.L2.F.CS.1140 |  | Doors & Hardware / L2 / DPM/IR | 5d | 2026-10-01 | 2026-10-07 | P2.L2.F.CS.1130, P2.L2.F.CS.2310 | 18d | 0d |  | 40 | DFH | P2-5 | JH | DFH |  |  | AT29 |
| P2.L2.F.CS.2320 |  | Interior Glazing / L2 / DPM/IR | 1d | 2026-10-01 | 2026-10-01 | P2.L2.F.CS.1130, BP7.088.3.100 | 22d | 4d |  | 40 | GLASS | P2-5 | JH | GLASS | TBD |  |  |
| P2.L2.F.CS.1150 |  | Paint - Finish Coat / L2 / DPM/IR | 5d | 2026-10-08 | 2026-10-14 | P2.L2.F.CS.1140, P2.L2.F.CS.1130, P2.L2.F.CS.2310, P2.L2.F.CS.2320 | 18d | 0d |  | 40 | PAINT | P2-5 | JH | PAINT-1 |  |  |  |
| P2.L2.F.CS.1200 |  | Floor Base / L2 / DPM/IR | 5d | 2026-10-15 | 2026-10-21 | P2.L2.F.CS.1150 | 18d | 0d |  | 40 | FLOOR | P2-5 | JH | FLOOR |  |  |  |
| P2.L2.F.CS.1180 |  | Building Specialities / L2 / DPM/IR | 5d | 2026-10-22 | 2026-10-28 | P2.L2.F.CS.1150, P2.L2.F.CS.1200 | 18d | 0d |  | 40 | SPECIAL | P2-5 | JH | SPECIAL |  |  |  |
| P2.L2.F.CS.1210 |  | Demountable Partitions / L2 / DPM/IR | 5d | 2026-10-22 | 2026-10-28 | P2.L2.F.CS.1200 | 28d | 10d |  | 40 | DPART | P2-5 | JH | DPART | TBD |  |  |
| P2.L2.F.CS.1170 |  | Trim T-Stats / L2 / DPM/IR | 5d | 2026-10-29 | 2026-11-04 | P2.L2.F.CS.1180, P2.L2.F.CS.1150 | 18d | 0d |  | 40 | BAS | P2-5 | JH | BAS-1 |  | Harris |  |
| P2.L2.F.CS.1160 |  | Set AV/IT Devices and Configure / L2 / DPM/IR | 5d | 2026-11-05 | 2026-11-11 | P2.L2.F.CS.1170, P2.L2.F.CS.1150 | 18d | 0d |  | 40 | LOWVOLT | P2-5 | JH | LOWVOLT-1 |  |  |  |
| P2.L2.F.CS.1220 |  | Trim Electrical / L2 / DPM/IR | 5d | 2026-11-12 | 2026-11-18 | P2.L2.F.CS.1170 SS, P2.L2.F.CS.1160, P2.L2.F.CS.1210 | 18d | 0d |  | 40 | ELEC | P2-5 | JH | ELEC-2 |  |  |  |
| P2.L2.F.CS.1230 |  | Trim Telephone/ Data / L2 / DPM/IR | 5d | 2026-11-19 | 2026-11-25 | P2.L2.F.CS.1220 SS, P2.L2.F.CS.1220 | 18d | 0d |  | 40 | LOWVOLT | P2-5 | JH | LOWVOLT-1 |  |  |  |
| P2.L2.F.CS.1190 |  | Interior Building Signage / L2 / DPM/IR | 5d | 2026-11-30 | 2026-12-04 | P2.L2.F.CS.1230, P2.L2.F.CS.1150 | 18d | 0d |  | 40 | SIGN | P2-5 | JH | SIGN |  |  |  |
| P2.L2.F.CS.1240 |  | Work Completion List - Finishes / L2 / DPM/IR | 5d | 2026-12-07 | 2026-12-11 | P2.L2.F.CS.1140, P2.L2.F.CS.1180, P2.L2.F.CS.1100, P2.L2.F.CS.1230, P2.L2.F.CS.1160, P2.L2.F.CS.1190 | 18d | 0d |  | 40 | FINISH | P2-5 | JH | FINISH |  |  |  |
| P2.L2.F.CS.1250 |  | Rough Clean / L2 / DPM/IR | 5d | 2026-12-14 | 2026-12-18 | P2.L2.F.CS.1240 | 18d | 0d |  | 40 | FCLEAN | P2-5 | JH | FCLEAN |  |  |  |
| P2.L2.F.CS.1260 |  | FF&E / L2 / DPM/IR | 5d | 2026-12-21 | 2026-12-28 | P2.L2.F.CS.1250 | 18d | 0d |  | 40 | FURN | P2-5 | JH | FURN |  |  |  |
| P2.L2.F.CS.1270 |  | Prepare Punchlist / L2 / DPM/IR | 5d | 2026-12-29 | 2027-01-05 | P2.L2.F.CS.1260 | 18d | 0d |  | 40 | QC | P2-5 | JH | QC |  |  |  |
| P2.L2.F.CS.1280 |  | Correct Punchlist / L2 / DPM/IR | 10d | 2027-01-06 | 2027-01-19 | P2.L2.F.CS.1270 | 18d | 0d |  | 80 | FINISH | P2-5 | JH | FINISH |  |  |  |
| P2.L2.F.CS.1290 |  | Final Clean / L2 / DPM/IR | 5d | 2027-01-20 | 2027-01-26 | P2.L2.F.CS.1280 | 18d | 30d | To QC | 40 | QC | P2-5 | JH | QC |  |  |  |

| ID | WBS | Activity | Duration | Start | Finish | Predecessors | Total float | Free float | Pick | Temp Orig Dur | Resp / SRLM | PHASE | RESP UPD | RESP / Trade | *NIH Resp Check* | Z.RESP | Testing Type |
| --- | --- | --- | --- | --- | --- | --- | --- | --- | --- | --- | --- | --- | --- | --- | --- | --- | --- |
|  | 7KSF1 | **Shared and Open Offices (6K SF) / Level 2** |  | 2026-07-29 | 2027-01-26 |  |  |  |  |  |  |  |  |  |  |  |  |
|  | 1 | **Finishes** |  | 2026-07-29 | 2027-01-26 |  |  |  |  |  |  |  |  |  |  |  |  |
| P2.L2.F.CS.2000 |  | Paint Prime & 1st Coat Walls / L2 / Offices | 5d | 2026-07-29 | 2026-08-04 | P2.L2.N.1180 | 7d | 0d | From R/I Work Completion | 40 | PAINT | P2-5 | JH | PAINT-1 |  |  |  |
| P2.L2.F.CS.2020 |  | R/I - Ceiling Assemblies & Supports - All Trades (A/V, Oper Part, Glass Part, etc.) / L2 / Offices | 5d | 2026-08-05 | 2026-08-11 | P2.L2.F.CS.2000 | 18d | 0d |  | 40 | ACT | P2-5 | JH | ACT | ! |  |  |
| P2.L2.F.CS.2010 |  | T-Grid / L2 / Offices | 5d | 2026-08-12 | 2026-08-18 | P2.L2.F.CS.2020 | 18d | 0d |  | 40 | ACT | P2-5 | JH | ACT |  |  |  |
| P2.L2.F.CS.2030 |  | Diffusers in T-Grid / L2 / Offices | 5d | 2026-08-19 | 2026-08-25 | P2.L2.F.CS.2010 | 18d | 0d |  | 40 | HVAC | P2-5 | JH | HVAC |  | Harris |  |
| P2.L2.F.CS.2040 |  | Lights & Elec Devices in T-Grid / L2 / Offices | 5d | 2026-08-19 | 2026-08-25 | P2.L2.F.CS.2010 | 18d | 0d |  | 40 | ELEC | P2-5 | JH | ELEC-2 |  |  |  |
| P2.L2.F.CS.2050 |  | Sprinkler Heads in T-Grid / L2 / Offices | 5d | 2026-08-19 | 2026-08-25 | P2.L2.F.CS.2010 | 18d | 0d |  | 40 | FP | P2-5 | JH | FP-1 |  |  |  |
| P2.L2.F.CS.2060 |  | Low Voltage in T-Grid / L2 / Offices | 5d | 2026-08-19 | 2026-08-25 | P2.L2.F.CS.2010 | 18d | 0d |  | 40 | LOWVOLT | P2-5 | JH | LOWVOLT-1 |  |  |  |
| P2.L2.F.CS.2070 |  | Fire Alarm in T-Grid / L2 / Offices | 5d | 2026-08-19 | 2026-08-25 | P2.L2.F.CS.2010 | 18d | 0d |  | 40 | FA | P2-5 | JH | FA-1 |  |  |  |
| P2.L2.F.CS.2080 |  | OH Ceiling Signoff / L2 / Offices | 5d | 2026-08-26 | 2026-09-01 | P2.L2.F.CS.2060, P2.L2.F.CS.2070, P2.L2.F.CS.2030, P2.L2.F.CS.2040, P2.L2.F.CS.2050 | 18d | 0d |  | 40 | MEP | P2-5 | JH | MEP |  | Harris |  |
| P2.L2.F.CS.2110 |  | Drop Ceiling Tile / L2 / Offices | 5d | 2026-09-02 | 2026-09-09 | P2.L2.F.CS.2080 | 18d | 0d |  | 40 | ACT | P2-5 | JH | ACT |  |  |  |
| P2.L2.F.CS.2090 |  | Millwork / L2 / Offices | 5d | 2026-09-10 | 2026-09-16 | P2.L2.F.CS.2110, P2.L2.F.CS.2080 | 18d | 0d |  | 40 | MILL | P2-5 | JH | MILL |  |  |  |
| P2.L2.F.CS.2100 |  | Plumbing Fixtures / L2 / Offices | 5d | 2026-09-17 | 2026-09-23 | P2.L2.F.CS.2090, P2.L2.F.CS.2080, P2.L2.F.CS.2090 FF | 18d | 0d |  | 40 | PLMB | P2-5 | JH | PLMB |  | Harris |  |
| P2.L2.F.CS.2120 |  | Floor Prep / L2 / Offices | 5d | 2026-09-24 | 2026-09-30 | P2.L2.F.CS.2110, P2.L2.F.CS.2090, P2.L2.F.CS.2100 | 18d | 0d |  | 40 | FLOOR | P2-5 | JH | FLOOR |  |  |  |
| P2.L2.F.CS.2130 |  | Floor Finishes / L2 / Offices | 5d | 2026-10-01 | 2026-10-07 | P2.L2.F.CS.2120 | 18d | 0d |  | 40 | FLOOR | P2-5 | JH | FLOOR |  |  |  |
| P2.L2.F.CS.2140 |  | Doors & Hardware / L2 / Offices | 5d | 2026-10-08 | 2026-10-14 | P2.L2.F.CS.2130 | 18d | 0d |  | 40 | DFH | P2-5 | JH | DFH |  |  | AT29 |
| P2.L2.F.CS.2150 |  | Paint - Finish Coat / L2 / Offices | 5d | 2026-10-15 | 2026-10-21 | P2.L2.F.CS.2140, P2.L2.F.CS.2130 | 18d | 0d |  | 40 | PAINT | P2-5 | JH | PAINT-1 |  |  |  |
| P2.L2.F.CS.2200 |  | Floor Base / L2 / Offices | 5d | 2026-10-22 | 2026-10-28 | P2.L2.F.CS.2150 | 18d | 0d |  | 40 | FLOOR | P2-5 | JH | FLOOR |  |  |  |
| P2.L2.F.CS.2210 |  | Demountable Partitions / L2 / Offices | 5d | 2026-10-29 | 2026-11-04 | P2.L2.F.CS.2200 | 18d | 0d |  | 40 | DPART | P2-5 | JH | DPART | TBD |  |  |
| P2.L2.F.CS.2180 |  | Building Specialities / L2 / Offices | 5d | 2026-11-05 | 2026-11-11 | P2.L2.F.CS.2210, P2.L2.F.CS.2150, P2.L2.F.CS.2200 | 18d | 0d |  | 40 | SPECIAL | P2-5 | JH | SPECIAL |  |  |  |
| P2.L2.F.CS.2170 |  | Trim T-Stats / L2 / Offices | 5d | 2026-11-12 | 2026-11-18 | P2.L2.F.CS.2180, P2.L2.F.CS.2150 | 18d | 0d |  | 40 | BAS | P2-5 | JH | BAS-1 |  | Harris |  |
| P2.L2.F.CS.2220 |  | Trim Electrical / L2 / Offices | 5d | 2026-11-12 | 2026-11-18 | P2.L2.F.CS.2210, P2.L2.F.CS.2170 SS | 28d | 5d |  | 40 | ELEC | P2-5 | JH | ELEC-2 |  |  |  |
| P2.L2.F.CS.2160 |  | Set AV/IT Devices and Configure / L2 / Offices | 5d | 2026-11-19 | 2026-11-25 | P2.L2.F.CS.2170, P2.L2.F.CS.2150 | 18d | 0d |  | 40 | LOWVOLT | P2-5 | JH | LOWVOLT-1 |  |  |  |
| P2.L2.F.CS.2230 |  | Trim Telephone/ Data / L2 / Offices | 5d | 2026-11-19 | 2026-11-25 | P2.L2.F.CS.2170, P2.L2.F.CS.2220 SS | 23d | 5d |  | 40 | LOWVOLT | P2-5 | JH | LOWVOLT-1 |  |  |  |
| P2.L2.F.CS.2190 |  | Interior Building Signage / L2 / Offices | 5d | 2026-11-30 | 2026-12-04 | P2.L2.F.CS.2160, P2.L2.F.CS.2150 | 18d | 0d |  | 40 | SIGN | P2-5 | JH | SIGN |  |  |  |
| P2.L2.F.CS.2240 |  | Work Completion List - Finishes / L2 / Offices | 5d | 2026-12-07 | 2026-12-11 | P2.L2.F.CS.2140, P2.L2.F.CS.2180, P2.L2.F.CS.2100, P2.L2.F.CS.2230, P2.L2.F.CS.2160, P2.L2.F.CS.2190 | 18d | 0d |  | 40 | FINISH | P2-5 | JH | FINISH |  |  |  |
| P2.L2.F.CS.2250 |  | Rough Clean / L2 / Offices | 5d | 2026-12-14 | 2026-12-18 | P2.L2.F.CS.2240 | 18d | 0d |  | 40 | FCLEAN | P2-5 | JH | FCLEAN |  |  |  |
| P2.L2.F.CS.2260 |  | FF&E / L2 / Offices | 5d | 2026-12-21 | 2026-12-28 | P2.L2.F.CS.2250 | 18d | 0d |  | 40 | FURN | P2-5 | JH | FURN |  |  |  |
| P2.L2.F.CS.2270 |  | Prepare Punchlist / L2 / Offices | 5d | 2026-12-29 | 2027-01-05 | P2.L2.F.CS.2260 | 18d | 0d |  | 40 | QC | P2-5 | JH | QC |  |  |  |
| P2.L2.F.CS.2280 |  | Correct Punchlist / L2 / Offices | 10d | 2027-01-06 | 2027-01-19 | P2.L2.F.CS.2270 | 18d | 0d |  | 80 | FINISH | P2-5 | JH | FINISH |  |  |  |
| P2.L2.F.CS.2290 |  | Final Clean / L2 / Offices | 5d | 2027-01-20 | 2027-01-26 | P2.L2.F.CS.2280 | 18d | 30d | To QC | 40 | QC | P2-5 | JH | QC |  |  |  |

| ID | WBS | Activity | Duration | Start | Finish | Predecessors | Complete | Planned start | Planned finish | Total float | Free float | Pick | Temp Orig Dur | *NIH Resp Check* | Resp / SRLM | PHASE | Z.RESP | RESP / Trade | 744 | RESP UPD | Update Status | Testing Type |
| --- | --- | --- | --- | --- | --- | --- | --- | --- | --- | --- | --- | --- | --- | --- | --- | --- | --- | --- | --- | --- | --- | --- |
|  | 3 | **Bathrooms - Break Rooms - Locker Rooms / Level 2** |  | 2025-05-15 | 2026-10-29 |  |  |  |  |  |  |  |  |  |  |  |  |  |  |  |  |  |
|  | 3 | **Toilet 2-2954** |  | 2025-05-15 | 2026-09-04 |  |  |  |  |  |  |  |  |  |  |  |  |  |  |  |  |  |
| P2.L2.BR.1000 |  | Plumbing - Set Pipe Carriers / L2 / Toilet 2954 | 3d | 2025-05-15 A | 2025-05-19 A | P2.L1.BR.5000, P2.L2.S.1240 | 100% | 2025-06-16 | 2025-06-18 |  |  | ? | 24 | ! | PLMB | P2-5 | Harris | PLMB |  |  |  |  |
| P2.L2.BR.1020 |  | Plumbing - Test Pipe / L2 / Toilet 2954 | 2d | 2025-05-30 A | 2025-06-13 A | P2.L2.BR.1000 | 100% | 2025-06-19 | 2025-06-20 |  |  |  | 16 |  | PLMB | P2-5 | Harris | PLMB | FM | FM |  |  |
| P2.L2.BR.1070 |  | In Wall - Insulate Plumbing / L2 / Toilet 2954 | 2d | 2025-09-26 A | 2025-09-30 A | P2.L2.BR.1020 | 100% | 2025-10-09 | 2025-10-10 |  |  |  | 16 |  | INSUL | P2-5 | Harris | INSUL-3 | FM | FM | O |  |
| P2.L2.BR.1010 |  | Framing & Blocking - Walls and Hard Lid Ceilings / L2 / Toilet 2954 | 2d | 2025-10-27 A | 2026-01-23 A | P2.L2.BR.1000, P2.L1.S.1420 | 100% | 2025-10-01 | 2025-10-02 |  |  |  | 16 | ! | GYP | P2-5 |  | GYP-1 | FM | JH | O |  |
| P2.L2.BR.1050 |  | Duct Drops _ Hard Lids / L2 / Toilet 2954 | 2d | 2025-12-03 A | 2025-12-04 A | P2.L2.BR.1010 | 100% | 2026-01-06 | 2026-01-07 |  |  |  | 16 | T.R/I.IW.MECH.HVAC.SM | HVAC | P2-5 | Harris | HVAC | FM | JH | O |  |
| P2.L2.BR.1030 |  | R/I - Electrical _ Hard Lids / L2 / Toilet 2954 | 2d | 2026-04-01 | 2026-04-02 | P2.L2.BR.1070, P2.L2.BR.1010 |  |  |  | 94d | 0d |  | 16 | ! | ELEC | P2-5 |  | ELEC-3 | FM | JH | O |  |
| P2.L2.BR.1040 |  | Trim Sprinkler Drops _ Hard Lids / L2 / Toilet 2954 | 2d | 2026-04-01 | 2026-04-02 | P2.L2.BR.1010 |  |  |  | 96d | 2d |  | 16 | ! | FP | P2-5 |  | FP-1 | FM | JH | O |  |
| P2.L2.BR.1060 |  | R/I - Fire Alarm _ Hard Lids / L2 / Toilet 2954 | 2d | 2026-04-03 | 2026-04-06 | P2.L2.BR.1010, P2.L2.BR.1030 |  |  |  | 94d | 0d |  | 16 | ! | ELEC | P2-5 |  | ELEC-3 | FM | JH | O |  |
| P2.L2.BR.1080 |  | Inspection - Close In - Walls and Hard Lid Ceilings / L2 / Toilet 2954 | 3d | 2026-04-07 | 2026-04-09 | P2.L2.BR.1070, P2.L2.BR.1060, P2.L2.BR.1050, P2.L2.BR.1030, P2.L2.BR.1040 |  |  |  | 94d | 71d |  | 24 | ! | AHJ | P2-5 |  | AHJ | FM | JH | O |  |
| P2.L2.BR.1090 |  | Hang-Tape-Finish _ Hard Lids Ceilings / L2 / Toilet 2954 | 5d | 2026-07-22 | 2026-07-28 | P2.L2.BR.1080, P2.SUM.175, P2.L2.S.1470 SS, P2.L2.N.1180 SS, P2.L2.S.1470 FF, P2.L2.N.1180 FF |  |  |  | 23d | 0d |  | 40 | ! | GYP | P2-5 |  | GYP-1 | FM | JH | O |  |
| P2.L2.BR.1100 |  | Paint Prime & Final Coat _ Walls & Hard Lid Ceilings / L2 / Toilet 2954 | 2d | 2026-07-29 | 2026-07-30 | P2.L2.BR.1090 |  |  |  | 23d | 0d |  | 16 | ! | PAINT | P2-5 |  | PAINT-1 | FM | JH | O |  |
| P2.L2.BR.1140 |  | Trim - HVAC G/R/D's / L2 / Toilet 2954 | 2d | 2026-07-31 | 2026-08-03 | BP1.233.3.410, P2.L2.BR.1100 |  |  |  | 23d | 0d |  | 16 | ! | HVAC | P2-5 | Harris | HVAC | FM | JH | O |  |
| P2.L2.BR.1120 |  | Pull Wire & Trim Devices - Electrical / L2 / Toilet 2954 | 2d | 2026-08-04 | 2026-08-05 | P2.L2.BR.1140, P2.L2.BR.1100 |  |  |  | 23d | 0d |  | 16 | ! | ELEC | P2-5 |  | ELEC-2 | FM | JH | O |  |
| P2.L2.BR.1130 |  | Lights - Set & Terminate / L2 / Toilet 2954 | 2d | 2026-08-04 | 2026-08-05 | P2.L2.BR.1120 SS |  |  |  | 25d | 2d |  | 16 | ! | ELEC | P2-5 |  | ELEC-2 | FM | JH | O |  |
| P2.L2.BR.1110 |  | Pull Wire & Trim Devices - Fire Alarm / L2 / Toilet 2954 | 2d | 2026-08-06 | 2026-08-07 | P2.L2.BR.1120, P2.L2.BR.1100 |  |  |  | 23d | 0d |  | 16 | ! | ELEC | P2-5 |  | ELEC-2 | FM | JH | O |  |
| P2.L2.BR.1150 |  | Wall Tile / L2 / Toilet 2954 | 5d | 2026-08-10 | 2026-08-14 | P2.L2.BR.1130, P2.L2.BR.1140, P2.L2.BR.1110 |  |  |  | 23d | 1d |  | 40 | ! | TILE | P2-5 |  | TILE | FM | JH | O |  |
| P2.L2.BR.4370 |  | Flooring Prep - Epoxy Floors / L2 / Toilet 2954 | 1d | 2026-08-18 | 2026-08-18 | P2.L2.BR.1150, P2.L2.BR.4310 |  |  |  | 22d | 0d |  | 40 | ! | EPOXYF | P2-5 |  | EPOXYF | FM | JH |  |  |
| P2.L2.BR.4380 |  | Flooring - Epoxy Floors / L2 / Toilet 2954 | 2d | 2026-08-19 | 2026-08-20 | P2.L2.BR.4370 |  |  |  | 115d | 0d |  | 40 | ! | EPOXYF | P2-5 |  | EPOXYF | FM | JH |  |  |
| P2.L2.BR.1160 |  | Doors & Hardware / L2 / Toilet 2954 | 2d | 2026-08-21 | 2026-08-24 | P2.L2.BR.4380 |  |  |  | 115d | 0d |  | 16 | ! | DFH | P2-5 |  | DFH | FM | JH |  | AT29 |
| P2.L2.BR.1170 |  | Plumbing Fixtures / Sinks / Showers / L2 / Toilet 2954 | 2d | 2026-08-25 | 2026-08-26 | P2.L2.BR.4380, P2.L2.BR.1160 |  |  |  | 115d | 0d |  | 16 | ! | PLMB | P2-5 | Harris | PLMB | FM | JH |  |  |
| P2.L2.BR.1180 |  | Bathroom Accessories / L2 / Toilet 2954 | 2d | 2026-08-27 | 2026-08-28 | P2.L2.BR.1170 |  |  |  | 115d | 0d |  | 16 | ! | SPECIAL | P2-5 |  | SPECIAL | FM | JH |  |  |
| P2.L2.BR.1190 |  | Work Completion List - Finishes / L2 / Toilet 2954 | 5d | 2026-08-31 | 2026-09-04 | P2.L2.BR.1160, P2.L2.BR.1180, P2.L2.BR.1110 |  |  |  | 115d | 127d | To Punch | 40 |  | AHJ | P2-5 |  | AHJ | FM | JH |  |  |

| ID | WBS | Activity | Duration | Start | Finish | Predecessors | Complete | Planned start | Planned finish | Total float | Free float | Pick | Temp Orig Dur | *NIH Resp Check* | Resp / SRLM | PHASE | Z.RESP | RESP / Trade | 744 | RESP UPD | Update Status | Testing Type |
| --- | --- | --- | --- | --- | --- | --- | --- | --- | --- | --- | --- | --- | --- | --- | --- | --- | --- | --- | --- | --- | --- | --- |
|  | 2 | **Toilets 2-3956 / 2-3958** |  | 2025-05-20 | 2026-09-01 |  |  |  |  |  |  |  |  |  |  |  |  |  |  |  |  |  |
| P2.L2.BR.2000 |  | Plumbing - Set Pipe Carriers / L2 / Toilets 395X | 3d | 2025-05-20 A | 2025-05-22 A | P2.L2.BR.1000 | 100% | 2025-06-19 | 2025-06-23 |  |  | ? | 24 | ! | PLMB | P2-5 | Harris | PLMB |  |  |  |  |
| P2.L2.BR.2020 |  | Plumbing - Test Pipe / L2 / Toilets 395X | 2d | 2025-05-30 A | 2025-06-13 A | P2.L2.BR.2000 | 100% | 2025-06-24 | 2025-06-25 |  |  |  | 16 |  | PLMB | P2-5 | Harris | PLMB | FM | FM |  |  |
| P2.L2.BR.2070 |  | In Wall - Insulate Plumbing / L2 / Toilets 395X | 2d | 2025-09-26 A | 2025-09-30 A | P2.L2.BR.2020 | 100% | 2025-10-09 | 2025-10-10 |  |  |  | 16 |  | INSUL | P2-5 | Harris | INSUL-3 | FM | FM | O |  |
| P2.L2.BR.2010 |  | Framing & Blocking - Walls and Hard Lid Ceilings / L2 / Toilets 395X | 2d | 2025-10-27 A | 2026-01-23 A | P2.L2.BR.2000, P2.L1.S.1420 | 100% | 2025-10-01 | 2025-10-02 |  |  |  | 16 | ! | GYP | P2-5 |  | GYP-1 | FM | JH | O |  |
| P2.L2.BR.2050 |  | Duct Drops _ Hard Lids / L2 / Toilets 395X | 2d | 2025-12-03 A | 2025-12-04 A | P2.L2.BR.2010 | 100% | 2026-01-06 | 2026-01-07 |  |  |  | 16 | T.R/I.IW.MECH.HVAC.SM | HVAC | P2-5 | Harris | HVAC | FM | JH | O |  |
| P2.L2.BR.2030 |  | R/I - Electrical _ Hard Lids / L2 / Toilets 395X | 2d | 2026-04-01 | 2026-04-02 | P2.L2.BR.2070, P2.L2.BR.2010 |  |  |  | 93d | 0d |  | 16 | ! | ELEC | P2-5 |  | ELEC-3 | FM | JH | O |  |
| P2.L2.BR.2040 |  | Trim Sprinkler Drops _ Hard Lids / L2 / Toilets 395X | 2d | 2026-04-01 | 2026-04-02 | P2.L2.BR.2010 |  |  |  | 95d | 2d |  | 16 | ! | FP | P2-5 |  | FP-1 | FM | JH | O |  |
| P2.L2.BR.2060 |  | R/I - Fire Alarm _ Hard Lids / L2 / Toilets 395X | 2d | 2026-04-03 | 2026-04-06 | P2.L2.BR.2010, P2.L2.BR.2030 |  |  |  | 93d | 0d |  | 16 | ! | ELEC | P2-5 |  | ELEC-3 | FM | JH | O |  |
| P2.L2.BR.2080 |  | Inspection - Close In - Hard Lid Ceilings / L2 / Toilets 395X | 3d | 2026-04-07 | 2026-04-09 | P2.L2.BR.2060, P2.L2.BR.2070, P2.L2.BR.2030, P2.L2.BR.2040, P2.L2.BR.2050 |  |  |  | 93d | 71d |  | 24 | ! | AHJ | P2-5 |  | AHJ | FM | JH | O |  |
| P2.L2.BR.2090 |  | Hang-Tape-Finish _ Hard Lids Ceilings / L2 / Toilets 395X | 5d | 2026-07-22 | 2026-07-28 | P2.L2.BR.2080, P2.SUM.175, P2.L2.S.1470 SS, P2.L2.N.1180 SS, P2.L2.S.1470 FF, P2.L2.N.1180 FF |  |  |  | 22d | 0d |  | 40 | ! | GYP | P2-5 |  | GYP-1 | FM | JH | O |  |
| P2.L2.BR.2100 |  | Paint Prime & Final Coat _ Walls & Hard Lid Ceilings / L2 / Toilets 395X | 2d | 2026-07-29 | 2026-07-30 | P2.L2.BR.2090 |  |  |  | 22d | 0d |  | 16 | ! | PAINT | P2-5 |  | PAINT-1 | FM | JH | O |  |
| P2.L2.BR.2140 |  | Trim - HVAC G/R/D's / L2 / Toilets 395X | 2d | 2026-07-31 | 2026-08-03 | P2.L2.BR.2100 |  |  |  | 22d | 0d |  | 16 | ! | HVAC | P2-5 | Harris | HVAC | FM | JH | O |  |
| P2.L2.BR.2120 |  | Pull Wire & Trim Devices - Electrical / L2 / Toilets 395X | 2d | 2026-08-04 | 2026-08-05 | P2.L2.BR.2140, P2.L2.BR.2100 |  |  |  | 22d | 0d |  | 16 | ! | ELEC | P2-5 |  | ELEC-2 | FM | JH | O |  |
| P2.L2.BR.2130 |  | Lights - Set & Terminate / L2 / Toilets 395X | 2d | 2026-08-04 | 2026-08-05 | P2.L2.BR.2120 SS |  |  |  | 24d | 2d |  | 16 | ! | ELEC | P2-5 |  | ELEC-2 | FM | JH | O |  |
| P2.L2.BR.2110 |  | Pull Wire & Trim Devices - Fire Alarm / L2 / Toilets 395X | 2d | 2026-08-06 | 2026-08-07 | P2.L2.BR.2120, P2.L2.BR.2100 |  |  |  | 22d | 0d |  | 16 | ! | ELEC | P2-5 |  | ELEC-2 | FM | JH | O |  |
| P2.L2.BR.2150 |  | Wall Tile / L2 / Toilets 395X | 5d | 2026-08-10 | 2026-08-14 | P2.L2.BR.2130, P2.L2.BR.2140, P2.L2.BR.2110 |  |  |  | 22d | 0d |  | 40 | ! | TILE | P2-5 |  | TILE | FM | JH | O |  |
| P2.L2.BR.2170 |  | Plumbing Fixtures / Sinks / Showers / L2 / Toilets 395X | 2d | 2026-08-17 | 2026-08-18 | P2.L2.BR.2150 |  |  |  | 121d | 3d |  | 16 | ! | PLMB | P2-5 | Harris | PLMB | FM | JH |  |  |
| P2.L2.BR.4310 |  | Flooring Prep - Epoxy Floors / L2 / Toilets 395X | 1d | 2026-08-17 | 2026-08-17 | P2.L2.BR.2150, P2.L1.BR.5230 |  |  |  | 22d | 0d |  | 40 | ! | EPOXYF | P2-5 |  | EPOXYF | FM | JH |  |  |
| P2.L2.BR.4320 |  | Flooring - Epoxy Floors / L2 / Toilets 395X | 2d | 2026-08-18 | 2026-08-19 | P2.L2.BR.4310 |  |  |  | 118d | 0d |  | 40 | ! | EPOXYF | P2-5 |  | EPOXYF | FM | JH |  |  |
| P2.L2.BR.2160 |  | Doors & Hardware / L2 / Toilets 395X | 2d | 2026-08-20 | 2026-08-21 | P2.L2.BR.4320, P2.L2.BR.2150 |  |  |  | 118d | 0d |  | 16 | ! | DFH | P2-5 |  | DFH | FM | JH |  | AT29 |
| P2.L2.BR.2180 |  | Bathroom Accessories / L2 / Toilets 395X | 2d | 2026-08-24 | 2026-08-25 | P2.L2.BR.2170, P2.L2.BR.2160 |  |  |  | 118d | 0d |  | 16 | ! | SPECIAL | P2-5 |  | SPECIAL | FM | JH |  |  |
| P2.L2.BR.2190 |  | Work Completion List - Finishes / L2 / Toilets 395X | 5d | 2026-08-26 | 2026-09-01 | P2.L2.BR.2160, P2.L2.BR.2180, P2.L2.BR.2110 |  |  |  | 118d | 130d | To Punch | 40 |  | AHJ | P2-5 |  | AHJ | FM | JH |  |  |
|  | 4 | **DPM/IR Male Lockers, Toilets, and Showers 2-3931** |  | 2025-05-23 | 2026-10-21 |  |  |  |  |  |  |  |  |  |  |  |  |  |  |  |  |  |
| P2.L2.BR.3000 |  | Plumbing - Set Pipe Carriers / L2 / DPM/IR Mens 3931 | 5d | 2025-05-23 A | 2025-05-30 A | P2.L2.BR.2000 | 100% | 2025-06-24 | 2025-06-30 |  |  | ? | 40 | ! | PLMB | P2-5 | Harris | PLMB |  |  |  |  |
| P2.L2.BR.3030 |  | Plumbing - Test Pipe @ Chase Walls / L2 / DPM/IR Mens 3931 | 5d | 2025-06-13 A | 2025-06-19 A | P2.L2.BR.3000 | 100% | 2025-07-15 | 2025-07-21 |  |  |  | 40 |  | PLMB | P2-5 | Harris | PLMB | FM | FM |  |  |
| P2.L2.BR.3080 |  | In Wall - Insulate Plumbing / L2 / DPM/IR Mens 3931 | 5d | 2025-09-26 A | 2025-12-02 A | P2.L2.BR.3030, P2.L2.BR.3020 | 100% | 2025-10-29 | 2025-11-04 |  |  |  | 40 |  | INSUL | P2-5 | Harris | INSUL-3 | FM | JH | O |  |
| P2.L2.BR.3020 |  | Frame - Chase Walls and Hard Lid Ceilings / L2 / DPM/IR Mens 3931 | 5d | 2025-10-27 A | 2026-01-23 A | P2.L2.BR.3000, P2.L2.BR.3010 | 100% | 2025-10-08 | 2025-10-14 |  |  |  | 40 | ! | GYP | P2-5 |  | GYP-1 | FM | JH | O |  |
| P2.L2.BR.3010 |  | Countertop Support Framing / L2 / DPM/IR Mens 3931 | 5d | 2025-11-03 A | 2025-11-07 A | P2.L2.S.1420 | 100% | 2025-12-01 | 2025-12-05 |  |  | ? | 40 | T.MISCMTL | MISCMTL | P2-5 |  | MISCMTL | FM | JH |  | AT50 |
| P2.L2.BR.3060 |  | Duct Drops _ Hard Lids / L2 / DPM/IR Mens 3931 | 5d | 2025-12-08 A | 2025-12-12 A | P2.L2.BR.3020 | 100% | 2026-01-09 | 2026-01-15 |  |  |  | 40 | T.R/I.IW.MECH.HVAC.SM | HVAC | P2-5 | Harris | HVAC | FM | JH | O |  |
| P2.L2.BR.3040 |  | R/I - Electrical _ Hard Lids / L2 / DPM/IR Mens 3931 | 5d | 2026-04-01 | 2026-04-07 | P2.L2.BR.3080, P2.L2.BR.3020 |  |  |  | 75d | 0d |  | 40 | ! | ELEC | P2-5 |  | ELEC-3 | FM | JH | O |  |
| P2.L2.BR.3050 |  | Trim Sprinkler Drops _ Hard Lids / L2 / DPM/IR Mens 3931 | 5d | 2026-04-01 | 2026-04-07 | P2.L2.BR.3020 |  |  |  | 80d | 5d |  | 40 | ! | FP | P2-5 |  | FP-1 | FM | JH | O |  |
| P2.L2.BR.3070 |  | R/I - Fire Alarm _ Hard Lids / L2 / DPM/IR Mens 3931 | 5d | 2026-04-08 | 2026-04-14 | P2.L2.BR.3040, P2.L2.BR.3020 |  |  |  | 75d | 0d |  | 40 | ! | ELEC | P2-5 |  | ELEC-3 | FM | JH | O |  |
| P2.L2.BR.3130 |  | Pull Wire - Electrical / L2 / DPM/IR Mens 3931 | 5d | 2026-04-08 | 2026-04-14 | P2.L2.BR.3040 |  |  |  | 95d | 83d |  | 40 | ! | ELEC | P2-5 |  | ELEC-2 |  | JH |  |  |
| P2.L2.BR.3090 |  | Inspection - Close In - Chase Walls and Hard Lid Ceilings / L2 / DPM/IR Mens 3931 | 5d | 2026-04-15 | 2026-04-21 | P2.L2.BR.3060, P2.L2.BR.3040, P2.L2.BR.3050, P2.L2.BR.3080, P2.L2.BR.3070 |  |  |  | 75d | 63d |  | 40 | ! | AHJ | P2-5 |  | AHJ | FM | JH | O |  |
| P2.L2.BR.3120 |  | Pull Wire - Fire Alarm / L2 / DPM/IR Mens 3931 | 5d | 2026-04-22 | 2026-04-28 | P2.L2.BR.3070, P2.L2.BR.4070 |  |  |  | 131d | 98d |  | 40 | ! | ELEC | P2-5 |  | ELEC-2 |  | JH |  |  |
| P2.L2.BR.3100 |  | Hang-Tape-Finish _ Hard Lids Ceilings / L2 / DPM/IR Mens 3931 | 5d | 2026-07-22 | 2026-07-28 | P2.L2.BR.3090, P2.SUM.175, P2.L2.S.1470 SS, P2.L2.N.1180 SS, P2.L2.S.1470 FF, P2.L2.N.1180 FF |  |  |  | 12d | 0d |  | 40 | ! | GYP | P2-5 |  | GYP-1 | FM | JH | O |  |
| P2.L2.BR.3110 |  | Paint Prime & 1st Coat _ Walls & Hard Lid Ceilings / L2 / DPM/IR Mens 3931 | 5d | 2026-07-29 | 2026-08-04 | P2.L2.BR.3100 |  |  |  | 12d | 0d |  | 40 | ! | PAINT | P2-5 |  | PAINT-1 | FM | JH |  |  |
| P2.L2.BR.3140 |  | Ceiling Grid / L2 / DPM/IR Mens 3931 | 5d | 2026-08-05 | 2026-08-11 | P2.L2.BR.3110 |  |  |  | 12d | 0d |  | 40 | ! | ACT | P2-5 |  | ACT | FM | JH |  |  |
| P2.L2.BR.3200 |  | Wall Tile / L2 / DPM/IR Mens 3931 | 5d | 2026-08-05 | 2026-08-11 | P2.L2.BR.3110 |  |  |  | 27d | 15d |  | 40 | ! | TILE | P2-5 |  | TILE |  | JH |  |  |
| P2.L2.BR.3150 |  | Lights - Set & Terminate / L2 / DPM/IR Mens 3931 | 5d | 2026-08-12 | 2026-08-18 | P2.L2.BR.3130, P2.L2.BR.3140 |  |  |  | 12d | 0d |  | 40 | ! | ELEC | P2-5 |  | ELEC-2 |  | JH |  |  |
| P2.L2.BR.3160 |  | Trim - HVAC G/R/D's / L2 / DPM/IR Mens 3931 | 5d | 2026-08-12 | 2026-08-18 | BP1.233.3.410, P2.L2.BR.3140 |  |  |  | 12d | 0d |  | 40 | ! | HVAC | P2-5 | Harris | HVAC |  | JH |  |  |
| P2.L2.BR.3170 |  | Trim Sprinkler Drops _ Ceiling Tiles / L2 / DPM/IR Mens 3931 | 5d | 2026-08-12 | 2026-08-18 | P2.L2.BR.3140 |  |  |  | 12d | 0d |  | 40 | ! | FP | P2-5 |  | FP-1 |  | JH |  |  |
| P2.L2.BR.3180 |  | Inspection - Ceiling Close In - ACT Ceilings / L2 / DPM/IR Mens 3931 | 5d | 2026-08-19 | 2026-08-25 | P2.L2.BR.3170, P2.L2.BR.3150, P2.L2.BR.3160 |  |  |  | 12d | 0d |  | 40 |  | AHJ | P2-5 |  | AHJ |  | JH |  |  |
| P2.L2.BR.3190 |  | Ceiling Tiles / L2 / DPM/IR Mens 3931 | 5d | 2026-08-26 | 2026-09-01 | P2.L2.BR.3180 |  |  |  | 12d | 0d |  | 40 | ! | ACT | P2-5 |  | ACT |  | JH |  |  |
| P2.L2.BR.4330 |  | Flooring Prep - Epoxy Floors / L2 / DPM/IR Mens 3931 | 1d | 2026-09-02 | 2026-09-02 | P2.L2.BR.4370, P2.L2.BR.3200, P2.L2.BR.3190 |  |  |  | 12d | 0d |  | 40 | ! | EPOXYF | P2-5 |  | EPOXYF |  | JH |  |  |
| P2.L2.BR.4340 |  | Flooring - Epoxy Floors / L2 / DPM/IR Mens 3931 | 4d | 2026-09-03 | 2026-09-09 | P2.L2.BR.4330 |  |  |  | 83d | 0d |  | 40 | ! | EPOXYF | P2-5 |  | EPOXYF |  | JH |  |  |
| P2.L2.BR.3210 |  | Paint - Finish Coat / L2 / DPM/IR Mens 3931 | 5d | 2026-09-10 | 2026-09-16 | P2.L2.BR.4340 |  |  |  | 83d | 0d |  | 40 | ! | PAINT | P2-5 |  | PAINT-1 |  | JH |  |  |
| P2.L2.BR.3220 |  | Countertops / L2 / DPM/IR Mens 3931 | 5d | 2026-09-17 | 2026-09-23 | P2.L2.BR.3210 |  |  |  | 83d | 0d |  | 40 | ! | MILL | P2-5 |  | MILL |  | JH |  |  |
| P2.L2.BR.3230 |  | Trim - Fire Alarm Devices / L2 / DPM/IR Mens 3931 | 5d | 2026-09-17 | 2026-09-23 | P2.L2.BR.3120, P2.L2.BR.3210 |  |  |  | 93d | 0d |  | 40 | ! | FA | P2-5 |  | FA-1 |  | JH |  |  |
| P2.L2.BR.3240 |  | Trim - Electrical Devices / L2 / DPM/IR Mens 3931 | 5d | 2026-09-17 | 2026-09-23 | P2.L2.BR.3210 |  |  |  | 98d | 15d |  | 40 | ! | ELEC | P2-5 |  | ELEC-2 |  | JH |  |  |
| P2.L2.BR.3250 |  | Doors & Hardware / L2 / DPM/IR Mens 3931 | 5d | 2026-09-24 | 2026-09-30 | P2.L2.BR.3210, P2.L2.BR.3230 |  |  |  | 93d | 10d |  | 40 | ! | DFH | P2-5 |  | DFH |  | JH |  | AT29 |
| P2.L2.BR.3260 |  | Lockers & Benches / L2 / DPM/IR Mens 3931 | 5d | 2026-09-24 | 2026-09-30 | P2.L2.BR.3210, P2.L2.BR.3220 |  |  |  | 93d | 10d |  | 40 | ! | SPECIAL | P2-5 |  | SPECIAL |  | JH |  |  |
| P2.L2.BR.3270 |  | Plumbing Fixtures / Sinks / Showers / L2 / DPM/IR Mens 3931 | 5d | 2026-09-24 | 2026-09-30 | P2.L2.BR.3220 |  |  |  | 83d | 0d |  | 40 | ! | PLMB | P2-5 | Harris | PLMB |  | JH |  |  |
| P2.L2.BR.3280 |  | Toilet Partitions / L2 / DPM/IR Mens 3931 | 5d | 2026-10-01 | 2026-10-07 | P2.L2.BR.3270 |  |  |  | 83d | 0d |  | 40 | ! | SPECIAL | P2-5 |  | SPECIAL |  | JH |  |  |
| P2.L2.BR.3290 |  | Bathroom Accessories / L2 / DPM/IR Mens 3931 | 5d | 2026-10-08 | 2026-10-14 | P2.L2.BR.3270, P2.L2.BR.3280 |  |  |  | 83d | 0d |  | 40 | ! | SPECIAL | P2-5 |  | SPECIAL |  | JH |  |  |
| P2.L2.BR.3300 |  | Work Completion List - Finishes / L2 / DPM/IR Mens 3931 | 5d | 2026-10-15 | 2026-10-21 | P2.L2.BR.3290, P2.L2.BR.3260, P2.L2.BR.3230, P2.L2.BR.3240, P2.L2.BR.3250, P2.L2.BR.3280 |  |  |  | 83d | 95d | To Punch | 40 |  | AHJ | P2-5 |  | AHJ |  | JH |  |  |

| ID | WBS | Activity | Duration | Start | Finish | Predecessors | Complete | Planned start | Planned finish | Total float | Free float | Pick | Temp Orig Dur | *NIH Resp Check* | Resp / SRLM | 744 | PHASE | Z.RESP | RESP UPD | RESP / Trade | Testing Type | Update Status |
| --- | --- | --- | --- | --- | --- | --- | --- | --- | --- | --- | --- | --- | --- | --- | --- | --- | --- | --- | --- | --- | --- | --- |
|  | 1 | **DPM/IR Female Lockers, Toilets, and Showers 2-2958** |  | 2025-06-13 | 2026-10-29 |  |  |  |  |  |  |  |  |  |  |  |  |  |  |  |  |  |
| P2.L2.BR.4000 |  | Plumbing - Set Pipe Carriers / L2 / DPM/IR Womens 3931 | 5d | 2025-06-13 A | 2025-06-19 A | P2.L2.BR.3000 | 100% | 2025-07-15 | 2025-07-21 |  |  | ? | 40 | ! | PLMB | FM | P2-5 | Harris | FM | PLMB |  |  |
| P2.L2.BR.4030 |  | Plumbing - Test Pipe @ Chase Walls / L2 / DPM/IR Womens 3931 | 5d | 2025-06-20 A | 2025-06-26 A | P2.L2.BR.4000 | 100% | 2025-07-22 | 2025-07-28 |  |  |  | 40 |  | PLMB | FM | P2-5 | Harris | FM | PLMB |  |  |
| P2.L2.BR.4080 |  | In Wall - Insulate Plumbing / L2 / DPM/IR Womens 3931 | 5d | 2025-09-26 A | 2025-11-18 A | P2.L2.BR.4030 | 100% | 2025-10-29 | 2025-11-04 |  |  |  | 40 |  | INSUL | FM | P2-5 | Harris | JH | INSUL-3 |  |  |
| P2.L2.BR.4010 |  | Countertop Support Framing / L2 / DPM/IR Womens 3931 | 5d | 2025-11-03 A | 2025-11-07 A | P2.L2.S.1420 | 100% | 2025-12-01 | 2025-12-05 |  |  | ? | 40 | T.MISCMTL | MISCMTL | FM | P2-5 |  | JH | MISCMTL | AT50 |  |
| P2.L2.BR.4060 |  | Duct Drops _ Hard Lids / L2 / DPM/IR Womens 3931 | 5d | 2025-12-15 A | 2025-12-19 A | P2.L2.BR.4000 | 100% | 2026-01-16 | 2026-01-22 |  |  |  | 40 | T.R/I.IW.MECH.HVAC.SM | HVAC | FM | P2-5 | Harris | JH | HVAC |  | O |
| P2.L2.BR.4020 |  | Frame - Chase Walls and Hard Lid Ceilings / L2 / DPM/IR Womens 3931 | 5d | 2026-04-01 | 2026-04-07 | P2.L2.BR.4000, P2.L2.BR.4010 |  |  |  | 66d | 0d |  | 40 | ! | GYP | FM | P2-5 |  | JH | GYP-1 |  | O |
| P2.L2.BR.4040 |  | R/I - Electrical _ Hard Lids / L2 / DPM/IR Womens 3931 | 5d | 2026-04-08 | 2026-04-14 | P2.L2.BR.4080, P2.L2.BR.4020 |  |  |  | 66d | 0d |  | 40 | ! | ELEC | FM | P2-5 |  | JH | ELEC-3 |  | O |
| P2.L2.BR.4050 |  | Trim Sprinkler Drops _ Hard Lids / L2 / DPM/IR Womens 3931 | 5d | 2026-04-08 | 2026-04-14 | P2.L2.BR.4020 |  |  |  | 71d | 5d |  | 40 | ! | FP | FM | P2-5 |  | JH | FP-1 |  | O |
| P2.L2.BR.4070 |  | R/I - Fire Alarm _ Hard Lids / L2 / DPM/IR Womens 3931 | 5d | 2026-04-15 | 2026-04-21 | P2.L2.BR.4040, P2.L2.BR.4020 |  |  |  | 66d | 0d |  | 40 | ! | ELEC | FM | P2-5 |  | JH | ELEC-3 |  | O |
| P2.L2.BR.4130 |  | Pull Wire - Electrical / L2 / DPM/IR Womens 3931 | 5d | 2026-04-15 | 2026-04-21 | P2.L2.BR.4040 |  |  |  | 86d | 68d |  | 40 | ! | ELEC |  | P2-5 |  | JH | ELEC-2 |  |  |
| P2.L2.BR.4090 |  | Inspection - Close In - Hard Lid Ceilings / L2 / DPM/IR Womens 3931 | 5d | 2026-04-22 | 2026-04-28 | P2.L2.BR.4050, P2.L2.BR.4060, P2.L2.BR.4040, P2.L2.BR.4070, P2.L2.BR.4080 |  |  |  | 66d | 48d |  | 40 | ! | AHJ | FM | P2-5 |  | JH | AHJ |  | O |
| P2.L2.BR.4120 |  | Pull Wire - Fire Alarm / L2 / DPM/IR Womens 3931 | 5d | 2026-04-22 | 2026-04-28 | P2.L2.BR.4070 |  |  |  | 126d | 114d |  | 40 | ! | ELEC |  | P2-5 |  | JH | ELEC-2 |  |  |
| P2.L2.BR.4100 |  | Hang-Tape-Finish _ Hard Lids Ceilings / L2 / DPM/IR Womens 3931 | 5d | 2026-07-08 | 2026-07-14 | P2.L2.BR.4090, P2.SUM.175, P2.L2.S.1470 SS, P2.L2.N.1180 SS |  |  |  | 18d | 0d |  | 40 | ! | GYP | FM | P2-5 |  | JH | GYP-1 |  | O |
| P2.L2.BR.4110 |  | Paint Prime & 1st Coat _ Walls & Hard Lid Ceilings / L2 / DPM/IR Womens 3931 | 5d | 2026-07-15 | 2026-07-21 | P2.L2.BR.4100 |  |  |  | 18d | 0d |  | 40 | ! | PAINT | FM | P2-5 |  | JH | PAINT-1 |  |  |
| P2.L2.BR.4140 |  | Ceiling Grid / L2 / DPM/IR Womens 3931 | 5d | 2026-07-22 | 2026-07-28 | P2.L2.BR.4110 |  |  |  | 18d | 0d |  | 40 | ! | ACT | FM | P2-5 |  | JH | ACT |  |  |
| P2.L2.BR.4150 |  | Lights - Set & Terminate / L2 / DPM/IR Womens 3931 | 5d | 2026-07-29 | 2026-08-04 | P2.L2.BR.4140, P2.L2.BR.4130 |  |  |  | 18d | 0d |  | 40 | ! | ELEC |  | P2-5 |  | JH | ELEC-2 |  |  |
| P2.L2.BR.4160 |  | Trim - HVAC G/R/D's / L2 / DPM/IR Womens 3931 | 5d | 2026-07-29 | 2026-08-04 | BP1.233.3.410, P2.L2.BR.4140 |  |  |  | 18d | 0d |  | 40 | ! | HVAC |  | P2-5 | Harris | JH | HVAC |  |  |
| P2.L2.BR.4170 |  | Trim Sprinkler Drops _ Ceiling Tiles / L2 / DPM/IR Womens 3931 | 5d | 2026-07-29 | 2026-08-04 | P2.L2.BR.4140 |  |  |  | 18d | 0d |  | 40 | ! | FP |  | P2-5 |  | JH | FP-1 |  |  |
| P2.L2.BR.4180 |  | Inspection - Ceiling Close In - ACT Ceilings / L2 / DPM/IR Womens 3931 | 5d | 2026-08-05 | 2026-08-11 | P2.L2.BR.4170, P2.L2.BR.4150, P2.L2.BR.4160 |  |  |  | 18d | 0d |  | 40 |  | AHJ |  | P2-5 |  | JH | AHJ |  |  |
| P2.L2.BR.4190 |  | Ceiling Tiles / L2 / DPM/IR Womens 3931 | 5d | 2026-08-12 | 2026-08-18 | P2.L2.BR.4180 |  |  |  | 18d | 0d |  | 40 | ! | ACT |  | P2-5 |  | JH | ACT |  |  |
| P2.L2.BR.4200 |  | Wall Tile / L2 / DPM/IR Womens 3931 | 5d | 2026-08-19 | 2026-08-25 | P2.L2.BR.4190 |  |  |  | 18d | 6d |  | 40 | ! | TILE |  | P2-5 |  | JH | TILE |  |  |
| P2.L2.BR.4350 |  | Flooring Prep - Epoxy Floors / L2 / DPM/IR Womens 3931 | 1d | 2026-09-03 | 2026-09-03 | P2.L2.BR.4330, P2.L2.BR.4200 |  |  |  | 12d | 0d |  | 40 | ! | EPOXYF |  | P2-5 |  | JH | EPOXYF |  |  |
| P2.L2.BR.4360 |  | Flooring - Epoxy Floors / L2 / DPM/IR Womens 3931 | 4d | 2026-09-04 | 2026-09-10 | P2.L2.BR.4350 |  |  |  | 12d | 0d |  | 40 | ! | EPOXYF |  | P2-5 |  | JH | EPOXYF |  |  |
| P2.L2.BR.4210 |  | Paint - Finish Coat / L2 / DPM/IR Womens 3931 | 5d | 2026-09-11 | 2026-09-17 | P2.L2.BR.4360 |  |  |  | 12d | 0d |  | 40 | ! | PAINT |  | P2-5 |  | JH | PAINT-1 |  |  |
| P2.L2.BR.4220 |  | Countertops / L2 / DPM/IR Womens 3931 | 5d | 2026-09-18 | 2026-09-24 | P2.L2.BR.4210 |  |  |  | 12d | 0d |  | 40 | ! | MILL |  | P2-5 |  | JH | MILL |  |  |
| P2.L2.BR.4260 |  | Lockers & Benches / L2 / DPM/IR Womens 3931 | 5d | 2026-09-25 | 2026-10-01 | P2.L2.BR.4210, P2.L2.BR.4220 |  |  |  | 12d | 0d |  | 40 | ! | SPECIAL |  | P2-5 |  | JH | SPECIAL |  |  |
| P2.L2.BR.4270 |  | Plumbing Fixtures / Sinks / Showers / L2 / DPM/IR Womens 3931 | 5d | 2026-09-25 | 2026-10-01 | P2.L2.BR.4220 |  |  |  | 87d | 0d |  | 40 | ! | PLMB |  | P2-5 | Harris | JH | PLMB |  |  |
| P2.L2.BR.4240 |  | Trim - Electrical Devices / L2 / DPM/IR Womens 3931 | 5d | 2026-10-02 | 2026-10-08 | P2.L2.BR.4260, P2.L2.BR.4210 |  |  |  | 12d | 0d |  | 40 | ! | ELEC |  | P2-5 |  | JH | ELEC-2 |  |  |
| P2.L2.BR.4280 |  | Toilet Partitions / L2 / DPM/IR Womens 3931 | 5d | 2026-10-02 | 2026-10-08 | P2.L2.BR.4270 |  |  |  | 87d | 10d |  | 40 | ! | SPECIAL |  | P2-5 |  | JH | SPECIAL |  |  |
| P2.L2.BR.4290 |  | Bathroom Accessories / L2 / DPM/IR Womens 3931 | 5d | 2026-10-02 | 2026-10-08 | P2.L2.BR.4270 |  |  |  | 87d | 10d |  | 40 | ! | SPECIAL |  | P2-5 |  | JH | SPECIAL |  |  |
| P2.L2.BR.4230 |  | Trim - Fire Alarm Devices / L2 / DPM/IR Womens 3931 | 5d | 2026-10-09 | 2026-10-15 | P2.L2.BR.4120, P2.L2.BR.4240, P2.L2.BR.4210 |  |  |  | 12d | 0d |  | 40 | ! | FA |  | P2-5 |  | JH | FA-1 |  |  |
| P2.L2.BR.4250 |  | Doors & Hardware / L2 / DPM/IR Womens 3931 | 5d | 2026-10-16 | 2026-10-22 | P2.L2.BR.4230, P2.L2.BR.4210 |  |  |  | 77d | 0d |  | 40 | ! | DFH |  | P2-5 |  | JH | DFH | AT29 |  |
| P2.L2.BR.4300 |  | Work Completion List - Finishes / L2 / DPM/IR Womens 3931 | 5d | 2026-10-23 | 2026-10-29 | P2.L2.BR.4260, P2.L2.BR.4280, P2.L2.BR.4290, P2.L2.BR.4230, P2.L2.BR.4240, P2.L2.BR.4250 |  |  |  | 77d | 89d | To Punch | 40 |  | AHJ |  | P2-5 |  | JH | AHJ |  |  |

| ID | WBS | Activity | Duration | Start | Finish | Predecessors | Total float | Free float | Temp Orig Dur | Resp / SRLM | PHASE | RESP UPD | RESP / Trade | Z.RESP |
| --- | --- | --- | --- | --- | --- | --- | --- | --- | --- | --- | --- | --- | --- | --- |
|  | 1 | **Corridors & Lobbies / Level 2** |  | 2026-07-29 | 2027-01-13 |  |  |  |  |  |  |  |  |  |
| P2.L2.CL.1000 |  | Paint Prime & 1st Coat Walls / L2 / Corr & Lobbies | 5d | 2026-07-29 | 2026-08-04 | P2.L2.F.CS.1000 SS | 7d | 0d | 40 | PAINT | P2-5 | JH | PAINT-1 |  |
| P2.L2.CL.1010 |  | Framing - Hard Lid Ceilings / L2 / Corr & Lobbies | 10d | 2026-08-05 | 2026-08-18 | P2.L2.CL.1000 | 10d | 0d | 80 | GYP | P2-5 | JH | GYP-1 |  |
| P2.L2.CL.1020 |  | T-Grid / L2 / Corr & Lobbies | 10d | 2026-08-05 | 2026-08-18 | P2.L2.CL.1000 | 7d | 0d | 80 | ACT | P2-5 | JH | ACT |  |
| P2.L2.CL.1030 |  | R/I - Electrical - All Ceilings / L2 / Corr & Lobbies | 5d | 2026-08-14 | 2026-08-20 | P2.L2.CL.1020 FF+2d, P2.L2.CL.1010 FF+2d | 10d | 0d | 40 | ELEC | P2-5 | JH | ELEC-2 |  |
| P2.L2.CL.1040 |  | R/I - Trim Sprinkler Heads- All Ceilings / L2 / Corr & Lobbies | 5d | 2026-08-14 | 2026-08-20 | P2.L2.CL.1020 FF+2d, P2.L2.CL.1010 FF+2d | 10d | 3d | 40 | FP | P2-5 | JH | FP-1 |  |
| P2.L2.CL.1050 |  | R/I - HVAC- All Ceilings / L2 / Corr & Lobbies | 5d | 2026-08-14 | 2026-08-20 | P2.L2.CL.1020 FF+2d, P2.L2.CL.1010 FF+2d | 10d | 3d | 40 | HVAC | P2-5 | JH | HVAC | Harris |
| P2.L2.CL.1060 |  | R/I - All Remaining Low Voltage - All Ceilings / L2 / Corr & Lobbies | 5d | 2026-08-14 | 2026-08-20 | P2.L2.CL.1020 FF+2d, P2.L2.CL.1010 FF+2d | 10d | 3d | 40 | LOWVOLT | P2-5 | JH | LOWVOLT-1 |  |
| P2.L2.CL.1070 |  | Trim - Sprinkler Heads @ T-Grid / L2 / Corr & Lobbies | 5d | 2026-08-14 | 2026-08-20 | P2.L2.CL.1020 FF+2d | 53d | 20d | 40 | FP | P2-5 | JH | FP-1 |  |
| P2.L2.CL.1080 |  | R/I - Fire Alarm/Life Safety - All Ceilings / L2 / Corr & Lobbies | 5d | 2026-08-19 | 2026-08-25 | P2.L2.CL.1010 FF+2d, P2.L2.CL.1020 | 7d | 0d | 40 | FA | P2-5 | JH | FA-1 |  |
| P2.L2.CL.1100 |  | Pull Wire - Electrical / L2 / Corr & Lobbies | 10d | 2026-08-21 | 2026-09-03 | P2.L2.CL.1030 | 15d | 0d | 40 | ELEC | P2-5 | JH | ELEC-2 |  |
| P2.L2.CL.1090 |  | Inspections - Close In- All Ceilings / L2 / Corr & Lobbies | 5d | 2026-08-26 | 2026-09-01 | P2.L2.CL.1060, P2.L2.CL.1030, P2.L2.CL.1040, P2.L2.CL.1050, P2.L2.CL.1080 | 7d | 0d | 40 | AHJ | P2-5 | JH | AHJ |  |
| P2.L2.CL.1130 |  | Hang/Tape/Finish- Hard Lid Ceilings / L2 / Corr & Lobbies | 10d | 2026-09-02 | 2026-09-16 | P2.L2.CL.1090 | 7d | 0d | 80 | GYP | P2-5 | JH | GYP-1 |  |
| P2.L2.CL.1110 |  | Pull Wire - Fire Alarm / L2 / Corr & Lobbies | 5d | 2026-09-04 | 2026-09-11 | P2.L2.CL.1080, P2.L2.CL.1100 | 15d | 0d | 40 | FA | P2-5 | JH | FA-1 |  |
| P2.L2.CL.1120 |  | Pull Wire - All Remianing Low Voltage Systems / L2 / Corr & Lobbies | 5d | 2026-09-14 | 2026-09-18 | P2.L2.CL.1060, P2.L2.CL.1110 | 20d | 0d | 40 | LOWVOLT | P2-5 | JH | LOWVOLT-1 |  |
| P2.L2.CL.1190 |  | Paint - Hard Lid Ceilings / L2 / Corr & Lobbies | 5d | 2026-09-17 | 2026-09-23 | P2.L2.CL.1130 | 7d | 0d | 40 | PAINT | P2-5 | JH | PAINT-1 |  |
| P2.L2.CL.1140 |  | Drop Ceiling Tiles @ T-Grid / L2 / Corr & Lobbies | 5d | 2026-09-21 | 2026-09-25 | P2.L2.CL.1090, P2.L2.CL.1070, P2.L2.CL.1100, P2.L2.CL.1110, P2.L2.CL.1120 | 33d | 26d | 40 | ACT | P2-5 | JH | ACT |  |
| P2.L2.CL.1150 |  | Ceiling Mounted - Electrical Devices and Lights / L2 / Corr & Lobbies | 20d | 2026-09-24 | 2026-10-21 | P2.L2.CL.1190, P2.L2.CL.1100 | 12d | 5d | 120 | ELEC | P2-5 | JH | ELEC-2 |  |
| P2.L2.CL.1160 |  | Ceiling Mounted - Fire Alarm/Life Saftey Devices / L2 / Corr & Lobbies | 15d | 2026-09-24 | 2026-10-14 | P2.L2.CL.1190, P2.L2.CL.1110, P2.L2.CL.1020 | 7d | 0d | 120 | FA | P2-5 | JH | FA-1 |  |
| P2.L2.CL.1180 |  | Ceiling Mounted - HVAC GRD's / L2 / Corr & Lobbies | 15d | 2026-09-24 | 2026-10-14 | P2.L2.CL.1190, P2.L2.CL.1020 | 17d | 10d | 120 | HVAC | P2-5 | JH | HVAC | Harris |
| P2.L2.CL.1170 |  | Ceiling Mounted - All Low Voltage Devices / L2 / Corr & Lobbies | 15d | 2026-10-08 | 2026-10-28 | P2.L2.CL.1190, P2.L2.CL.1120, P2.L2.CL.1160 SS+10d | 7d | 0d | 120 | LOWVOLT | P2-5 | JH | LOWVOLT-1 |  |
| P2.L2.CL.1320 |  | Prep Flooring / L2 / Corr & Lobbies | 2d | 2026-10-29 | 2026-10-30 | P2.L2.CL.1180, P2.L2.CL.1170, P2.L2.CL.1150, P2.L2.CL.1160, P2.L1.CL.1330, P2.L2.CL.1140 SS+2d | 7d | 0d | 80 | FLOOR | P2-5 | JH | FLOOR |  |
| P2.L2.CL.1200 |  | Flooring / L2 / Corr & Lobbies | 8d | 2026-11-02 | 2026-11-11 | P2.L2.CL.1320 | 7d | 0d | 80 | FLOOR | P2-5 | JH | FLOOR |  |
| P2.L2.CL.1210 |  | Final Paint / L2 / Corr & Lobbies | 5d | 2026-11-09 | 2026-11-13 | P2.L2.CL.1140, P2.L2.CL.1200 FF+2d, BP7.097.3.100 | 27d | 0d | 40 | PAINT | P2-5 | JH | PAINT-1 |  |
| P2.L2.CL.1220 |  | Floor Base / L2 / Corr & Lobbies | 5d | 2026-11-16 | 2026-11-20 | P2.L2.CL.1210 | 42d | 0d | 40 | FLOOR | P2-5 | JH | FLOOR |  |
| P2.L2.CL.1250 |  | Trim - HVAC - Wall Mounted Devices / L2 / Corr & Lobbies | 5d | 2026-11-16 | 2026-11-20 | BP1.233.3.410, P2.L2.CL.1210 | 27d | 0d | 40 | BAS | P2-5 | JH | BAS-1 | Harris |
| P2.L2.CL.1230 |  | Trim - All Electrical - Wall Mounted Devices / L2 / Corr & Lobbies | 5d | 2026-11-23 | 2026-12-01 | P2.L2.CL.1250, P2.L2.CL.1210 | 27d | 0d | 40 | ELEC | P2-5 | JH | ELEC-2 |  |
| P2.L2.CL.1330 |  | Wall Protection / L2 / Corr & Lobbies | 5d | 2026-11-23 | 2026-12-01 | BP7.102.3.300, P2.L2.CL.1220 | 42d | 15d | 40 | WALLPRO | P2-5 | JH | WALLPRO |  |
| P2.L2.CL.1240 |  | Trim - Fire Alarm - Wall Mounted Devices / L2 / Corr & Lobbies | 5d | 2026-12-02 | 2026-12-08 | P2.L2.CL.1210, P2.L2.CL.1230 | 27d | 0d | 40 | FA | P2-5 | JH | FA-1 |  |
| P2.L2.CL.1260 |  | Trim - All Remining Low Voltage Systems - Wall Mounted Devices / L2 / Corr & Lobbies | 5d | 2026-12-09 | 2026-12-15 | P2.L2.CL.1240, P2.L2.CL.1210 | 27d | 0d | 40 | LOWVOLT | P2-5 | JH | LOWVOLT-1 |  |
| P2.L2.CL.1270 |  | Building Signage / L2 / Corr & Lobbies | 5d | 2026-12-16 | 2026-12-22 | P2.L2.CL.1260, P2.L2.CL.1210 | 27d | 0d | 40 | SIGN | P2-5 | JH | SIGN |  |
| P2.L2.CL.1280 |  | Work Completion List / L2 / Corr & Lobbies | 5d | 2026-12-23 | 2026-12-30 | P2.L2.CL.1270, P2.L2.CL.1240, P2.L2.CL.1250, P2.L2.CL.1260, P2.L2.CL.1220, P2.L2.CL.1230, P2.L2.CL.1330 | 27d | 0d | 40 | T | P2-5 | JH | T |  |
| P2.L2.CL.1290 |  | Rough Clean / L2 / Corr & Lobbies | 2d | 2026-12-31 | 2027-01-04 | P2.L2.CL.1280 | 27d | 0d | 16 | FCLEAN | P2-5 | JH | FCLEAN |  |
| P2.L2.CL.1300 |  | Punchlist / L2 / Corr & Lobbies | 5d | 2027-01-05 | 2027-01-11 | P2.L2.CL.1290 | 27d | 0d | 40 | AHJ | P2-5 | JH | AHJ |  |
| P2.L2.CL.1310 |  | Final Clean / L2 / Corr & Lobbies | 2d | 2027-01-12 | 2027-01-13 | P2.L2.CL.1300 | 27d | 39d | 16 | FCLEAN | P2-5 | JH | FCLEAN |  |

| ID | WBS | Activity | Duration | Start | Finish | Predecessors | Complete | Remaining | Planned start | Planned finish | Total float | Free float | Temp Orig Dur | Act ID Temp | Resp / SRLM | PHASE | Z.RESP | RESP / Trade | Pick | Testing Type | 744 | RESP UPD | Update Status | NOTES | *NIH Resp Check* |
| --- | --- | --- | --- | --- | --- | --- | --- | --- | --- | --- | --- | --- | --- | --- | --- | --- | --- | --- | --- | --- | --- | --- | --- | --- | --- |
|  | INT | **INTERSTITIAL / LEVEL 2** |  | 2025-01-29 | 2026-07-30 |  |  |  |  |  |  |  |  |  |  |  |  |  |  |  |  |  |  |  |  |
|  | 1 | **South Interstitial (9K SF) / 2-3925** |  | 2025-01-29 | 2026-07-30 |  |  |  |  |  |  |  |  |  |  |  |  |  |  |  |  |  |  |  |  |
|  | Z1 | **Rough In - South Interstitial / 2-3925** |  | 2025-01-29 | 2026-05-27 |  |  |  |  |  |  |  |  |  |  |  |  |  |  |  |  |  |  |  |  |
| P2.L2.INT.S.1000 |  | Layout - All Trades / L2 / South Int | 5d | 2025-01-29 A | 2025-02-14 A | P2.2.I.03.310 | 100% |  | 2025-02-03 | 2025-02-07 |  |  | 40 | P2.B2.01.010 | R/I.OH | P2-5 | Harris | R/I.OH |  |  |  |  |  |  |  |
| P2.L2.INT.S.1130 |  | OH - Fire Suppression / L2 / South Int | 10d | 2025-02-03 A | 2025-02-06 A | P2.L2.INT.S.1030 FF, P2.L2.INT.S.1040 FF+2d | 100% |  | 2025-03-12 | 2025-03-25 |  |  | 80 | P2.B2.21.13.210 | FP | P2-5 |  | FP-1 | 1 |  |  |  |  |  |  |
| P2.L2.INT.S.1020 |  | OH - Structural Supports (All Trades) / L2 / South Int | 5d | 2025-02-10 A | 2025-03-21 A | P2.L2.INT.S.1000 FF | 100% |  | 2025-02-10 | 2025-02-14 |  |  | 80 | P2.B2.05.45.110 | R/I.OH | P2-5 | Harris | R/I.OH |  | AT24 |  |  |  |  |  |
| P2.L2.INT.S.1030 |  | OH - MEPF - Hangers & Supports / L2 / South Int | 10d | 2025-02-10 A | 2025-03-21 A | P2.BIM.L2.40.140, P2.L2.INT.S.1000 FF | 100% |  | 2025-02-10 | 2025-02-21 |  |  | 80 | P2.B2.20.05.410 | MEP | P2-5 | Harris | MEP-2 |  |  |  |  |  |  |  |
| P2.L2.INT.S.1040 |  | Fireproof Interstitial Steel / L2 / South Int | 5d | 2025-02-13 A | 2025-03-01 A | P2.L2.INT.S.1020, P2.L2.INT.S.1030, P2.L2.INT.S.1010 | 100% |  | 2025-03-17 | 2025-03-21 |  |  | 40 | P2.1.09.81.140X10 | SPRAY | P2-5 |  | SPRAY |  | AT49 |  |  |  |  |  |
| P2.L2.INT.S.1010 |  | Framing - Top Track / L2 / South Int | 5d | 2025-02-21 A | 2025-03-13 A | P2.L2.INT.S.1000, P2.L2.N.1010 | 100% |  | 2025-03-10 | 2025-03-14 |  |  | 80 | P2.B2.09.21.110 | GYP | P2-5 |  | GYP-1 |  |  |  |  |  |  |  |
| P2.L2.INT.S.1140 |  | OH - Hang Duct - HP Mains / L2 / South Int | 20d | 2025-03-12 A | 2025-04-18 A | BP1.233.3.100, P2.L2.INT.S.1030, P2.L2.INT.S.1040 | 100% |  | 2025-03-24 | 2025-04-18 |  |  | 80 | P2.B2.23.30.210 | HVAC | P2-5 | Harris | HVAC | 1 |  |  |  |  |  |  |
| P2.L2.INT.S.1150 |  | OH - Plumbing Piping / L2 / South Int | 20d | 2025-03-19 A | 2025-04-16 A | P2.L2.INT.S.1030, P2.L2.INT.S.1040, P2.L2.S.1180 | 100% |  | 2025-04-23 | 2025-05-20 |  |  | 80 | P2.B2.22.14.210 | PLMB | P2-5 | Harris | PLMB | 1 |  |  |  |  |  |  |
| P2.L2.INT.S.1050 |  | In Wall - Electrical - Framing / L2 / South Int | 10d | 2025-04-01 A | 2025-04-14 A | P2.L2.INT.S.1070 SS | 100% |  | 2025-05-01 | 2025-05-14 |  |  | 80 | P2.B2.26.05.610 | ELEC | P2-5 |  | ELEC-2 |  |  |  |  |  |  |  |
| P2.L2.INT.S.1060 |  | In Wall - Backing/Blocking/Supports / L2 / South Int | 10d | 2025-04-01 A | 2025-04-14 A | P2.L2.INT.S.1070 SS | 100% |  | 2025-05-01 | 2025-05-14 |  |  | 80 | P2.B2.09.21.510 | R/I.IW | P2-5 |  | R/I.IW |  |  |  |  |  |  |  |
| P2.L2.INT.S.1070 |  | Framing - Perimeter Studs and Door Frames / L2 / South Int | 10d | 2025-04-01 A | 2025-04-14 A | P2.L2.INT.S.1040 | 100% |  | 2025-05-01 | 2025-05-14 |  |  | 80 | A1310 | GYP | P2-5 |  | GYP-1 |  |  |  |  |  |  |  |
| P2.L2.INT.S.1170 |  | Set & Connect - Mech Equipment / L2 / South Int | 15d | 2025-04-01 A | 2025-04-21 A | P2.L2.INT.S.1040 | 100% |  | 2025-05-01 | 2025-05-21 |  |  | 80 |  | HVAC | P2-5 | Harris | HVAC |  |  |  |  |  |  |  |
| P2.L2.INT.S.1210 |  | OH - DALT - HP Mains / L2 / South Int | 10d | 2025-04-02 A | 2025-04-30 A | P2.L2.INT.S.1140 | 100% |  | 2025-05-16 | 2025-05-30 |  |  | 80 | P2.B2.23.30.310 | TAB | P2-5 | Harris | TAB-1 | 2 |  |  |  |  |  |  |
| P2.L2.INT.S.1160 |  | OH - Electrical - 480/277v Distribution / L2 / South Int | 20d | 2025-04-11 A | 2025-05-30 A | P2.L2.INT.S.1120 FF+2d, P2.L2.INT.S.1100 FF+2d, P2.L2.INT.S.1030, P2.L2.INT.S.1040 | 100% |  | 2025-05-14 | 2025-06-11 |  |  | 80 | P2.B2.26.05.210 | ELEC | P2-5 |  | ELEC-2 | 1 |  |  |  |  |  |  |
| P2.L2.INT.S.1180 |  | OH - HVAC Piping / L2 / South Int | 15d | 2025-04-21 A | 2025-06-09 A | P2.L2.INT.S.1030, P2.L2.INT.S.1130, P2.L2.INT.S.1040 | 100% |  | 2025-05-01 | 2025-05-21 |  |  | 80 | P2.B2.23.20.410 | FIT | P2-5 | Harris | FIT-2 | 2 |  | TS | TS |  |  |  |
| P2.L2.INT.S.1190 |  | OH - Electrical - 208/120v Branch / L2 / South Int | 10d | 2025-04-30 A | 2025-05-30 A | P2.L2.INT.S.1160 | 100% |  | 2025-06-12 | 2025-06-25 |  |  | 80 | P2.B2.26.05.310 | ELEC | P2-5 |  | ELEC-2 | 2 |  |  |  |  |  |  |
| P2.L2.INT.S.1240 |  | OH - Hang Duct - LP Branch / L2 / South Int | 10d | 2025-04-30 A | 2025-07-31 A | P2.L2.INT.S.1210 | 100% |  | 2025-06-02 | 2025-06-13 |  |  | 80 | P2.B2.23.30.410 | HVAC | P2-5 | Harris | HVAC | 3 |  | TS | TS |  |  |  |
| P2.L2.INT.S.1220 |  | OH - Plumbing - Test / L2 / South Int | 10d | 2025-05-01 A | 2025-05-01 A | P2.L2.INT.S.1150 | 100% |  | 2025-06-02 | 2025-06-13 |  |  | 80 | P2.B2.22.14.310 | PLMB | P2-5 | Harris | PLMB | 2 |  |  |  |  |  |  |
| P2.L2.INT.S.1230 |  | OH - Insulate HP Duct / L2 / South Int | 10d | 2025-05-01 A | 2025-05-30 A | P2.L2.INT.S.1210 | 100% |  | 2025-06-02 | 2025-06-13 |  |  | 80 | P2.B2.23.07.310 | INSUL | P2-5 | Harris | INSUL-3 | 3 |  |  |  |  |  |  |
| P2.L2.INT.S.1340 |  | OH - Conduit - Low Volt - Telecom / L2 / South Int | 10d | 2025-05-29 A | 2025-06-11 A | P2.L2.INT.S.1310 | 100% |  | 2025-06-27 | 2025-07-11 |  |  | 80 |  | ELEC | P2-5 |  | ELEC-2 | 5 |  | TS | TS |  |  |  |
| P2.L2.INT.S.1350 |  | OH - Conduit - Low Volt - Security / L2 / South Int | 10d | 2025-05-29 A | 2025-06-11 A | P2.L2.INT.S.1300 | 100% |  | 2025-06-30 | 2025-07-14 |  |  | 80 |  | ELEC | P2-5 |  | ELEC-2 | 5 |  | TS | TS |  |  |  |
| P2.L2.INT.S.1100 |  | Spray/Seal/Firestop - Head of Wall / L2 / South Int | 5d | 2025-06-18 A | 2025-06-24 A | P2.L2.INT.S.1090 FF+2d | 100% |  | 2025-07-18 | 2025-07-24 |  |  | 40 | P2.B2.07.84.310 | FIRSAFE | P2-5 |  | FIRSAFE | To Finishes - Paint | AT47 | TS | TS |  |  |  |
| P2.L2.INT.S.1320 |  | OH - Conduit - Low Volt - BAS/Controls / L2 / South Int | 10d | 2025-07-23 A | 2025-08-26 A | P2.L2.INT.S.1300 | 100% |  | 2025-08-22 | 2025-09-05 |  |  | 80 |  | BAS | P2-5 | Harris | BAS-1 | 5 |  | TS | TS |  |  |  |
| P2.L2.INT.S.1330 |  | OH - Conduit - Low Volt - Fire Alarm / L2 / South Int | 10d | 2025-07-23 A | 2025-08-19 A | P2.L2.INT.S.1310 | 100% |  | 2025-08-22 | 2025-09-05 |  |  | 80 |  | FA | P2-5 |  | FA-1 | 5 |  | TS | TS |  |  |  |
| P2.L2.INT.S.1260 |  | OH - Insulate Plumbing / L2 / South Int | 10d | 2025-08-01 A | 2025-08-14 A | P2.L2.INT.S.1220 | 100% |  |  |  |  |  | 80 | P2.B2.22.07.510 | INSUL | P2-5 | Harris | INSUL-3 | 3 |  | TS | TS |  |  |  |
| FRG.P2.L2.INT.S.1780 |  | HVAC Piping - Hang Remaining Steel Racks / L2 / South Int - FRAGNET | 20d | 2025-08-07 A | 2025-09-04 A | P2.L2.INT.S.1180 | 100% |  | 2025-09-02 | 2025-09-29 |  |  | 80 | P2.B2.23.20.410 | Harris Fragnet | P2-5 | Harris | FIT-2 | 2 |  | TA | TA | O | Per Harris Schedule 9/4 |  |
| P2.L2.INT.S.1090 |  | Hang-Tape-Finish - Walls and Hard Lid Ceilings / L2 / South Int | 10d | 2025-08-08 A | 2025-08-21 A | P2.L2.INT.S.1080 | 100% |  |  |  |  |  | 80 | P2.B2.09.21.710 | GYP | P2-5 |  | GYP-1 |  |  | TS | TS |  |  |  |
| P2.L2.INT.S.1080 |  | AHJ Inspections - Wall Close In / | 5d | 2025-08-11 A | 2025-08-11 A | P2.L2.INT.S.1050 FF, P2.L2.INT.S.1060 FF, P2.L2.INT.S.1070 | 100% |  | 2025-08-01 | 2025-08-07 |  |  | 40 | P2.B2.01.43.110 | FM | P2-5 |  | FM |  |  | TS | TS |  |  |  |
| P2.L2.INT.S.1120 |  | Paint Prime & 1st Coat / L2 / South Int | 5d | 2025-08-26 A | 2025-08-31 A | P2.L2.INT.S.1100 SS | 100% |  | 2025-08-26 | 2025-09-02 |  |  | 40 |  | PAINT | P2-5 |  | PAINT-1 |  |  | TS | TS |  |  |  |
| P2.L2.INT.S.1175 |  | Set & Connect - Elect Panels and Equipment / L2 / South Int | 5d | 2025-09-22 A | 2025-09-27 A | P2.L2.INT.S.1120, P2.L2.INT.S.1100 | 100% |  | 2025-10-01 | 2025-10-07 |  |  | 40 |  | ELEC | P2-5 |  | ELEC-2 |  |  | TS | TS | O |  |  |
| P2.L2.INT.S.1110 |  | Firestop - Thru Wall / L2 / South Int | 5d | 2025-09-29 A | 2025-11-25 A | P2.L2.INT.S.1130, P2.L2.INT.S.1140, P2.L2.INT.S.1350, P2.L2.INT.S.1320, P2.L2.INT.S.1330, P2.L2.INT.S.1340, P2.L2.INT.S.1150, P2.L2.INT.S.1160, P2.L2.INT.S.1180, P2.L2.INT.S.1120 SS | 100% |  | 2025-10-27 | 2025-10-31 |  |  | 40 | P2.B2.07.84.210 | FIRESTO | P2-5 |  | FIRESTO | To Finishes - Paint | AT48 | TS | TS |  |  |  |
| P2.L2.INT.S.1250 |  | OH - HVAC Piping - Test / L2 / South Int | 5d | 2025-10-27 A | 2025-11-26 A | P2.L2.INT.S.1180, FRG.P2.L2.INT.S.1780 | 100% |  | 2025-10-01 | 2025-10-07 |  |  | 80 | P2.B2.23.20.510 | FIT | P2-5 | Harris | FIT-2 | 3 |  | TS | TS |  |  |  |
| P2.L2.INT.S.1200 |  | OH - Electrical - Equip Tie In / L2 / South Int | 10d | 2025-12-01 A | 2026-03-31 A | P2.L2.INT.S.1160, P2.L2.INT.S.1170, P2.L2.INT.S.1175 | 100% |  | 2026-01-02 | 2026-01-15 |  |  | 80 | P2.B2.26.05.410 | ELEC | P2-5 |  | ELEC-2 | 4 |  | TS | TS | O |  |  |
| P2.L2.INT.S.1310 |  | OH - Insulate LP Duct / L2 / South Int | 10d | 2025-12-01 A | 2025-12-12 A | P2.L2.INT.S.1240 | 100% |  | 2026-01-02 | 2026-01-15 |  |  | 80 | P2.B2.23.07.410 | INSUL | P2-5 | Harris | INSUL-3 | 4 |  | TS | TS | O |  |  |
| P2.L2.INT.S.1300 |  | OH - Insulate HVAC Pipe / L2 / South Int | 10d | 2025-12-15 A | 2025-12-19 A | P2.L2.INT.S.1230, P2.L2.INT.S.1250 | 100% |  | 2026-01-02 | 2026-01-15 |  |  | 80 | P2.B2.22.07.610 | INSUL | P2-5 | Harris | INSUL-3 | 4 |  | TS | TS | O |  |  |
| P2.L2.INT.S.1280 |  | Pull Wire - Electrical - 480/277v Distribution / L2 / South Int | 10d | 2026-03-16 A | 2026-03-27 A | P2.L2.INT.S.1200 | 100% |  |  |  |  |  | 80 |  | ELEC | P2-5 |  | ELEC-2 | To Trim Devices & Term Panel |  | TS | TS | O |  |  |
| P2.L2.INT.S.1270 |  | Pull Wire - Electrical - 208/120v Branch & Equip / L2 / South Int | 20d | 2026-03-23 A | 2026-03-27 A | P2.L2.INT.S.1050 FF, P2.L2.INT.S.1190, P2.L2.INT.S.1200, P2.L2.INT.S.1050 | 100% |  | 2026-03-16 | 2026-04-10 |  |  | 80 |  | ELEC | P2-5 |  | ELEC-2 | To Trim Devices & Term Panel |  | TS | TS | O |  |  |
| P2.L2.INT.S.1290 |  | OH - HVAC Piping - Equip Tie In / L2 / South Int | 10d | 2026-03-30 A | 2026-05-08 | P2.L2.INT.S.1250, P2.L2.INT.S.1170, CX.B2.HYDR.1000 | 20% | 8d | 2026-03-30 | 2026-04-10 | 1d | 0d | 80 | P2.B2.23.20.610 | FIT | P2-5 | Harris | FIT-2 |  |  | TS | TS |  |  |  |
| P2.L2.INT.S.1370 |  | Pull Wire - Low Volt - Fire Alarm / L2 / South Int | 10d | 2026-03-30 A | 2026-04-10 | P2.L2.INT.S.1330, P2.L2.INT.S.1090 | 20% | 8d | 2026-03-02 | 2026-03-13 | 137d | 30d | 80 |  | FA | P2-5 |  | FA-1 | To Trim Finishes |  | TS | TS | O |  |  |
| P2.L2.INT.S.1380 |  | Pull Wire - Low Volt - Telecom / L2 / South Int | 10d | 2026-04-01 | 2026-04-14 | P2.L2.INT.S.1340, P2.L2.INT.S.1090 |  |  |  |  | 135d | 28d | 80 |  | CIT | P2-5 |  | CIT | To Trim Finishes |  | TS | TS | O |  |  |
| P2.L2.INT.S.1390 |  | Pull Wire - Low Volt - Security / L2 / South Int | 10d | 2026-04-01 | 2026-04-14 | P2.L2.INT.S.1350 |  |  |  |  | 135d | 28d | 80 |  | LOWVOLT | P2-5 |  | LOWVOLT-1 | To Trim Finishes |  | TS | TS | O |  |  |
| P2.L2.INT.S.1360 |  | Pull Wire - Low Volt - BAS/Controls / L2 / South Int | 10d | 2026-05-11 | 2026-05-22 | P2.L2.INT.S.1320, P2.L2.INT.S.1290 |  |  |  |  | 1d | 0d | 80 |  | BAS | P2-5 | Harris | BAS-1 | To Trim Finishes |  | TS | TS |  |  |  |
| P2.L2.INT.S.1400 |  | Trades Inspect & Verify R/I Work Completed to Specs / L2 / South Int | 2d | 2026-05-26 | 2026-05-27 | P2.L2.INT.S.1390, P2.L2.INT.S.1280, P2.L2.INT.S.1270, P2.L2.INT.S.1360, P2.L2.INT.S.1370, P2.L2.INT.S.1380, P2.L2.INT.S.1260, P2.L2.INT.S.1110 |  |  |  |  | 107d | 0d | 16 |  | T | P2-5 |  | T | To Finishes |  | TS | TS |  |  | ! |

| ID | WBS | Activity | Duration | Start | Finish | Predecessors | Complete | Remaining | Planned start | Planned finish | Total float | Free float | Temp Orig Dur | Resp / SRLM | 744 | PHASE | RESP UPD | RESP / Trade | *NIH Resp Check* | Testing Type | Z.RESP | Pick | Act ID Temp | Update Status |
| --- | --- | --- | --- | --- | --- | --- | --- | --- | --- | --- | --- | --- | --- | --- | --- | --- | --- | --- | --- | --- | --- | --- | --- | --- |
|  | S | **Finishes - South Interstitial / 2-3925** |  | 2026-05-28 | 2026-07-30 |  |  |  |  |  |  |  |  |  |  |  |  |  |  |  |  |  |  |  |
| P2.L2.INT.S.2000 |  | Flooring Prep - Epoxy Floors / L2 / South Int | 7d | 2026-05-28 | 2026-06-05 | BP7.096.3.200, P2.L2.INT.S.1400 |  |  |  |  | 141d | 0d | 80 | EPOXYF | TS | P2-5 | TS | EPOXYF |  |  |  |  |  |  |
| P2.L2.INT.S.2090 |  | Flooring - Epoxy Floors / L2 / South Int | 3d | 2026-06-08 | 2026-06-10 | P2.L2.INT.S.2000 |  |  |  |  | 141d | 0d | 80 | EPOXYF | TS | P2-5 | TS | EPOXYF |  |  |  |  |  |  |
| P2.L2.INT.S.2010 |  | Paint - Finish Coat / L2 / South Int | 5d | 2026-06-11 | 2026-06-17 | P2.L2.INT.S.2090 |  |  |  |  | 141d | 0d | 40 | PAINT | TS | P2-5 | TS | PAINT-1 | ! |  |  |  |  |  |
| P2.L2.INT.S.2020 |  | Doors & Hardware / L2 / South Int | 5d | 2026-06-11 | 2026-06-17 | P2.L2.INT.S.2090 |  |  |  |  | 141d | 0d | 40 | DFH | TS | P2-5 | TS | DFH |  | AT29 |  |  |  |  |
| P2.L2.INT.S.2030 |  | Trim All MEP Finishes / L2 / South Int | 5d | 2026-06-18 | 2026-06-24 | P2.L2.INT.S.2020, P2.L2.INT.S.2010 |  |  |  |  | 141d | 0d | 40 | MEP | TS | P2-5 | TS | MEP-2 |  |  | Harris |  |  |  |
| P2.L2.INT.S.2040 |  | Building Signage / L2 / South Int | 5d | 2026-06-18 | 2026-06-24 | P2.L2.INT.S.2010 |  |  |  |  | 141d | 0d | 40 | SIGN | TS | P2-5 | TS | SIGN |  |  |  |  |  |  |
| P2.L2.INT.S.2050 |  | Rough Clean / L2 / South Int | 5d | 2026-06-25 | 2026-07-01 | P2.L2.INT.S.2030, P2.L2.INT.S.2040 |  |  |  |  | 141d | 0d | 40 | FCLEAN | TS | P2-5 | TS | FCLEAN |  |  |  |  |  |  |
| P2.L2.INT.S.2060 |  | Prepare Punchlist / L2 / South Int | 5d | 2026-07-02 | 2026-07-09 | P2.L2.INT.S.2050 |  |  |  |  | 141d | 0d | 40 | QC | TS | P2-5 | TS | QC |  |  |  |  |  |  |
| P2.L2.INT.S.2070 |  | Correct Punchlist / L2 / South Int | 10d | 2026-07-10 | 2026-07-23 | P2.L2.INT.S.2060 FF, P2.L2.INT.S.2060 |  |  |  |  | 141d | 0d | 80 | FINISH | TS | P2-5 | TS | FINISH |  |  |  |  |  |  |
| P2.L2.INT.S.2080 |  | Final Clean / L2 / South Int | 5d | 2026-07-24 | 2026-07-30 | P2.L2.INT.S.2070 FF, P2.L2.INT.S.2070 |  |  |  |  | 141d | 153d | 40 | FCLEAN | TS | P2-5 | TS | FCLEAN |  |  |  | To QC |  |  |
|  | INT1 | **North Interstitial (16K SF) / 2-2855** |  | 2025-02-10 | 2026-07-16 |  |  |  |  |  |  |  |  |  |  |  |  |  |  |  |  |  |  |  |
|  | Z11 | **Rough In - North Interstitial / 2-2855** |  | 2025-02-10 | 2026-05-12 |  |  |  |  |  |  |  |  |  |  |  |  |  |  |  |  |  |  |  |
| P2.L2.INT.N.1000 |  | Layout - All Trades / L2 / North Int | 5d | 2025-02-10 A | 2025-02-14 A | P2.2.I.03.320 | 100% |  | 2025-03-03 | 2025-03-07 |  |  | 40 | R/I.OH |  | P2-5 |  | R/I.OH |  |  | Harris |  | P2.B2.01.010 |  |
| P2.L2.INT.N.1040 |  | Fireproof Interstitial Steel / L2 / North Int | 5d | 2025-02-13 A | 2025-03-01 A | P2.L2.INT.N.1020, P2.L2.INT.N.1030, P2.L2.INT.N.1010 | 100% |  | 2025-03-17 | 2025-03-21 |  |  | 40 | SPRAY |  | P2-5 |  | SPRAY |  | AT49 |  |  | P2.1.09.81.140X10 |  |
| P2.L2.INT.N.1010 |  | Framing - Top Track / L2 / North Int | 5d | 2025-02-26 A | 2025-03-14 A | P2.L2.INT.S.1010, P2.L2.INT.N.1000 | 100% |  | 2025-03-17 | 2025-03-21 |  |  | 80 | GYP |  | P2-5 |  | GYP-1 |  |  |  |  | P2.B2.09.21.110 |  |
| P2.L2.INT.N.1020 |  | OH - Structural Supports (All Trades) / L2 / North Int | 5d | 2025-02-26 A | 2025-03-24 A | P2.L2.INT.N.1000 | 100% |  | 2025-03-10 | 2025-03-14 |  |  | 80 | R/I.OH |  | P2-5 |  | R/I.OH |  | AT24 | Harris |  | P2.B2.05.45.110 |  |
| P2.L2.INT.N.1030 |  | OH - MEPF - Hangers & Supports / L2 / North Int | 10d | 2025-02-26 A | 2025-03-24 A | P2.L2.INT.N.1000 | 100% |  | 2025-03-10 | 2025-03-21 |  |  | 80 | MEP |  | P2-5 |  | MEP-2 |  |  | Harris |  | P2.B2.20.05.410 |  |
| P2.L2.INT.N.2150 |  | OH - Quench Vent / L2 / North Int (1-2855) | 20d | 2025-03-31 A | 2025-04-21 A | P2.L2.INT.N.1040 | 100% |  | 2025-03-24 | 2025-04-18 |  |  | 80 | FIT |  | P2-5 |  | FIT-2 |  |  | Harris | 2 | P2.B2.23.20.410 |  |
| P2.L2.INT.N.1050 |  | In Wall - Electrical - Framing / L2 / North Int | 10d | 2025-04-01 A | 2025-04-14 A | P2.L2.INT.N.1070 SS | 100% |  | 2025-05-01 | 2025-05-14 |  |  | 80 | ELEC |  | P2-5 |  | ELEC-2 |  |  |  |  | P2.B2.26.05.610 |  |
| P2.L2.INT.N.1060 |  | In Wall - Backing/Blocking/Supports / L2 / North Int | 10d | 2025-04-01 A | 2025-04-14 A | P2.L2.INT.N.1070 SS | 100% |  | 2025-05-01 | 2025-05-14 |  |  | 80 | R/I.IW |  | P2-5 |  | R/I.IW |  |  |  |  | P2.B2.09.21.510 |  |
| P2.L2.INT.N.1070 |  | Framing - Perimeter Studs and Door Frames / L2 / North Int | 10d | 2025-04-01 A | 2025-04-14 A | P2.L2.INT.N.1040 | 100% |  | 2025-05-01 | 2025-05-14 |  |  | 80 | GYP |  | P2-5 |  | GYP-1 |  |  |  |  | A1310 |  |
| P2.L2.INT.N.1130 |  | OH - Fire Suppression / L2 / North Int | 10d | 2025-04-01 A | 2025-04-11 A | P2.L2.INT.N.1030, P2.L2.INT.N.1040 | 100% |  | 2025-06-03 | 2025-06-16 |  |  | 80 | FP |  | P2-5 |  | FP-1 |  |  |  | 1 | P2.B2.21.13.210 |  |
| P2.L2.INT.N.1170 |  | Set & Connect - Mech Equipment / L2 / North Int | 15d | 2025-04-01 A | 2025-04-21 A | P2.L2.INT.N.1040 | 100% |  | 2025-05-01 | 2025-05-21 |  |  | 80 | HVAC |  | P2-5 |  | HVAC |  |  | Harris |  |  |  |
| P2.L2.INT.N.1160 |  | OH - Electrical - 480/277v Distribution / L2 / North Int | 20d | 2025-04-02 A | 2025-06-18 A | P2.L2.INT.N.1120 FF+2d, P2.L2.INT.N.1100 FF+2d, P2.L2.INT.N.1030, P2.L2.INT.N.1040 | 100% |  | 2025-05-19 | 2025-06-16 |  |  | 80 | ELEC | TS | P2-5 | TS | ELEC-2 |  |  |  | 1 | P2.B2.26.05.210 |  |
| P2.L2.INT.N.1150 |  | OH - Plumbing Piping (High) / L2 / North Int | 15d | 2025-04-14 A | 2025-04-30 A | P2.L2.INT.N.1030, P2.L2.INT.N.1040, P2.L2.N.1070 | 100% |  | 2025-05-27 | 2025-06-16 |  |  | 80 | PLMB |  | P2-5 |  | PLMB |  |  | Harris | 1 | P2.B2.22.14.210 |  |
| P2.L2.INT.N.2110 |  | OH - Plumbing Piping (Low) / L2 / North Int | 15d | 2025-04-14 A | 2025-05-02 A | P2.L2.INT.N.1150 | 100% |  | 2025-06-17 | 2025-07-08 |  |  | 80 | PLMB |  | P2-5 |  | PLMB |  |  | Harris | 1 | P2.B2.22.14.210 |  |
| P2.L2.INT.N.1140 |  | OH - Hang Duct - HP Mains / L2 / North Int | 20d | 2025-04-21 A | 2025-05-30 A | P2.L2.INT.S.1140, P2.L2.INT.N.1030, P2.L2.INT.N.1040 | 100% |  | 2025-05-16 | 2025-06-13 |  |  | 80 | HVAC |  | P2-5 |  | HVAC |  |  | Harris | 1 | P2.B2.23.30.210 |  |
| P2.L2.INT.N.1190 |  | OH - Electrical - 208/120v Branch / L2 / North Int | 10d | 2025-04-21 A | 2025-05-27 A | P2.L2.INT.N.1160 | 100% |  | 2025-06-17 | 2025-06-30 |  |  | 80 | ELEC |  | P2-5 |  | ELEC-2 |  |  |  | 2 | P2.B2.26.05.310 |  |
| P2.L2.INT.N.2130 |  | OH - Quench Vent / L2 / North Int (1-2835) | 20d | 2025-04-29 A | 2025-05-28 A | P2.L2.INT.N.1030, P2.L2.INT.N.2150 | 100% |  | 2025-05-30 | 2025-06-26 |  |  | 80 | FIT |  | P2-5 |  | FIT-2 |  |  | Harris | 2 | P2.B2.23.20.410 |  |
| P2.L2.INT.N.1180 |  | OH - HVAC Piping / L2 / North Int | 20d | 2025-05-01 A | 2025-05-29 A | P2.L2.INT.N.1030, P2.L2.INT.N.1130, P2.L2.INT.N.1040 | 100% |  | 2025-06-02 | 2025-06-27 |  |  | 80 | FIT |  | P2-5 |  | FIT-2 |  |  | Harris | 2 | P2.B2.23.20.410 |  |
| P2.L2.INT.N.1220 |  | OH - Plumbing - Test / L2 / North Int | 10d | 2025-05-19 A | 2025-05-30 A | P2.L2.INT.N.2110 | 100% |  | 2025-06-04 | 2025-06-17 |  |  | 80 | PLMB |  | P2-5 |  | PLMB |  |  | Harris | 2 | P2.B2.22.14.310 |  |
| P2.L2.INT.N.1210 |  | OH - DALT - HP Mains / L2 / North Int | 15d | 2025-05-30 A | 2025-06-19 A | P2.L2.INT.N.1140 | 100% |  | 2025-06-18 | 2025-07-09 |  |  | 80 | TAB | TS | P2-5 | TS | TAB-1 |  |  | Harris | 2 | P2.B2.23.30.310 |  |
| P2.L2.INT.N.2100 |  | OH - MRI Piping / L2 / North Int | 20d | 2025-06-02 A | 2025-06-27 A | P2.L2.INT.N.1150, P2.L2.INT.N.1130 | 100% |  | 2025-07-01 | 2025-07-29 |  |  | 80 | FIT | TS | P2-5 | TS | FIT-2 |  |  | Harris | 2 | P2.B2.23.20.410 |  |
| P2.L2.INT.N.1230 |  | OH - Insulate HP Duct / L2 / North Int | 10d | 2025-06-16 A | 2025-07-11 A | P2.L2.INT.N.1210 | 100% |  | 2025-07-22 | 2025-08-04 |  |  | 80 | INSUL | TS | P2-5 | TS | INSUL-3 |  |  | Harris | 3 | P2.B2.23.07.310 |  |
| P2.L2.INT.N.1090 |  | Hang-Tape-Finish - Walls and Hard Lid Ceilings / L2 / North Int | 10d | 2025-06-30 A | 2025-07-18 A | P2.L2.INT.N.1080 | 100% |  | 2025-07-09 | 2025-07-22 |  |  | 80 | GYP | TS | P2-5 | TS | GYP-1 |  |  |  |  | P2.B2.09.21.710 |  |
| P2.L2.INT.N.2170 |  | OH - Quench Vent / L2 / North Int (1-2865) | 15d | 2025-06-30 A | 2025-07-15 A | P2.L2.INT.N.2090 | 100% |  | 2025-07-30 | 2025-08-19 |  |  | 80 | FIT | TS | P2-5 | TS | FIT-2 |  |  | Harris | 2 | P2.B2.23.20.410 |  |
| P2.L2.INT.N.2090 |  | OH - Quench Vent / L2 / North Int (1-2815) | 20d | 2025-07-16 A | 2025-08-14 A | P2.L2.INT.N.2130 | 100% |  | 2025-08-01 | 2025-08-28 |  |  | 80 | FIT | TS | P2-5 | TS | FIT-2 |  |  | Harris | 2 | P2.B2.23.20.410 |  |
| P2.L2.INT.N.1100 |  | Spray/Seal/Firestop - Head of Wall / L2 / North Int | 5d | 2025-07-21 A | 2025-07-25 A | P2.L2.INT.N.1090 | 100% |  | 2025-08-20 | 2025-08-26 |  |  | 40 | FIRSAFE | TS | P2-5 | TS | FIRSAFE |  | AT47 |  | To Finishes - Paint | P2.B2.07.84.310 |  |
| P2.L2.INT.N.1320 |  | OH - Conduit - Low Volt - BAS/Controls / L2 / North Int | 10d | 2025-07-30 A | 2025-08-15 A | P2.L2.INT.N.1300 | 100% |  | 2025-08-29 | 2025-09-12 |  |  | 80 | BAS | TS | P2-5 | TS | BAS-1 |  |  | Harris | 5 |  |  |
| P2.L2.INT.N.1330 |  | OH - Conduit - Low Volt - Fire Alarm / L2 / North Int | 10d | 2025-07-30 A | 2025-08-15 A | P2.L2.INT.N.1100 | 100% |  | 2025-08-29 | 2025-09-12 |  |  | 80 | FA | TS | P2-5 | TS | FA-1 |  |  |  | 5 |  |  |
| P2.L2.INT.N.1340 |  | OH - Conduit - Low Volt - Telecom / L2 / North Int | 10d | 2025-07-30 A | 2025-11-26 A | P2.L2.INT.N.1100 | 100% |  | 2025-08-29 | 2025-09-12 |  |  | 80 | ELEC | TS | P2-5 | TS | ELEC-2 |  |  |  | 5 |  |  |
| P2.L2.INT.N.1350 |  | OH - Conduit - Low Volt - Security / L2 / North Int | 10d | 2025-07-30 A | 2025-11-26 A | P2.L2.INT.N.1300 | 100% |  | 2025-08-29 | 2025-09-12 |  |  | 80 | ELEC | TS | P2-5 | TS | ELEC-2 |  |  |  | 5 |  |  |
| P2.L2.INT.N.1260 |  | OH - Insulate Plumbing / L2 / North Int | 10d | 2025-08-01 A | 2025-08-14 A | P2.L2.INT.N.1220 | 100% |  |  |  |  |  | 80 | INSUL | TS | P2-5 | TS | INSUL-3 |  |  | Harris | 3 | P2.B2.22.07.510 |  |
| P2.L2.INT.N.2120 |  | OH - Quench Vent / L2 / North Int (1-2805) | 15d | 2025-08-01 A | 2025-08-20 A | P2.L2.INT.N.2140 | 100% |  | 2025-09-29 | 2025-10-17 |  |  | 80 | FIT | TS | P2-5 | TS | FIT-2 |  |  | Harris | 2 | P2.B2.23.20.410 |  |
| P2.L2.INT.N.2140 |  | OH - Quench Vent / L2 / North Int (1-2825) | 15d | 2025-08-01 A | 2025-08-20 A | P2.L2.INT.N.2160 | 100% |  | 2025-09-08 | 2025-09-26 |  |  | 80 | FIT | TS | P2-5 | TS | FIT-2 |  |  | Harris | 2 | P2.B2.23.20.410 |  |
| P2.L2.INT.N.2160 |  | OH - Quench Vent / L2 / North Int (1-2845) | 15d | 2025-08-01 A | 2025-08-20 A | P2.L2.INT.N.2170 | 100% |  | 2025-08-15 | 2025-09-05 |  |  | 80 | FIT | TS | P2-5 | TS | FIT-2 |  |  | Harris | 2 | P2.B2.23.20.410 |  |
| P2.L2.INT.N.1080 |  | AHJ Inspections - Wall Close In / | 5d | 2025-08-11 A | 2025-08-11 A | P2.L2.INT.N.1050 FF, P2.L2.INT.N.1060 FF, P2.L2.INT.N.1070 | 100% |  | 2025-08-01 | 2025-08-07 |  |  | 40 | FM | TS | P2-5 | TS | FM |  |  |  |  | P2.B2.01.43.110 |  |
| P2.L2.INT.N.1120 |  | Paint Prime & 1st Coat / L2 / North Int | 5d | 2025-08-18 A | 2025-08-30 A | P2.L2.INT.N.1100 SS | 100% |  | 2025-08-08 | 2025-08-14 |  |  | 40 | PAINT | TS | P2-5 | TS | PAINT-1 |  |  |  |  |  |  |
| P2.L2.INT.N.1175 |  | Set & Connect - Elect Panels and Equipment / L2 / North Int | 5d | 2025-09-22 A | 2025-09-27 A | P2.L2.INT.N.1100, P2.L2.INT.N.1120 | 100% |  | 2025-10-01 | 2025-10-07 |  |  | 40 | ELEC | TS | P2-5 | TS | ELEC-2 |  |  |  |  |  | O |
| P2.L2.INT.N.1240 |  | OH - Hang Duct - LP Branch / L2 / North Int | 10d | 2025-09-29 A | 2025-11-12 A | P2.L2.INT.N.1210 | 100% |  | 2025-10-01 | 2025-10-14 |  |  | 80 | HVAC | TS | P2-5 | TS | HVAC |  |  | Harris | 3 | P2.B2.23.30.410 |  |
| P2.L2.INT.N.1250 |  | OH - HVAC Piping - Test / L2 / North Int | 9d | 2025-10-27 A | 2025-11-26 A | P2.L2.INT.N.1180, P2.L2.INT.N.2100 | 100% |  | 2025-10-01 | 2025-10-13 |  |  | 80 | FIT | TS | P2-5 | TS | FIT-2 |  |  | Harris | 3 | P2.B2.23.20.510 |  |
| P2.L2.INT.N.1200 |  | OH - Electrical - Equip Tie In / L2 / North Int | 10d | 2025-12-01 A | 2026-04-14 | P2.L2.INT.N.1160, P2.L2.INT.N.1170, P2.L2.INT.N.1175 |  | 10d | 2026-01-02 | 2026-01-15 | 125d | 0d | 80 | ELEC | TS | P2-5 | TS | ELEC-2 |  |  |  | 4 | P2.B2.26.05.410 | O |
| P2.L2.INT.N.1300 |  | OH - Insulate HVAC Pipe / L2 / North Int | 10d | 2025-12-15 A | 2025-12-19 A | P2.L2.INT.N.1230, P2.L2.INT.N.1250 | 100% |  | 2026-01-02 | 2026-01-15 |  |  | 80 | INSUL | TS | P2-5 | TS | INSUL-3 |  |  | Harris | 4 | P2.B2.22.07.610 | O |
| P2.L2.INT.N.1360 |  | Pull Wire - Low Volt - BAS/Controls / L2 / North Int | 10d | 2026-01-05 A | 2026-02-27 A | P2.L2.INT.N.1320 | 100% |  | 2026-03-06 | 2026-03-19 |  |  | 80 | BAS | TS | P2-5 | TS | BAS-1 |  |  | Harris | To Trim Finishes |  |  |
| P2.L2.INT.N.1280 |  | Pull Wire - Electrical - 480/277v Distribution / L2 / North Int | 10d | 2026-03-16 A | 2026-03-27 A | P2.L2.INT.N.1160 | 100% |  |  |  |  |  | 80 | ELEC | TS | P2-5 | TS | ELEC-2 |  |  |  | To Trim Devices & Term Panel |  | O |
| P2.L2.INT.N.1270 |  | Pull Wire - Electrical - 208/120v Branch & Equip / L2 / North Int | 20d | 2026-03-23 A | 2026-03-27 A | P2.L2.INT.N.1190, P2.L2.INT.N.1050 | 100% |  | 2026-03-16 | 2026-04-10 |  |  | 80 | ELEC | TS | P2-5 | TS | ELEC-2 |  |  |  | To Trim Devices & Term Panel |  | O |
| P2.L2.INT.N.1110 |  | Firestop - Thru Wall / L2 / North Int | 5d | 2026-03-30 A | 2026-04-07 | P2.L2.INT.N.2150, P2.L2.INT.N.2160, P2.L2.INT.N.2170, P2.L2.INT.N.2110, P2.L2.INT.N.2120, P2.L2.INT.N.2130, P2.L2.INT.N.2140, P2.L2.INT.N.2090, P2.L2.INT.N.2100, P2.L2.INT.N.1350, P2.L2.INT.N.1320, P2.L2.INT.N.1330, P2.L2.INT.N.1340, P2.L2.INT.N.1120 SS |  | 5d | 2026-03-16 | 2026-03-20 | 140d | 23d | 40 | FIRESTO | TS | P2-5 | TS | FIRESTO |  | AT48 |  | To Finishes - Paint | P2.B2.07.84.210 | O |
| P2.L2.INT.N.1290 |  | OH - HVAC Piping - Equip Tie In / L2 / North Int | 10d | 2026-03-30 A | 2026-05-08 | P2.L2.INT.N.1170, P2.L2.INT.N.1250, CX.B2.HYDR.1000 | 20% | 8d | 2026-03-30 | 2026-04-10 | 117d | 0d | 80 | FIT | TS | P2-5 | TS | FIT-2 |  |  | Harris |  | P2.B2.23.20.610 |  |
| P2.L2.INT.N.1310 |  | OH - Insulate LP Duct / L2 / North Int | 10d | 2026-03-30 A | 2026-04-10 | P2.L2.INT.N.1240 | 20% | 8d | 2026-03-02 | 2026-03-13 | 137d | 20d | 80 | INSUL | TS | P2-5 | TS | INSUL-3 |  |  | Harris | 4 | P2.B2.23.07.410 | O |
| P2.L2.INT.N.1370 |  | Pull Wire - Low Volt - Fire Alarm / L2 / North Int | 10d | 2026-03-30 A | 2026-04-10 | P2.L2.INT.N.1090, P2.L2.INT.N.1330 | 20% | 8d | 2026-03-16 | 2026-03-27 | 137d | 20d | 80 | FA | TS | P2-5 | TS | FA-1 |  |  |  | To Trim Finishes |  | O |
| P2.L2.INT.N.1390 |  | Pull Wire - Low Volt - Security / L2 / North Int | 10d | 2026-04-01 | 2026-04-14 | P2.L2.INT.N.1350 |  |  |  |  | 135d | 18d | 80 | LOWVOLT | TS | P2-5 | TS | LOWVOLT-1 |  |  |  | To Trim Finishes |  | O |
| P2.L2.INT.N.1380 |  | Pull Wire - Low Volt - Telecom / L2 / North Int | 10d | 2026-04-15 | 2026-04-28 | P2.L2.INT.N.1090, P2.L2.INT.N.1340, P2.L2.INT.N.1200 |  |  |  |  | 125d | 8d | 80 | CIT | TS | P2-5 | TS | CIT |  |  |  | To Trim Finishes |  | O |
| P2.L2.INT.N.1400 |  | Trades Inspect & Verify R/I Work Completed to Specs / L2 / North Int | 2d | 2026-05-11 | 2026-05-12 | P2.L2.INT.N.1110, P2.L2.INT.N.1390, P2.L2.INT.N.1280, P2.L2.INT.N.1270, P2.L2.INT.N.1360, P2.L2.INT.N.1370, P2.L2.INT.N.1380, P2.L2.INT.N.1260, P2.L2.INT.N.1290, P2.L2.INT.N.1310 |  |  |  |  | 117d | 0d | 16 | T | TS | P2-5 | TS | T | ! |  |  | To Finishes |  |  |

| ID | WBS | Activity | Type | Duration | Start | Finish | Predecessors | Complete | Planned start | Planned finish | Total float | Free float | Temp Orig Dur | Resp / SRLM | 744 | PHASE | RESP UPD | RESP / Trade | *NIH Resp Check* | Testing Type | Z.RESP | Pick | Act ID Temp | Update Status |
| --- | --- | --- | --- | --- | --- | --- | --- | --- | --- | --- | --- | --- | --- | --- | --- | --- | --- | --- | --- | --- | --- | --- | --- | --- |
|  | N | **Finishes - North Interstitial / 2-2855** |  |  | 2026-05-13 | 2026-07-16 |  |  |  |  |  |  |  |  |  |  |  |  |  |  |  |  |  |  |
| P2.L2.INT.N.2270 |  | Flooring Prep - Epoxy Floors / L2 / North Int |  | 7d | 2026-05-13 | 2026-05-21 | BP7.096.3.200, P2.L2.INT.N.1400 |  |  |  | 151d | 0d | 80 | EPOXYF | TS | P2-5 | TS | EPOXYF |  |  |  |  |  |  |
| P2.L2.INT.N.2000 |  | Flooring - Epoxy Floors / L2 / North Int |  | 3d | 2026-05-22 | 2026-05-27 | P2.L2.INT.N.2270 |  |  |  | 151d | 0d | 80 | EPOXYF | TS | P2-5 | TS | EPOXYF |  |  |  |  |  |  |
| P2.L2.INT.N.2010 |  | Paint - Finish Coat / L2 / North Int |  | 5d | 2026-05-28 | 2026-06-03 | P2.L2.INT.N.2000 |  |  |  | 151d | 0d | 40 | PAINT | TS | P2-5 | TS | PAINT-1 | ! |  |  |  |  |  |
| P2.L2.INT.N.2020 |  | Doors & Hardware / L2 / North Int |  | 5d | 2026-05-28 | 2026-06-03 | P2.L2.INT.N.2000 |  |  |  | 151d | 0d | 40 | DFH | TS | P2-5 | TS | DFH |  | AT29 |  |  |  |  |
| P2.L2.INT.N.2030 |  | Trim All MEP Finishes / L2 / North Int |  | 5d | 2026-06-04 | 2026-06-10 | P2.L2.INT.N.2010, P2.L2.INT.N.2020 |  |  |  | 151d | 0d | 40 | MEP | TS | P2-5 | TS | MEP-2 |  |  | Harris |  |  |  |
| P2.L2.INT.N.2040 |  | Building Signage / L2 / North Int |  | 5d | 2026-06-04 | 2026-06-10 | P2.L2.INT.N.2010 |  |  |  | 151d | 0d | 40 | SIGN | TS | P2-5 | TS | SIGN |  |  |  |  |  |  |
| P2.L2.INT.N.2050 |  | Rough Clean / L2 / North Int |  | 5d | 2026-06-11 | 2026-06-17 | P2.L2.INT.N.2040, P2.L2.INT.N.2030 |  |  |  | 151d | 0d | 40 | FCLEAN | TS | P2-5 | TS | FCLEAN |  |  |  |  |  |  |
| P2.L2.INT.N.2060 |  | Prepare Punchlist / L2 / North Int |  | 5d | 2026-06-18 | 2026-06-24 | P2.L2.INT.N.1400, P2.L2.INT.N.2050 |  |  |  | 151d | 0d | 40 | QC | TS | P2-5 | TS | QC |  |  |  |  |  |  |
| P2.L2.INT.N.2070 |  | Correct Punchlist / L2 / North Int |  | 10d | 2026-06-25 | 2026-07-09 | P2.L2.INT.N.2060 FF, P2.L2.INT.N.2060 |  |  |  | 151d | 0d | 80 | FINISH | TS | P2-5 | TS | FINISH |  |  |  |  |  |  |
| P2.L2.INT.N.2080 |  | Final Clean / L2 / North Int |  | 5d | 2026-07-10 | 2026-07-16 | P2.L2.INT.N.2070 FF, P2.L2.INT.N.2070 |  |  |  | 151d | 163d | 40 | FCLEAN |  | P2-5 | TS | FCLEAN |  |  |  | To QC |  |  |
|  | 1 | **MECHANICAL TOWERS / LEVEL 2** |  |  | 2025-03-18 | 2026-05-01 |  |  |  |  |  |  |  |  |  |  |  |  |  |  |  |  |  |  |
|  | 4 | **South Mechanical Tower (5K SF) / Rough In & Finish / Level 2** |  |  | 2025-04-14 | 2026-05-01 |  |  |  |  |  |  |  |  |  |  |  |  |  |  |  |  |  |  |
| P2.L2.SMT.1020 |  | In Wall - Electrical - CMU / L2 - S. Mech Tower |  | 10d | 2025-04-14 A | 2025-04-18 A | P2.L2.SMT.1010 SS | 100% | 2025-07-31 | 2025-08-13 |  |  | 80 | ELEC |  | P2-5 |  | ELEC-2 |  |  |  |  | P2.B2.26.05.510 |  |
| P2.L2.SMT.1030 |  | In Wall - Mech/Plumbing - CMU / L2 - S. Mech Tower |  | 10d | 2025-04-14 A | 2025-04-18 A | P2.L2.SMT.1010 SS | 100% | 2025-07-31 | 2025-08-13 |  |  | 80 | PLMB |  | P2-5 |  | PLMB |  |  | Harris |  | P2.B2.22.05.310 |  |
| P2.L2.SMT.1070 |  | Set & Connect - Mech Equipment / L2 - S. Mech Tower |  | 10d | 2025-04-22 A | 2025-05-22 A | BP1.237.3.200, P2.L2.INT.S.1170 | 100% | 2025-05-22 | 2025-06-05 |  |  | 80 | HVAC |  | P2-5 |  | HVAC |  |  | Harris |  |  |  |
| P2.L2.SMT.1000 |  | Insulation - Exterior Wall Assembly / L2 - S. Mech Tower |  | 5d | 2025-06-18 A | 2025-07-08 A | P2.FAC.2.Z1.140 | 100% | 2025-07-09 | 2025-07-15 |  |  | 40 | INSUL | TS | P2-5 | TS | INSUL-1 |  |  |  |  |  |  |
| P2.L2.SMT.1080 |  | Set & Connect - Elect Panels and Equipment / L2 - S. Mech Tower |  | 5d | 2025-08-15 A | 2025-09-12 A | P2.L2.SMT.1070 | 100% | 2025-09-15 | 2025-09-19 |  |  | 40 | ELEC | TS | P2-5 | TS | ELEC-2 |  |  |  |  |  | O |
| P2.L2.SMT.1105 |  | HVAC Duct Connections to Shaft Riser / L2 - S. Mech Tower |  | 5d | 2025-09-10 A | 2025-09-15 A | P2.L2.SMT.1070 | 100% | 2025-12-01 | 2025-12-05 |  |  | 40 | HVAC | TS | P2-5 | TS | HVAC | ! |  | Harris |  |  |  |
| P2.L2.SMT.1100 |  | HVAC Piping Connections to Shaft Riser / L2 - S. Mech Tower |  | 5d | 2025-09-22 A | 2025-09-26 A | P2.L2.SMT.1070 | 100% | 2025-12-01 | 2025-12-05 |  |  | 40 | HVAC | TS | P2-5 | TS | HVAC | ! |  | Harris |  |  |  |
| P2.L2.SMT.1130 |  | Test/Inspect Duct & Piping / L2 - S. Mech Tower |  | 5d | 2025-09-22 A | 2025-09-26 A | P2.L2.SMT.1100, P2.L2.SMT.1105 | 100% | 2025-12-08 | 2025-12-12 |  |  | 40 | MECH | TS | P2-5 | TS | MECH-2 | ! |  | Harris |  |  |  |
| P2.L2.SMT.1010 |  | CMU - Lay Block / L2 - S. Mech Tower |  | 10d | 2025-09-25 A | 2025-10-03 A | P2.L1.S.1050, P2.L2.SMT.1000 | 100% | 2025-10-01 | 2025-10-14 |  |  | 80 | CMU | TS | P2-5 | TS | CMU |  | AT3 |  |  | P2.B2.04.20.210 |  |
| P2.L2.SMT.1090 |  | Panelboards, Interconnect Wiring, and Remaining Room Buildout of All Elec/FA Systems / L2 - S. Mech Tower |  | 10d | 2025-09-29 A | 2025-11-12 A | BP1.262.3.200, BP1.262.3.100, P2.L2.SMT.1080 | 100% | 2025-10-08 | 2025-10-21 |  |  | 80 | ELEC | TS | P2-5 | TS | ELEC-2 |  |  |  |  |  |  |
| P2.L2.SMT.1050 |  | CMU - Point & Patch / L2 - S. Mech Tower |  | 10d | 2025-10-03 A | 2025-10-06 A | P2.L2.SMT.1020, P2.L2.SMT.1040, P2.L2.SMT.1030 | 100% | 2025-10-20 | 2025-10-31 |  |  | 80 | CMU | TS | P2-5 | TS | CMU |  |  |  |  | P2.B2.04.20.310 |  |
| P2.L2.SMT.1040 |  | Paint - CMU Block Fill / L2 - S. Mech Tower |  | 10d | 2025-10-06 A | 2025-10-17 A | P2.L2.SMT.1010 | 100% |  |  |  |  | 80 | PAINT | TS | P2-5 | TS | PAINT-1 |  |  |  |  | P2.B2.09.97.110 |  |
| P2.L2.SMT.1060 |  | Paint Prime & 1st Coat - CMU / L2 - S. Mech Tower |  | 10d | 2025-10-06 A | 2025-10-17 A | P2.L2.SMT.1050 SS | 100% | 2025-10-20 | 2025-10-31 |  |  | 80 | PAINT | TS | P2-5 | TS | PAINT-1 |  |  |  |  | P2.B2.09.97.210 |  |
| P2.L2.SMT.1140 |  | Pull Wire - In From Distribution Panels / Out to Branch Circuits / L2 - S. Mech Tower |  | 5d | 2025-10-27 A | 2025-12-05 A | P2.L2.SMT.1090 | 100% | 2025-10-13 | 2025-10-17 |  |  | 40 | ELEC | TS | P2-5 | TS | ELEC-2 |  |  |  |  |  | O |
| P2.L2.SMT.1160 |  | Electrical Tie in to Equipment / L2 - S. Mech Tower |  | 5d | 2025-10-27 A | 2025-12-12 A | P2.L2.SMT.1140, P2.L2.SMT.1070 | 100% | 2025-10-20 | 2025-10-24 |  |  | 40 | ELEC | TS | P2-5 | TS | ELEC-2 |  |  |  |  |  | O |
| P2.L2.SMT.1120 |  | BAS - Equip Tie In / L2 - S. Mech Tower |  | 5d | 2025-12-01 A | 2025-12-05 A | P2.L2.SMT.1070, P2.L2.SMT.1060 | 100% | 2026-01-02 | 2026-01-08 |  |  | 40 | BAS | TS | P2-5 | TS | BAS-1 |  |  | Harris |  |  | O |
| P2.L2.SMT.1180 |  | Paint - Finish Coat / L2 - S. Mech Tower |  | 2d | 2025-12-01 A | 2025-12-02 A | P2.L2.SMT.1060 | 100% | 2026-01-16 | 2026-01-19 |  |  | 16 | PAINT | TS | P2-5 | TS | PAINT-1 |  |  |  |  |  | O |
| P2.L2.SMT.1110 |  | HVAC Piping - Equip Tie In / L2 - S. Mech Tower |  | 10d | 2026-03-02 A | 2026-03-13 A | P2.L2.SMT.1070 | 100% | 2026-03-30 | 2026-04-10 |  |  | 80 | FIT | TS | P2-5 | TS | FIT-2 |  |  | Harris |  | P2.B2.23.20.610 |  |
| P2.L2.SMT.1150 |  | Insulate HVAC / Plumbing Pipe / L2 - S. Mech Tower |  | 5d | 2026-03-02 A | 2026-03-06 A | P2.L2.SMT.1110, P2.L2.SMT.1130 | 100% | 2026-04-13 | 2026-04-17 |  |  | 40 | INSUL | TS | P2-5 | TS | INSUL-3 | ! |  | Harris |  |  |  |
| P2.L2.SMT.1170 |  | Test & Terminate / L2 - S. Mech Tower |  | 5d | 2026-04-01 | 2026-04-07 | P2.L2.SMT.1140 |  |  |  | 16d | 0d | 40 | ELEC | TS | P2-5 | TS | ELEC-2 |  |  |  |  |  | O |
| P2.L2.SMT.1190 |  | Trim All MEPF Finishes / L2 - S. Mech Tower |  | 2d | 2026-04-08 | 2026-04-09 | BP1.233.3.410, P2.L2.SMT.1180, P2.L2.SMT.1170 |  |  |  | 16d | 0d | 16 | MEP | TS | P2-5 | TS | MEP-2 |  |  | Harris |  |  | O |
| P2.L2.SMT.1250 |  | Prep Flooring - Epoxy Floors / L2 - S. Mech Tower |  | 2d | 2026-04-10 | 2026-04-13 | P2.L2.SMT.1190 |  |  |  | 16d | 0d | 16 | EPOXYF | TS | P2-5 | TS | EPOXYF |  |  |  |  |  | O |
| P2.L2.SMT.1200 |  | Flooring - Epoxy Floors / L2 - S. Mech Tower |  | 2d | 2026-04-14 | 2026-04-15 | P2.L2.SMT.1190, P2.L2.SMT.1250 |  |  |  | 16d | 0d | 16 | EPOXYF | TS | P2-5 | TS | EPOXYF |  |  |  |  |  | O |
| P2.L2.SMT.1210 |  | Doors & Hardware / L2 - S. Mech Tower |  | 2d | 2026-04-16 | 2026-04-17 | P2.L2.SMT.1200 |  |  |  | 16d | 0d | 16 | DFH | TS | P2-5 | TS | DFH |  | AT29 |  |  |  | O |
| P2.L2.SMT.1220 |  | Trades Inspect & Verify R/I Work Completed to Specs / L2 - S. Mech Tower |  | 5d | 2026-04-20 | 2026-04-24 | P2.L2.SMT.1120, P2.L2.SMT.1150, P2.L2.SMT.1210 |  |  |  | 16d | 0d | 40 | T | TS | P2-5 | TS | T |  |  |  |  |  |  |
| P2.L2.SMT.1240 |  | Energize Elec Panels - Lock Doors and Limit Access / L2 - S. Mech Tower |  | 5d | 2026-04-27 | 2026-05-01 | P2.L2.SMT.1220, CX.B2.SWGR.1010, CX.B2.MVEE.1010 |  |  |  | 16d | 0d | 40 | ELEC |  | P2-5 | TS | ELEC-2 |  |  |  |  |  |  |
| P2.L2.SMT.1230 |  | HVAC System Ready for Start Up / L2 - S. Mech Tower | milestone | 0d | 2026-05-01 | 2026-05-01 | P2.L2.SMT.1160 FF, P2.L2.SMT.1240 |  |  |  | 134d | 82d | 0 | MECH |  | P2-5 | TS | MECH-2 |  |  | Harris |  |  |  |

| ID | WBS | Activity | Type | Duration | Start | Finish | Predecessors | Complete | Planned start | Planned finish | Total float | Free float | Temp Orig Dur | Act ID Temp | Resp / SRLM | 744 | PHASE | Z.RESP | RESP UPD | RESP / Trade | Update Status | Testing Type | *NIH Resp Check* | Pick |
| --- | --- | --- | --- | --- | --- | --- | --- | --- | --- | --- | --- | --- | --- | --- | --- | --- | --- | --- | --- | --- | --- | --- | --- | --- |
|  | 8 | **East Mechanical Tower (3.5K SF) / Rough In & Finish / Level 2** |  |  | 2025-03-18 | 2026-04-30 |  |  |  |  |  |  |  |  |  |  |  |  |  |  |  |  |  |  |
| P2.L2.EMT.1250 |  | Quench Vent Piping / L2 - E. Mech Tower |  | 20d | 2025-03-18 A | 2025-04-09 A | P2.L2.EMT.1060 | 100% | 2025-10-29 | 2025-11-25 |  |  | 80 | P2.B2.23.20.610 | FIT | SM | P2-5 | Harris | SM | FIT-2 |  |  |  |  |
| P2.L2.EMT.1070 |  | Set & Connect - Mech Equipment / L2 - E. Mech Tower |  | 10d | 2025-03-24 A | 2025-03-26 A | P2.2.03.630 | 100% | 2025-03-17 | 2025-03-28 |  |  | 80 |  | HVAC |  | P2-5 | Harris |  | HVAC |  |  |  |  |
| P2.L2.EMT.1020 |  | In Wall - Electrical - CMU / L2 - E. Mech Tower |  | 10d | 2025-07-25 A | 2025-07-27 A | P2.L2.EMT.1010 SS | 100% | 2025-08-08 | 2025-08-21 |  |  | 80 | P2.B2.26.05.510 | ELEC | SM | P2-5 |  | SM | ELEC-2 |  |  |  |  |
| P2.L2.EMT.1030 |  | In Wall - Mech/Plumbing - CMU / L2 - E. Mech Tower |  | 10d | 2025-07-25 A | 2025-07-27 A | P2.L2.EMT.1010 SS | 100% | 2025-08-08 | 2025-08-21 |  |  | 80 | P2.B2.22.05.310 | PLMB | SM | P2-5 | Harris | SM | PLMB |  |  |  |  |
| P2.L2.EMT.1000 |  | Insulation - Exterior Wall Assembly / L2 - E. Mech Tower |  | 5d | 2025-08-11 A | 2025-08-15 A | P2.FAC.2.Z3.140 | 100% | 2025-08-01 | 2025-08-07 |  |  | 40 |  | INSUL | SM | P2-5 |  | SM | INSUL-1 |  |  |  |  |
| P2.L2.EMT.1010 |  | CMU - Lay Block / L2 - E. Mech Tower |  | 10d | 2025-09-08 A | 2025-09-12 A | P2.L1.N.1050, P2.L2.EMT.1000 | 100% | 2025-10-01 | 2025-10-14 |  |  | 80 | P2.B2.04.20.210 | CMU | SM | P2-5 |  | SM | CMU | O | AT3 |  |  |
| P2.L2.EMT.1040 |  | Paint - CMU Block Fill / L2 - E. Mech Tower |  | 10d | 2025-09-18 A | 2025-09-25 A | P2.L2.EMT.1010 | 100% | 2025-10-15 | 2025-10-28 |  |  | 80 | P2.B2.09.97.110 | PAINT | SM | P2-5 |  | SM | PAINT-1 | O |  |  |  |
| P2.L2.EMT.1050 |  | CMU - Point & Patch / L2 - E. Mech Tower |  | 10d | 2025-09-18 A | 2025-09-25 A | P2.L2.EMT.1040, P2.L2.EMT.1030, P2.L2.EMT.1020 | 100% | 2025-10-29 | 2025-11-11 |  |  | 80 | P2.B2.04.20.310 | CMU | SM | P2-5 |  | SM | CMU | O |  |  |  |
| P2.L2.EMT.1100 |  | HVAC Piping Connections to Shaft Riser / L2 - E. Mech Tower |  | 20d | 2025-09-22 A | 2025-09-26 A | P2.L2.EMT.1070 | 100% | 2025-12-19 | 2026-01-19 |  |  | 40 |  | HVAC | SM | P2-5 | Harris | SM | HVAC |  |  | ! |  |
| P2.L2.EMT.1105 |  | HVAC Duct Connections to Shaft Riser / L2 - E. Mech Tower |  | 5d | 2025-09-22 A | 2025-09-26 A | P2.L2.EMT.1070 | 100% | 2025-12-19 | 2025-12-26 |  |  | 40 |  | HVAC | SM | P2-5 | Harris | SM | HVAC |  |  | ! |  |
| P2.L2.EMT.1080 |  | Set & Connect - Elect Panels and Equipment / L2 - E. Mech Tower |  | 5d | 2025-09-29 A | 2025-10-31 A | P2.L2.EMT.1060 | 100% | 2025-11-12 | 2025-11-18 |  |  | 40 |  | ELEC | SM | P2-5 |  | SM | ELEC-2 |  |  |  |  |
| P2.L2.EMT.1130 |  | Test/Inspect Duct & Piping / L2 - E. Mech Tower |  | 5d | 2025-09-29 A | 2025-09-30 A | P2.L2.EMT.1105, P2.L2.EMT.1100 | 100% | 2026-01-20 | 2026-01-26 |  |  | 40 |  | MECH |  | P2-5 | Harris | SM | MECH-2 |  |  | ! |  |
| P2.L2.EMT.1060 |  | Paint Prime & 1st Coat - CMU / L2 - E. Mech Tower |  | 10d | 2025-10-01 A | 2025-10-10 A | P2.L2.EMT.1050 SS | 100% | 2025-10-01 | 2025-10-14 |  |  | 80 | P2.B2.09.97.210 | PAINT | SM | P2-5 |  | SM | PAINT-1 |  |  |  |  |
| P2.L2.EMT.1120 |  | BAS - Equip Tie In / L2 - E. Mech Tower |  | 5d | 2025-10-15 A | 2025-10-21 A | P2.L2.EMT.1070, P2.L2.EMT.1060 | 100% |  |  |  |  | 40 |  | BAS | SM | P2-5 | Harris | SM | BAS-1 |  |  |  |  |
| FRG.P2.L2.EMT.1010 |  | AHU Piping Install / L2 - E. Mech Tower - FRAGNET |  | 10d | 2025-11-14 A | 2025-11-28 A | FRG.P2.L1.EMT.1000 | 100% | 2025-12-12 | 2025-12-26 |  |  | 80 | P2.B2.23.20.410 | Harris Fragnet | TA | P2-5 | Harris | SM | FIT-2 |  |  |  | 2 |
| P2.L2.EMT.1140 |  | Pull Wire - In From Distribution Panels / Out to Branch Circuits / L2 - E. Mech Tower |  | 5d | 2025-11-15 A | 2025-11-30 A | P2.L2.EMT.1090 | 100% | 2025-12-15 | 2025-12-19 |  |  | 40 |  | ELEC | SM | P2-5 |  | SM | ELEC-2 |  |  |  |  |
| P2.L2.EMT.1110 |  | HVAC Piping - Equip Tie In / L2 - E. Mech Tower |  | 20d | 2026-01-01 A | 2026-01-30 A | P2.L2.EMT.1070 | 100% | 2026-03-30 | 2026-04-24 |  |  | 80 | P2.B2.23.20.610 | FIT | SM | P2-5 | Harris | SM | FIT-2 |  |  |  |  |
| P2.L2.EMT.1090 |  | Panelboards, Interconnect Wiring, and Remaining Room Buildout of All Elec/FA Systems / L2 - E. Mech Tower |  | 10d | 2026-03-02 A | 2026-03-27 A | BP1.262.3.100, BP1.262.3.200, P2.L2.EMT.1080 | 100% | 2026-03-02 | 2026-03-13 |  |  | 80 |  | ELEC | SM | P2-5 |  | SM | ELEC-2 | O |  |  |  |
| P2.L2.EMT.1150 |  | Insulate HVAC / Plumbing Pipe / L2 - E. Mech Tower |  | 5d | 2026-04-01 | 2026-04-07 | P2.L2.EMT.1110, P2.L2.EMT.1130 |  |  |  | 24d | 7d | 40 |  | INSUL |  | P2-5 | Harris | SM | INSUL-3 |  |  | ! |  |
| P2.L2.EMT.1160 |  | Electrical Tie in to Equipment / L2 - E. Mech Tower |  | 5d | 2026-04-01 | 2026-04-07 | P2.L2.EMT.1140, P2.L2.EMT.1070 |  |  |  | 152d | 17d | 40 |  | ELEC | SM | P2-5 |  | SM | ELEC-2 | O |  |  |  |
| P2.L2.EMT.1170 |  | Test & Terminate / L2 - E. Mech Tower |  | 5d | 2026-04-01 | 2026-04-07 | P2.L2.EMT.1140 |  |  |  | 18d | 0d | 40 |  | ELEC | SM | P2-5 |  | SM | ELEC-2 | O |  |  |  |
| P2.L2.EMT.1180 |  | Paint - Finish Coat / L2 - E. Mech Tower |  | 2d | 2026-04-08 | 2026-04-09 | P2.L2.EMT.1170 |  |  |  | 18d | 0d | 16 |  | PAINT | SM | P2-5 |  | SM | PAINT-1 | O |  |  |  |
| P2.L2.EMT.1200 |  | Flooring Prep - Epoxy Floors / L2 - E. Mech Tower |  | 3d | 2026-04-08 | 2026-04-10 | P2.L2.EMT.1080, P2.L1.EMT.1200 |  |  |  | 17d | 0d | 16 |  | EPOXYF | SM | P2-5 |  | SM | EPOXYF | O |  |  |  |
| P2.L2.EMT.1190 |  | Trim All MEPF Finishes / L2 - E. Mech Tower |  | 2d | 2026-04-10 | 2026-04-13 | BP1.233.3.410, P2.L2.EMT.1180 |  |  |  | 18d | 1d | 16 |  | MEP | SM | P2-5 | Harris | SM | MEP-2 | O |  |  |  |
| P2.L2.EMT.1260 |  | Flooring - Epoxy Floors / L2 - E. Mech Tower |  | 2d | 2026-04-13 | 2026-04-14 | P2.L2.EMT.1200 |  |  |  | 17d | 0d | 16 |  | EPOXYF | SM | P2-5 |  | SM | EPOXYF | O |  |  |  |
| P2.L2.EMT.1210 |  | Doors & Hardware / L2 - E. Mech Tower |  | 2d | 2026-04-15 | 2026-04-16 | P2.L2.EMT.1190, P2.L2.EMT.1260 |  |  |  | 17d | 0d | 16 |  | DFH | SM | P2-5 |  | SM | DFH | O | AT29 |  |  |
| P2.L2.EMT.1220 |  | Trades Inspect & Verify R/I Work Completed to Specs / L2 - E. Mech Tower |  | 5d | 2026-04-17 | 2026-04-23 | P2.L2.EMT.1210, P2.L2.EMT.1120, P2.L2.EMT.1150 |  |  |  | 17d | 0d | 40 |  | T |  | P2-5 |  | SM | T |  |  |  |  |
| P2.L2.EMT.1240 |  | Energize Elec Panels - Lock Doors and Limit Access / L2 - E. Mech Tower |  | 5d | 2026-04-24 | 2026-04-30 | P2.L2.EMT.1220, CX.B2.SWGR.1010, CX.B2.MVEE.1010, FRG.P2.L2.EMT.1010 |  |  |  | 17d | 0d | 40 |  | ELEC |  | P2-5 |  | SM | ELEC-2 |  |  |  |  |
| P2.L2.EMT.1230 |  | HVAC System Ready for Start Up / L2 - E. Mech Tower | milestone | 0d | 2026-04-30 | 2026-04-30 | P2.L2.EMT.1160 FF, P2.L2.EMT.1240, FRG.P2.L2.EMT.1010 |  |  |  | 135d | 83d | 0 |  | MECH |  | P2-5 | Harris | SM | MECH-2 |  |  |  |  |

| ID | WBS | Activity | Duration | Start | Finish | Predecessors | Complete | Remaining | Planned start | Planned finish | Total float | Free float | Temp Orig Dur | Act ID Temp | Resp / SRLM | PHASE | Z.RESP | RESP / Trade | Testing Type | Pick | 744 | RESP UPD | Update Status | **NEAR CRITICAL** |
| --- | --- | --- | --- | --- | --- | --- | --- | --- | --- | --- | --- | --- | --- | --- | --- | --- | --- | --- | --- | --- | --- | --- | --- | --- |
|  | L3 | **L3 / BUILDOUT** |  | 2025-01-27 | 2027-02-02 |  |  |  |  |  |  |  |  |  |  |  |  |  |  |  |  |  |  |  |
|  | L3 | **CORE & SUPPORT SPACES / LEVEL 3** |  | 2025-01-27 | 2027-02-02 |  |  |  |  |  |  |  |  |  |  |  |  |  |  |  |  |  |  |  |
|  | 2 | **ROUGH IN - Core & Support Spaces / Level 3** |  | 2025-01-27 | 2026-07-28 |  |  |  |  |  |  |  |  |  |  |  |  |  |  |  |  |  |  |  |
|  | Z11 | **South (12.5K SF) / Level 3** |  | 2025-01-27 | 2026-07-07 |  |  |  |  |  |  |  |  |  |  |  |  |  |  |  |  |  |  |  |
| P2.L3.S.1000 |  | Layout - All Trades / L3 / South | 5d | 2025-01-27 A | 2025-03-24 A | P2.4.03.610 | 100% |  | 2025-02-03 | 2025-02-07 |  |  | 40 | P2.B2.01.010 | R/I.OH | P2-5 | Harris | R/I.OH |  |  |  |  |  |  |
| P2.L3.S.1010 |  | Framing - Top Track / L3 / South | 10d | 2025-01-27 A | 2025-02-07 A | P2.L2.S.1010, P2.L3.S.1000 FF+3d | 100% |  | 2025-02-10 | 2025-02-21 |  |  | 80 | P2.B2.09.21.110 | GYP | P2-5 |  | GYP-1 |  |  |  |  |  |  |
| P2.L3.S.1090 |  | Framing - Priority Walls & Door Frames / L3 / South | 10d | 2025-02-11 A | 2025-02-28 A | P2.L3.S.1030, P2.L3.S.1010, P2.L2.S.1090 | 100% |  | 2025-03-24 | 2025-04-04 |  |  | 80 | P2.B2.09.21.310 | GYP | P2-5 |  | GYP-1 |  |  |  |  |  |  |
| P2.L3.S.1130 |  | Framing - Priority Walls - AHJ Inspections / | 5d | 2025-02-19 A | 2025-03-31 A | P2.L3.S.1090 | 100% |  | 2025-04-07 | 2025-04-11 |  |  | 80 | P2.B2.01.43.010 | FM | P2-5 |  | FM |  |  |  |  |  |  |
| P2.L3.S.1160 |  | Spray/Seal/Firestop - Head of Wall - Priority Walls / L3 / South | 5d | 2025-02-24 A | 2025-02-28 A | P2.L3.S.1140 FF | 100% |  | 2025-05-06 | 2025-05-12 |  |  | 80 | P2.B2.07.84.410 | FIRESTO | P2-5 |  | FIRESTO | AT47 |  |  |  |  |  |
| P2.L3.S.1020 |  | OH - Structural Supports (All Trades) / L3 / South | 5d | 2025-03-10 A | 2025-03-14 A | P2.L3.S.1000, BP1.149.3.100 | 100% |  |  |  |  |  | 80 | P2.B2.05.45.110 | R/I.OH | P2-5 | Harris | R/I.OH | AT24 |  |  |  |  |  |
| P2.L3.S.1030 |  | OH - MEPF - Hangers & Supports / L3 / South | 10d | 2025-03-10 A | 2025-03-21 A | P2.BIM.L3.40.140 FF, P2.L3.S.1000 | 100% |  |  |  |  |  | 80 | P2.B2.20.05.410 | MEP | P2-5 | Harris | MEP-2 |  |  |  |  |  |  |
| P2.L3.S.1140 |  | Hang/Tape/Finish - Priority Walls / L3 / South | 10d | 2025-03-28 A | 2025-04-18 A | P2.L3.S.1130, P2.L3.S.1020 | 100% |  | 2025-03-25 | 2025-04-07 |  |  | 80 | P2.B2.09.21.210 | GYP | P2-5 |  | GYP-1 |  |  |  |  |  |  |
| P2.L3.S.1170 |  | OH - Fire Suppression / L3 / South | 10d | 2025-04-01 A | 2025-04-16 A | P2.L3.S.1030 | 100% |  | 2025-05-20 | 2025-06-03 |  |  | 80 | P2.B2.21.13.210 | FP | P2-5 |  | FP-1 |  | 1 |  |  |  |  |
| P2.L3.S.1180 |  | OH - Plumbing Piping / L3 / South | 20d | 2025-04-10 A | 2025-05-29 A | P2.L3.S.1150, P2.L3.S.1030, P2.L2.S.1180 | 100% |  | 2025-05-20 | 2025-06-17 |  |  | 80 | P2.B2.22.14.210 | PLMB | P2-5 | Harris | PLMB |  | 1 |  |  |  |  |
| P2.L3.S.1150 |  | Paint Prime & 1st Coat - Priority Walls / L3 / South | 10d | 2025-05-01 A | 2025-05-14 A | P2.L3.S.1160 SS | 100% |  | 2025-06-02 | 2025-06-13 |  |  | 80 | P2.B2.09.91.110 | PAINT | P2-5 |  | PAINT-1 |  |  |  |  |  |  |
| P2.L3.S.1210 |  | OH - Hang Duct - HP Mains / L3 / South | 15d | 2025-05-08 A | 2025-07-31 A | P2.L3.S.1200, P2.L3.S.1030, P2.L2.S.1210 | 100% |  | 2025-06-23 | 2025-07-14 |  |  | 80 | P2.B2.23.30.210 | HVAC | P2-5 | Harris | HVAC |  | 1 | MLF | MLF |  |  |
| P2.L3.S.1220 |  | OH - HVAC Piping / L3 / South | 20d | 2025-05-08 A | 2025-05-29 A | P2.L3.S.1030, P2.L3.S.1170 | 100% |  | 2025-06-02 | 2025-06-27 |  |  | 80 | P2.B2.23.20.410 | FIT | P2-5 | Harris | FIT-2 |  | 2 |  |  |  |  |
| P2.L3.S.1190 |  | OH - Electrical - 480/277v Distribution / L3 / South | 10d | 2025-05-15 A | 2025-06-06 A | P2.L3.S.1150, P2.L3.S.1030 | 100% |  | 2025-06-16 | 2025-06-27 |  |  | 80 | P2.B2.26.05.210 | ELEC | P2-5 |  | ELEC-2 |  | 1 | MLF | MLF |  |  |
| P2.L3.S.1200 |  | Firestop - Thru Wall - Priority Walls / L3 / South | 5d | 2025-05-29 A | 2025-06-30 A | P2.L3.S.1150 | 100% |  | 2025-06-16 | 2025-06-20 |  |  | 80 | P2.B2.07.84.110 | FIRESTO | P2-5 |  | FIRESTO | AT48 |  | MLF | MLF |  |  |
| P2.L3.S.1230 |  | OH - Electrical - 208/120v Branch / L3 / South | 10d | 2025-05-29 A | 2025-07-15 A | P2.L3.S.1190 | 100% |  | 2025-06-30 | 2025-07-14 |  |  | 80 | P2.B2.26.05.310 | ELEC | P2-5 |  | ELEC-2 |  | 2 | MLF | MLF |  |  |
| P2.L3.S.1240 |  | OH - Plumbing - Test / L3 / South | 10d | 2025-05-29 A | 2025-07-28 A | P2.L3.S.1180 | 100% |  | 2025-06-23 | 2025-07-07 |  |  | 80 | P2.B2.22.14.310 | PLMB | P2-5 | Harris | PLMB |  | 2 | MLF | MLF |  |  |
| P2.L3.S.1300 |  | OH - Hang Duct - LP Branch / L3 / South | 10d | 2025-06-16 A | 2025-08-28 A | P2.L3.S.1260 | 100% |  | 2025-08-11 | 2025-08-22 |  |  | 80 | P2.B2.23.30.410 | HVAC | P2-5 | Harris | HVAC |  | 3 | MLF | MLF |  |  |
| P2.L3.S.1390 |  | OH - Conduit - Low Volt - Telecom / L3 / South | 10d | 2025-06-23 A | 2025-07-10 A | P2.L3.S.1350 | 100% |  | 2025-09-09 | 2025-09-22 |  |  | 80 |  | ELEC | P2-5 |  | ELEC-2 |  | 5 | MLF | MLF |  |  |
| P2.L3.S.1260 |  | OH - DALT - HP Mains / L3 / South | 10d | 2025-06-30 A | 2025-08-25 A | P2.L3.S.1210 | 100% |  | 2025-07-28 | 2025-08-08 |  |  | 80 | P2.B2.23.30.310 | TAB | P2-5 | Harris | TAB-1 |  | 2 | MLF | MLF |  |  |
| P2.L3.S.1280 |  | OH - Insulate Plumbing / L3 / South | 10d | 2025-07-16 A | 2025-07-29 A | P2.L3.S.1240 | 100% |  | 2025-08-15 | 2025-08-28 |  |  | 80 | P2.B2.22.07.510 | INSUL | P2-5 | Harris | INSUL-3 |  | 3 | MLF | MLF |  |  |
| P2.L3.S.1270 |  | OH - HVAC Piping - Test / L3 / South | 10d | 2025-07-23 A | 2025-08-18 A | P2.L3.S.1220 | 100% |  | 2025-09-02 | 2025-09-15 |  |  | 80 | P2.B2.23.20.510 | FIT | P2-5 | Harris | FIT-2 |  | 3 | MLF | MLF |  |  |
| P2.L3.S.1310 |  | OH - Set & Connect Mech Equipment / L3 / South | 10d | 2025-07-23 A | 2025-07-29 A | P2.L3.S.1260 | 100% |  | 2025-08-28 | 2025-09-11 |  |  | 80 | P2.B2.23.82.110 | HVAC | P2-5 | Harris | HVAC |  | 3 | MLF | MLF |  |  |
| P2.L3.S.1290 |  | OH - Insulate HP Duct / L3 / South | 10d | 2025-08-25 A | 2025-08-26 A | P2.L3.S.1260 | 100% |  | 2025-09-09 | 2025-09-22 |  |  | 80 | P2.B2.23.07.310 | INSUL | P2-5 | Harris | INSUL-3 |  | 3 | MLF | MLF |  |  |
| P2.L3.S.1370 |  | OH - Conduit - Low Volt - BAS/Controls / L3 / South | 10d | 2025-08-29 A | 2025-12-11 A | P2.L3.S.1340, P2.L3.S.1310 | 100% |  | 2025-09-16 | 2025-09-29 |  |  | 80 |  | BAS | P2-5 | Harris | BAS-1 |  | 5 | MLF | MLF | O |  |
| P2.L3.S.1320 |  | OH - Electrical - Equip Tie In / L3 / South | 10d | 2025-09-02 A | 2025-09-16 A | P2.L3.S.1310 | 100% |  | 2025-10-01 | 2025-10-14 |  |  | 80 | P2.B2.26.05.410 | ELEC | P2-5 |  | ELEC-2 |  | 4 | MLF | MLF | O |  |
| P2.L3.S.1380 |  | OH - Conduit - Low Volt - Fire Alarm / L3 / South | 10d | 2025-09-16 A | 2025-10-21 A | P2.L3.S.1350, P2.L3.S.1310 | 100% |  | 2025-10-15 | 2025-10-28 |  |  | 80 |  | FA | P2-5 |  | FA-1 |  | 5 | MLF | MLF |  |  |
| P2.L3.S.1340 |  | OH - Insulate HVAC Pipe / L3 / South | 10d | 2025-09-22 A | 2025-10-13 A | P2.L3.S.1270, P2.L3.S.1290 | 100% |  | 2025-10-01 | 2025-10-14 |  |  | 80 | P2.B2.22.07.610 | INSUL | P2-5 | Harris | INSUL-3 |  | 4 | MLF | MLF |  |  |
| P2.L3.S.1420 |  | Framing - Balance of Framing & Door Frames / L3 / South | 10d | 2025-12-08 A | 2025-12-15 A | P2.L3.S.1280, P2.L3.S.1390, P2.L1.LC.1420 | 100% |  | 2026-01-16 | 2026-01-29 |  |  | 80 | A1310 | GYP | P2-5 |  | GYP-1 |  |  | MLF | MLF | O |  |
| P2.L3.S.1430 |  | In Wall - Plumbing - Framing / L3 / South | 10d | 2025-12-30 A | 2026-01-28 A | P2.L3.S.1420 | 100% |  | 2026-01-30 | 2026-02-12 |  |  | 80 | P2.B2.22.05.410 | PLMB | P2-5 | Harris | PLMB |  |  | MLF | MLF | O |  |
| P2.L3.S.1440 |  | In Wall - Electrical - Framing / L3 / South | 10d | 2025-12-30 A | 2026-01-28 A | P2.L3.S.1230, P2.L3.S.1420 | 100% |  | 2026-01-30 | 2026-02-12 |  |  | 80 | P2.B2.26.05.610 | ELEC | P2-5 |  | ELEC-2 |  |  | MLF | MLF | O |  |
| P2.L3.S.1450 |  | In Wall - Backing/Blocking/Supports / L3 / South | 10d | 2025-12-30 A | 2026-01-28 A | P2.L3.S.1420 | 100% |  | 2026-01-30 | 2026-02-12 |  |  | 80 | P2.B2.09.21.510 | R/I.IW | P2-5 |  | R/I.IW |  |  | MLF | MLF | O |  |
| P2.L3.S.1350 |  | OH - Insulate LP Duct / L3 / South | 10d | 2026-01-02 A | 2026-01-15 A | P2.L3.S.1300 | 100% |  |  |  |  |  | 80 | P2.B2.23.07.410 | INSUL | P2-5 | Harris | INSUL-3 |  | 4 | MLF | MLF | O |  |
| P2.L3.S.1480 |  | Spray/Seal/Firestop - Head of Wall / L3 / South | 10d | 2026-03-03 A | 2026-03-14 A | P2.L3.S.1150 | 100% |  | 2026-06-04 | 2026-06-17 |  |  | 80 | P2.B2.07.84.310 | FIRSAFE | P2-5 |  | FIRSAFE | AT47 | To Finishes - Paint |  | MLF |  |  |
| P2.L3.S.1250 |  | Pull Wire - Electrical - 480/277v Distribution / L3 / South | 10d | 2026-03-09 A | 2026-03-27 A | P2.L3.S.1190, P2.3.HE.5959.1050, P2.3.HE.5966.1050, P2.3.HE.5968.1050 | 100% |  | 2026-03-02 | 2026-03-13 |  |  | 80 |  | ELEC | P2-5 |  | ELEC-2 |  | To Trim Devices & Term Panel | MLF | MLF | O |  |
| P2.L3.S.1330 |  | OH - HVAC Piping - Equip Tie In / L3 / South | 10d | 2026-03-11 A | 2026-05-05 | P2.L3.S.1270, P2.L3.S.1310, CX.B2.HYDR.1000 | 50% | 5d | 2026-03-30 | 2026-04-10 | 117d | 38d | 80 | P2.B2.23.20.610 | FIT | P2-5 | Harris | FIT-2 |  |  | MLF | MLF |  |  |
| P2.L3.S.1500 |  | Pull Wire - Low Volt - BAS/Controls / L3 / South | 10d | 2026-03-16 A | 2026-03-30 A | P2.L3.S.1370 | 100% |  | 2026-03-02 | 2026-03-13 |  |  | 80 |  | BAS | P2-5 | Harris | BAS-1 |  | To Trim Finishes |  | MLF |  |  |
| P2.L3.S.1360 |  | Pull Wire - Electrical - 208/120v Branch & Equip / L3 / South | 10d | 2026-04-01 | 2026-04-14 | P2.L3.S.1230, P2.L3.S.1320, P2.L3.S.1440 |  |  |  |  | 132d | 53d | 80 |  | ELEC | P2-5 |  | ELEC-2 |  | To Trim Devices & Term Panel | MLF | MLF |  |  |
| P2.L3.S.1400 |  | OH - Conduit - Low Volt - Security / L3 / South | 10d | 2026-04-01 | 2026-04-14 | P2.L3.S.1340 |  |  |  |  | 122d | 0d | 80 |  | ELEC | P2-5 |  | ELEC-2 |  | 5 | MLF | MLF | O |  |
| P2.L3.S.1410 |  | OH - Conduit - Low Volt - Medical Services/Nurse Call (?) / L3 / South | 10d | 2026-04-01 | 2026-04-14 | P2.L3.S.1350 |  |  |  |  | 122d | 0d | 80 |  | ELEC | P2-5 |  | ELEC-2 |  | 5 | MLF | MLF | O |  |
| P2.L3.S.1460 |  | AHJ Inspections - Wall Close In / L3 / South | 5d | 2026-04-01 | 2026-04-07 | P2.L3.S.1450, P2.L3.S.1430, P2.L3.S.1440 |  |  |  |  | 25d | 33d | 40 | P2.B2.01.43.110 | FM | P2-5 |  | FM |  |  | MLF | MLF |  |  |
| P2.L3.S.1510 |  | Pull Wire - Low Volt - Fire Alarm / L3 / South | 10d | 2026-04-01 | 2026-04-14 | P2.L3.S.1380 |  |  |  |  | 132d | 53d | 80 |  | FA | P2-5 |  | FA-1 |  | To Trim Finishes |  | MLF |  |  |
| P2.L3.S.1520 |  | Pull Wire - Low Volt - Telecom / L3 / South | 10d | 2026-04-01 | 2026-04-14 | P2.L3.S.1390 |  |  |  |  | 132d | 53d | 80 |  | CIT | P2-5 |  | CIT |  | To Trim Finishes |  | MLF |  |  |
| P2.L3.S.1530 |  | Pull Wire - Low Volt - Security / L3 / South | 10d | 2026-04-15 | 2026-04-28 | P2.L3.S.1400 |  |  |  |  | 122d | 43d | 80 |  | LOWVOLT | P2-5 |  | LOWVOLT-1 |  | To Trim Finishes |  | MLF |  |  |
| P2.L3.S.1540 |  | Pull Wire - Low Volt - Medical Services/Nurse Call (?) / L3 / South | 10d | 2026-04-15 | 2026-04-28 | P2.L3.S.1410 |  |  |  |  | 122d | 43d | 80 |  | LOWVOLT | P2-5 |  | LOWVOLT-1 |  | To Trim Finishes |  | MLF |  |  |
| P2.L3.S.1470 |  | Hang-Tape-Finish - Walls / L3 / South | 15d | 2026-05-26 | 2026-06-15 | P2.SUM.175, P2.L3.S.1460, P2.FAC.5.Z1.190, P2.MR.EMT.9030, P2.MR.EMT.1160, P2.B2.WC.1620, P2.B2.S.1470, P2.B2.N.1470, P2.B2.BR.2090 |  |  |  |  | -8d | 0d | 80 | P2.B2.09.21.710 | GYP | P2-5 |  | GYP-1 |  |  | MLF | MLF |  | 2.2 |
| P2.L3.S.1490 |  | Firestop - Thru Wall / L3 / South | 10d | 2026-06-16 | 2026-06-29 | P2.L3.S.1470 |  |  |  |  | 79d | 0d | 80 | P2.B2.07.84.210 | FIRESTO | P2-5 |  | FIRESTO | AT48 | To Finishes - Paint |  | MLF |  |  |
| P2.L3.S.1550 |  | Trades Inspect & Verify R/I Work Completed to Specs / L3 / South | 5d | 2026-06-30 | 2026-07-07 | P2.L3.S.1490, P2.L3.S.1480, P2.L3.S.1530, P2.L3.S.1250, P2.L3.S.1540, P2.L3.S.1360, P2.L3.S.1500, P2.L3.S.1510, P2.L3.S.1520, P2.L3.S.1330 |  |  |  |  | 79d | 15d | 40 |  | T | P2-5 |  | T |  |  |  | MLF |  |  |

| ID | WBS | Activity | Duration | Start | Finish | Predecessors | Complete | Remaining | Planned start | Planned finish | Total float | Free float | Temp Orig Dur | Act ID Temp | Resp / SRLM | PHASE | Z.RESP | RESP / Trade | Testing Type | Pick | 744 | RESP UPD | Update Status |
| --- | --- | --- | --- | --- | --- | --- | --- | --- | --- | --- | --- | --- | --- | --- | --- | --- | --- | --- | --- | --- | --- | --- | --- |
|  | Z111 | **North (15K SF) / Level 3** |  | 2025-02-24 | 2026-07-28 |  |  |  |  |  |  |  |  |  |  |  |  |  |  |  |  |  |  |
| P2.L3.N.1000 |  | Layout - All Trades / L3 / North | 5d | 2025-02-24 A | 2025-03-28 A | P2.4.03.630 | 100% |  | 2025-03-03 | 2025-03-07 |  |  | 40 | P2.B2.01.010 | R/I.OH | P2-5 | Harris | R/I.OH |  |  |  |  |  |
| P2.L3.N.1010 |  | Framing - Top Track / L3 / North | 10d | 2025-02-27 A | 2025-03-31 A | P2.L3.N.1000, P2.L2.N.1010 | 100% |  | 2025-03-10 | 2025-03-21 |  |  | 80 | P2.B2.09.21.110 | GYP | P2-5 |  | GYP-1 |  |  |  |  |  |
| P2.L3.N.1020 |  | OH - Structural Supports (All Trades) / L3 / North | 5d | 2025-03-06 A | 2025-03-12 A | P2.L3.N.1000 | 100% |  |  |  |  |  | 80 | P2.B2.05.45.110 | R/I.OH | P2-5 | Harris | R/I.OH | AT24 |  |  |  |  |
| P2.L3.N.1030 |  | OH - MEPF - Hangers & Supports / L3 / North | 10d | 2025-03-06 A | 2025-03-19 A | P2.L3.N.1000, P2.BIM.L3.40.140 | 100% |  |  |  |  |  | 80 | P2.B2.20.05.410 | MEP | P2-5 | Harris | MEP-2 |  |  |  |  |  |
| P2.L3.N.1090 |  | Framing - Priority Walls & Door Frames / L3 / North | 10d | 2025-03-28 A | 2025-04-25 A | P2.L3.N.1030, P2.L3.N.1010, P2.L2.N.1100 | 100% |  | 2025-03-20 | 2025-04-02 |  |  | 80 | P2.B2.09.21.310 | GYP | P2-5 |  | GYP-1 |  |  |  |  |  |
| P2.L3.N.1130 |  | Framing - Priority Walls - AHJ Inspections / L3 / North | 5d | 2025-04-09 A | 2025-04-29 A | P2.L3.N.1090 | 100% |  | 2025-05-08 | 2025-05-14 |  |  | 80 | P2.B2.01.43.010 | FM | P2-5 |  | FM |  |  |  |  |  |
| P2.L3.N.1170 |  | OH - Fire Suppression / L3 / North | 10d | 2025-04-09 A | 2025-04-23 A | P2.L3.N.1030 | 100% |  | 2025-06-06 | 2025-06-19 |  |  | 80 | P2.B2.21.13.210 | FP | P2-5 |  | FP-1 |  | 1 |  |  |  |
| P2.L3.N.1160 |  | Spray/Seal/Firestop - Head of Wall - Priority Walls / L3 / North | 5d | 2025-04-21 A | 2025-04-25 A | P2.L3.N.1130 | 100% |  | 2025-05-22 | 2025-05-29 |  |  | 80 | P2.B2.07.84.410 | FIRESTO | P2-5 |  | FIRESTO | AT47 |  |  |  |  |
| P2.L3.N.1140 |  | Hang/Tape/Finish - Priority Walls / L3 / North | 10d | 2025-04-23 A | 2025-05-30 A | P2.L3.N.1020, P2.L3.N.1130, P2.L3.N.1160 FF | 100% |  | 2025-05-15 | 2025-05-29 |  |  | 80 | P2.B2.09.21.210 | GYP | P2-5 |  | GYP-1 |  |  |  |  |  |
| P2.L3.N.1180 |  | OH - Plumbing Piping / L3 / North | 20d | 2025-05-05 A | 2025-05-16 A | P2.L3.N.1030 SS+5d, P2.L2.N.1070 | 100% |  | 2025-04-01 | 2025-04-28 |  |  | 80 | P2.B2.22.14.210 | PLMB | P2-5 | Harris | PLMB |  | 1 |  |  |  |
| P2.L3.N.1230 |  | OH - Electrical - 208/120v Branch / L3 / North | 10d | 2025-05-12 A | 2025-06-26 A | P2.L3.N.1190 | 100% |  | 2025-06-30 | 2025-07-14 |  |  | 80 | P2.B2.26.05.310 | ELEC | P2-5 |  | ELEC-2 |  | 2 | MLF | MLF |  |
| P2.L3.N.1190 |  | OH - Electrical - 480/277v Distribution / L3 / North | 10d | 2025-05-15 A | 2025-06-27 A | P2.L3.N.1030, P2.L3.N.1150 | 100% |  | 2025-06-16 | 2025-06-27 |  |  | 80 | P2.B2.26.05.210 | ELEC | P2-5 |  | ELEC-2 |  | 1 | MLF | MLF |  |
| P2.L3.N.1220 |  | OH - HVAC Piping / L3 / North | 20d | 2025-05-15 A | 2025-06-30 A | P2.L3.N.1030, P2.L3.N.1170 | 100% |  | 2025-06-02 | 2025-06-27 |  |  | 80 | P2.B2.23.20.410 | FIT | P2-5 | Harris | FIT-2 |  | 2 | MLF | MLF |  |
| P2.L3.N.1210 |  | OH - Hang Duct - HP Mains / L3 / North | 10d | 2025-05-21 A | 2025-06-30 A | P2.L3.N.1030, P2.L2.N.1060 | 100% |  | 2025-06-26 | 2025-07-10 |  |  | 80 | P2.B2.23.30.210 | HVAC | P2-5 | Harris | HVAC |  | 1 | MLF | MLF |  |
| P2.L3.N.1240 |  | OH - Plumbing - Test / L3 / North | 10d | 2025-05-27 A | 2025-07-31 A | P2.L3.N.1180 | 100% |  | 2025-06-24 | 2025-07-08 |  |  | 80 | P2.B2.22.14.310 | PLMB | P2-5 | Harris | PLMB |  | 2 | MLF | MLF |  |
| P2.L3.N.1150 |  | Paint Prime & 1st Coat - Priority Walls / L3 / North | 10d | 2025-06-04 A | 2025-06-18 A | P2.L3.N.1160 SS | 100% |  | 2025-07-01 | 2025-07-15 |  |  | 80 | P2.B2.09.91.110 | PAINT | P2-5 |  | PAINT-1 |  |  | MLF | MLF |  |
| P2.L3.N.1200 |  | Firestop - Thru Wall - Priority Walls / L3 / North | 5d | 2025-06-30 A | 2025-07-21 A | P2.L3.N.1150, P2.L3.N.1210 | 100% |  | 2025-07-17 | 2025-07-23 |  |  | 80 | P2.B2.07.84.110 | FIRESTO | P2-5 |  | FIRESTO | AT48 |  | MLF | MLF |  |
| P2.L3.N.1260 |  | OH - DALT - HP Mains / L3 / North | 10d | 2025-06-30 A | 2025-07-31 A | P2.L3.N.1210 | 100% |  | 2025-07-17 | 2025-07-30 |  |  | 80 | P2.B2.23.30.310 | TAB | P2-5 | Harris | TAB-1 |  | 2 | MLF | MLF |  |
| P2.L3.N.1270 |  | OH - HVAC Piping - Test / L3 / North | 5d | 2025-07-01 A | 2025-07-31 A | P2.L3.N.1220 | 100% |  | 2025-08-01 | 2025-08-07 |  |  | 80 | P2.B2.23.20.510 | FIT | P2-5 | Harris | FIT-2 |  | 3 | MLF | MLF |  |
| P2.L3.N.1280 |  | OH - Insulate Plumbing / L3 / North | 10d | 2025-07-15 A | 2025-07-25 A | P2.L3.N.1240, P2.L3.N.1200 | 100% |  | 2025-08-13 | 2025-08-26 |  |  | 80 | P2.B2.22.07.510 | INSUL | P2-5 | Harris | INSUL-3 |  | 3 | MLF | MLF |  |
| P2.L3.N.1290 |  | OH - Insulate HP Duct / L3 / North | 10d | 2025-07-16 A | 2025-07-29 A | P2.L3.N.1260 | 100% |  | 2025-08-15 | 2025-08-28 |  |  | 80 | P2.B2.23.07.310 | INSUL | P2-5 | Harris | INSUL-3 |  | 3 | MLF | MLF |  |
| P2.L3.N.1300 |  | OH - Hang Duct - LP Branch / L3 / North | 10d | 2025-07-21 A | 2025-08-28 A | P2.L3.N.1260 | 100% |  | 2025-08-15 | 2025-08-28 |  |  | 80 | P2.B2.23.30.410 | HVAC | P2-5 | Harris | HVAC |  | 3 | MLF | MLF |  |
| P2.L3.N.1340 |  | OH - Insulate HVAC Pipe / L3 / North | 10d | 2025-07-21 A | 2025-08-01 A | P2.L3.N.1290, P2.L3.N.1270 | 100% |  | 2025-09-09 | 2025-09-22 |  |  | 80 | P2.B2.22.07.610 | INSUL | P2-5 | Harris | INSUL-3 |  | 4 | MLF | MLF |  |
| P2.L3.N.1310 |  | OH - Set & Connect Mech Equipment / L3 / North | 10d | 2025-07-23 A | 2025-08-04 A | P2.L3.N.1260 | 100% |  | 2025-08-15 | 2025-08-28 |  |  | 80 | P2.B2.23.82.110 | HVAC | P2-5 | Harris | HVAC |  | 3 | MLF | MLF |  |
| P2.L3.N.1390 |  | OH - Conduit - Low Volt - Telecom / L3 / North | 10d | 2025-08-29 A | 2025-09-15 A | P2.L3.N.1350 | 100% |  | 2025-09-30 | 2025-10-13 |  |  | 80 |  | ELEC | P2-5 |  | ELEC-2 |  | 5 | MLF | MLF | O |
| P2.L3.N.1320 |  | OH - Electrical - Equip Tie In / L3 / North | 10d | 2025-09-02 A | 2025-09-16 A | P2.L3.N.1310 | 100% |  | 2025-10-08 | 2025-10-21 |  |  | 80 | P2.B2.26.05.410 | ELEC | P2-5 |  | ELEC-2 |  | 4 | MLF | MLF | O |
| P2.L3.N.1380 |  | OH - Conduit - Low Volt - Fire Alarm / L3 / North | 10d | 2025-09-23 A | 2025-10-13 A | P2.L3.N.1310, P2.L3.N.1350 | 100% |  | 2025-10-22 | 2025-11-04 |  |  | 80 |  | FA | P2-5 |  | FA-1 |  | 5 | MLF | MLF |  |
| P2.L3.N.1370 |  | OH - Conduit - Low Volt - BAS/Controls / L3 / North | 10d | 2025-12-01 A | 2025-12-12 A | P2.L3.N.1310, P2.L3.N.1340 | 100% |  | 2026-01-02 | 2026-01-15 |  |  | 80 |  | BAS | P2-5 | Harris | BAS-1 |  | 5 | MLF | MLF | O |
| P2.L3.N.1630 |  | Chair Carrier - In Wall Rough-in / L3 / North | 1d | 2025-12-29 A | 2025-12-29 A | P2.L3.N.1420 FF | 100% |  | 2026-01-29 | 2026-01-29 |  |  | 120 |  | LABCASE | P2-5 |  | LABCASE |  |  | MLF | MLF | O |
| P2.L3.N.1420 |  | Framing - Balance of Framing & Door Frames / L3 / North | 10d | 2025-12-30 A | 2026-01-28 A | P2.L3.N.1390, P2.L3.N.1280, P2.L1.LC.1420 | 100% |  | 2026-01-16 | 2026-01-29 |  |  | 80 | A1310 | GYP | P2-5 |  | GYP-1 |  |  | MLF | MLF | O |
| P2.L3.N.1440 |  | In Wall - Electrical - Framing / L3 / North | 10d | 2026-01-29 A | 2026-02-20 A | P2.L3.N.1420, P2.L3.N.1230, P2.L3.N.1630 | 100% |  | 2026-01-29 | 2026-02-11 |  |  | 80 | P2.B2.26.05.610 | ELEC | P2-5 |  | ELEC-2 |  |  | MLF | MLF | O |
| P2.L3.N.1450 |  | In Wall - Backing/Blocking/Supports / L3 / North | 10d | 2026-01-29 A | 2026-02-20 A | P2.L3.N.1420, P2.L3.N.1630 | 100% |  | 2026-01-29 | 2026-02-11 |  |  | 80 | P2.B2.09.21.510 | R/I.IW | P2-5 |  | R/I.IW |  |  | MLF | MLF | O |
| P2.L3.N.1480 |  | Spray/Seal/Firestop - Head of Wall / L3 / North | 10d | 2026-03-03 A | 2026-03-14 A | P2.L3.N.1150 | 100% |  | 2026-06-19 | 2026-07-02 |  |  | 80 | P2.B2.07.84.310 | FIRSAFE | P2-5 |  | FIRSAFE | AT47 | To Finishes - Paint | MLF | MLF |  |
| P2.L3.N.1250 |  | Pull Wire - Electrical - 480/277v Distribution / L3 / North | 10d | 2026-03-09 A | 2026-03-27 A | P2.L3.N.1190, P2.3.HE.2937.1050, P2.3.HE.2803.1050 | 100% |  | 2026-03-02 | 2026-03-13 |  |  | 80 |  | ELEC | P2-5 |  | ELEC-2 |  | To Trim Devices & Term Panel | MLF | MLF | O |
| P2.L3.N.1430 |  | In Wall - Plumbing - Framing / L3 / North | 10d | 2026-03-10 A | 2026-03-21 A | P2.L3.N.1420, P2.L3.N.1630, PCO.824.1170 | 100% |  | 2026-05-07 | 2026-05-20 |  |  | 80 | P2.B2.22.05.410 | PLMB | P2-5 | Harris | PLMB |  |  | MLF | MLF |  |
| P2.L3.N.1500 |  | Pull Wire - Low Volt - BAS/Controls / L3 / North | 10d | 2026-03-11 A | 2026-03-30 A | P2.L3.N.1370 | 100% |  | 2026-03-02 | 2026-03-13 |  |  | 80 |  | BAS | P2-5 | Harris | BAS-1 |  | To Trim Finishes | MLF | MLF |  |
| P2.L3.N.1330 |  | OH - HVAC Piping - Equip Tie In / L3 / North | 10d | 2026-03-23 A | 2026-05-05 | P2.L3.N.1310, P2.L3.N.1270, CX.B2.HYDR.1000 | 50% | 5d | 2026-03-30 | 2026-04-10 | 117d | 53d | 80 | P2.B2.23.20.610 | FIT | P2-5 | Harris | FIT-2 |  |  | MLF | MLF |  |
| P2.L3.N.1350 |  | OH - Insulate LP Duct / L3 / North | 10d | 2026-03-24 A | 2026-03-28 A | P2.L3.N.1300 | 100% |  | 2026-04-01 | 2026-04-14 |  |  | 80 | P2.B2.23.07.410 | INSUL | P2-5 | Harris | INSUL-3 |  | 4 | MLF | MLF | O |
| P2.L3.N.1360 |  | Pull Wire - Electrical - 208/120v Branch & Equip / L3 / North | 20d | 2026-04-01 | 2026-04-28 | P2.L3.N.1230, P2.L3.N.1320, P2.L3.N.1440 |  |  |  |  | 122d | 58d | 80 |  | ELEC | P2-5 |  | ELEC-2 |  | To Trim Devices & Term Panel | MLF | MLF |  |
| P2.L3.N.1400 |  | OH - Conduit - Low Volt - Security / L3 / North | 10d | 2026-04-01 | 2026-04-14 | P2.L3.N.1340 |  |  |  |  | 122d | 0d | 80 |  | ELEC | P2-5 |  | ELEC-2 |  | 5 | MLF | MLF | O |
| P2.L3.N.1410 |  | OH - Conduit - Low Volt - Medical Services/Nurse Call (?) / L3 / North | 10d | 2026-04-01 | 2026-04-14 | P2.L3.N.1350 |  |  |  |  | 122d | 0d | 80 |  | ELEC | P2-5 |  | ELEC-2 |  | 5 | MLF | MLF | O |
| P2.L3.N.1460 |  | AHJ Inspections - Wall Close In / L3 / North | 5d | 2026-04-01 | 2026-04-07 | P2.L3.N.1430, P2.L3.N.1440, P2.L3.N.1450, P2.L3.N.1630 |  |  |  |  | 40d | 48d | 40 | P2.B2.01.43.110 | FM | P2-5 |  | FM |  |  | MLF | MLF |  |
| P2.L3.N.1510 |  | Pull Wire - Low Volt - Fire Alarm / L3 / North | 10d | 2026-04-01 | 2026-04-14 | P2.L3.N.1380 |  |  |  |  | 132d | 68d | 80 |  | FA | P2-5 |  | FA-1 |  | To Trim Finishes | MLF | MLF |  |
| P2.L3.N.1520 |  | Pull Wire - Low Volt - Telecom / L3 / North | 10d | 2026-04-01 | 2026-04-14 | P2.L3.N.1390 |  |  |  |  | 132d | 68d | 80 |  | CIT | P2-5 |  | CIT |  | To Trim Finishes | MLF | MLF |  |
| P2.L3.N.1530 |  | Pull Wire - Low Volt - Security / L3 / North | 10d | 2026-04-15 | 2026-04-28 | P2.L3.N.1400 |  |  |  |  | 122d | 58d | 80 |  | LOWVOLT | P2-5 |  | LOWVOLT-1 |  | To Trim Finishes | MLF | MLF |  |
| P2.L3.N.1540 |  | Pull Wire - Low Volt - Medical Services/Nurse Call (?) / L3 / North | 10d | 2026-04-15 | 2026-04-28 | P2.L3.N.1410 |  |  |  |  | 122d | 58d | 80 |  | LOWVOLT | P2-5 |  | LOWVOLT-1 |  | To Trim Finishes | MLF | MLF |  |
| P2.L3.N.1470 |  | Hang-Tape-Finish - Walls / L3 / North | 15d | 2026-06-16 | 2026-07-07 | P2.SUM.175, P2.L3.N.1460, P2.LR.L7.9030, P2.MR.2-8.9030, P2.MR.5-8.9030, P2.PR.EMMR.2.9030, P2.L11.EMMR.3.9030, P2.L11.5-9.9030, P2.B2.N.1470, P2.B2.S.1470, P2.B2.WC.1620, P2.B2.LC.1180, P2.B2.BR.2090, P2.L3.S.1470 |  |  |  |  | -8d | 0d | 80 | P2.B2.09.21.710 | GYP | P2-5 |  | GYP-1 |  |  | MLF | MLF |  |
| P2.L3.N.1490 |  | Firestop - Thru Wall / L3 / North | 10d | 2026-07-08 | 2026-07-21 | P2.L3.N.1470 |  |  |  |  | 64d | 0d | 80 | P2.B2.07.84.210 | FIRESTO | P2-5 |  | FIRESTO | AT48 | To Finishes - Paint | MLF | MLF |  |
| P2.L3.N.1550 |  | Trades Inspect & Verify R/I Work Completed to Specs / L3 / North | 5d | 2026-07-22 | 2026-07-28 | P2.L3.N.1480, P2.L3.N.1530, P2.L3.N.1250, P2.L3.N.1540, P2.L3.N.1360, P2.L3.N.1500, P2.L3.N.1510, P2.L3.N.1520, P2.L3.N.1490, P2.L3.N.1330, P2.L3.N.1470 |  |  |  |  | 64d | 0d | 40 |  | T | P2-5 |  | T |  |  | MLF | MLF |  |

| ID | WBS | Activity | Type | Duration | Start | Finish | Predecessors | Complete | Planned start | Planned finish | Temp Orig Dur | Resp / SRLM | PHASE | RESP / Trade | 744 | RESP UPD | Update Status | Testing Type | Z.RESP |
| --- | --- | --- | --- | --- | --- | --- | --- | --- | --- | --- | --- | --- | --- | --- | --- | --- | --- | --- | --- |
|  | 1 | **House Electrical Rooms / Level 3** |  |  | 2025-04-21 | 2026-04-01 |  |  |  |  |  |  |  |  |  |  |  |  |  |
|  | 9 | **House Electrical Room - 3-5959** |  |  | 2025-05-12 | 2026-03-20 |  |  |  |  |  |  |  |  |  |  |  |  |  |
| P2.3.HE.5959.1010 |  | In Wall Rough In / L3 / South / 5959 |  | 2d | 2025-05-12 A | 2025-05-16 A | P2.3.HE.5959.1000 | 100% | 2025-06-05 | 2025-06-06 | 16 | R/I.IW | P2-5 | R/I.IW |  |  |  |  |  |
| P2.3.HE.5959.1000 |  | Framing and Blocking / L3 / South / 5959 |  | 3d | 2025-05-19 A | 2025-05-21 A | P2.L3.S.1090 | 100% | 2025-06-02 | 2025-06-04 | 24 | GYP | P2-5 | GYP-1 |  |  |  |  |  |
| P2.3.HE.5959.1020 |  | Inspections - Wall Close In / L3 / South / 5959 |  | 2d | 2025-05-21 A | 2025-05-21 A | P2.3.HE.5959.1010 | 100% | 2025-06-09 | 2025-06-10 | 16 | AHJ | P2-5 | AHJ |  |  |  |  |  |
| P2.3.HE.5959.1030 |  | Hang-Tape-Finish / L3 / South / 5959 |  | 5d | 2025-05-21 A | 2025-05-26 A | P2.3.HE.5959.1020, P2.FAC.2.Z1.180, P2.L11.5-9.140 | 100% | 2025-06-25 | 2025-07-01 | 40 | GYP | P2-5 | GYP-1 |  |  |  |  |  |
| P2.3.HE.5959.1040 |  | Paint Prime & 1st Coat / L3 / South / 5959 |  | 2d | 2025-06-10 A | 2025-06-12 A | P2.3.HE.5959.1030 | 100% | 2025-09-11 | 2025-09-12 | 16 | PAINT | P2-5 | PAINT-1 | ND | ND |  |  |  |
| P2.3.HE.5959.1050 |  | Cans/Troughs/Backboxes/XFMRs / L3 / South / 5959 |  | 5d | 2025-06-17 A | 2025-06-24 A | P2.3.HE.5959.1040 | 100% | 2025-09-15 | 2025-09-19 | 40 | ELEC | P2-5 | ELEC-2 | ND | ND |  |  |  |
| P2.3.HE.5959.1060 |  | Risers and OH Conduit Connections / L3 / South / 5959 |  | 5d | 2025-06-24 A | 2025-06-30 A | P2.3.HE.5959.1050 | 100% | 2025-09-22 | 2025-09-26 | 40 | ELEC | P2-5 | ELEC-2 | ND | ND |  |  |  |
| P2.3.HE.5959.1070 |  | Pull Wire - In From Distribution Panels / Out to Branch Circuits / L3 / South / 5959 |  | 5d | 2025-11-03 A | 2025-11-07 A | P2.3.HE.5959.1060 | 100% | 2025-12-01 | 2025-12-05 | 40 | ELEC | P2-5 | ELEC-2 | ND | ND |  |  |  |
| P2.3.HE.5959.1080 |  | Panelboards, Interconnect Wiring, and Remaining Room Buildout of All Systems / L3 / South / 5959 |  | 10d | 2025-12-01 A | 2025-12-12 A | BP1.262.3.100, BP1.262.3.220, P2.3.HE.5959.1060 | 100% | 2026-01-02 | 2026-01-15 | 80 | ELEC | P2-5 | ELEC-2 | ND | ND | O |  |  |
| P2.3.HE.5959.1100 |  | Paint - Finish Coat / L3 / South / 5959 |  | 2d | 2025-12-08 A | 2025-12-10 A | P2.3.HE.5959.1090 | 100% | 2026-04-06 | 2026-04-07 | 16 | PAINT | P2-5 | PAINT-1 | ND | ND | O |  |  |
| P2.3.HE.5959.1090 |  | Test & Terminate / L3 / South / 5959 |  | 5d | 2025-12-15 A | 2025-12-19 A | P2.3.HE.5959.1070, P2.3.HE.5959.1080 | 100% | 2026-03-30 | 2026-04-03 | 40 | ELEC | P2-5 | ELEC-2 | ND | ND | O |  |  |
| P2.3.HE.5959.1130 |  | Doors & Hardware / L3 / South / 5959 |  | 2d | 2025-12-18 A | 2025-12-24 A | P2.3.HE.5959.1120 | 100% | 2026-04-14 | 2026-04-15 | 16 | DFH | P2-5 | DFH | ND | ND | O | AT29 |  |
| P2.3.HE.5959.1120 |  | Flooring / L3 / South / 5959 |  | 2d | 2026-03-02 A | 2026-03-05 A | P2.3.HE.5959.1110 | 100% | 2026-04-29 | 2026-04-30 | 16 | FLOOR | P2-5 | FLOOR | ND | ND | O |  |  |
| P2.3.HE.5959.1110 |  | Trim All MEPF Finishes / L3 / South / 5959 |  | 2d | 2026-03-09 A | 2026-03-19 A | BP1.233.3.410, P2.3.HE.5959.1100 | 100% | 2026-04-27 | 2026-04-28 | 16 | MEP | P2-5 | MEP-2 | ND | ND | O |  | Harris |
| P2.3.HE.5959.1140 |  | Panels Ready to Energize - Lock Doors and Limit Access / L3 / South / 5959 | milestone | 0d | 2026-03-20 A | 2026-03-20 A | P2.3.HE.5959.1090, P2.3.HE.5959.1130 FF | 100% | 2026-04-30 | 2026-04-30 | 0 | ELEC | P2-5 | ELEC-2 | ND | ND |  |  |  |
|  | 1 | **House Electrical Room - 3-2937** |  |  | 2025-04-21 | 2026-03-20 |  |  |  |  |  |  |  |  |  |  |  |  |  |
| P2.3.HE.2937.1010 |  | In Wall Rough In / L3 / North / 2937 |  | 2d | 2025-04-21 A | 2025-04-28 A | P2.3.HE.2937.1000 | 100% | 2025-06-05 | 2025-06-06 | 16 | R/I.IW | P2-5 | R/I.IW |  |  |  |  |  |
| P2.3.HE.2937.1020 |  | Inspections - Wall Close In / L3 / North / 2937 |  | 2d | 2025-04-24 A | 2025-04-24 A | P2.3.HE.2937.1010 | 100% | 2025-06-09 | 2025-06-10 | 16 | AHJ | P2-5 | AHJ |  |  |  |  |  |
| P2.3.HE.2937.1000 |  | Framing and Blocking / L3 / North / 2937 |  | 3d | 2025-04-28 A | 2025-04-29 A | P2.L3.N.1090 | 100% | 2025-06-02 | 2025-06-04 | 24 | GYP | P2-5 | GYP-1 |  |  |  |  |  |
| P2.3.HE.2937.1030 |  | Hang-Tape-Finish / L3 / North / 2937 |  | 5d | 2025-04-28 A | 2025-05-07 A | P2.3.HE.2937.1020, P2.MR.W.160 | 100% | 2025-06-11 | 2025-06-17 | 40 | GYP | P2-5 | GYP-1 |  |  |  |  |  |
| P2.3.HE.2937.1040 |  | Paint Prime & 1st Coat / L3 / North / 2937 |  | 2d | 2025-05-08 A | 2025-05-09 A | P2.3.HE.2937.1030 | 100% | 2025-06-18 | 2025-06-19 | 16 | PAINT | P2-5 | PAINT-1 |  |  |  |  |  |
| P2.3.HE.2937.1050 |  | Cans/Troughs/Backboxes/XFMRs / L3 / North / 2937 |  | 5d | 2025-06-16 A | 2025-06-23 A | P2.3.HE.2937.1040 | 100% | 2025-07-01 | 2025-07-08 | 40 | ELEC | P2-5 | ELEC-2 | ND | ND |  |  |  |
| P2.3.HE.2937.1060 |  | Risers and OH Conduit Connections / L3 / North / 2937 |  | 5d | 2025-06-18 A | 2025-06-26 A | P2.3.HE.2937.1050 | 100% | 2025-07-09 | 2025-07-15 | 40 | ELEC | P2-5 | ELEC-2 | ND | ND |  |  |  |
| P2.3.HE.2937.1070 |  | Pull Wire - In From Distribution Panels / Out to Branch Circuits / L3 / North / 2937 |  | 5d | 2025-11-03 A | 2025-11-07 A | P2.3.HE.2937.1060 | 100% | 2025-12-01 | 2025-12-05 | 40 | ELEC | P2-5 | ELEC-2 | ND | ND |  |  |  |
| P2.3.HE.2937.1080 |  | Panelboards, Interconnect Wiring, and Remaining Room Buildout of All Systems / L3 / North / 2937 |  | 10d | 2025-12-01 A | 2025-12-12 A | P2.3.HE.2937.1060, BP1.262.3.100, BP1.262.3.220 | 100% | 2026-01-02 | 2026-01-15 | 80 | ELEC | P2-5 | ELEC-2 | ND | ND | O |  |  |
| P2.3.HE.2937.1100 |  | Paint - Finish Coat / L3 / North / 2937 |  | 2d | 2025-12-08 A | 2025-12-10 A | P2.3.HE.2937.1090 | 100% | 2026-04-06 | 2026-04-07 | 16 | PAINT | P2-5 | PAINT-1 | ND | ND | O |  |  |
| P2.3.HE.2937.1090 |  | Test & Terminate / L3 / North / 2937 |  | 5d | 2025-12-15 A | 2025-12-19 A | P2.3.HE.2937.1070, P2.3.HE.2937.1080 | 100% | 2026-03-30 | 2026-04-03 | 40 | ELEC | P2-5 | ELEC-2 | ND | ND | O |  |  |
| P2.3.HE.2937.1130 |  | Doors & Hardware / L3 / North / 2937 |  | 2d | 2025-12-18 A | 2025-12-24 A | P2.3.HE.2937.1120 | 100% | 2026-04-14 | 2026-04-15 | 16 | DFH | P2-5 | DFH | ND | ND | O | AT29 |  |
| P2.3.HE.2937.1120 |  | Flooring / L3 / North / 2937 |  | 2d | 2026-03-02 A | 2026-03-05 A | P2.3.HE.2937.1110 | 100% | 2026-04-29 | 2026-04-30 | 16 | FLOOR | P2-5 | FLOOR | ND | ND | O |  |  |
| P2.3.HE.2937.1110 |  | Trim All MEPF Finishes / L3 / North / 2937 |  | 2d | 2026-03-09 A | 2026-03-19 A | P2.3.HE.2937.1100, BP1.233.3.410 | 100% | 2026-04-27 | 2026-04-28 | 16 | MEP | P2-5 | MEP-2 | ND | ND | O |  | Harris |
| P2.3.HE.2937.1140 |  | Panels Ready to Energize - Lock Doors and Limit Access / L3 / North / 2937 | milestone | 0d | 2026-03-20 A | 2026-03-20 A | P2.3.HE.2937.1090, P2.3.HE.2937.1130 FF | 100% | 2026-04-30 | 2026-04-30 | 0 | ELEC | P2-5 | ELEC-2 | ND | ND |  |  |  |

| ID | WBS | Activity | Type | Duration | Start | Finish | Predecessors | Complete | Planned start | Planned finish | Temp Orig Dur | Resp / SRLM | PHASE | RESP / Trade | 744 | RESP UPD | Update Status | Z.RESP | Testing Type |
| --- | --- | --- | --- | --- | --- | --- | --- | --- | --- | --- | --- | --- | --- | --- | --- | --- | --- | --- | --- |
|  | 8 | **House Electrical Room - 3-2803** |  |  | 2025-05-05 | 2026-03-20 |  |  |  |  |  |  |  |  |  |  |  |  |  |
| P2.3.HE.2803.1010 |  | In Wall Rough In / L3 / North / 2803 |  | 2d | 2025-05-05 A | 2025-05-09 A | P2.3.HE.2803.1000 | 100% | 2025-06-05 | 2025-06-06 | 16 | R/I.IW | P2-5 | R/I.IW |  |  |  |  |  |
| P2.3.HE.2803.1000 |  | Framing and Blocking / L3 / North / 2803 |  | 3d | 2025-05-12 A | 2025-05-16 A | P2.L3.N.1090 | 100% | 2025-06-02 | 2025-06-04 | 24 | GYP | P2-5 | GYP-1 |  |  |  |  |  |
| P2.3.HE.2803.1020 |  | Inspections - Wall Close In / L3 / North / 2803 |  | 2d | 2025-05-12 A | 2025-05-15 A | P2.3.HE.2803.1010 | 100% | 2025-06-09 | 2025-06-10 | 16 | AHJ | P2-5 | AHJ |  |  |  |  |  |
| P2.3.HE.2803.1030 |  | Hang-Tape-Finish / L3 / North / 2803 |  | 5d | 2025-05-16 A | 2025-05-26 A | P2.3.HE.2803.1020, P2.FAC.2.Z1.190, P2.MR.2-8.140 | 100% | 2025-07-24 | 2025-07-30 | 40 | GYP | P2-5 | GYP-1 |  |  |  |  |  |
| P2.3.HE.2803.1040 |  | Paint Prime & 1st Coat / L3 / North / 2803 |  | 2d | 2025-05-26 A | 2025-05-30 A | P2.3.HE.2803.1030 | 100% | 2025-07-31 | 2025-08-01 | 16 | PAINT | P2-5 | PAINT-1 |  |  |  |  |  |
| P2.3.HE.2803.1050 |  | Cans/Troughs/Backboxes/XFMRs / L3 / North / 2803 |  | 5d | 2025-07-21 A | 2025-07-24 A | P2.3.HE.2803.1040 | 100% | 2025-08-12 | 2025-08-18 | 40 | ELEC | P2-5 | ELEC-2 | ND | ND |  |  |  |
| P2.3.HE.2803.1060 |  | Risers and OH Conduit Connections / L3 / North / 2803 |  | 5d | 2025-08-18 A | 2025-08-21 A | P2.3.HE.2803.1050 | 100% | 2025-09-04 | 2025-09-10 | 40 | ELEC | P2-5 | ELEC-2 | ND | ND |  |  |  |
| P2.3.HE.2803.1070 |  | Pull Wire - In From Distribution Panels / Out to Branch Circuits / L3 / North / 2803 |  | 5d | 2025-11-05 A | 2025-11-11 A | P2.3.HE.2803.1060 | 100% | 2025-12-03 | 2025-12-09 | 40 | ELEC | P2-5 | ELEC-2 | ND | ND |  |  |  |
| P2.3.HE.2803.1080 |  | Panelboards, Interconnect Wiring, and Remaining Room Buildout of All Systems / L3 / North / 2803 |  | 10d | 2025-12-01 A | 2025-12-12 A | BP1.262.3.100, BP1.262.3.220, P2.3.HE.2803.1060 | 100% | 2026-01-02 | 2026-01-15 | 80 | ELEC | P2-5 | ELEC-2 | ND | ND | O |  |  |
| P2.3.HE.2803.1100 |  | Paint - Finish Coat / L3 / North / 2803 |  | 2d | 2025-12-08 A | 2025-12-10 A | P2.3.HE.2803.1090 | 100% | 2026-04-06 | 2026-04-07 | 16 | PAINT | P2-5 | PAINT-1 | ND | ND | O |  |  |
| P2.3.HE.2803.1090 |  | Test & Terminate / L3 / North / 2803 |  | 5d | 2025-12-15 A | 2025-12-19 A | P2.3.HE.2803.1070, P2.3.HE.2803.1080 | 100% | 2026-03-30 | 2026-04-03 | 40 | ELEC | P2-5 | ELEC-2 | ND | ND | O |  |  |
| P2.3.HE.2803.1120 |  | Flooring / L3 / North / 2803 |  | 2d | 2026-03-02 A | 2026-03-05 A | P2.3.HE.2803.1110 | 100% | 2026-04-29 | 2026-04-30 | 16 | FLOOR | P2-5 | FLOOR | ND | ND | O |  |  |
| P2.3.HE.2803.1110 |  | Trim All MEPF Finishes / L3 / North / 2803 |  | 2d | 2026-03-09 A | 2026-03-19 A | BP1.233.3.410, P2.3.HE.2803.1100 | 100% | 2026-04-27 | 2026-04-28 | 16 | MEP | P2-5 | MEP-2 | ND | ND | O | Harris |  |
| P2.3.HE.2803.1130 |  | Doors & Hardware / L3 / North / 2803 |  | 2d | 2026-03-12 A | 2026-03-13 A | P2.3.HE.2803.1120 | 100% | 2026-05-01 | 2026-05-04 | 16 | DFH | P2-5 | DFH | ND | ND | O |  | AT29 |
| P2.3.HE.2803.1140 |  | Panels Ready to Energize - Lock Doors and Limit Access / L3 / North / 2803 | milestone | 0d | 2026-03-20 A | 2026-03-20 A | P2.3.HE.2803.1090, P2.3.HE.2803.1130 FF | 100% | 2026-05-04 | 2026-05-04 | 0 | ELEC | P2-5 | ELEC-2 | ND | ND |  |  |  |
|  | 7 | **House Electrical Room - 3-2845** |  |  | 2025-05-02 | 2026-03-20 |  |  |  |  |  |  |  |  |  |  |  |  |  |
| P2.3.HE.5966.1010 |  | In Wall Rough In / L3 / South / 5966 |  | 2d | 2025-05-02 A | 2025-05-09 A | P2.3.HE.5966.1000 | 100% | 2025-07-07 | 2025-07-08 | 16 | R/I.IW | P2-5 | R/I.IW | ND | ND |  |  |  |
| P2.3.HE.5966.1000 |  | Framing and Blocking / L3 / South / 5966 |  | 3d | 2025-05-14 A | 2025-05-21 A | P2.L3.N.1090 | 100% | 2025-07-01 | 2025-07-03 | 24 | GYP | P2-5 | GYP-1 | ND | ND |  |  |  |
| P2.3.HE.59661020 |  | Inspections - Wall Close In / L3 / South / 5966 |  | 2d | 2025-05-21 A | 2025-05-21 A | P2.3.HE.5966.1010 | 100% | 2025-07-09 | 2025-07-10 | 16 | AHJ | P2-5 | AHJ | ND | ND |  |  |  |
| P2.3.HE.5966.1030 |  | Hang-Tape-Finish / L3 / South / 5966 |  | 5d | 2025-05-22 A | 2025-05-26 A | P2.3.HE.59661020, P2.MR.C.160 | 100% | 2025-07-11 | 2025-07-17 | 40 | GYP | P2-5 | GYP-1 | ND | ND |  |  |  |
| P2.3.HE.5966.1040 |  | Paint Prime & 1st Coat / L3 / South / 5966 |  | 2d | 2025-06-05 A | 2025-06-09 A | P2.3.HE.5966.1030 | 100% | 2025-07-18 | 2025-07-21 | 16 | PAINT | P2-5 | PAINT-1 | ND | ND |  |  |  |
| P2.3.HE.5966.1050 |  | Cans/Troughs/Backboxes/XFMRs / L3 / South / 5966 |  | 5d | 2025-06-16 A | 2025-06-24 A | P2.3.HE.5966.1040 | 100% | 2025-07-22 | 2025-07-28 | 40 | ELEC | P2-5 | ELEC-2 | ND | ND |  |  |  |
| P2.3.HE.5966.1060 |  | Risers and OH Conduit Connections / L3 / South / 5966 |  | 5d | 2025-06-23 A | 2025-06-30 A | P2.3.HE.5966.1050 | 100% | 2025-07-29 | 2025-08-04 | 40 | ELEC | P2-5 | ELEC-2 | ND | ND |  |  |  |
| P2.3.HE.5966.1070 |  | Pull Wire - In From Distribution Panels / Out to Branch Circuits / L3 / South / 5966 |  | 5d | 2025-11-03 A | 2025-11-07 A | P2.3.HE.5966.1060 | 100% | 2025-12-01 | 2025-12-05 | 40 | ELEC | P2-5 | ELEC-2 | ND | ND |  |  |  |
| P2.3.HE.5966.1080 |  | Panelboards, Interconnect Wiring, and Remaining Room Buildout of All Systems / L3 / South / 5966 |  | 10d | 2025-12-01 A | 2025-12-12 A | BP1.262.3.100, BP1.262.3.220, P2.3.HE.5966.1060 | 100% | 2026-01-02 | 2026-01-15 | 80 | ELEC | P2-5 | ELEC-2 | ND | ND | O |  |  |
| P2.3.HE.5966.1100 |  | Paint - Finish Coat / L3 / South / 5966 |  | 2d | 2025-12-08 A | 2025-12-10 A | P2.3.HE.5966.1090 | 100% | 2026-04-06 | 2026-04-07 | 16 | PAINT | P2-5 | PAINT-1 | ND | ND | O |  |  |
| P2.3.HE.5966.1090 |  | Test & Terminate / L3 / South / 5966 |  | 5d | 2025-12-15 A | 2025-12-19 A | P2.3.HE.5966.1080, P2.3.HE.5966.1070 | 100% | 2026-03-30 | 2026-04-03 | 40 | ELEC | P2-5 | ELEC-2 | ND | ND | O |  |  |
| P2.3.HE.5966.1130 |  | Doors & Hardware / L3 / South / 5966 |  | 2d | 2025-12-18 A | 2025-12-24 A | P2.3.HE.5966.1120 | 100% | 2026-04-14 | 2026-04-15 | 16 | DFH | P2-5 | DFH | ND | ND | O |  | AT29 |
| P2.3.HE.5966.1120 |  | Flooring / L3 / South / 5966 |  | 2d | 2026-03-02 A | 2026-03-05 A | P2.3.HE.5966.1110 | 100% | 2026-04-29 | 2026-04-30 | 16 | FLOOR | P2-5 | FLOOR | ND | ND | O |  |  |
| P2.3.HE.5966.1110 |  | Trim All MEPF Finishes / L3 / South / 5966 |  | 2d | 2026-03-09 A | 2026-03-19 A | BP1.233.3.410, P2.3.HE.5966.1100 | 100% | 2026-04-27 | 2026-04-28 | 16 | MEP | P2-5 | MEP-2 | ND | ND | O | Harris |  |
| P2.3.HE.5966.1140 |  | Panels Ready to Energize - Lock Doors and Limit Access / L3 / South / 5966 | milestone | 0d | 2026-03-20 A | 2026-03-20 A | P2.3.HE.5966.1090, P2.3.HE.5966.1130 FF | 100% | 2026-04-30 | 2026-04-30 | 0 | ELEC | P2-5 | ELEC-2 | ND | ND |  |  |  |

| ID | WBS | Activity | Duration | Start | Finish | Predecessors | Complete | Planned start | Planned finish | Total float | Free float | Temp Orig Dur | Resp / SRLM | PHASE | RESP / Trade | 744 | RESP UPD | Update Status | Testing Type | Z.RESP | Pick | *NIH Resp Check* |
| --- | --- | --- | --- | --- | --- | --- | --- | --- | --- | --- | --- | --- | --- | --- | --- | --- | --- | --- | --- | --- | --- | --- |
|  | 6 | **House Electrical Room - Panel Closet 3-5968** |  | 2025-05-07 | 2026-04-01 |  |  |  |  |  |  |  |  |  |  |  |  |  |  |  |  |  |
| P2.3.HE.5968.1010 |  | In Wall Rough In / L3 / South / 5968 | 2d | 2025-05-07 A | 2025-05-14 A | P2.3.HE.5968.1000 | 100% | 2025-06-05 | 2025-06-06 |  |  | 16 | R/I.IW | P2-5 | R/I.IW |  |  |  |  |  |  |  |
| P2.3.HE.5968.1000 |  | Framing and Blocking / L3 / South / 5968 | 3d | 2025-05-15 A | 2025-05-20 A | P2.L3.S.1090 | 100% | 2025-06-02 | 2025-06-04 |  |  | 24 | GYP | P2-5 | GYP-1 |  |  |  |  |  |  |  |
| P2.3.HE.5968.1030 |  | Hang-Tape-Finish / L3 / South / 5968 | 5d | 2025-05-20 A | 2025-05-23 A | P2.3.HE.5968.1020, P2.LR.L7.170 | 100% | 2025-06-12 | 2025-06-18 |  |  | 40 | GYP | P2-5 | GYP-1 |  |  |  |  |  |  |  |
| P2.3.HE.5968.1020 |  | Inspections - Wall Close In / L3 / South / 5968 | 2d | 2025-05-22 A | 2025-05-22 A | P2.3.HE.5968.1010 | 100% | 2025-06-09 | 2025-06-10 |  |  | 16 | AHJ | P2-5 | AHJ |  |  |  |  |  |  |  |
| P2.3.HE.5968.1040 |  | Paint Prime & 1st Coat / L3 / South / 5968 | 2d | 2025-05-26 A | 2025-05-30 A | P2.3.HE.5968.1030 | 100% | 2025-06-19 | 2025-06-20 |  |  | 16 | PAINT | P2-5 | PAINT-1 |  |  |  |  |  |  |  |
| P2.3.HE.5968.1050 |  | Cans/Troughs/Backboxes/XFMRs / L3 / South / 5968 | 5d | 2025-06-16 A | 2025-06-23 A | P2.3.HE.5968.1040 | 100% | 2025-09-09 | 2025-09-15 |  |  | 40 | ELEC | P2-5 | ELEC-2 | ND | ND |  |  |  |  |  |
| P2.3.HE.5968.1060 |  | Risers and OH Conduit Connections / L3 / South / 5968 | 5d | 2025-06-25 A | 2025-06-27 A | P2.3.HE.5968.1050 | 100% | 2025-09-16 | 2025-09-22 |  |  | 40 | ELEC | P2-5 | ELEC-2 | ND | ND |  |  |  |  |  |
| P2.3.HE.5968.1070 |  | Pull Wire - In From Distribution Panels / Out to Branch Circuits / L3 / South / 5968 | 5d | 2025-11-10 A | 2025-11-14 A | P2.3.HE.5968.1060 | 100% | 2025-12-08 | 2025-12-12 |  |  | 40 | ELEC | P2-5 | ELEC-2 | ND | ND |  |  |  |  |  |
| P2.3.HE.5968.1080 |  | Panelboards, Interconnect Wiring, and Remaining Room Buildout of All Systems / L3 / South / 5968 | 10d | 2025-12-01 A | 2025-12-12 A | BP1.262.3.100, BP1.262.3.220, P2.3.HE.5968.1060 | 100% | 2026-01-02 | 2026-01-15 |  |  | 80 | ELEC | P2-5 | ELEC-2 | ND | ND | O |  |  |  |  |
| P2.3.HE.5968.1100 |  | Paint - Finish Coat / L3 / South / 5968 | 2d | 2025-12-08 A | 2025-12-10 A | P2.3.HE.5968.1090 | 100% | 2026-04-06 | 2026-04-07 |  |  | 16 | PAINT | P2-5 | PAINT-1 | ND | ND | O |  |  |  |  |
| P2.3.HE.5968.1090 |  | Test & Terminate / L3 / South / 5968 | 5d | 2025-12-15 A | 2025-12-19 A | P2.3.HE.5968.1080, P2.3.HE.5968.1070 | 100% | 2026-03-30 | 2026-04-03 |  |  | 40 | ELEC | P2-5 | ELEC-2 | ND | ND | O |  |  |  |  |
| P2.3.HE.5968.1130 |  | Doors & Hardware / L3 / South / 5968 | 2d | 2025-12-18 A | 2025-12-24 A | P2.3.HE.5968.1120 | 100% | 2026-04-14 | 2026-04-15 |  |  | 16 | DFH | P2-5 | DFH | ND | ND | O | AT29 |  |  |  |
| P2.3.HE.5968.1120 |  | Flooring / L3 / South / 5968 | 2d | 2026-03-03 A | 2026-03-04 A | P2.3.HE.5968.1110 | 100% | 2026-03-02 | 2026-03-03 |  |  | 16 | FLOOR | P2-5 | FLOOR | ND | ND | O |  |  |  |  |
| P2.3.HE.5968.1110 |  | Trim All MEPF Finishes / L3 / South / 5968 | 2d | 2026-03-10 A | 2026-03-13 A | BP1.233.3.410, P2.3.HE.5968.1100 | 100% | 2026-05-28 | 2026-05-29 |  |  | 16 | MEP | P2-5 | MEP-2 | ND | ND | O |  | Harris |  |  |
| P2.3.HE.5968.1140 |  | Panels Ready to Energize - Lock Doors and Limit Access / L3 / South / 5968 | 1d | 2026-04-01 | 2026-04-01 | P2.3.HE.5968.1090, P2.3.HE.5968.1130 FF |  |  |  | 133d | 14d | 0 | ELEC | P2-5 | ELEC-2 | ND | ND |  |  |  |  |  |
|  | 1 | **FINISHES - Core & Support Spaces / Level 3** |  | 2025-05-06 | 2027-02-02 |  |  |  |  |  |  |  |  |  |  |  |  |  |  |  |  |  |
|  | 7KSF1 | **OR Support - Freezer - Gas - Blood Area (2.5K SF) / Level 3** |  | 2026-06-16 | 2027-01-25 |  |  |  |  |  |  |  |  |  |  |  |  |  |  |  |  |  |
|  | 1 | **Finishes** |  | 2026-06-16 | 2027-01-25 |  |  |  |  |  |  |  |  |  |  |  |  |  |  |  |  |  |
| P2.L3.F.CS.1000 |  | Paint Prime & 1st Coat Walls / L3 / South / OR Support | 5d | 2026-06-16 | 2026-06-22 | P2.L3.S.1470 |  |  |  | 25d | 0d | 40 | PAINT | P2-5 | PAINT-1 |  | MLF |  |  |  | From R/I Work Completion |  |
| P2.L3.F.CS.1020 |  | R/I - Ceiling Assemblies & Supports - All Trades (A/V, Oper Part, Glass Part, etc.) / L3 / South / OR Support | 5d | 2026-06-23 | 2026-06-29 | P2.L3.F.CS.1000 |  |  |  | 32d | 0d | 40 | ACT | P2-5 | ACT |  | MLF |  |  |  |  | ! |
| P2.L3.F.CS.1010 |  | T-Grid / L3 / South / OR Support | 5d | 2026-06-30 | 2026-07-07 | P2.L3.F.CS.1020 |  |  |  | 32d | 0d | 40 | ACT | P2-5 | ACT |  | MLF |  |  |  |  |  |
| P2.L3.F.CS.1030 |  | Diffusers in T-Grid / L3 / South / OR Support | 5d | 2026-07-08 | 2026-07-14 | P2.L3.F.CS.1010 |  |  |  | 38d | 6d | 40 | HVAC | P2-5 | HVAC |  | MLF |  |  | Harris |  |  |
| P2.L3.F.CS.1040 |  | Lights & Elec Devices in T-Grid / L3 / South / OR Support | 5d | 2026-07-08 | 2026-07-14 | P2.L3.F.CS.1010 |  |  |  | 38d | 6d | 40 | ELEC | P2-5 | ELEC-2 |  | MLF |  |  |  |  |  |
| P2.L3.F.CS.1050 |  | Sprinkler Heads in T-Grid / L3 / South / OR Support | 5d | 2026-07-08 | 2026-07-14 | P2.L3.F.CS.1010 |  |  |  | 38d | 6d | 40 | FP | P2-5 | FP-1 |  | MLF |  |  |  |  |  |
| P2.L3.F.CS.1060 |  | Low Voltage in T-Grid / L3 / South / OR Support | 5d | 2026-07-08 | 2026-07-14 | P2.L3.F.CS.1010 |  |  |  | 32d | 0d | 40 | LOWVOLT | P2-5 | LOWVOLT-1 |  | MLF |  |  |  |  |  |
| P2.L3.F.CS.1070 |  | Fire Alarm in T-Grid / L3 / South / OR Support | 5d | 2026-07-08 | 2026-07-14 | P2.L3.F.CS.1010 |  |  |  | 38d | 6d | 40 | FA | P2-5 | FA-1 |  | MLF |  |  |  |  |  |
| P2.L3.F.CS.2300 |  | Casework (Before Flooring) / L3 / South / OR Support | 5d | 2026-07-15 | 2026-07-21 | P2.L3.S.1470, P2.L3.F.CS.1060, BP6.123.3.100, P2.L3.F.CS.1000 |  |  |  | 32d | 0d | 120 | LABCASE | P2-5 | LABCASE |  | MLF |  |  |  |  |  |
| P2.L3.F.CS.1300 |  | Fumehood Equipment Install / L3 / South / OR Support | 1d | 2026-07-21 | 2026-07-21 | P2.L3.F.CS.2300 FF |  |  |  | 32d | 0d | 120 | LABCASE | P2-5 | LABCASE |  | MLF |  |  |  |  |  |
| P2.L3.F.CS.1310 |  | Fumehood Equipment MEP Connection / L3 / South / OR Support | 1d | 2026-07-22 | 2026-07-22 | P2.L3.F.CS.1300 |  |  |  | 32d | 0d | 120 | LABCASE | P2-5 | LABCASE |  | MLF |  |  |  |  |  |
| P2.L3.F.CS.1080 |  | OH Ceiling Signoff / L3 / South / OR Support | 5d | 2026-07-23 | 2026-07-29 | P2.L3.F.CS.1310 FF, P2.L3.F.CS.1310, P2.L3.F.CS.1060, P2.L3.F.CS.1070, P2.L3.F.CS.1040, P2.L3.F.CS.1050, P2.L3.F.CS.1030 |  |  |  | 32d | 0d | 40 | MEP | P2-5 | MEP |  | MLF |  |  | Harris |  |  |
| P2.L3.F.CS.1110 |  | Drop Ceiling Tile / L3 / South / OR Support | 5d | 2026-07-30 | 2026-08-05 | P2.L3.F.CS.1310, P2.L3.F.CS.1080 |  |  |  | 32d | 0d | 40 | ACT | P2-5 | ACT |  | MLF |  |  |  |  |  |
| P2.L3.F.CS.1090 |  | Millwork / L3 / South / OR Support | 5d | 2026-08-06 | 2026-08-12 | P2.L3.F.CS.1080, P2.L3.F.CS.1110 |  |  |  | 32d | 0d | 40 | MILL | P2-5 | MILL |  | MLF |  |  |  |  |  |
| P2.L3.F.CS.1100 |  | Plumbing Fixtures / L3 / South / OR Support | 5d | 2026-08-13 | 2026-08-19 | P2.L3.F.CS.1090 FF, P2.L3.F.CS.2300, P2.L3.F.CS.1080, P2.L3.F.CS.1090 |  |  |  | 32d | 0d | 40 | PLMB | P2-5 | PLMB |  | MLF |  |  | Harris |  |  |
| P2.L3.F.CS.1120 |  | Floor Prep / L3 / South / OR Support | 5d | 2026-08-20 | 2026-08-26 | P2.L3.F.CS.2300, P2.L3.F.CS.1110, P2.L3.F.CS.1090, P2.L3.F.CS.1100 |  |  |  | 32d | 0d | 40 | FLOOR | P2-5 | FLOOR |  | MLF |  |  |  |  |  |
| P2.L3.F.CS.1130 |  | Floor Finishes / L3 / South / OR Support | 5d | 2026-08-27 | 2026-09-02 | P2.L3.F.CS.1120 |  |  |  | 32d | 0d | 40 | FLOOR | P2-5 | FLOOR |  | MLF |  |  |  |  |  |
| P2.L3.F.CS.1140 |  | Doors & Hardware / L3 / South / OR Support | 5d | 2026-09-03 | 2026-09-10 | P2.L3.F.CS.1130 |  |  |  | 32d | 0d | 40 | DFH | P2-5 | DFH |  | MLF |  | AT29 |  |  |  |
| P2.L3.F.CS.2330 |  | Casework (After Flooring) / L3 / South / OR Support | 5d | 2026-09-03 | 2026-09-10 | P2.L3.F.CS.1130 |  |  |  | 82d | 63d | 120 | LABCASE | P2-5 | LABCASE |  | MLF |  |  |  |  |  |
| P2.L3.F.CS.1150 |  | Paint - Finish Coat / L3 / South / OR Support | 5d | 2026-09-11 | 2026-09-17 | P2.L3.F.CS.1130, P2.L3.F.CS.1140, P2.L3.F.CS.2300 |  |  |  | 32d | 0d | 40 | PAINT | P2-5 | PAINT-1 |  | MLF |  |  |  |  |  |
| P2.L3.F.CS.1200 |  | Floor Base / L3 / South / OR Support | 5d | 2026-09-18 | 2026-09-24 | P2.L3.F.CS.1150 |  |  |  | 32d | 0d | 40 | FLOOR | P2-5 | FLOOR |  | MLF |  |  |  |  |  |
| P2.L3.F.CS.1210 |  | Demountable Partitions / L3 / South / OR Support | 5d | 2026-09-25 | 2026-10-01 | P2.L3.F.CS.1200 |  |  |  | 32d | 0d | 40 | DPART | P2-5 | DPART |  | MLF |  |  |  |  | TBD |
| P2.L3.F.CS.1180 |  | Building Specialities / L3 / South / OR Support | 5d | 2026-10-02 | 2026-10-08 | P2.L3.F.CS.1150, P2.L3.F.CS.1200, P2.L3.F.CS.1210 |  |  |  | 32d | 0d | 40 | SPECIAL | P2-5 | SPECIAL |  | MLF |  |  |  |  |  |
| P2.L3.F.CS.1170 |  | Trim T-Stats / L3 / South / OR Support | 5d | 2026-10-09 | 2026-10-15 | P2.L3.F.CS.1150, P2.L3.F.CS.1180 |  |  |  | 32d | 0d | 40 | BAS | P2-5 | BAS-1 |  | MLF |  |  | Harris |  |  |
| P2.L3.F.CS.1160 |  | Set AV/IT Devices and Configure / L3 / South / OR Support | 5d | 2026-10-16 | 2026-10-22 | P2.L3.F.CS.1150, P2.L3.F.CS.1170 |  |  |  | 32d | 0d | 40 | LOWVOLT | P2-5 | LOWVOLT-1 |  | MLF |  |  |  |  |  |
| P2.L3.F.CS.1220 |  | Trim Electrical / L3 / South / OR Support | 5d | 2026-10-23 | 2026-10-29 | P2.L3.F.CS.1170 SS, P2.L3.F.CS.1160, P2.L3.F.CS.1210 |  |  |  | 32d | 0d | 40 | ELEC | P2-5 | ELEC-2 |  | MLF |  |  |  |  |  |
| P2.L3.F.CS.1230 |  | Trim Telephone/ Data / L3 / South / OR Support | 5d | 2026-10-30 | 2026-11-05 | P2.L3.F.CS.1220 SS, P2.L3.F.CS.1220 |  |  |  | 32d | 0d | 40 | LOWVOLT | P2-5 | LOWVOLT-1 |  | MLF |  |  |  |  |  |
| P2.L3.F.CS.1190 |  | Interior Building Signage / L3 / South / OR Support | 5d | 2026-11-06 | 2026-11-12 | P2.L3.F.CS.1150, P2.L3.F.CS.1230 |  |  |  | 32d | 13d | 40 | SIGN | P2-5 | SIGN |  | MLF |  |  |  |  |  |
| P2.L3.F.CS.2320 |  | Remaining Equipment Post Flooring / L3 / South / OR Support | 5d | 2026-11-25 | 2026-12-03 | BP6.115.3.140, P2.L3.F.CS.1200, P2.L3.F.CS.1220, P2.L3.F.CS.1180, P2.L3.F.CS.1130, P2.L3.F.LC.1330 |  |  |  | 19d | 0d | 120 | LABCASE | P2-5 | LABCASE |  | MLF |  |  |  |  |  |
| P2.L3.F.CS.1240 |  | Work Completion List - Finishes / L3 / South / OR Support | 5d | 2026-12-04 | 2026-12-10 | P2.L3.F.CS.1160, P2.L3.F.CS.1190, P2.L3.F.CS.1140, P2.L3.F.CS.1230, P2.L3.F.CS.1180, P2.L3.F.CS.1100, P2.L3.F.CS.2320 |  |  |  | 19d | 0d | 40 | FINISH | P2-5 | FINISH |  | MLF |  |  |  |  |  |
| P2.L3.F.CS.1250 |  | Rough Clean / L3 / South / OR Support | 5d | 2026-12-11 | 2026-12-17 | P2.L3.F.CS.1240, P2.L3.F.CS.2320, P2.L3.F.CS.2330 |  |  |  | 19d | 0d | 40 | FCLEAN | P2-5 | FCLEAN |  | MLF |  |  |  |  |  |
| P2.L3.F.CS.1260 |  | FF&E / L3 / South / OR Support | 5d | 2026-12-18 | 2026-12-24 | P2.L3.F.CS.1250 |  |  |  | 19d | 0d | 40 | FURN | P2-5 | FURN |  | MLF |  |  |  |  |  |
| P2.L3.F.CS.1270 |  | Prepare Punchlist / L3 / South / OR Support | 5d | 2026-12-28 | 2027-01-04 | P2.L3.F.CS.1260 |  |  |  | 19d | 0d | 40 | QC | P2-5 | QC |  | MLF |  |  |  |  |  |
| P2.L3.F.CS.1280 |  | Correct Punchlist / L3 / South / OR Support | 10d | 2027-01-05 | 2027-01-18 | P2.L3.F.CS.1270 |  |  |  | 19d | 0d | 80 | FINISH | P2-5 | FINISH |  | MLF |  |  |  |  |  |
| P2.L3.F.CS.1290 |  | Final Clean / L3 / South / OR Support | 5d | 2027-01-19 | 2027-01-25 | P2.L3.F.CS.1280 |  |  |  | 19d | 31d | 40 | QC | P2-5 | QC |  | MLF |  |  |  | To QC |  |

| ID | WBS | Activity | Duration | Start | Finish | Predecessors | Total float | Free float | Pick | Temp Orig Dur | Resp / SRLM | PHASE | RESP UPD | RESP / Trade | *NIH Resp Check* | Z.RESP | Testing Type |
| --- | --- | --- | --- | --- | --- | --- | --- | --- | --- | --- | --- | --- | --- | --- | --- | --- | --- |
|  | 2 | **Closeout** |  |  |  |  |  |  |  |  |  |  |  |  |  |  |  |
|  | 7KSF | **OR/IR / IR Teaming Support (1K SF) / Level 3** |  | 2026-07-08 | 2027-02-02 |  |  |  |  |  |  |  |  |  |  |  |  |
|  | 1 | **Finishes** |  | 2026-07-08 | 2027-02-02 |  |  |  |  |  |  |  |  |  |  |  |  |
| P2.L3.F.CS.2000 |  | Paint Prime & 1st Coat Walls / L3 / North / OR/IR Teaming | 5d | 2026-07-08 | 2026-07-14 | P2.L3.N.1470 | 13d | 0d | From R/I Work Completion | 40 | PAINT | P2-5 | MLF | PAINT-1 |  |  |  |
| P2.L3.F.CS.2020 |  | R/I - Ceiling Assemblies & Supports - All Trades (A/V, Oper Part, Glass Part, etc.) / L3 / North / OR/IR Teaming | 5d | 2026-07-15 | 2026-07-21 | P2.L3.F.CS.2000 | 13d | 0d |  | 40 | ACT | P2-5 | MLF | ACT | ! |  |  |
| P2.L3.F.CS.2010 |  | T-Grid / L3 / North / OR/IR Teaming | 5d | 2026-07-22 | 2026-07-28 | P2.L3.F.CS.2020 | 13d | 0d |  | 40 | ACT | P2-5 | MLF | ACT |  |  |  |
| P2.L3.F.CS.2050 |  | Sprinkler Heads in T-Grid / L3 / North / OR/IR Teaming | 5d | 2026-07-29 | 2026-08-04 | P2.L3.F.CS.2010 | 13d | 0d |  | 40 | FP | P2-5 | MLF | FP-1 |  |  |  |
| P2.L3.F.CS.2030 |  | Diffusers in T-Grid / L3 / North / OR/IR Teaming | 5d | 2026-08-05 | 2026-08-11 | P2.L3.F.CS.2010, P2.L3.F.CS.2050 | 13d | 0d |  | 40 | HVAC | P2-5 | MLF | HVAC |  | Harris |  |
| P2.L3.F.CS.2040 |  | Lights & Elec Devices in T-Grid / L3 / North / OR/IR Teaming | 5d | 2026-08-12 | 2026-08-18 | P2.L3.F.CS.2010, P2.L3.F.CS.2030 | 13d | 0d |  | 40 | ELEC | P2-5 | MLF | ELEC-2 |  |  |  |
| P2.L3.F.CS.2060 |  | Low Voltage in T-Grid / L3 / North / OR/IR Teaming | 5d | 2026-08-19 | 2026-08-25 | P2.L3.F.CS.2070 SS, P2.L3.F.CS.2010 | 13d | 0d |  | 40 | LOWVOLT | P2-5 | MLF | LOWVOLT-1 |  |  |  |
| P2.L3.F.CS.2070 |  | Fire Alarm in T-Grid / L3 / North / OR/IR Teaming | 5d | 2026-08-19 | 2026-08-25 | P2.L3.F.CS.2010, P2.L3.F.CS.2040 | 13d | 0d |  | 40 | FA | P2-5 | MLF | FA-1 |  |  |  |
| P2.L3.F.CS.2080 |  | OH Ceiling Signoff / L3 / North / OR/IR Teaming | 5d | 2026-08-26 | 2026-09-01 | P2.L3.F.CS.2070, P2.L3.F.CS.2060, P2.L3.F.CS.2050, P2.L3.F.CS.2030, P2.L3.F.CS.2040 | 13d | 0d |  | 40 | MEP | P2-5 | MLF | MEP |  | Harris |  |
| P2.L3.F.CS.2110 |  | Drop Ceiling Tile / L3 / North / OR/IR Teaming | 5d | 2026-09-02 | 2026-09-09 | P2.L3.F.CS.2080 | 13d | 0d |  | 40 | ACT | P2-5 | MLF | ACT |  |  |  |
| P2.L3.F.CS.2090 |  | Millwork / L3 / North / OR/IR Teaming | 5d | 2026-09-10 | 2026-09-16 | P2.L3.F.CS.2080, P2.L3.F.CS.2110 | 13d | 0d |  | 40 | MILL | P2-5 | MLF | MILL |  |  |  |
| P2.L3.F.CS.2100 |  | Plumbing Fixtures / L3 / North / OR/IR Teaming | 5d | 2026-09-10 | 2026-09-16 | P2.L3.F.CS.2090 FF, P2.L3.F.CS.2080 | 13d | 0d |  | 40 | PLMB | P2-5 | MLF | PLMB |  | Harris |  |
| P2.L3.F.CS.2120 |  | Floor Prep / L3 / North / OR/IR Teaming | 5d | 2026-09-17 | 2026-09-23 | P2.L3.F.CS.2110, P2.L3.F.CS.2090, P2.L3.F.CS.2100 | 13d | 0d |  | 40 | FLOOR | P2-5 | MLF | FLOOR |  |  |  |
| P2.L3.F.CS.2130 |  | Floor Finishes / L3 / North / OR/IR Teaming | 5d | 2026-09-24 | 2026-09-30 | P2.L3.F.CS.2120 | 13d | 0d |  | 40 | FLOOR | P2-5 | MLF | FLOOR |  |  |  |
| P2.L3.F.CS.2140 |  | Doors & Hardware / L3 / North / OR/IR Teaming | 5d | 2026-10-01 | 2026-10-07 | P2.L3.F.CS.2130 | 13d | 0d |  | 40 | DFH | P2-5 | MLF | DFH |  |  | AT29 |
| P2.L3.F.CS.2150 |  | Paint - Finish Coat / L3 / North / OR/IR Teaming | 5d | 2026-10-08 | 2026-10-14 | P2.L3.F.CS.2130, P2.L3.F.CS.2140 | 13d | 0d |  | 40 | PAINT | P2-5 | MLF | PAINT-1 |  |  |  |
| P2.L3.F.CS.2200 |  | Floor Base / L3 / North / OR/IR Teaming | 5d | 2026-10-15 | 2026-10-21 | P2.L3.F.CS.2150 | 13d | 0d |  | 40 | FLOOR | P2-5 | MLF | FLOOR |  |  |  |
| P2.L3.F.CS.2210 |  | Demountable Partitions / L3 / North / OR/IR Teaming | 5d | 2026-10-22 | 2026-10-28 | P2.L3.F.CS.2200 | 13d | 0d |  | 40 | DPART | P2-5 | MLF | DPART | TBD |  |  |
| P2.L3.F.CS.2170 |  | Trim T-Stats / L3 / North / OR/IR Teaming | 5d | 2026-10-29 | 2026-11-04 | P2.L3.F.CS.2150, P2.L3.F.CS.2200, P2.L3.F.CS.2210 | 13d | 0d |  | 40 | LOWVOLT | P2-5 | MLF | LOWVOLT-1 |  |  |  |
| P2.L3.F.CS.2160 |  | Set AV/IT Devices and Configure / L3 / North / OR/IR Teaming | 5d | 2026-11-05 | 2026-11-11 | P2.L3.F.CS.2150, P2.L3.F.CS.2170 | 13d | 0d |  | 40 | LOWVOLT | P2-5 | MLF | LOWVOLT-1 |  |  |  |
| P2.L3.F.CS.2220 |  | Trim Electrical / L3 / North / OR/IR Teaming | 5d | 2026-11-12 | 2026-11-18 | P2.L3.F.CS.2170 SS, P2.L3.F.CS.2160, P2.L3.F.CS.2210 | 13d | 0d |  | 40 | ELEC | P2-5 | MLF | ELEC-2 |  |  |  |
| P2.L3.F.CS.2230 |  | Trim Telephone/ Data / L3 / North / OR/IR Teaming | 5d | 2026-11-19 | 2026-11-25 | P2.L3.F.CS.2220 SS, P2.L3.F.CS.2220 | 13d | 0d |  | 40 | LOWVOLT | P2-5 | MLF | LOWVOLT-1 |  |  |  |
| P2.L3.F.CS.2180 |  | Building Specialities / L3 / North / OR/IR Teaming | 5d | 2026-11-30 | 2026-12-04 | P2.L3.F.CS.2150, P2.L3.F.CS.2230 | 13d | 0d |  | 40 | SPECIAL | P2-5 | MLF | SPECIAL |  |  |  |
| P2.L3.F.CS.2190 |  | Interior Building Signage / L3 / North / OR/IR Teaming | 5d | 2026-12-07 | 2026-12-11 | P2.L3.F.CS.2150, P2.L3.F.CS.2180 | 13d | 0d |  | 40 | SIGN | P2-5 | MLF | SIGN |  |  |  |
| P2.L3.F.CS.2240 |  | Work Completion List - Finishes / L3 / North / OR/IR Teaming | 5d | 2026-12-14 | 2026-12-18 | P2.L3.F.CS.2190, P2.L3.F.CS.2140, P2.L3.F.CS.2230, P2.L3.F.CS.2180, P2.L3.F.CS.2100, P2.L3.F.CS.2160 | 13d | 0d |  | 40 | FINISH | P2-5 | MLF | FINISH |  |  |  |
| P2.L3.F.CS.2250 |  | Rough Clean / L3 / North / OR/IR Teaming | 5d | 2026-12-21 | 2026-12-28 | P2.L3.F.CS.2240 | 13d | 0d |  | 40 | FCLEAN | P2-5 | MLF | FCLEAN |  |  |  |
| P2.L3.F.CS.2260 |  | FF&E / L3 / North / OR/IR Teaming | 5d | 2026-12-29 | 2027-01-05 | P2.L3.F.CS.2250 | 13d | 0d |  | 40 | FURN | P2-5 | MLF | FURN |  |  |  |
| P2.L3.F.CS.2270 |  | Prepare Punchlist / L3 / North / OR/IR Teaming | 5d | 2027-01-06 | 2027-01-12 | P2.L3.F.CS.2260 | 13d | 0d |  | 40 | QC | P2-5 | MLF | QC |  |  |  |
| P2.L3.F.CS.2280 |  | Correct Punchlist / L3 / North / OR/IR Teaming | 10d | 2027-01-13 | 2027-01-26 | P2.L3.F.CS.2270 | 13d | 0d |  | 80 | FINISH | P2-5 | MLF | FINISH |  |  |  |
| P2.L3.F.CS.2290 |  | Final Clean / L3 / North / OR/IR Teaming | 5d | 2027-01-27 | 2027-02-02 | P2.L3.F.CS.2280 | 13d | 25d | To QC | 40 | QC | P2-5 | MLF | QC |  |  |  |

| ID | WBS | Activity | Duration | Start | Finish | Predecessors | Complete | Planned start | Planned finish | Total float | Free float | Pick | Temp Orig Dur | *NIH Resp Check* | Resp / SRLM | PHASE | Z.RESP | RESP / Trade | 744 | RESP UPD | Update Status | Testing Type |
| --- | --- | --- | --- | --- | --- | --- | --- | --- | --- | --- | --- | --- | --- | --- | --- | --- | --- | --- | --- | --- | --- | --- |
|  | 2 | **Closeout** |  |  |  |  |  |  |  |  |  |  |  |  |  |  |  |  |  |  |  |  |
|  | 5 | **Bathrooms - Break Rooms - Locker Rooms / Level 3** |  | 2025-05-06 | 2026-09-29 |  |  |  |  |  |  |  |  |  |  |  |  |  |  |  |  |  |
|  | 3 | **3 Gang Toilet Area Z1 - No Room Tag. 3-59??** |  | 2025-05-06 | 2026-09-24 |  |  |  |  |  |  |  |  |  |  |  |  |  |  |  |  |  |
| P2.L3.BR.1000 |  | Plumbing - Set Pipe Carriers / L3 / South / Toilets 59XX | 3d | 2025-05-06 A | 2025-05-08 A | P2.L2.BR.4000, P2.L3.S.1240 | 100% | 2025-07-09 | 2025-07-11 |  |  | ? | 24 | ! | PLMB | P2-5 | Harris | PLMB |  |  |  |  |
| P2.L3.BR.1010 |  | Framing & Blocking - Walls and Hard Lid Ceilings / L3 / South / Toilets 59XX | 2d | 2025-06-25 A | 2025-07-16 A | P2.L3.BR.1000 | 100% | 2025-07-23 | 2025-07-24 |  |  |  | 16 | ! | GYP | P2-5 |  | GYP-1 | MLF | MLF |  |  |
| P2.L3.BR.1020 |  | Plumbing - Test Pipe / L3 / South / Toilets 59XX | 2d | 2025-07-16 A | 2025-07-17 A | P2.L3.BR.1000 | 100% | 2025-08-15 | 2025-08-18 |  |  |  | 16 |  | PLMB | P2-5 | Harris | PLMB | MLF | MLF |  |  |
| P2.L3.BR.1050 |  | Duct Drops _ Hard Lids / L3 / South / Toilets 59XX | 2d | 2025-12-03 A | 2025-12-04 A | P2.L3.BR.1010 | 100% | 2026-01-06 | 2026-01-07 |  |  |  | 16 | T.R/I.IW.MECH.HVAC.SM | HVAC | P2-5 | Harris | HVAC | MLF | MLF | O |  |
| P2.L3.BR.1070 |  | In Wall - Insulate Plumbing / L3 / South / Toilets 59XX | 2d | 2025-12-05 A | 2025-12-08 A | P2.L3.BR.1020, P2.L3.BR.1050 | 100% | 2026-01-08 | 2026-01-09 |  |  |  | 16 |  | INSUL | P2-5 | Harris | INSUL-3 | MLF | MLF | O |  |
| P2.L3.BR.1030 |  | R/I - Electrical _ Hard Lids / L3 / South / Toilets 59XX | 2d | 2026-04-01 | 2026-04-02 | P2.L3.BR.1070, P2.L3.BR.1010 |  |  |  | 103d | 0d |  | 16 | ! | ELEC | P2-5 |  | ELEC-3 | MLF | MLF | O |  |
| P2.L3.BR.1040 |  | Trim Sprinkler Drops _ Hard Lids / L3 / South / Toilets 59XX | 2d | 2026-04-01 | 2026-04-02 | P2.L3.BR.1010 |  |  |  | 105d | 2d |  | 16 | ! | FP | P2-5 |  | FP-1 | MLF | MLF | O |  |
| P2.L3.BR.1060 |  | R/I - Fire Alarm _ Hard Lids / L3 / South / Toilets 59XX | 2d | 2026-04-03 | 2026-04-06 | P2.L3.BR.1010, P2.L3.BR.1030 |  |  |  | 103d | 0d |  | 16 | ! | ELEC | P2-5 |  | ELEC-3 | MLF | MLF | O |  |
| P2.L3.BR.1080 |  | Inspection - Close In - Hard Lid Ceilings / L3 / South / Toilets 59XX | 3d | 2026-04-07 | 2026-04-09 | P2.L3.BR.1070, P2.L3.BR.1060, P2.L3.BR.1040, P2.L3.BR.1050, P2.L3.BR.1030 |  |  |  | 103d | 56d |  | 24 | ! | AHJ | P2-5 |  | AHJ | MLF | MLF | O |  |
| P2.L3.BR.1090 |  | Hang-Tape-Finish _ Hard Lids Ceilings / L3 / South / Toilets 59XX | 5d | 2026-06-30 | 2026-07-07 | P2.SUM.175, P2.L3.BR.1080, P2.L3.N.1470 SS, P2.L3.S.1470 SS, P2.L3.N.1470 FF, P2.L3.S.1470 FF |  |  |  | 47d | 0d |  | 40 | ! | GYP | P2-5 |  | GYP-1 | MLF | MLF | O |  |
| P2.L3.BR.1100 |  | Paint Prime & Final Coat _ Walls & Hard Lid Ceilings / L3 / South / Toilets 59XX | 2d | 2026-07-08 | 2026-07-09 | P2.L3.BR.1090 |  |  |  | 47d | 0d |  | 16 | ! | PAINT | P2-5 |  | PAINT-1 | MLF | MLF | O |  |
| P2.L3.BR.1140 |  | Trim - HVAC G/R/D's / L3 / South / Toilets 59XX | 2d | 2026-07-10 | 2026-07-13 | BP1.233.3.410, P2.L3.BR.1100 |  |  |  | 47d | 0d |  | 16 | ! | HVAC | P2-5 | Harris | HVAC | MLF | MLF | O |  |
| P2.L3.BR.1120 |  | Pull Wire & Trim Devices - Electrical / L3 / South / Toilets 59XX | 2d | 2026-07-14 | 2026-07-15 | P2.L3.BR.1140, P2.L3.BR.1100 |  |  |  | 47d | 0d |  | 16 | ! | ELEC | P2-5 |  | ELEC-2 | MLF | MLF |  |  |
| P2.L3.BR.1130 |  | Lights - Set & Terminate / L3 / South / Toilets 59XX | 2d | 2026-07-14 | 2026-07-15 | P2.L3.BR.1120 SS |  |  |  | 49d | 2d |  | 16 | ! | ELEC | P2-5 |  | ELEC-2 | MLF | MLF |  |  |
| P2.L3.BR.1110 |  | Pull Wire & Trim Devices - Fire Alarm / L3 / South / Toilets 59XX | 2d | 2026-07-16 | 2026-07-17 | P2.L3.BR.1120, P2.L3.BR.1100 |  |  |  | 47d | 0d |  | 16 | ! | ELEC | P2-5 |  | ELEC-2 | MLF | MLF |  |  |
| P2.L3.BR.1150 |  | Wall Tile / L3 / South / Toilets 59XX | 5d | 2026-07-20 | 2026-07-24 | P2.L3.BR.1140, P2.L3.BR.1130, P2.L3.BR.1110 |  |  |  | 47d | 29d |  | 40 | ! | TILE | P2-5 |  | TILE | MLF | MLF |  |  |
| P2.L3.BR.4260 |  | Flooring Prep - Epoxy Floors / L3 / South / Toilets 59XX | 1d | 2026-09-04 | 2026-09-04 | P2.L2.BR.4350, P2.L3.BR.1150 |  |  |  | 18d | 0d |  | 40 | ! | EPOXYF | P2-5 |  | EPOXYF |  | MLF |  |  |
| P2.L3.BR.4270 |  | Flooring - Epoxy Floors / L3 / South / Toilets 59XX | 2d | 2026-09-08 | 2026-09-09 | P2.L3.BR.4260 |  |  |  | 94d | 0d |  | 40 | ! | EPOXYF | P2-5 |  | EPOXYF |  | MLF |  |  |
| P2.L3.BR.1160 |  | Doors & Hardware / L3 / South / Toilets 59XX | 2d | 2026-09-10 | 2026-09-11 | P2.L3.BR.4270, P2.L3.BR.1150 |  |  |  | 94d | 0d |  | 16 | ! | DFH | P2-5 |  | DFH |  | MLF |  | AT29 |
| P2.L3.BR.1170 |  | Plumbing Fixtures / Sinks / Showers / L3 / South / Toilets 59XX | 2d | 2026-09-14 | 2026-09-15 | P2.L3.BR.4270, P2.L3.BR.1150, P2.L3.BR.1160 |  |  |  | 102d | 0d |  | 16 | ! | PLMB | P2-5 | Harris | PLMB |  | MLF |  |  |
| P2.L3.BR.1180 |  | Bathroom Accessories / L3 / South / Toilets 59XX | 2d | 2026-09-16 | 2026-09-17 | P2.L3.BR.1170 |  |  |  | 102d | 0d |  | 16 | ! | SPECIAL | P2-5 |  | SPECIAL |  | MLF |  |  |
| P2.L3.BR.1190 |  | Work Completion List - Finishes / L3 / South / Toilets 59XX | 5d | 2026-09-18 | 2026-09-24 | P2.L3.BR.1160, P2.L3.BR.1180, P2.L3.BR.1110 |  |  |  | 102d | 114d | To Punch | 40 |  | AHJ | P2-5 |  | AHJ |  | MLF |  |  |

| ID | WBS | Activity | Duration | Start | Finish | Predecessors | Complete | Planned start | Planned finish | Total float | Free float | Pick | Temp Orig Dur | *NIH Resp Check* | Resp / SRLM | PHASE | Z.RESP | RESP / Trade | 744 | RESP UPD | Update Status | Testing Type |
| --- | --- | --- | --- | --- | --- | --- | --- | --- | --- | --- | --- | --- | --- | --- | --- | --- | --- | --- | --- | --- | --- | --- |
|  | 1 | **Toilet 3-2867** |  | 2025-05-12 | 2026-09-28 |  |  |  |  |  |  |  |  |  |  |  |  |  |  |  |  |  |
| P2.L3.BR.2000 |  | Plumbing - Set Pipe Carriers / L3 / North / Toilet 2867 | 3d | 2025-05-12 A | 2025-05-14 A | P2.L3.N.1240, P2.L3.BR.1000 | 100% | 2025-07-14 | 2025-07-16 |  |  | ? | 24 | ! | PLMB | P2-5 | Harris | PLMB |  |  |  |  |
| P2.L3.BR.2010 |  | Framing & Blocking - Walls and Hard Lid Ceilings / L3 / North / Toilet 2867 | 2d | 2025-06-25 A | 2025-07-23 A | P2.L3.BR.2000 | 100% | 2025-07-23 | 2025-07-24 |  |  |  | 16 | ! | GYP | P2-5 |  | GYP-1 | MLF | MLF |  |  |
| P2.L3.BR.2020 |  | Plumbing - Test Pipe / L3 / North / Toilet 2867 | 2d | 2025-09-02 A | 2025-09-03 A | P2.L3.BR.2000 | 100% | 2025-10-01 | 2025-10-02 |  |  |  | 16 |  | PLMB | P2-5 | Harris | PLMB | MLF | MLF | O |  |
| P2.L3.BR.2050 |  | Duct Drops _ Hard Lids / L3 / North / Toilet 2867 | 2d | 2025-12-03 A | 2025-12-04 A | P2.L3.BR.2010 | 100% | 2026-01-06 | 2026-01-07 |  |  |  | 16 | T.R/I.IW.MECH.HVAC.SM | HVAC | P2-5 | Harris | HVAC | MLF | MLF | O |  |
| P2.L3.BR.2070 |  | In Wall - Insulate Plumbing / L3 / North / Toilet 2867 | 2d | 2025-12-05 A | 2025-12-08 A | P2.L3.BR.2050, P2.L3.BR.2020 | 100% | 2026-01-08 | 2026-01-09 |  |  |  | 16 |  | INSUL | P2-5 | Harris | INSUL-3 | MLF | MLF | O |  |
| P2.L3.BR.2030 |  | R/I - Electrical _ Hard Lids / L3 / North / Toilet 2867 | 2d | 2026-04-01 | 2026-04-02 | P2.L3.BR.2010, P2.L3.BR.2070 |  |  |  | 105d | 0d |  | 16 | ! | ELEC | P2-5 |  | ELEC-3 | MLF | MLF | O |  |
| P2.L3.BR.2040 |  | Trim Sprinkler Drops _ Hard Lids / L3 / North / Toilet 2867 | 2d | 2026-04-01 | 2026-04-02 | P2.L3.BR.2010 |  |  |  | 107d | 2d |  | 16 | ! | FP | P2-5 |  | FP-1 | MLF | MLF | O |  |
| P2.L3.BR.2060 |  | R/I - Fire Alarm _ Hard Lids / L3 / North / Toilet 2867 | 2d | 2026-04-03 | 2026-04-06 | P2.L3.BR.2030, P2.L3.BR.2010 |  |  |  | 105d | 0d |  | 16 | ! | ELEC | P2-5 |  | ELEC-3 | MLF | MLF | O |  |
| P2.L3.BR.2080 |  | Inspection - Close In - Hard Lid Ceilings / L3 / North / Toilet 2867 | 3d | 2026-04-07 | 2026-04-09 | P2.L3.BR.2030, P2.L3.BR.2040, P2.L3.BR.2050, P2.L3.BR.2060, P2.L3.BR.2070 |  |  |  | 105d | 56d |  | 24 | ! | AHJ | P2-5 |  | AHJ | MLF | MLF | O |  |
| P2.L3.BR.2090 |  | Hang-Tape-Finish _ Hard Lids Ceilings / L3 / North / Toilet 2867 | 5d | 2026-06-30 | 2026-07-07 | P2.SUM.175, P2.L3.BR.2080, P2.L3.N.1470 SS, P2.L3.S.1470 SS, P2.L3.N.1470 FF, P2.L3.S.1470 FF |  |  |  | 49d | 0d |  | 40 | ! | GYP | P2-5 |  | GYP-1 | MLF | MLF | O |  |
| P2.L3.BR.2100 |  | Paint Prime & Final Coat _ Walls & Hard Lid Ceilings / L3 / North / Toilet 2867 | 2d | 2026-07-08 | 2026-07-09 | P2.L3.BR.2090 |  |  |  | 49d | 0d |  | 16 | ! | PAINT | P2-5 |  | PAINT-1 | MLF | MLF | O |  |
| P2.L3.BR.2140 |  | Trim - HVAC G/R/D's / L3 / North / Toilet 2867 | 2d | 2026-07-10 | 2026-07-13 | BP1.233.3.410, P2.L3.BR.2100 |  |  |  | 49d | 0d |  | 16 | ! | HVAC | P2-5 | Harris | HVAC | MLF | MLF | O |  |
| P2.L3.BR.2120 |  | Pull Wire & Trim Devices - Electrical / L3 / North / Toilet 2867 | 2d | 2026-07-14 | 2026-07-15 | P2.L3.BR.2100, P2.L3.BR.2140 |  |  |  | 49d | 0d |  | 16 | ! | ELEC | P2-5 |  | ELEC-2 | MLF | MLF |  |  |
| P2.L3.BR.2130 |  | Lights - Set & Terminate / L3 / North / Toilet 2867 | 2d | 2026-07-14 | 2026-07-15 | P2.L3.BR.2120 SS |  |  |  | 51d | 2d |  | 16 | ! | ELEC | P2-5 |  | ELEC-2 | MLF | MLF |  |  |
| P2.L3.BR.2110 |  | Pull Wire & Trim Devices - Fire Alarm / L3 / North / Toilet 2867 | 2d | 2026-07-16 | 2026-07-17 | P2.L3.BR.2120, P2.L3.BR.2100 |  |  |  | 49d | 0d |  | 16 | ! | ELEC | P2-5 |  | ELEC-2 | MLF | MLF |  |  |
| P2.L3.BR.2150 |  | Wall Tile / L3 / North / Toilet 2867 | 5d | 2026-07-20 | 2026-07-24 | P2.L3.BR.2110, P2.L3.BR.2130, P2.L3.BR.2140 |  |  |  | 49d | 31d |  | 40 | ! | TILE | P2-5 |  | TILE | MLF | MLF |  |  |
| P2.L3.BR.4240 |  | Flooring Prep - Epoxy Floors / L3 / North / Toilet 2867 | 1d | 2026-09-09 | 2026-09-09 | P2.L3.BR.2150, P2.L3.BR.4200 |  |  |  | 18d | 0d |  | 40 | ! | EPOXYF | P2-5 |  | EPOXYF |  | MLF |  |  |
| P2.L3.BR.4250 |  | Flooring - Epoxy Floors / L3 / North / Toilet 2867 | 2d | 2026-09-10 | 2026-09-11 | P2.L3.BR.4240 |  |  |  | 92d | 0d |  | 40 | ! | EPOXYF | P2-5 |  | EPOXYF |  | MLF |  |  |
| P2.L3.BR.2160 |  | Doors & Hardware / L3 / North / Toilet 2867 | 2d | 2026-09-14 | 2026-09-15 | P2.L3.BR.2150, P2.L3.BR.4250 |  |  |  | 92d | 0d |  | 16 | ! | DFH | P2-5 |  | DFH |  | MLF |  | AT29 |
| P2.L3.BR.2170 |  | Plumbing Fixtures / Sinks / Showers / L3 / North / Toilet 2867 | 2d | 2026-09-16 | 2026-09-17 | P2.L3.BR.2150, P2.L3.BR.2160, P2.L3.BR.4250 |  |  |  | 100d | 0d |  | 16 | ! | PLMB | P2-5 | Harris | PLMB |  | MLF |  |  |
| P2.L3.BR.2180 |  | Bathroom Accessories / L3 / North / Toilet 2867 | 2d | 2026-09-18 | 2026-09-21 | P2.L3.BR.2170 |  |  |  | 100d | 0d |  | 16 | ! | SPECIAL | P2-5 |  | SPECIAL |  | MLF |  |  |
| P2.L3.BR.2190 |  | Work Completion List - Finishes / L3 / North / Toilet 2867 | 5d | 2026-09-22 | 2026-09-28 | P2.L3.BR.2160, P2.L3.BR.2110, P2.L3.BR.2180 |  |  |  | 100d | 112d | To Punch | 40 |  | AHJ | P2-5 |  | AHJ |  | MLF |  |  |
|  | 2 | **Toilet 3-2933** |  | 2025-05-15 | 2026-09-25 |  |  |  |  |  |  |  |  |  |  |  |  |  |  |  |  |  |
| P2.L3.BR.3000 |  | Plumbing - Set Pipe Carriers / L3 / North / Toilet 2933 | 3d | 2025-05-15 A | 2025-05-20 A | P2.L3.BR.2000 | 100% | 2025-07-17 | 2025-07-21 |  |  | ? | 24 | ! | PLMB | P2-5 | Harris | PLMB |  |  |  |  |
| P2.L3.BR.3010 |  | Framing & Blocking - Walls and Hard Lid Ceilings / L3 / North / Toilet 2933 | 2d | 2025-06-25 A | 2025-07-23 A | P2.L3.BR.3000 | 100% | 2025-07-23 | 2025-07-24 |  |  |  | 16 | ! | GYP | P2-5 |  | GYP-1 | MLF | MLF |  |  |
| P2.L3.BR.3020 |  | Plumbing - Test Pipe / L3 / North / Toilet 2933 | 2d | 2025-12-01 A | 2025-12-02 A | P2.L3.BR.3000 | 100% | 2026-01-02 | 2026-01-05 |  |  |  | 16 |  | PLMB | P2-5 | Harris | PLMB | MLF | MLF | O |  |
| P2.L3.BR.3050 |  | Duct Drops _ Hard Lids / L3 / North / Toilet 2933 | 2d | 2025-12-03 A | 2025-12-04 A | P2.L3.BR.3010 | 100% | 2026-01-06 | 2026-01-07 |  |  |  | 16 | T.R/I.IW.MECH.HVAC.SM | HVAC | P2-5 | Harris | HVAC | MLF | MLF | O |  |
| P2.L3.BR.3070 |  | In Wall - Insulate Plumbing / L3 / North / Toilet 2933 | 2d | 2025-12-05 A | 2025-12-08 A | P2.L3.BR.3020, P2.L3.BR.3050 | 100% | 2026-01-08 | 2026-01-09 |  |  |  | 16 |  | INSUL | P2-5 | Harris | INSUL-3 | MLF | MLF | O |  |
| P2.L3.BR.3030 |  | R/I - Electrical _ Hard Lids / L3 / North / Toilet 2933 | 2d | 2026-04-01 | 2026-04-02 | P2.L3.BR.3070, P2.L3.BR.3010 |  |  |  | 104d | 0d |  | 16 | ! | ELEC | P2-5 |  | ELEC-3 | MLF | MLF | O |  |
| P2.L3.BR.3040 |  | Trim Sprinkler Drops _ Hard Lids / L3 / North / Toilet 2933 | 2d | 2026-04-01 | 2026-04-02 | P2.L3.BR.3010 |  |  |  | 106d | 2d |  | 16 | ! | FP | P2-5 |  | FP-1 | MLF | MLF | O |  |
| P2.L3.BR.3060 |  | R/I - Fire Alarm _ Hard Lids / L3 / North / Toilet 2933 | 2d | 2026-04-03 | 2026-04-06 | P2.L3.BR.3010, P2.L3.BR.3030 |  |  |  | 104d | 0d |  | 16 | ! | ELEC | P2-5 |  | ELEC-3 | MLF | MLF | O |  |
| P2.L3.BR.3080 |  | Inspection - Close In - Hard Lid Ceilings / L3 / North / Toilet 2933 | 3d | 2026-04-07 | 2026-04-09 | P2.L3.BR.3070, P2.L3.BR.3060, P2.L3.BR.3040, P2.L3.BR.3050, P2.L3.BR.3030 |  |  |  | 104d | 56d |  | 24 | ! | AHJ | P2-5 |  | AHJ | MLF | MLF | O |  |
| P2.L3.BR.3090 |  | Hang-Tape-Finish _ Hard Lids Ceilings / L3 / North / Toilet 2933 | 5d | 2026-06-30 | 2026-07-07 | P2.SUM.175, P2.L3.BR.3080, P2.L3.N.1470 SS, P2.L3.S.1470 SS, P2.L3.N.1470 FF, P2.L3.S.1470 FF |  |  |  | 48d | 0d |  | 40 | ! | GYP | P2-5 |  | GYP-1 | MLF | MLF | O |  |
| P2.L3.BR.3100 |  | Paint Prime & Final Coat _ Walls & Hard Lid Ceilings / L3 / North / Toilet 2933 | 2d | 2026-07-08 | 2026-07-09 | P2.L3.BR.3090 |  |  |  | 48d | 0d |  | 16 | ! | PAINT | P2-5 |  | PAINT-1 | MLF | MLF | O |  |
| P2.L3.BR.3140 |  | Trim - HVAC G/R/D's / L3 / North / Toilet 2933 | 2d | 2026-07-10 | 2026-07-13 | BP1.233.3.410, P2.L3.BR.3100 |  |  |  | 48d | 0d |  | 16 | ! | HVAC | P2-5 | Harris | HVAC | MLF | MLF | O |  |
| P2.L3.BR.3120 |  | Pull Wire & Trim Devices - Electrical / L3 / North / Toilet 2933 | 2d | 2026-07-14 | 2026-07-15 | P2.L3.BR.3140, P2.L3.BR.3100 |  |  |  | 48d | 0d |  | 16 | ! | ELEC | P2-5 |  | ELEC-2 | MLF | MLF |  |  |
| P2.L3.BR.3130 |  | Lights - Set & Terminate / L3 / North / Toilet 2933 | 2d | 2026-07-14 | 2026-07-15 | P2.L3.BR.3120 SS |  |  |  | 50d | 2d |  | 16 | ! | ELEC | P2-5 |  | ELEC-2 | MLF | MLF |  |  |
| P2.L3.BR.3110 |  | Pull Wire & Trim Devices - Fire Alarm / L3 / North / Toilet 2933 | 2d | 2026-07-16 | 2026-07-17 | P2.L3.BR.3120, P2.L3.BR.3100 |  |  |  | 48d | 0d |  | 16 | ! | ELEC | P2-5 |  | ELEC-2 | MLF | MLF |  |  |
| P2.L3.BR.3150 |  | Wall Tile / L3 / North / Toilet 2933 | 5d | 2026-07-20 | 2026-07-24 | P2.L3.BR.3140, P2.L3.BR.3130, P2.L3.BR.3110 |  |  |  | 48d | 30d |  | 40 | ! | TILE | P2-5 |  | TILE | MLF | MLF |  |  |
| P2.L3.BR.4200 |  | Flooring Prep - Epoxy Floors / L3 / North / Toilet 2933 | 1d | 2026-09-08 | 2026-09-08 | P2.L3.BR.4260, P2.L3.BR.3150 |  |  |  | 18d | 0d |  | 40 | ! | EPOXYF | P2-5 |  | EPOXYF |  | MLF |  |  |
| P2.L3.BR.4210 |  | Flooring - Epoxy Floors / L3 / North / Toilet 2933 | 2d | 2026-09-09 | 2026-09-10 | P2.L3.BR.4200 |  |  |  | 93d | 0d |  | 40 | ! | EPOXYF | P2-5 |  | EPOXYF |  | MLF |  |  |
| P2.L3.BR.3160 |  | Doors & Hardware / L3 / North / Toilet 2933 | 2d | 2026-09-11 | 2026-09-14 | P2.L3.BR.4210 FF, P2.L3.BR.3150, P2.L3.BR.4210 |  |  |  | 93d | 0d |  | 16 | ! | DFH | P2-5 |  | DFH |  | MLF |  | AT29 |
| P2.L3.BR.3170 |  | Plumbing Fixtures / Sinks / Showers / L3 / North / Toilet 2933 | 2d | 2026-09-15 | 2026-09-16 | P2.L3.BR.3150, P2.L3.BR.3160, P2.L3.BR.4210 |  |  |  | 101d | 0d |  | 16 | ! | PLMB | P2-5 | Harris | PLMB |  | MLF |  |  |
| P2.L3.BR.3180 |  | Bathroom Accessories / L3 / North / Toilet 2933 | 2d | 2026-09-17 | 2026-09-18 | P2.L3.BR.3170 |  |  |  | 101d | 0d |  | 16 | ! | SPECIAL | P2-5 |  | SPECIAL |  | MLF |  |  |
| P2.L3.BR.3190 |  | Work Completion List - Finishes / L3 / North / Toilet 2933 | 5d | 2026-09-21 | 2026-09-25 | P2.L3.BR.3160, P2.L3.BR.3180, P2.L3.BR.3110 |  |  |  | 101d | 113d | To Punch | 40 |  | AHJ | P2-5 |  | AHJ |  | MLF |  |  |

| ID | WBS | Activity | Duration | Start | Finish | Predecessors | Complete | Planned start | Planned finish | Total float | Free float | Pick | Temp Orig Dur | *NIH Resp Check* | Resp / SRLM | PHASE | Z.RESP | RESP / Trade | Update Status | 744 | RESP UPD | Testing Type |
| --- | --- | --- | --- | --- | --- | --- | --- | --- | --- | --- | --- | --- | --- | --- | --- | --- | --- | --- | --- | --- | --- | --- |
|  | 4 | **Toilets 3-2804 / 3-2806** |  | 2025-05-21 | 2026-09-29 |  |  |  |  |  |  |  |  |  |  |  |  |  |  |  |  |  |
| P2.L3.BR.4000 |  | Plumbing - Set Pipe Carriers / L3 / North / Toilets 280X | 3d | 2025-05-21 A | 2025-05-26 A | P2.L3.BR.3000 | 100% | 2025-07-22 | 2025-07-24 |  |  | ? | 24 | ! | PLMB | P2-5 | Harris | PLMB |  |  |  |  |
| P2.L3.BR.4020 |  | Plumbing - Test Pipe / L3 / North / Toilets 280X | 2d | 2025-09-02 A | 2025-09-03 A | P2.L3.BR.4000 | 100% | 2025-10-01 | 2025-10-02 |  |  |  | 16 |  | PLMB | P2-5 | Harris | PLMB | O | MLF | MLF |  |
| P2.L3.BR.4050 |  | Duct Drops _ Hard Lids / L3 / North / Toilets 280X | 2d | 2025-12-04 A | 2025-12-05 A | P2.L3.BR.4010 | 100% | 2026-01-07 | 2026-01-08 |  |  |  | 16 | T.R/I.IW.MECH.HVAC.SM | HVAC | P2-5 | Harris | HVAC | O | MLF | MLF |  |
| P2.L3.BR.4070 |  | In Wall - Insulate Plumbing / L3 / North / Toilets 280X | 2d | 2025-12-08 A | 2025-12-09 A | P2.L3.BR.4020, P2.L3.BR.4050 | 100% | 2026-01-09 | 2026-01-12 |  |  |  | 16 |  | INSUL | P2-5 | Harris | INSUL-3 | O | MLF | MLF |  |
| P2.L3.BR.4010 |  | Framing & Blocking - Walls and Hard Lid Ceilings / L3 / North / Toilets 280X | 1d | 2026-03-16 A | 2026-03-16 A | P2.L3.BR.4000 | 100% | 2026-04-01 | 2026-04-01 |  |  |  | 16 | ! | GYP | P2-5 |  | GYP-1 | O | MLF | MLF |  |
| P2.L3.BR.4030 |  | R/I - Electrical _ Hard Lids / L3 / North / Toilets 280X | 2d | 2026-04-01 | 2026-04-02 | P2.L3.BR.4010, P2.L3.BR.4070 |  |  |  | 106d | 0d |  | 16 | ! | ELEC | P2-5 |  | ELEC-3 | O | MLF | MLF |  |
| P2.L3.BR.4040 |  | Trim Sprinkler Drops _ Hard Lids / L3 / North / Toilets 280X | 2d | 2026-04-01 | 2026-04-02 | P2.L3.BR.4010 |  |  |  | 108d | 2d |  | 16 | ! | FP | P2-5 |  | FP-1 | O | MLF | MLF |  |
| P2.L3.BR.4060 |  | R/I - Fire Alarm _ Hard Lids / L3 / North / Toilets 280X | 2d | 2026-04-03 | 2026-04-06 | P2.L3.BR.4010, P2.L3.BR.4030 |  |  |  | 106d | 0d |  | 16 | ! | ELEC | P2-5 |  | ELEC-3 | O | MLF | MLF |  |
| P2.L3.BR.4080 |  | Inspection - Close In - Hard Lid Ceilings / L3 / North / Toilets 280X | 3d | 2026-04-07 | 2026-04-09 | P2.L3.BR.4060, P2.L3.BR.4070, P2.L3.BR.4030, P2.L3.BR.4040, P2.L3.BR.4050 |  |  |  | 106d | 56d |  | 24 | ! | AHJ | P2-5 |  | AHJ | O | MLF | MLF |  |
| P2.L3.BR.4090 |  | Hang-Tape-Finish _ Hard Lids Ceilings / L3 / North / Toilets 280X | 5d | 2026-06-30 | 2026-07-07 | P2.SUM.175, P2.L3.BR.4080, P2.L3.N.1470 SS, P2.L3.S.1470 SS, P2.L3.N.1470 FF, P2.L3.S.1470 FF |  |  |  | 50d | 0d |  | 40 | ! | GYP | P2-5 |  | GYP-1 | O | MLF | MLF |  |
| P2.L3.BR.4100 |  | Paint Prime & Final Coat _ Walls & Hard Lid Ceilings / L3 / North / Toilets 280X | 2d | 2026-07-08 | 2026-07-09 | P2.L3.BR.4090 |  |  |  | 50d | 0d |  | 16 | ! | PAINT | P2-5 |  | PAINT-1 | O | MLF | MLF |  |
| P2.L3.BR.4140 |  | Trim - HVAC G/R/D's / L3 / North / Toilets 280X | 2d | 2026-07-10 | 2026-07-13 | BP1.233.3.410, P2.L3.BR.4100 |  |  |  | 50d | 0d |  | 16 | ! | HVAC | P2-5 | Harris | HVAC | O | MLF | MLF |  |
| P2.L3.BR.4120 |  | Pull Wire & Trim Devices - Electrical / L3 / North / Toilets 280X | 2d | 2026-07-14 | 2026-07-15 | P2.L3.BR.4140, P2.L3.BR.4100 |  |  |  | 50d | 0d |  | 16 | ! | ELEC | P2-5 |  | ELEC-2 |  | MLF | MLF |  |
| P2.L3.BR.4130 |  | Lights - Set & Terminate / L3 / North / Toilets 280X | 2d | 2026-07-14 | 2026-07-15 | P2.L3.BR.4120 SS |  |  |  | 52d | 2d |  | 16 | ! | ELEC | P2-5 |  | ELEC-2 |  | MLF | MLF |  |
| P2.L3.BR.4110 |  | Pull Wire & Trim Devices - Fire Alarm / L3 / North / Toilets 280X | 2d | 2026-07-16 | 2026-07-17 | P2.L3.BR.4120, P2.L3.BR.4100 |  |  |  | 50d | 0d |  | 16 | ! | ELEC | P2-5 |  | ELEC-2 |  | MLF | MLF |  |
| P2.L3.BR.4150 |  | Wall Tile / L3 / North / Toilets 280X | 5d | 2026-07-20 | 2026-07-24 | P2.L3.BR.4130, P2.L3.BR.4140, P2.L3.BR.4110 |  |  |  | 50d | 32d |  | 40 | ! | TILE | P2-5 |  | TILE |  | MLF | MLF |  |
| P2.L3.BR.4220 |  | Flooring Prep - Epoxy Floors / L3 / North / Toilets 280X | 1d | 2026-09-10 | 2026-09-10 | P2.L3.BR.4240, P2.L3.BR.4150 |  |  |  | 18d | 0d |  | 40 | ! | EPOXYF | P2-5 |  | EPOXYF |  |  | MLF |  |
| P2.L3.BR.4230 |  | Flooring - Epoxy Floors / L3 / North / Toilets 280X | 2d | 2026-09-11 | 2026-09-14 | P2.L3.BR.4220 |  |  |  | 91d | 0d |  | 40 | ! | EPOXYF | P2-5 |  | EPOXYF |  |  | MLF |  |
| P2.L3.BR.4160 |  | Doors & Hardware / L3 / North / Toilets 280X | 2d | 2026-09-15 | 2026-09-16 | P2.L3.BR.4230, P2.L3.BR.4150 |  |  |  | 91d | 0d |  | 16 | ! | DFH | P2-5 |  | DFH |  |  | MLF | AT29 |
| P2.L3.BR.4170 |  | Plumbing Fixtures / Sinks / Showers / L3 / North / Toilets 280X | 2d | 2026-09-17 | 2026-09-18 | P2.L3.BR.4230, P2.L3.BR.4150, P2.L3.BR.4160 |  |  |  | 99d | 0d |  | 16 | ! | PLMB | P2-5 | Harris | PLMB |  |  | MLF |  |
| P2.L3.BR.4180 |  | Bathroom Accessories / L3 / North / Toilets 280X | 2d | 2026-09-21 | 2026-09-22 | P2.L3.BR.4170 |  |  |  | 99d | 0d |  | 16 | ! | SPECIAL | P2-5 |  | SPECIAL |  |  | MLF |  |
| P2.L3.BR.4190 |  | Work Completion List - Finishes / L3 / North / Toilets 280X | 5d | 2026-09-23 | 2026-09-29 | P2.L3.BR.4180, P2.L3.BR.4160, P2.L3.BR.4110 |  |  |  | 99d | 111d | To Punch | 40 |  | AHJ | P2-5 |  | AHJ |  |  | MLF |  |
|  | 1 | **Corridors & Lobbies / Level 3** |  | 2026-07-08 | 2027-01-27 |  |  |  |  |  |  |  |  |  |  |  |  |  |  |  |  |  |
| P2.L3.CL.1000 |  | Paint Prime & 1st Coat Walls / L3 / Corr & Lobbies | 5d | 2026-07-08 | 2026-07-14 | P2.L3.F.CS.1000, P2.L3.N.1470, P2.L3.S.1470 |  |  |  | 15d | 0d |  | 40 |  | PAINT | P2-5 |  | PAINT-1 |  |  | MLF |  |
| P2.L3.CL.1010 |  | Framing - Hard Lid Ceilings / L3 / Corr & Lobbies | 10d | 2026-07-15 | 2026-07-28 | P2.L3.CL.1000 |  |  |  | 15d | 0d |  | 80 |  | GYP | P2-5 |  | GYP-1 |  |  | MLF |  |
| P2.L3.CL.1020 |  | T-Grid / L3 / Corr & Lobbies | 10d | 2026-07-15 | 2026-07-28 | P2.L3.CL.1000 |  |  |  | 15d | 0d |  | 80 |  | ACT | P2-5 |  | ACT |  |  | MLF |  |
| P2.L3.CL.1030 |  | R/I - Electrical - All Ceilings / L3 / Corr & Lobbies | 5d | 2026-07-24 | 2026-07-30 | P2.L3.CL.1020 FF+2d, P2.L3.CL.1010 FF+2d |  |  |  | 15d | 0d |  | 40 |  | ELEC | P2-5 |  | ELEC-2 |  |  | MLF |  |
| P2.L3.CL.1040 |  | R/I - Trim Sprinkler Heads- All Ceilings / L3 / Corr & Lobbies | 5d | 2026-07-24 | 2026-07-30 | P2.L3.CL.1020 FF+2d, P2.L3.CL.1010 FF+2d |  |  |  | 15d | 0d |  | 40 |  | FP | P2-5 |  | FP-1 |  |  | MLF |  |
| P2.L3.CL.1050 |  | R/I - HVAC- All Ceilings / L3 / Corr & Lobbies | 5d | 2026-07-24 | 2026-07-30 | P2.L3.CL.1020 FF+2d, P2.L3.CL.1010 FF+2d |  |  |  | 15d | 0d |  | 40 |  | HVAC | P2-5 | Harris | HVAC |  |  | MLF |  |
| P2.L3.CL.1060 |  | R/I - All Remaining Low Voltage - All Ceilings / L3 / Corr & Lobbies | 5d | 2026-07-24 | 2026-07-30 | P2.L3.CL.1020 FF+2d, P2.L3.CL.1010 FF+2d |  |  |  | 15d | 0d |  | 40 |  | LOWVOLT | P2-5 |  | LOWVOLT-1 |  |  | MLF |  |
| P2.L3.CL.1070 |  | Trim - Sprinkler Heads @ T-Grid / L3 / Corr & Lobbies | 5d | 2026-07-24 | 2026-07-30 | P2.L3.CL.1020 FF+2d |  |  |  | 78d | 20d |  | 40 |  | FP | P2-5 |  | FP-1 |  |  | MLF |  |
| P2.L3.CL.1080 |  | R/I - Fire Alarm/Life Safety - All Ceilings / L3 / Corr & Lobbies | 5d | 2026-07-24 | 2026-07-30 | P2.L3.CL.1010 FF+2d |  |  |  | 15d | 0d |  | 40 |  | FA | P2-5 |  | FA-1 |  |  | MLF |  |
| P2.L3.CL.1090 |  | Inspections - Close In- All Ceilings / L3 / Corr & Lobbies | 5d | 2026-07-31 | 2026-08-06 | P2.L3.CL.1030, P2.L3.CL.1040, P2.L3.CL.1050, P2.L3.CL.1060, P2.L3.CL.1080 |  |  |  | 15d | 0d |  | 40 |  | AHJ | P2-5 |  | AHJ |  |  | MLF |  |
| P2.L3.CL.1100 |  | Pull Wire - Electrical / L3 / Corr & Lobbies | 10d | 2026-07-31 | 2026-08-13 | P2.L3.CL.1030 |  |  |  | 35d | 0d |  | 40 |  | ELEC | P2-5 |  | ELEC-2 |  |  | MLF |  |
| P2.L3.CL.1130 |  | Hang/Tape/Finish- Hard Lid Ceilings / L3 / Corr & Lobbies | 10d | 2026-08-07 | 2026-08-20 | P2.L3.CL.1090 |  |  |  | 15d | 0d |  | 80 |  | GYP | P2-5 |  | GYP-1 |  |  | MLF |  |
| P2.L3.CL.1110 |  | Pull Wire - Fire Alarm / L3 / Corr & Lobbies | 5d | 2026-08-14 | 2026-08-20 | P2.L3.CL.1100, P2.L3.CL.1080 |  |  |  | 40d | 0d |  | 40 |  | FA | P2-5 |  | FA-1 |  |  | MLF |  |
| P2.L3.CL.1120 |  | Pull Wire - All Remianing Low Voltage Systems / L3 / Corr & Lobbies | 5d | 2026-08-21 | 2026-08-27 | P2.L3.CL.1060, P2.L3.CL.1110 |  |  |  | 45d | 0d |  | 40 |  | LOWVOLT | P2-5 |  | LOWVOLT-1 |  |  | MLF |  |
| P2.L3.CL.1190 |  | Paint - Hard Lid Ceilings / L3 / Corr & Lobbies | 5d | 2026-08-21 | 2026-08-27 | P2.L3.CL.1130 |  |  |  | 15d | 0d |  | 40 |  | PAINT | P2-5 |  | PAINT-1 |  |  | MLF |  |
| P2.L3.CL.1140 |  | Drop Ceiling Tiles @ T-Grid / L3 / Corr & Lobbies | 5d | 2026-08-28 | 2026-09-03 | P2.L3.CL.1100, P2.L3.CL.1110, P2.L3.CL.1120, P2.L3.CL.1070 |  |  |  | 58d | 51d |  | 40 |  | ACT | P2-5 |  | ACT |  |  | MLF |  |
| P2.L3.CL.1180 |  | Ceiling Mounted - HVAC GRD's / L3 / Corr & Lobbies | 15d | 2026-08-28 | 2026-09-18 | P2.L3.CL.1190, P2.L3.CL.1020 |  |  |  | 15d | 0d |  | 120 |  | HVAC | P2-5 | Harris | HVAC |  |  | MLF |  |
| P2.L3.CL.1150 |  | Ceiling Mounted - Electrical Devices and Lights / L3 / Corr & Lobbies | 20d | 2026-09-14 | 2026-10-09 | P2.L3.CL.1180 SS+10d, P2.L3.CL.1100, P2.L3.CL.1190 |  |  |  | 15d | 0d |  | 120 |  | ELEC | P2-5 |  | ELEC-2 |  |  | MLF |  |
| P2.L3.CL.1160 |  | Ceiling Mounted - Fire Alarm/Life Saftey Devices / L3 / Corr & Lobbies | 15d | 2026-09-28 | 2026-10-16 | P2.L3.CL.1150 SS+10d, P2.L3.CL.1190, P2.L3.CL.1110, P2.L3.CL.1020 |  |  |  | 15d | 0d |  | 120 |  | FA | P2-5 |  | FA-1 |  |  | MLF |  |
| P2.L3.CL.1170 |  | Ceiling Mounted - All Low Voltage Devices / L3 / Corr & Lobbies | 15d | 2026-10-12 | 2026-10-30 | P2.L3.CL.1160 SS+10d, P2.L3.CL.1190, P2.L3.CL.1120 |  |  |  | 15d | 8d |  | 120 |  | LOWVOLT | P2-5 |  | LOWVOLT-1 |  |  | MLF |  |
| P2.L3.CL.1320 |  | Prep Flooring / L3 / Corr & Lobbies | 2d | 2026-11-12 | 2026-11-13 | P2.L2.CL.1200, P2.L3.CL.1140 SS+2d, P2.L3.CL.1170, P2.L3.CL.1180, P2.L3.CL.1150, P2.L3.CL.1160 |  |  |  | 7d | 0d |  | 80 |  | FLOOR | P2-5 |  | FLOOR |  |  | MLF |  |
| P2.L3.CL.1200 |  | Flooring / L3 / Corr & Lobbies | 8d | 2026-11-16 | 2026-11-25 | P2.L3.CL.1140 SS+2d, P2.L3.CL.1320, P2.L3.CL.1170, P2.L3.CL.1180, P2.L3.CL.1150, P2.L3.CL.1160 |  |  |  | 7d | 0d |  | 80 |  | FLOOR | P2-5 |  | FLOOR |  |  | MLF |  |
| P2.L3.CL.1210 |  | Final Paint / L3 / Corr & Lobbies | 5d | 2026-11-23 | 2026-12-01 | P2.L3.CL.1200 FF+2d, P2.L3.CL.1140, BP7.097.3.100 |  |  |  | 17d | 0d |  | 40 |  | PAINT | P2-5 |  | PAINT-1 |  |  | MLF |  |
| P2.L3.CL.1220 |  | Floor Base / L3 / Corr & Lobbies | 5d | 2026-12-02 | 2026-12-08 | P2.L3.CL.1210 |  |  |  | 37d | 20d |  | 40 |  | FLOOR | P2-5 |  | FLOOR |  |  | MLF |  |
| P2.L3.CL.1250 |  | Trim - HVAC - Wall Mounted Devices / L3 / Corr & Lobbies | 5d | 2026-12-02 | 2026-12-08 | P2.L3.CL.1210 |  |  |  | 17d | 0d |  | 40 |  | BAS | P2-5 | Harris | BAS-1 |  |  | MLF |  |
| P2.L3.CL.1230 |  | Trim - All Electrical - Wall Mounted Devices / L3 / Corr & Lobbies | 5d | 2026-12-09 | 2026-12-15 | P2.L3.CL.1250, P2.L3.CL.1210 |  |  |  | 17d | 0d |  | 40 |  | ELEC | P2-5 |  | ELEC-2 |  |  | MLF |  |
| P2.L3.CL.1240 |  | Trim - Fire Alarm - Wall Mounted Devices / L3 / Corr & Lobbies | 5d | 2026-12-16 | 2026-12-22 | P2.L3.CL.1230, P2.L3.CL.1210 |  |  |  | 17d | 0d |  | 40 |  | FA | P2-5 |  | FA-1 |  |  | MLF |  |
| P2.L3.CL.1260 |  | Trim - All Remining Low Voltage Systems - Wall Mounted Devices / L3 / Corr & Lobbies | 5d | 2026-12-23 | 2026-12-30 | P2.L3.CL.1240, P2.L3.CL.1210 |  |  |  | 17d | 0d |  | 40 |  | LOWVOLT | P2-5 |  | LOWVOLT-1 |  |  | MLF |  |
| P2.L3.CL.1270 |  | Building Signage / L3 / Corr & Lobbies | 5d | 2026-12-31 | 2027-01-07 | P2.L3.CL.1260, P2.L3.CL.1210 |  |  |  | 17d | 0d |  | 40 |  | SIGN | P2-5 |  | SIGN |  |  | MLF |  |
| P2.L3.CL.1280 |  | Work Completion List / L3 / Corr & Lobbies | 5d | 2027-01-08 | 2027-01-14 | P2.L3.CL.1270, P2.L3.CL.1250, P2.L3.CL.1260, P2.L3.CL.1220, P2.L3.CL.1230, P2.L3.CL.1240 |  |  |  | 17d | 0d |  | 40 |  | T | P2-5 |  | T |  |  | MLF |  |
| P2.L3.CL.1290 |  | Rough Clean / L3 / Corr & Lobbies | 2d | 2027-01-15 | 2027-01-18 | P2.L3.CL.1280 |  |  |  | 17d | 0d |  | 16 |  | FCLEAN | P2-5 |  | FCLEAN |  |  | MLF |  |
| P2.L3.CL.1300 |  | Punchlist / L3 / Corr & Lobbies | 5d | 2027-01-19 | 2027-01-25 | P2.L3.CL.1290 |  |  |  | 17d | 0d |  | 40 |  | AHJ | P2-5 |  | AHJ |  |  | MLF |  |
| P2.L3.CL.1310 |  | Final Clean / L3 / Corr & Lobbies | 2d | 2027-01-26 | 2027-01-27 | P2.L3.CL.1300 |  |  |  | 17d | 29d |  | 16 |  | FCLEAN | P2-5 |  | FCLEAN |  |  | MLF |  |

| ID | WBS | Activity | Duration | Start | Finish | Predecessors | Complete | Remaining | Planned start | Planned finish | Total float | Free float | Temp Orig Dur | Act ID Temp | Resp / SRLM | PHASE | Z.RESP | RESP / Trade | Testing Type | Pick | 744 | RESP UPD | Update Status |
| --- | --- | --- | --- | --- | --- | --- | --- | --- | --- | --- | --- | --- | --- | --- | --- | --- | --- | --- | --- | --- | --- | --- | --- |
|  | L3F | **LAB & CLINICAL SPACES / LEVEL 3** |  | 2025-03-03 | 2027-01-11 |  |  |  |  |  |  |  |  |  |  |  |  |  |  |  |  |  |  |
|  | 3 | **ROUGH IN - Lab & Clinical Spaces (Below Interstitials) / Level 3** |  | 2025-03-03 | 2026-07-10 |  |  |  |  |  |  |  |  |  |  |  |  |  |  |  |  |  |  |
| P2.L3.LC.1000 |  | Layout - All Trades / L3 / Lab & Clinical | 5d | 2025-03-03 A | 2025-03-15 A | P2.4.I.05.220, P2.4.I.03.310, P2.5.03.660 SS | 100% |  | 2025-03-03 | 2025-03-07 |  |  | 40 | P2.B2.01.010 | R/I.OH | P2-5 | Harris | R/I.OH |  |  |  |  |  |
| P2.L3.LC.1020 |  | OH - Structural Supports (All Trades) / L3 / Lab & Clinical | 10d | 2025-03-17 A | 2025-03-31 A | P2.L3.LC.1000 | 100% |  | 2025-03-10 | 2025-03-21 |  |  | 80 | P2.B2.05.45.110 | R/I.OH | P2-5 | Harris | R/I.OH | AT24 |  |  |  |  |
| P2.L3.LC.1030 |  | OH - MEPF - Hangers & Supports / L3 / Lab & Clinical | 10d | 2025-03-17 A | 2025-04-07 A | P2.BIM.L3.40.140, P2.L3.LC.1000 | 100% |  | 2025-03-10 | 2025-03-21 |  |  | 80 | P2.B2.20.05.410 | MEP | P2-5 | Harris | MEP-2 |  |  |  |  |  |
| P2.L3.LC.1610 |  | OH - Integrated Ceilings Structural Supports ( Supports) / L3 / Lab & Clinical | 10d | 2025-03-17 A | 2025-04-01 A | BP1.095.2.100, P2.L3.LC.1000 | 100% |  | 2025-03-10 | 2025-03-21 |  |  | 80 | P2.B2.05.45.110 | FORS | P2-5 | Harris | FORS |  |  |  |  |  |
| P2.L3.LC.1010 |  | Framing - Top Track / L3 / Lab & Clinical | 10d | 2025-03-24 A | 2025-03-31 A | P2.L3.N.1010, P2.L3.LC.1000 | 100% |  | 2025-03-18 | 2025-03-31 |  |  | 80 | P2.B2.09.21.110 | GYP | P2-5 |  | GYP-1 |  |  |  |  |  |
| P2.L3.LC.1540 |  | OH - Fireproof Interstitial Steel Above / L3 / Lab & Clinical | 10d | 2025-03-31 A | 2025-04-28 A | P2.4.I.03.320, P2.L3.LC.1610 SS+3d, P2.L3.LC.1020, P2.L3.LC.1030 SS | 100% |  | 2025-03-24 | 2025-04-04 |  |  | 80 | P2.1.09.81.140X10 | SPRAY | P2-5 |  | SPRAY | AT49 |  |  |  |  |
| P2.L3.LC.1050 |  | OH - Fire Suppression / L3 / Lab & Clinical | 10d | 2025-04-21 A | 2025-05-15 A | P2.L3.LC.1380, P2.L3.LC.1540 | 100% |  | 2025-07-03 | 2025-07-17 |  |  | 80 | P2.B2.21.13.210 | FP | P2-5 |  | FP-1 |  | 1 |  |  |  |
| P2.L3.LC.1100 |  | Framing - Priority Walls & Door Frames / L3 / Lab & Clinical | 10d | 2025-05-05 A | 2025-05-23 A | P2.L3.N.1090, P2.L3.LC.1010, P2.L3.LC.1540 | 100% |  | 2025-06-02 | 2025-06-13 |  |  | 80 | P2.B2.09.21.310 | GYP | P2-5 |  | GYP-1 |  |  |  |  |  |
| P2.L3.LC.1360 |  | Framing - Priority Walls - AHJ Inspections / L3 / Lab & Clinical | 5d | 2025-05-15 A | 2025-05-30 A | P2.L3.LC.1100 | 100% |  | 2025-06-16 | 2025-06-20 |  |  | 80 | P2.B2.01.43.010 | FM | P2-5 |  | FM |  |  |  |  |  |
| P2.L3.LC.1370 |  | Hang/Tape/Finish - Priority Walls / L3 / Lab & Clinical | 10d | 2025-05-19 A | 2025-06-27 A | P2.L3.N.1140, P2.L3.LC.1360 | 100% |  | 2025-06-23 | 2025-07-07 |  |  | 80 | P2.B2.09.21.210 | GYP | P2-5 |  | GYP-1 |  |  | ND | ND |  |
| P2.L3.LC.1400 |  | Spray/Seal/Firestop - Head of Wall - Priority Walls / L3 / Lab & Clinical | 5d | 2025-05-19 A | 2025-05-23 A | P2.L3.LC.1370 | 100% |  | 2025-07-08 | 2025-07-14 |  |  | 80 | P2.B2.07.84.410 | FIRESTO | P2-5 |  | FIRESTO | AT47 |  |  |  |  |
| P2.L3.LC.1200 |  | OH - Electrical - 208/120v Branch / L3 / Lab & Clinical | 10d | 2025-06-09 A | 2025-08-21 A | P2.L3.LC.1080 | 100% |  | 2025-08-18 | 2025-08-29 |  |  | 80 | P2.B2.26.05.310 | ELEC | P2-5 |  | ELEC-2 |  | 2 | MLF | MLF |  |
| P2.L3.LC.1060 |  | OH - Hang Duct - HP Mains (South) / L3 / Lab & Clinical | 20d | 2025-06-16 A | 2025-07-31 A | P2.L3.N.1210, P2.L3.LC.1190, P2.L3.LC.1540 | 100% |  | 2025-07-28 | 2025-08-22 |  |  | 80 | P2.B2.23.30.210 | HVAC | P2-5 | Harris | HVAC |  | 1 | MLF | MLF |  |
| P2.L3.LC.1570 |  | OH - Hang Duct - HP Mains (North) / L3 / Lab & Clinical | 20d | 2025-06-16 A | 2025-08-21 A | P2.L3.LC.1060 | 100% |  | 2025-08-25 | 2025-09-22 |  |  | 80 | P2.B2.23.30.210 | HVAC | P2-5 | Harris | HVAC |  | 1 | MLF | MLF |  |
| P2.L3.LC.1080 |  | OH - Electrical - 480/277v Distribution / L3 / Lab & Clinical | 20d | 2025-06-17 A | 2025-08-14 A | P2.L3.LC.1380, P2.L3.LC.1540 | 100% |  | 2025-07-21 | 2025-08-15 |  |  | 80 | P2.B2.26.05.210 | ELEC | P2-5 |  | ELEC-2 |  | 1 | MLF | MLF |  |
| P2.L3.LC.1560 |  | OH - Plumbing Piping (Low) / L3 / Lab & Clinical | 20d | 2025-06-17 A | 2025-08-07 A | P2.L3.LC.1070 | 100% |  | 2025-08-18 | 2025-09-15 |  |  | 80 | P2.B2.22.14.210 | PLMB | P2-5 | Harris | PLMB |  | 1 | MLF | MLF |  |
| P2.L3.LC.1070 |  | OH - Plumbing Piping (High) / L3 / Lab & Clinical | 20d | 2025-06-18 A | 2025-07-22 A | P2.L3.LC.1380, P2.L3.LC.1540 | 100% |  | 2025-07-21 | 2025-08-15 |  |  | 80 | P2.B2.22.14.210 | PLMB | P2-5 | Harris | PLMB |  | 1 | MLF | MLF |  |
| P2.L3.LC.1090 |  | OH - HVAC Piping / L3 / Lab & Clinical | 5d | 2025-06-19 A | 2025-08-01 A | P2.L3.LC.1050, P2.L3.LC.1540 | 100% |  | 2025-07-21 | 2025-07-25 |  |  | 80 | P2.B2.23.20.410 | FIT | P2-5 | Harris | FIT-2 |  | 2 | MLF | MLF |  |
| P2.L3.LC.1380 |  | Paint Prime & 1st Coat - Priority Walls / L3 / Lab & Clinical | 10d | 2025-06-27 A | 2025-06-27 A | P2.L3.LC.1400 SS | 100% |  | 2025-07-07 | 2025-07-18 |  |  | 80 | P2.B2.09.91.110 | PAINT | P2-5 |  | PAINT-1 |  |  | MLF | MLF |  |
| P2.L3.LC.1190 |  | Firestop - Thru Wall - Priority Walls / L3 / Lab & Clinical | 5d | 2025-07-01 A | 2025-07-08 A | P2.L3.LC.1380 | 100% |  | 2025-08-01 | 2025-08-07 |  |  | 80 | P2.B2.07.84.110 | FIRESTO | P2-5 |  | FIRESTO | AT48 |  | MLF | MLF |  |
| P2.L3.LC.1390 |  | OH - Set & Connect Mech Equipment / L3 / Lab & Clinical | 10d | 2025-07-23 A | 2025-08-01 A | P2.L3.LC.1220 | 100% |  | 2025-10-14 | 2025-10-27 |  |  | 80 | P2.B2.23.82.110 | HVAC | P2-5 | Harris | HVAC |  | 3 | MLF | MLF |  |
| P2.L3.LC.1240 |  | OH - HVAC Piping - Test / L3 / Lab & Clinical | 5d | 2025-07-29 A | 2025-08-07 A | P2.L3.LC.1090 | 100% |  | 2025-09-16 | 2025-09-22 |  |  | 80 | P2.B2.23.20.510 | FIT | P2-5 | Harris | FIT-2 |  | 3 | MLF | MLF |  |
| P2.L3.LC.1040 |  | OH - Insulate HP Duct / L3 / Lab & Clinical | 10d | 2025-08-18 A | 2025-08-28 A | P2.L3.LC.1220 | 100% |  | 2025-10-14 | 2025-10-27 |  |  | 80 | P2.B2.23.07.310 | INSUL | P2-5 | Harris | INSUL-3 |  | 3 | MLF | MLF |  |
| P2.L3.LC.1220 |  | OH - DALT - HP Mains / L3 / Lab & Clinical | 10d | 2025-08-18 A | 2025-08-27 A | P2.L3.LC.1570 | 100% |  | 2025-09-30 | 2025-10-13 |  |  | 80 | P2.B2.23.30.310 | TAB | P2-5 | Harris | TAB-1 |  | 2 | MLF | MLF |  |
| P2.L3.LC.1250 |  | OH - Insulate HVAC Pipe / L3 / Lab & Clinical | 10d | 2025-10-08 A | 2025-10-21 A | P2.L3.LC.1040, P2.L3.LC.1240 | 100% |  |  |  |  |  | 80 | P2.B2.22.07.610 | INSUL | P2-5 | Harris | INSUL-3 |  | 4 | MLF | MLF |  |
| P2.L3.LC.1280 |  | OH - Plumbing - Test / L3 / Lab & Clinical | 20d | 2025-10-08 A | 2025-10-16 A | P2.L3.LC.1560 | 100% |  | 2025-10-01 | 2025-10-28 |  |  | 80 | P2.B2.22.14.310 | PLMB | P2-5 | Harris | PLMB |  | 2 | MLF | MLF |  |
| P2.L3.LC.1270 |  | OH - Insulate Plumbing / L3 / Lab & Clinical | 10d | 2025-10-20 A | 2025-10-31 A | P2.L3.LC.1280 | 100% |  | 2025-10-29 | 2025-11-11 |  |  | 80 | P2.B2.22.07.510 | INSUL | P2-5 | Harris | INSUL-3 |  | 3 | MLF | MLF |  |
| P2.L3.LC.1640 |  | Chair Carrier - In Wall Rough-in / L3 / Lab & Clinical | 3d | 2025-11-03 A | 2025-11-10 A | P2.L3.LC.1410 FF | 100% |  | 2025-12-22 | 2025-12-24 |  |  | 120 |  | LABCASE | P2-5 |  | LABCASE |  |  |  | MLF |  |
| P2.L3.LC.1120 |  | OH - Hang Duct - LP Branch / L3 / Lab & Clinical | 20d | 2025-12-01 A | 2025-12-29 A | P2.L3.LC.1220 | 100% |  | 2026-01-02 | 2026-01-29 |  |  | 80 | P2.B2.23.30.410 | HVAC | P2-5 | Harris | HVAC |  | 3 | MLF | MLF | O |
| P2.L3.LC.2480 |  | OH - Integrated Ceilings MEP Infrastructure (Trunkline, monotrack, Etc.) / L3 / Lab & Clinical | 5d | 2025-12-01 A | 2025-12-31 A | P2.L3.LC.1610, P2.L3.LC.1120 SS | 100% |  | 2026-01-02 | 2026-01-08 |  |  | 80 | P2.B2.05.45.110 | FORS | P2-5 | Harris | FORS |  |  | SS | MLF | O |
| P2.L3.LC.1410 |  | Framing - Balance of Framing & Door Frames / L3 / Lab & Clinical | 10d | 2025-12-22 A | 2026-01-29 A | P2.L1.LC.1420 | 100% |  | 2026-01-02 | 2026-01-15 |  |  | 80 | A1310 | GYP | P2-5 |  | GYP-1 |  |  |  | MLF | O |
| P2.L3.LC.1130 |  | Spray/Seal/Firestop - Head of Wall / L3 / Lab & Clinical | 10d | 2026-01-02 A | 2026-01-29 A | P2.L3.LC.2480 | 100% |  | 2026-01-02 | 2026-01-15 |  |  | 80 | P2.B2.07.84.310 | FIRSAFE | P2-5 |  | FIRSAFE | AT47 | To Finishes - Paint |  | MLF |  |
| P2.L3.LC.1210 |  | OH - Electrical - Equip Tie In / L3 / Lab & Clinical | 10d | 2026-03-02 A | 2026-03-31 A | P2.L3.LC.1390 | 100% |  | 2026-03-02 | 2026-03-13 |  |  | 80 | P2.B2.26.05.410 | ELEC | P2-5 |  | ELEC-2 |  | 4 | MLF | MLF | O |
| P2.L3.LC.1110 |  | In Wall - Plumbing - Framing / L3 / Lab & Clinical | 10d | 2026-03-04 A | 2026-03-17 A | P2.L3.LC.1410, P2.L3.LC.1640, RFP.014.1040, PCO.824.1170 | 100% |  | 2026-05-07 | 2026-05-20 |  |  | 80 | P2.B2.22.05.410 | PLMB | P2-5 | Harris | PLMB |  |  |  | MLF |  |
| P2.L3.LC.1140 |  | In Wall - Electrical - Framing / L3 / Lab & Clinical | 10d | 2026-03-09 A | 2026-04-28 | P2.L3.LC.1410 FF+2d, P2.L3.LC.1200, OFOI.PWS.1240, P2.L3.LC.1640, RFP.014.1040 |  | 10d | 2026-03-16 | 2026-03-27 | 19d | 0d | 80 | P2.B2.26.05.610 | ELEC | P2-5 |  | ELEC-2 |  |  |  | MLF |  |
| P2.L3.LC.1160 |  | Firestop - Thru Wall / L3 / Lab & Clinical | 10d | 2026-03-09 A | 2026-03-20 A | P2.L3.LC.1270 | 100% |  | 2026-03-02 | 2026-03-13 |  |  | 80 | P2.B2.07.84.210 | FIRESTO | P2-5 |  | FIRESTO | AT48 | To Finishes - Paint |  | MLF |  |
| P2.L3.LC.1490 |  | OH - Conduit - Low Volt - BAS/Controls / L3 / Lab & Clinical | 10d | 2026-03-09 A | 2026-03-30 A | P2.L3.LC.1390, P2.L3.LC.1250 | 100% |  | 2026-03-02 | 2026-03-13 |  |  | 80 |  | BAS | P2-5 | Harris | BAS-1 |  | 5 | MLF | MLF | O |
| P2.L3.LC.1470 |  | Pull Wire - Electrical - 480/277v Distribution / L3 / Lab & Clinical | 10d | 2026-03-11 A | 2026-03-25 A | P2.L3.LC.1080 | 100% |  | 2026-03-02 | 2026-03-13 |  |  | 80 |  | ELEC | P2-5 |  | ELEC-2 |  | To Trim Devices & Term Panel | MLF | MLF | O |
| P2.L3.LC.1230 |  | OH - HVAC Piping - Equip Tie In / L3 / Lab & Clinical | 10d | 2026-03-16 A | 2026-03-27 A | P2.L3.LC.1390, P2.L3.LC.1240 | 100% |  | 2026-03-30 | 2026-04-10 |  |  | 80 | P2.B2.23.20.610 | FIT | P2-5 | Harris | FIT-2 |  |  | MLF | MLF |  |
| P2.L3.LC.1430 |  | Pull Wire - Low Volt - BAS/Controls / L3 / Lab & Clinical | 10d | 2026-03-16 A | 2026-03-31 A | P2.L3.LC.1490 | 100% |  | 2026-03-16 | 2026-03-27 |  |  | 80 |  | BAS | P2-5 | Harris | BAS-1 |  | To Trim Finishes |  | MLF |  |
| P2.L3.LC.1510 |  | OH - Conduit - Low Volt - Telecom / L3 / Lab & Clinical | 10d | 2026-03-25 A | 2026-04-28 | P2.L3.LC.1260 |  | 10d | 2026-03-16 | 2026-03-27 | 29d | 0d | 80 |  | ELEC | P2-5 |  | ELEC-2 |  | 5 |  | MLF |  |
| P2.L3.LC.1260 |  | OH - Insulate LP Duct / L3 / Lab & Clinical | 10d | 2026-04-01 | 2026-04-14 | P2.L3.LC.1120 |  |  |  |  | 29d | 0d | 80 | P2.B2.23.07.410 | INSUL | P2-5 | Harris | INSUL-3 |  | 4 | MLF | MLF | O |
| P2.L3.LC.1520 |  | OH - Conduit - Low Volt - Security / L3 / Lab & Clinical | 10d | 2026-04-01 | 2026-04-14 | P2.L3.LC.1250 |  |  |  |  | 39d | 0d | 80 |  | ELEC | P2-5 |  | ELEC-2 |  | 5 | MLF | MLF | O |
| P2.L3.LC.1150 |  | In Wall - Backing/Blocking/Supports / L3 / Lab & Clinical | 10d | 2026-04-15 | 2026-04-28 | P2.L3.LC.1410, OFOI.PWS.1240, P2.L3.LC.1640, RFP.014.1040 |  |  |  |  | 83d | 31d | 80 | P2.B2.09.21.510 | R/I.IW | P2-5 |  | R/I.IW |  |  |  | MLF |  |
| P2.L3.LC.1460 |  | Pull Wire - Low Volt - Security / L3 / Lab & Clinical | 10d | 2026-04-15 | 2026-04-28 | P2.L3.LC.1520 |  |  |  |  | 39d | 20d | 80 |  | LOWVOLT | P2-5 |  | LOWVOLT-1 |  | To Trim Finishes |  | MLF |  |
| P2.L3.LC.1500 |  | OH - Conduit - Low Volt - Fire Alarm / L3 / Lab & Clinical | 10d | 2026-04-15 | 2026-04-28 | P2.L3.LC.1390, P2.L3.LC.1260 |  |  |  |  | 29d | 0d | 80 |  | FA | P2-5 |  | FA-1 |  | 5 |  | MLF |  |
| P2.L3.LC.1530 |  | OH - Conduit - Low Volt - Medical Services/Nurse Call (?) / L3 / Lab & Clinical | 10d | 2026-04-15 | 2026-04-28 | P2.L3.LC.1260 |  |  |  |  | 29d | 0d | 80 |  | ELEC | P2-5 |  | ELEC-2 |  | 5 |  | MLF |  |
| P2.L3.LC.1420 |  | Pull Wire - Electrical - 208/120v Branch & Equip / L3 / Lab & Clinical | 20d | 2026-04-29 | 2026-05-27 | P2.L3.LC.1200, P2.L3.LC.1210, P2.L3.LC.1140 |  |  |  |  | 19d | 0d | 80 |  | ELEC | P2-5 |  | ELEC-2 |  | To Trim Devices & Term Panel |  | MLF |  |
| P2.L3.LC.1440 |  | Pull Wire - Low Volt - Fire Alarm / L3 / Lab & Clinical | 10d | 2026-04-29 | 2026-05-12 | P2.L3.LC.1500 |  |  |  |  | 29d | 10d | 80 |  | FA | P2-5 |  | FA-1 |  | To Trim Finishes |  | MLF |  |
| P2.L3.LC.1450 |  | Pull Wire - Low Volt - Telecom / L3 / Lab & Clinical | 10d | 2026-04-29 | 2026-05-12 | P2.L3.LC.1510 |  |  |  |  | 29d | 10d | 80 |  | CIT | P2-5 |  | CIT |  | To Trim Finishes |  | MLF |  |
| P2.L3.LC.1480 |  | Pull Wire - Low Volt - Medical Services/Nurse Call (?) / L3 / Lab & Clinical | 10d | 2026-04-29 | 2026-05-12 | P2.L3.LC.1530 |  |  |  |  | 29d | 10d | 80 |  | LOWVOLT | P2-5 |  | LOWVOLT-1 |  | To Trim Finishes |  | MLF |  |
| P2.L3.LC.1550 |  | Trades Inspect & Verify R/I Work Completed to Specs / L3 / Lab & Clinical | 5d | 2026-05-28 | 2026-06-03 | P2.L3.LC.1420, P2.L3.LC.1430, P2.L3.LC.1440, P2.L3.LC.1450, P2.L3.LC.1460, P2.L3.LC.1160, P2.L3.LC.1130, P2.L3.LC.1470, P2.L3.LC.1480, P2.L3.LC.1230 |  |  |  |  | 19d | 0d | 40 |  | T | P2-5 |  | T |  |  |  | MLF |  |
| P2.L3.LC.1170 |  | AHJ Inspections - Wall Close In / L3 / Lab & Clinical | 5d | 2026-06-12 | 2026-06-18 | PCO.225.1280, P2.L3.LC.1140, P2.L3.LC.1150, P2.L3.LC.1110, P2.L3.LC.1640, RFP.014.1040 |  |  |  |  | 52d | 0d | 40 | P2.B2.01.43.110 | FM | P2-5 |  | FM |  |  |  | MLF |  |
| P2.L3.LC.1180 |  | Hang-Tape-Finish - Walls / L3 / Lab & Clinical | 15d | 2026-06-19 | 2026-07-10 | P2.SUM.175, P2.L3.LC.1170, BP4.134.3.130 |  |  |  |  | 52d | 0d | 80 | P2.B2.09.21.710 | GYP | P2-5 |  | GYP-1 |  |  |  | MLF |  |

| ID | WBS | Activity | Duration | Start | Finish | Predecessors | Total float | Free float | Temp Orig Dur | Resp / SRLM | PHASE | RESP UPD | RESP / Trade | *NIH Resp Check* | Z.RESP | Testing Type | Act ID Temp |
| --- | --- | --- | --- | --- | --- | --- | --- | --- | --- | --- | --- | --- | --- | --- | --- | --- | --- |
|  | 13 | **FINISHES - Lab & Clinical Spaces (Below Interstitials) / Level 3** |  | 2026-06-04 | 2027-01-11 |  |  |  |  |  |  |  |  |  |  |  |  |
|  | 2 | **ORs 2-6 / Minor Procedure Suites - Room Blocks 3-39.. & 3-29.. / Level 3** |  | 2026-06-04 | 2027-01-11 |  |  |  |  |  |  |  |  |  |  |  |  |
| P2.L3.F.LC.1000 |  | Paint - Walls / L3 / ORs 2-6 & Procedures | 5d | 2026-06-04 | 2026-06-10 | P2.L3.LC.1550 | 21d | 0d | 40 | PAINT | P2-5 | MLF | PAINT-1 |  |  |  |  |
| P2.L3.F.LC.1010 |  | R/I - Ceiling Assemblies & Supports - Med Equip / L3 / ORs 2-6 & Procedures | 5d | 2026-06-11 | 2026-06-17 | CW.FD-MU -210, P2.L3.F.LC.1000 | 21d | 0d | 40 | ACT | P2-5 | MLF | ACT | ! |  |  |  |
| P2.L3.F.LC.1020 |  | Framing - Hard Lid Ceilings / L3 / ORs 2-6 & Procedures | 5d | 2026-06-18 | 2026-06-24 | P2.L3.F.LC.1010 | 21d | 0d | 40 | GYP | P2-5 | MLF | GYP-1 | ! |  |  |  |
| P2.L3.F.LC.1030 |  | R/I - Lights & Devices - Hard Lids Ceilings / L3 / ORs 2-6 & Procedures | 10d | 2026-06-25 | 2026-07-09 | P2.L3.F.LC.1020 | 21d | 0d | 40 | ELEC | P2-5 | MLF | ELEC-2 | ! |  |  |  |
| P2.L3.F.LC.1040 |  | R/I - Diffusers - Hard Lid Ceilings / L3 / ORs 2-6 & Procedures | 5d | 2026-06-25 | 2026-07-01 | P2.L3.F.LC.1020 | 26d | 5d | 40 | HVAC | P2-5 | MLF | HVAC | ! | Harris |  |  |
| P2.L3.F.LC.1050 |  | R/I - Sprinkler Heads - Hard Lid Ceilings / L3 / ORs 2-6 & Procedures | 5d | 2026-06-25 | 2026-07-01 | P2.L3.F.LC.1020 | 26d | 5d | 40 | FP | P2-5 | MLF | FP-1 | ! |  |  |  |
| P2.L3.F.LC.1060 |  | R/I - Fire Alarm - Hard Lid Ceilings / L3 / ORs 2-6 & Procedures | 5d | 2026-06-25 | 2026-07-01 | P2.L3.F.LC.1020 | 26d | 5d | 40 | FA | P2-5 | MLF | FA-1 |  |  |  |  |
| P2.L3.F.LC.1070 |  | OH Ceiling Inspection & Signoff - Hard Lid Ceilings / L3 / ORs 2-6 & Procedures | 5d | 2026-07-10 | 2026-07-16 | P2.L3.F.LC.1040, P2.L3.F.LC.1050, P2.L3.F.LC.1060, P2.L3.F.LC.1030 | 21d | 0d | 40 | AHJ | P2-5 | MLF | AHJ | ! |  |  |  |
| P2.L3.F.LC.3470 |  | Equipment (Before Flooring) / L3 / ORs 2-6 & Procedures | 3d | 2026-07-13 | 2026-07-15 | P2.L3.LC.1180 | 52d | 0d | 120 | LABCASE | P2-5 | MLF | LABCASE |  |  |  |  |
| P2.L3.F.LC.1080 |  | Hang-Tape-Finish _Hard Lid Ceilings / L3 / ORs 2-6 & Procedures | 5d | 2026-07-17 | 2026-07-23 | P2.L3.F.LC.1070 | 21d | 0d | 40 | GYP | P2-5 | MLF | GYP-1 | ! |  |  |  |
| P2.L3.F.LC.1090 |  | Paint Ceilings / L3 / ORs 2-6 & Procedures | 5d | 2026-07-24 | 2026-07-30 | P2.L3.F.LC.1080 | 21d | 0d | 40 | PAINT | P2-5 | MLF | PAINT-1 |  |  |  |  |
| P2.L3.F.LC.1100 |  | Waterproof Ceramic Tile / L3 / ORs 2-6 & Procedures | 5d | 2026-07-31 | 2026-08-06 | P2.L3.F.LC.1090 | 21d | 0d | 40 | TILE | P2-5 | MLF | TILE |  |  |  |  |
| P2.L3.F.LC.3460 |  | Casework (Before Flooring) / L3 / ORs 2-6 & Procedures | 5d | 2026-07-31 | 2026-08-06 | P2.L3.LC.1180, BP6.123.3.100, P2.L3.F.LC.1000, P2.L3.F.LC.1090 | 66d | 22d | 120 | LABCASE | P2-5 | MLF | LABCASE |  |  |  |  |
| P2.L3.F.LC.1110 |  | Ceramic Tile / L3 / ORs 2-6 & Procedures | 5d | 2026-08-07 | 2026-08-13 | P2.L3.F.LC.1100 | 21d | 0d | 40 | TILE | P2-5 | MLF | TILE |  |  |  |  |
| P2.L3.F.LC.1120 |  | T-Grid / L3 / ORs 2-6 & Procedures | 5d | 2026-08-14 | 2026-08-20 | P2.L3.F.LC.1110 | 21d | 0d | 40 | ACT | P2-5 | MLF | ACT |  |  |  |  |
| P2.L3.F.LC.1130 |  | Diffusers in T-Grid / L3 / ORs 2-6 & Procedures | 5d | 2026-08-21 | 2026-08-27 | P2.L3.F.LC.1120 | 21d | 0d | 40 | HVAC | P2-5 | MLF | HVAC |  | Harris |  |  |
| P2.L3.F.LC.1140 |  | Lights & Devices / L3 / ORs 2-6 & Procedures | 5d | 2026-08-21 | 2026-08-27 | P2.L3.F.LC.1120 | 21d | 0d | 40 | ELEC | P2-5 | MLF | ELEC-2 |  |  |  |  |
| P2.L3.F.LC.1150 |  | Sprinkler Heads / L3 / ORs 2-6 & Procedures | 5d | 2026-08-21 | 2026-08-27 | P2.L3.F.LC.1120 | 21d | 0d | 40 | FP | P2-5 | MLF | FP-1 |  |  |  |  |
| P2.L3.F.LC.1160 |  | Trim Low Voltage / L3 / ORs 2-6 & Procedures | 5d | 2026-08-21 | 2026-08-27 | P2.L3.F.LC.1120 | 21d | 0d | 40 | LOWVOLT | P2-5 | MLF | LOWVOLT-1 |  |  |  |  |
| P2.L3.F.LC.1170 |  | Trim Fire Alarm / L3 / ORs 2-6 & Procedures | 5d | 2026-08-21 | 2026-08-27 | P2.L3.F.LC.1120 | 21d | 0d | 40 | FA | P2-5 | MLF | FA-1 |  |  |  |  |
| P2.L3.F.LC.3400 |  | Floor Prep - Epoxy Floors / L3 / ORs 2-6 | 5d | 2026-08-21 | 2026-08-27 | P2.L3.F.LC.2180 | 19d | 0d | 40 | EPOXYF | P2-5 | MLF | EPOXYF |  |  |  |  |
| P2.L3.F.LC.1180 |  | OH Ceiling Signoff / L3 / ORs 2-6 & Procedures | 10d | 2026-08-28 | 2026-09-11 | P2.L3.F.LC.1160, P2.L3.F.LC.1170, P2.L3.F.LC.1150, P2.L3.F.LC.1130, P2.L3.F.LC.1140 | 21d | 0d | 80 | MEP | P2-5 | MLF | MEP |  | Harris |  |  |
| P2.L3.F.LC.3410 |  | Flooring - Epoxy Floors / L3 / ORs 2-6 | 2d | 2026-08-28 | 2026-08-31 | P2.L3.F.LC.3400 | 19d | 0d | 40 | EPOXYF | P2-5 | MLF | EPOXYF |  |  |  |  |
| P2.L3.F.LC.1190 |  | Casework (After Flooring) / L3 / ORs 2-6 & Procedures | 5d | 2026-09-01 | 2026-09-08 | P2.L3.F.LC.3410, P2.L3.F.LC.1090, P2.L3.F.LC.1000 | 19d | 0d | 120 | LABCASE | P2-5 | MLF | LABCASE |  |  |  |  |
| P2.L3.F.LC.1210 |  | Wall Protection / L3 / ORs 2-6 & Procedures | 5d | 2026-09-09 | 2026-09-15 | P2.L3.F.LC.1190, BP7.102.3.300 | 39d | 18d | 40 | WALLPRO | P2-5 | MLF | WALLPRO |  |  |  |  |
| P2.L3.F.LC.1220 |  | Plumbing Fixtures & Drinking Fountains / L3 / ORs 2-6 & Procedures | 5d | 2026-09-09 | 2026-09-15 | P2.L3.F.LC.1190, P2.L3.F.LC.3460 | 44d | 23d | 40 | PLMB | P2-5 | MLF | PLMB |  | Harris |  |  |
| P2.L3.F.LC.1260 |  | Doors & Hardware / L3 / ORs 2-6 & Procedures | 5d | 2026-09-09 | 2026-09-15 | P2.L3.F.LC.1190 | 44d | 23d | 40 | DFH | P2-5 | MLF | DFH |  |  | AT29 |  |
| P2.L3.F.LC.1200 |  | Drop Ceiling Tile / L3 / ORs 2-6 & Procedures | 5d | 2026-09-14 | 2026-09-18 | P2.L3.F.LC.1180 | 21d | 0d | 40 | ACT | P2-5 | MLF | ACT |  |  |  |  |
| P2.L3.F.LC.2400 |  | Integrated Ceilings Panel Install (Finishes) / L3 / Lab & Clinical | 15d | 2026-09-21 | 2026-10-09 | P2.L3.F.LC.1200, P2.L3.LC.1610, P2.L3.F.LC.3410, P2.B2.LC.2470, P2.L3.LC.2480, BP1.095.3.220 | 21d | 0d | 80 | FORS | P2-5 | MLF | FORS-1 |  | Harris |  | P2.B2.05.45.110 |
| P2.L3.F.LC.1230 |  | Trim T-Stats / L3 / ORs 2-6 & Procedures | 5d | 2026-10-12 | 2026-10-16 | P2.L3.F.LC.1210, P2.L3.F.LC.2400 | 21d | 0d | 40 | BAS | P2-5 | MLF | BAS-1 |  | Harris |  |  |
| P2.L3.F.LC.1240 |  | Trim Electrical / L3 / ORs 2-6 & Procedures | 5d | 2026-10-12 | 2026-10-16 | P2.L3.F.LC.1230 SS, P2.L3.F.LC.2400 | 21d | 0d | 40 | ELEC | P2-5 | MLF | ELEC-2 |  |  |  |  |
| P2.L3.F.LC.1250 |  | Trim Telephone/ Data / L3 / ORs 2-6 & Procedures | 5d | 2026-10-12 | 2026-10-16 | P2.L3.F.LC.1240 SS, P2.L3.F.LC.2400 | 21d | 0d | 40 | LOWVOLT | P2-5 | MLF | LOWVOLT-1 |  |  |  |  |
| P2.L3.F.LC.1270 |  | Trim Med Gas / L3 / ORs 2-6 & Procedures | 5d | 2026-10-12 | 2026-10-16 | P2.L3.F.LC.1190, P2.L3.F.LC.1210, P2.L3.F.LC.2400 | 21d | 0d | 40 | MECH | P2-5 | MLF | MECH-2 |  | Harris |  |  |
| P2.L3.F.LC.1280 |  | Floor Prep / L3 / Procedures | 5d | 2026-10-19 | 2026-10-23 | P2.L3.F.LC.1200, P2.L3.F.LC.1260, P2.L3.F.LC.1240, P2.L3.F.LC.1250, P2.L3.F.LC.1220, P2.L3.F.LC.1230, P2.L3.F.LC.3470, P2.L3.F.LC.3460, P2.L3.F.LC.1270 | 21d | 0d | 40 | FLOOR | P2-5 | MLF | FLOOR |  |  |  |  |
| P2.L3.F.LC.1290 |  | Flooring / L3 / Procedures | 5d | 2026-10-26 | 2026-10-30 | P2.L3.F.LC.1280 | 21d | 0d | 40 | FLOOR | P2-5 | MLF | FLOOR |  |  |  |  |
| P2.L3.F.LC.1300 |  | Building Specialities / L3 / ORs 2-6 & Procedures | 5d | 2026-11-02 | 2026-11-06 | P2.L3.F.LC.1290 | 21d | 0d | 40 | SPECIAL | P2-5 | MLF | SPECIAL |  |  |  |  |
| P2.L3.F.LC.1310 |  | Interior Building Signage / L3 / ORs 2-6 & Procedures | 5d | 2026-11-02 | 2026-11-06 | P2.L3.F.LC.1290 | 21d | 0d | 40 | SIGN | P2-5 | MLF | SIGN |  |  |  |  |
| P2.L3.F.LC.1320 |  | Work Completion List - Finishes / L3 / ORs 2-6 & Procedures | 5d | 2026-11-09 | 2026-11-13 | P2.L3.F.LC.1300, P2.L3.F.LC.1310 | 21d | 2d | 40 | FINISH | P2-5 | MLF | FINISH |  |  |  |  |
| P2.L3.F.LC.1330 |  | Remaining Equipment Post Flooring / L3 / ORs 2-6 & Procedures | 5d | 2026-11-18 | 2026-11-24 | P2.L3.F.LC.1190, P2.L3.F.LC.1320, P2.L3.F.LC.2330 | 19d | 0d | 40 | EQUIP | P2-5 | MLF | EQUIP |  |  |  |  |
| P2.L3.F.LC.1340 |  | Remaining MEP Hook-Ups / L3 / ORs 2-6 & Procedures | 5d | 2026-11-25 | 2026-12-03 | P2.L3.F.LC.1330 | 29d | 0d | 40 | MEP | P2-5 | MLF | MEP |  | Harris |  |  |
| P2.L3.F.LC.1350 |  | OFOI Furniture & Equipment / L3 / ORs 2-6 & Procedures | 5d | 2026-11-25 | 2026-12-03 | P2.L3.F.LC.1340 SS, OFOI.EQUIP.L3.1160, OFOI.EQUIP.L3.1170, OFOI.EQUIP.L3.1180, OFOI.EQUIP.L3.1090, OFOI.EQUIP.L3.1100, OFOI.EQUIP.L3.1110, OFOI.EQUIP.L3.1150, OFOI.EQUIP.L3.1070, OFOI.EQUIP.L3.1080, OFOI.EQUIP.L3.1060 | 39d | 10d | 40 | FURN | P2-5 | MLF | FURN |  |  |  |  |
| P2.L3.F.LC.1360 |  | Rough Clean / L3 / ORs 2-6 & Procedures | 5d | 2026-12-04 | 2026-12-10 | P2.L3.F.LC.1340 | 29d | 0d | 40 | FCLEAN | P2-5 | MLF | FCLEAN |  |  |  |  |
| P2.L3.F.LC.1370 |  | Prepare Punchlist / L3 / ORs 2-6 & Procedures | 5d | 2026-12-11 | 2026-12-17 | P2.L3.F.LC.1340 SS, P2.L3.F.LC.1360 | 29d | 0d | 40 | QC | P2-5 | MLF | QC |  |  |  |  |
| P2.L3.F.LC.1380 |  | Correct Punchlist / L3 / ORs 2-6 & Procedures | 10d | 2026-12-18 | 2027-01-04 | P2.L3.F.LC.1370, P2.L3.F.LC.1350 | 29d | 0d | 80 | FINISH | P2-5 | MLF | FINISH |  |  |  |  |
| P2.L3.F.LC.1390 |  | Final Clean / L3 / ORs 2-6 & Procedures | 5d | 2027-01-05 | 2027-01-11 | P2.L3.F.LC.1380 | 29d | 41d | 40 | QC | P2-5 | MLF | QC |  |  |  |  |

| ID | WBS | Activity | Duration | Start | Finish | Predecessors | Total float | Free float | Temp Orig Dur | Resp / SRLM | PHASE | RESP UPD | RESP / Trade | *NIH Resp Check* | Z.RESP | Testing Type | Act ID Temp |
| --- | --- | --- | --- | --- | --- | --- | --- | --- | --- | --- | --- | --- | --- | --- | --- | --- | --- |
|  | 3 | **IR Procedure / Anesth Suites - Room Blocks 3-29.. / Level 3** |  | 2026-06-04 | 2027-01-04 |  |  |  |  |  |  |  |  |  |  |  |  |
| P2.L3.F.LC.2000 |  | Paint - Walls / L3 / IR Procedures | 5d | 2026-06-04 | 2026-06-10 | P2.L3.LC.1550 | 19d | 0d | 40 | PAINT | P2-5 | MLF | PAINT-1 |  |  |  |  |
| P2.L3.F.LC.2010 |  | R/I - Ceiling Assemblies & Supports - Med Equip / L3 / IR Procedures | 5d | 2026-06-11 | 2026-06-17 | P2.L3.F.LC.2000 | 19d | 0d | 40 | ACT | P2-5 | MLF | ACT | ! |  |  |  |
| P2.L3.F.LC.2020 |  | Framing - Hard Lid Ceilings / L3 / IR Procedures | 5d | 2026-06-18 | 2026-06-24 | P2.L3.F.LC.2010 | 19d | 0d | 40 | GYP | P2-5 | MLF | GYP-1 | ! |  |  |  |
| P2.L3.F.LC.2030 |  | R/I - Lights & Devices - Hard Lids Ceilings / L3 / IR Procedures | 10d | 2026-06-25 | 2026-07-09 | P2.L3.F.LC.2020 | 19d | 0d | 40 | ELEC | P2-5 | MLF | ELEC-2 | ! |  |  |  |
| P2.L3.F.LC.2040 |  | R/I - Diffusers - Hard Lid Ceilings / L3 / IR Procedures | 5d | 2026-06-25 | 2026-07-01 | P2.L3.F.LC.2020 | 24d | 5d | 40 | HVAC | P2-5 | MLF | HVAC | ! | Harris |  |  |
| P2.L3.F.LC.2050 |  | R/I - Sprinkler Heads - Hard Lid Ceilings / L3 / IR Procedures | 5d | 2026-06-25 | 2026-07-01 | P2.L3.F.LC.2020 | 24d | 5d | 40 | FP | P2-5 | MLF | FP-1 | ! |  |  |  |
| P2.L3.F.LC.2060 |  | R/I - Fire Alarm - Hard Lid Ceilings / L3 / IR Procedures | 5d | 2026-06-25 | 2026-07-01 | P2.L3.F.LC.2020 | 24d | 5d | 40 | FA | P2-5 | MLF | FA-1 |  |  |  |  |
| P2.L3.F.LC.2070 |  | OH Ceiling Inspection & Signoff - Hard Lid Ceilings / L3 / IR Procedures | 5d | 2026-07-10 | 2026-07-16 | P2.L3.F.LC.2040, P2.L3.F.LC.2050, P2.L3.F.LC.2030, P2.L3.F.LC.2060 | 19d | 0d | 40 | AHJ | P2-5 | MLF | AHJ | ! |  |  |  |
| P2.L3.F.LC.3480 |  | Equipment (Before Flooring) / L3 / IR Procedures | 1d | 2026-07-16 | 2026-07-16 | P2.L3.LC.1180, PCO.824.1150, P2.L3.F.LC.3470 | 52d | 0d | 120 | LABCASE | P2-5 | MLF | LABCASE |  |  |  |  |
| P2.L3.F.LC.2080 |  | Hang-Tape-Finish _Hard Lid Ceilings / L3 / IR Procedures | 5d | 2026-07-17 | 2026-07-23 | P2.L3.F.LC.2070 | 19d | 0d | 40 | GYP | P2-5 | MLF | GYP-1 | ! |  |  |  |
| P2.L3.F.LC.2090 |  | Paint Ceilings / L3 / IR Procedures | 5d | 2026-07-24 | 2026-07-30 | P2.L3.F.LC.2080 | 46d | 0d | 40 | PAINT | P2-5 | MLF | PAINT-1 |  |  |  |  |
| P2.L3.F.LC.2120 |  | T-Grid / L3 / IR Procedures | 5d | 2026-07-24 | 2026-07-30 | P2.L3.F.LC.2080, P2.L3.F.LC.2000, P2.L3.F.LC.2010 | 19d | 0d | 40 | ACT | P2-5 | MLF | ACT |  |  |  |  |
| P2.L3.F.LC.2100 |  | Waterproof Ceramic Tile / L3 / IR Procedures | 5d | 2026-07-31 | 2026-08-06 | P2.L3.F.LC.2090 | 106d | 0d | 40 | TILE | P2-5 | MLF | TILE |  |  |  |  |
| P2.L3.F.LC.2130 |  | Diffusers in T-Grid / L3 / IR Procedures | 5d | 2026-07-31 | 2026-08-06 | P2.L3.F.LC.2120 | 19d | 0d | 40 | HVAC | P2-5 | MLF | HVAC |  | Harris |  |  |
| P2.L3.F.LC.2140 |  | Lights & Devices / L3 / IR Procedures | 5d | 2026-07-31 | 2026-08-06 | P2.L3.F.LC.2120 | 19d | 0d | 40 | ELEC | P2-5 | MLF | ELEC-2 |  |  |  |  |
| P2.L3.F.LC.2150 |  | Sprinkler Heads / L3 / IR Procedures | 5d | 2026-07-31 | 2026-08-06 | P2.L3.F.LC.2120 | 19d | 0d | 40 | FP | P2-5 | MLF | FP-1 |  |  |  |  |
| P2.L3.F.LC.2160 |  | Trim Low Voltage / L3 / IR Procedures | 5d | 2026-07-31 | 2026-08-06 | P2.L3.F.LC.2120 | 19d | 0d | 40 | LOWVOLT | P2-5 | MLF | LOWVOLT-1 |  |  |  |  |
| P2.L3.F.LC.2170 |  | Trim Fire Alarm / L3 / IR Procedures | 5d | 2026-07-31 | 2026-08-06 | P2.L3.F.LC.2120 | 19d | 0d | 40 | FA | P2-5 | MLF | FA-1 |  |  |  |  |
| P2.L3.F.LC.2110 |  | Ceramic Tile / L3 / IR Procedures | 5d | 2026-08-07 | 2026-08-13 | P2.L3.F.LC.2100 | 106d | 72d | 40 | TILE | P2-5 | MLF | TILE |  |  |  |  |
| P2.L3.F.LC.2180 |  | OH Ceiling Signoff / L3 / IR Procedures | 10d | 2026-08-07 | 2026-08-20 | P2.L3.F.LC.2130, P2.L3.F.LC.2160, P2.L3.F.LC.2170, P2.L3.F.LC.2140, P2.L3.F.LC.2150 | 19d | 0d | 80 | MEP | P2-5 | MLF | MEP |  | Harris |  |  |
| P2.L3.F.LC.2200 |  | Drop Ceiling Tile / L3 / IR Procedures | 5d | 2026-08-21 | 2026-08-27 | P2.L3.F.LC.2180 | 36d | 12d | 40 | ACT | P2-5 | MLF | ACT |  |  |  |  |
| P2.L3.F.LC.2280 |  | Floor Prep - Epoxy Floors / L3 / IR Procedures | 5d | 2026-08-21 | 2026-08-27 | P2.L3.F.LC.2180 | 24d | 0d | 40 | EPOXYF | P2-5 | MLF | EPOXYF |  |  |  |  |
| P2.L3.F.LC.2290 |  | Flooring - Epoxy Floors / L3 / IR Procedures | 2d | 2026-08-28 | 2026-08-31 | P2.L3.F.LC.2280 | 24d | 5d | 40 | EPOXYF | P2-5 | MLF | EPOXYF |  |  |  |  |
| P2.L3.F.LC.2190 |  | Casework (After Flooring) / L3 / IR Procedures | 5d | 2026-09-09 | 2026-09-15 | P2.L3.F.LC.2290, P2.L3.F.LC.2090, P2.L3.F.LC.2000, P2.L3.F.LC.1190 | 19d | 0d | 120 | LABCASE | P2-5 | MLF | LABCASE |  |  |  |  |
| P2.L3.F.LC.2210 |  | Wall Protection / L3 / IR Procedures | 5d | 2026-09-16 | 2026-09-22 | P2.L3.F.LC.2190, BP7.102.3.300 | 29d | 5d | 40 | WALLPRO | P2-5 | MLF | WALLPRO |  |  |  |  |
| P2.L3.F.LC.2220 |  | Plumbing Fixtures & Drinking Fountains / L3 / IR Procedures | 5d | 2026-09-16 | 2026-09-22 | P2.L3.F.LC.2190, PCO.824.1150, PCO.824.1140 | 34d | 10d | 40 | PLMB | P2-5 | MLF | PLMB |  | Harris |  |  |
| P2.L3.F.LC.2260 |  | Doors & Hardware / L3 / IR Procedures | 5d | 2026-09-16 | 2026-09-22 | P2.L3.F.LC.2190 | 34d | 10d | 40 | DFH | P2-5 | MLF | DFH |  |  | AT29 |  |
| P2.L3.F.LC.2520 |  | Integrated Ceilings Panel Install (Finishes) / L3 / IR Procedures | 10d | 2026-09-16 | 2026-09-29 | P2.L3.LC.1610, P2.L3.F.LC.2290, P2.L3.F.LC.2200, P2.L3.F.LC.2190, P2.L3.LC.2480, BP1.095.3.220 | 24d | 0d | 80 | FORS | P2-5 | MLF | FORS-1 |  | Harris |  | P2.B2.05.45.110 |
| P2.L3.F.LC.2230 |  | Trim T-Stats / L3 / IR Procedures | 5d | 2026-09-30 | 2026-10-06 | P2.L3.F.LC.2210, P2.L3.F.LC.2520 | 24d | 0d | 40 | BAS | P2-5 | MLF | BAS-1 |  | Harris |  |  |
| P2.L3.F.LC.2240 |  | Trim Electrical / L3 / IR Procedures | 5d | 2026-09-30 | 2026-10-06 | P2.L3.F.LC.2230 SS, P2.L3.F.LC.2520 | 24d | 0d | 40 | ELEC | P2-5 | MLF | ELEC-2 |  |  |  |  |
| P2.L3.F.LC.2250 |  | Trim Telephone/ Data / L3 / IR Procedures | 5d | 2026-09-30 | 2026-10-06 | P2.L3.F.LC.2240 SS, P2.L3.F.LC.2520 | 24d | 0d | 40 | LOWVOLT | P2-5 | MLF | LOWVOLT-1 |  |  |  |  |
| P2.L3.F.LC.2270 |  | Trim Med Gas / L3 / IR Procedures | 5d | 2026-09-30 | 2026-10-06 | P2.L3.F.LC.2190, P2.L3.F.LC.2210, P2.L3.F.LC.2520 | 24d | 0d | 40 | MECH | P2-5 | MLF | MECH-2 |  | Harris |  |  |
| P2.L3.F.LC.3420 |  | Floor Prep / L3 / IR Control, Storage & Anesth | 5d | 2026-10-07 | 2026-10-13 | P2.L3.F.LC.2270, P2.L3.F.LC.2260, P2.L3.F.LC.2200, P2.L3.F.LC.2220, P2.L3.F.LC.2230, P2.L3.F.LC.2240, P2.L3.F.LC.2250, P2.L3.F.LC.3480 | 24d | 0d | 40 | FLOOR | P2-5 | MLF | FLOOR |  |  |  |  |
| P2.L3.F.LC.3430 |  | Flooring / L3 / IR Control, Storage & Anesth | 5d | 2026-10-14 | 2026-10-20 | P2.L3.F.LC.3420 | 24d | 0d | 40 | FLOOR | P2-5 | MLF | FLOOR |  |  |  |  |
| P2.L3.F.LC.2300 |  | Building Specialities / L3 / IR Procedures | 5d | 2026-10-21 | 2026-10-27 | P2.L3.F.LC.3430 | 24d | 0d | 40 | SPECIAL | P2-5 | MLF | SPECIAL |  |  |  |  |
| P2.L3.F.LC.2310 |  | Interior Building Signage / L3 / IR Procedures | 5d | 2026-10-21 | 2026-10-27 | P2.L3.F.LC.3430 | 24d | 0d | 40 | SIGN | P2-5 | MLF | SIGN |  |  |  |  |
| P2.L3.F.LC.2320 |  | Work Completion List - Finishes / L3 / IR Procedures | 5d | 2026-10-28 | 2026-11-03 | P2.L3.F.LC.2310, P2.L3.F.LC.2300 | 24d | 5d | 40 | FINISH | P2-5 | MLF | FINISH |  |  |  |  |
| P2.L3.F.LC.2330 |  | Remaining Equipment Post Flooring / L3 / IR Procedures | 5d | 2026-11-11 | 2026-11-17 | P2.L3.F.LC.2320, P2.L3.F.LC.2190, PCO.824.1150, P2.L3.F.LC.3330, PCO.824.1140 | 19d | 0d | 40 | MEP | P2-5 | MLF | MEP-2 |  |  |  |  |
| P2.L3.F.LC.2340 |  | Remaining MEP Hook-Ups / L3 / IR Procedures | 5d | 2026-11-18 | 2026-11-24 | P2.L3.F.LC.2330 | 34d | 0d | 40 | MEP | P2-5 | MLF | MEP |  | Harris |  |  |
| P2.L3.F.LC.2350 |  | OFOI Furniture & Equipment / L3 / IR Procedures | 5d | 2026-11-18 | 2026-11-24 | P2.L3.F.LC.2340 SS, OFOI.EQUIP.L3.1120, OFOI.EQUIP.L3.1130, OFOI.EQUIP.L3.1140 | 44d | 10d | 40 | FURN | P2-5 | MLF | FURN |  |  |  |  |
| P2.L3.F.LC.2360 |  | Rough Clean / L3 / IR Procedures | 5d | 2026-11-25 | 2026-12-03 | P2.L3.F.LC.2340, P2.L3.F.LC.2110 | 34d | 0d | 40 | FCLEAN | P2-5 | MLF | FCLEAN |  |  |  |  |
| P2.L3.F.LC.2370 |  | Prepare Punchlist / L3 / IR Procedures | 5d | 2026-12-04 | 2026-12-10 | P2.L3.F.LC.2340 SS, P2.L3.F.LC.2360 | 34d | 0d | 40 | QC | P2-5 | MLF | QC |  |  |  |  |
| P2.L3.F.LC.2380 |  | Correct Punchlist / L3 / IR Procedures | 10d | 2026-12-11 | 2026-12-24 | P2.L3.F.LC.2350, P2.L3.F.LC.2370 | 34d | 0d | 80 | FINISH | P2-5 | MLF | FINISH |  |  |  |  |
| P2.L3.F.LC.2390 |  | Final Clean / L3 / IR Procedures | 5d | 2026-12-28 | 2027-01-04 | P2.L3.F.LC.2380 | 34d | 46d | 40 | QC | P2-5 | MLF | QC |  |  |  |  |

| ID | WBS | Activity | Duration | Start | Finish | Predecessors | Total float | Free float | Temp Orig Dur | Resp / SRLM | PHASE | RESP UPD | RESP / Trade | *NIH Resp Check* | Z.RESP | Act ID Temp | Testing Type |
| --- | --- | --- | --- | --- | --- | --- | --- | --- | --- | --- | --- | --- | --- | --- | --- | --- | --- |
|  | 4 | **Hybrid OR / MRI Suites - Room Blocks 3-28.. / Level 3** |  | 2026-06-04 | 2026-12-24 |  |  |  |  |  |  |  |  |  |  |  |  |
| P2.L3.F.LC.3000 |  | Paint - Walls / L3 / Hybrid OR, MRI | 5d | 2026-06-04 | 2026-06-10 | P2.L3.LC.1550 | 29d | 0d | 40 | PAINT | P2-5 | MLF | PAINT-1 |  |  |  |  |
| P2.L3.F.LC.3010 |  | R/I - Ceiling Assemblies & Supports - Med Equip / L3 / Hybrid OR, MRI | 5d | 2026-06-11 | 2026-06-17 | CW.INTMU -300, CW.FD-MU -210, P2.L3.F.LC.3000 | 29d | 0d | 40 | ACT | P2-5 | MLF | ACT | ! |  |  |  |
| P2.L3.F.LC.3020 |  | Framing - Hard Lid Ceilings / L3 / Hybrid OR, MRI | 5d | 2026-06-18 | 2026-06-24 | P2.L3.F.LC.3010 | 29d | 0d | 40 | GYP | P2-5 | MLF | GYP-1 | ! |  |  |  |
| P2.L3.F.LC.3030 |  | R/I - Lights & Devices - Hard Lids Ceilings / L3 / Hybrid OR, MRI | 10d | 2026-06-25 | 2026-07-09 | P2.L3.F.LC.3020 | 29d | 0d | 40 | ELEC | P2-5 | MLF | ELEC-2 | ! |  |  |  |
| P2.L3.F.LC.3040 |  | R/I - Diffusers - Hard Lid Ceilings / L3 / Hybrid OR, MRI | 5d | 2026-06-25 | 2026-07-01 | P2.L3.F.LC.3020 | 34d | 5d | 40 | HVAC | P2-5 | MLF | HVAC | ! | Harris |  |  |
| P2.L3.F.LC.3050 |  | R/I - Sprinkler Heads - Hard Lid Ceilings / L3 / Hybrid OR, MRI | 5d | 2026-06-25 | 2026-07-01 | P2.L3.F.LC.3020 | 34d | 5d | 40 | FP | P2-5 | MLF | FP-1 | ! |  |  |  |
| P2.L3.F.LC.3060 |  | R/I - Fire Alarm - Hard Lid Ceilings / L3 / Hybrid OR, MRI | 5d | 2026-06-25 | 2026-07-01 | P2.L3.F.LC.3020 | 34d | 5d | 40 | FA | P2-5 | MLF | FA-1 |  |  |  |  |
| P2.L3.F.LC.3070 |  | OH Ceiling Inspection & Signoff - Hard Lid Ceilings / L3 / Hybrid OR, MRI | 5d | 2026-07-10 | 2026-07-16 | P2.L3.F.LC.3060, P2.L3.F.LC.3040, P2.L3.F.LC.3050, P2.L3.F.LC.3030 | 29d | 0d | 40 | AHJ | P2-5 | MLF | AHJ | ! |  |  |  |
| P2.L3.F.LC.3080 |  | Hang-Tape-Finish _Hard Lid Ceilings / L3 / Hybrid OR, MRI | 5d | 2026-07-17 | 2026-07-23 | P2.L3.F.LC.3070 | 29d | 0d | 40 | GYP | P2-5 | MLF | GYP-1 | ! |  |  |  |
| P2.L3.F.LC.3500 |  | Equipment (Before Flooring) / L3 / Hybrid OR, MRI | 2d | 2026-07-17 | 2026-07-20 | P2.L3.LC.1180, P2.L3.F.LC.3480 | 52d | 28d | 120 | LABCASE | P2-5 | MLF | LABCASE |  |  |  |  |
| P2.L3.F.LC.3090 |  | Paint Ceilings / L3 / Hybrid OR, MRI | 5d | 2026-07-24 | 2026-07-30 | P2.L3.F.LC.3080 | 51d | 0d | 40 | PAINT | P2-5 | MLF | PAINT-1 |  |  |  |  |
| P2.L3.F.LC.3100 |  | Waterproof Ceramic Tile / L3 / Hybrid OR, MRI | 5d | 2026-07-31 | 2026-08-06 | P2.L3.F.LC.3090 | 106d | 0d | 40 | TILE | P2-5 | MLF | TILE |  |  |  |  |
| P2.L3.F.LC.3120 |  | T-Grid / L3 / Hybrid OR, MRI | 5d | 2026-07-31 | 2026-08-06 | RFP.014.1040, P2.L3.F.LC.3000, P2.L3.F.LC.3010, P2.L3.F.LC.3080, P2.L3.F.LC.2120 | 24d | 0d | 40 | ACT | P2-5 | MLF | ACT |  |  |  |  |
| P2.L3.F.LC.3110 |  | Ceramic Tile / L3 / Hybrid OR, MRI | 5d | 2026-08-07 | 2026-08-13 | P2.L3.F.LC.3100 | 106d | 67d | 40 | TILE | P2-5 | MLF | TILE |  |  |  |  |
| P2.L3.F.LC.3130 |  | Diffusers in T-Grid / L3 / Hybrid OR, MRI | 5d | 2026-08-07 | 2026-08-13 | P2.L3.F.LC.3120 | 24d | 0d | 40 | HVAC | P2-5 | MLF | HVAC |  | Harris |  |  |
| P2.L3.F.LC.3140 |  | Lights & Devices / L3 / Hybrid OR, MRI | 5d | 2026-08-07 | 2026-08-13 | P2.L3.F.LC.3120 | 24d | 0d | 40 | ELEC | P2-5 | MLF | ELEC-2 |  |  |  |  |
| P2.L3.F.LC.3150 |  | Sprinkler Heads / L3 / Hybrid OR, MRI | 5d | 2026-08-07 | 2026-08-13 | P2.L3.F.LC.3120 | 24d | 0d | 40 | FP | P2-5 | MLF | FP-1 |  |  |  |  |
| P2.L3.F.LC.3160 |  | Trim Low Voltage / L3 / Hybrid OR, MRI | 5d | 2026-08-07 | 2026-08-13 | P2.L3.F.LC.3120 | 24d | 0d | 40 | LOWVOLT | P2-5 | MLF | LOWVOLT-1 |  |  |  |  |
| P2.L3.F.LC.3170 |  | Trim Fire Alarm / L3 / Hybrid OR, MRI | 5d | 2026-08-07 | 2026-08-13 | P2.L3.F.LC.3120 | 24d | 0d | 40 | FA | P2-5 | MLF | FA-1 |  |  |  |  |
| P2.L3.F.LC.3180 |  | OH Ceiling Signoff / L3 / Hybrid OR, MRI | 10d | 2026-08-14 | 2026-08-27 | P2.L3.F.LC.3160, P2.L3.F.LC.3170, P2.L3.F.LC.3140, P2.L3.F.LC.3150, P2.L3.F.LC.3130 | 24d | 0d | 80 | MEP | P2-5 | MLF | MEP |  | Harris |  |  |
| P2.L3.F.LC.3200 |  | Drop Ceiling Tile / L3 / Hybrid OR, MRI | 5d | 2026-08-28 | 2026-09-03 | P2.L3.F.LC.3180 | 31d | 12d | 40 | ACT | P2-5 | MLF | ACT |  |  |  |  |
| P2.L3.F.LC.3440 |  | Floor Prep - Epoxy Floors / L3 / Hybrid OR | 5d | 2026-08-28 | 2026-09-03 | P2.L3.F.LC.3500, P2.L3.F.LC.3180, P2.L3.LC.1180, BP6.123.3.100 | 24d | 0d | 40 | EPOXYF | P2-5 | MLF | EPOXYF |  |  |  |  |
| P2.L3.F.LC.3450 |  | Flooring - Epoxy Floors / L3 / Hybrid OR | 2d | 2026-09-04 | 2026-09-08 | P2.L3.F.LC.3440 | 24d | 5d | 40 | EPOXYF | P2-5 | MLF | EPOXYF |  |  |  |  |
| P2.L3.F.LC.3190 |  | Casework (After Flooring) / L3 / Hybrid OR, MRI | 5d | 2026-09-16 | 2026-09-22 | P2.L3.F.LC.3450, P2.L3.F.LC.3090, P2.L3.F.LC.3000, P2.L3.F.LC.2190 | 19d | 0d | 120 | LABCASE | P2-5 | MLF | LABCASE |  |  |  |  |
| P2.L3.F.LC.2530 |  | Integrated Ceilings Panel Install (Finishes) / L3 / Hybrid OR, MRI | 15d | 2026-09-23 | 2026-10-13 | P2.L3.LC.1610, P2.L3.F.LC.3200, P2.L3.F.LC.3190, P2.L3.F.LC.3450, P2.L3.LC.2480, BP1.095.3.220 | 19d | 0d | 80 | FORS | P2-5 | MLF | FORS-1 |  | Harris | P2.B2.05.45.110 |  |
| P2.L3.F.LC.3210 |  | Wall Protection / L3 / Hybrid OR, MRI | 5d | 2026-09-23 | 2026-09-29 | P2.L3.F.LC.3190, BP7.102.3.300 | 29d | 10d | 40 | WALLPRO | P2-5 | MLF | WALLPRO |  |  |  |  |
| P2.L3.F.LC.3220 |  | Plumbing Fixtures & Drinking Fountains / L3 / Hybrid OR, MRI | 5d | 2026-09-23 | 2026-09-29 | P2.L3.F.LC.3190, P2.L3.LC.1180, BP6.123.3.100 | 34d | 15d | 40 | PLMB | P2-5 | MLF | PLMB |  | Harris |  |  |
| P2.L3.F.LC.3260 |  | Doors & Hardware / L3 / Hybrid OR, MRI | 5d | 2026-09-23 | 2026-09-29 | P2.L3.F.LC.3190 | 34d | 15d | 40 | DFH | P2-5 | MLF | DFH |  |  |  | AT29 |
| P2.L3.F.LC.3230 |  | Trim T-Stats / L3 / Hybrid OR, MRI | 5d | 2026-10-14 | 2026-10-20 | P2.L3.F.LC.3210, P2.L3.F.LC.2530 | 19d | 0d | 40 | BAS | P2-5 | MLF | BAS-1 |  | Harris |  |  |
| P2.L3.F.LC.3240 |  | Trim Electrical / L3 / Hybrid OR, MRI | 5d | 2026-10-14 | 2026-10-20 | P2.L3.F.LC.3230 SS, P2.L3.F.LC.2530 | 19d | 0d | 40 | ELEC | P2-5 | MLF | ELEC-2 |  |  |  |  |
| P2.L3.F.LC.3250 |  | Trim Telephone/ Data / L3 / Hybrid OR, MRI | 5d | 2026-10-14 | 2026-10-20 | P2.L3.F.LC.3240 SS, P2.L3.F.LC.2530 | 19d | 0d | 40 | LOWVOLT | P2-5 | MLF | LOWVOLT-1 |  |  |  |  |
| P2.L3.F.LC.3270 |  | Trim Med Gas / L3 / Hybrid OR, MRI | 5d | 2026-10-14 | 2026-10-20 | P2.L3.F.LC.3190, P2.L3.F.LC.3210, P2.L3.F.LC.2530 | 19d | 0d | 40 | MECH | P2-5 | MLF | MECH-2 |  | Harris |  |  |
| P2.L3.F.LC.3280 |  | Floor Prep / L3 / MRI | 5d | 2026-10-21 | 2026-10-27 | P2.L3.F.LC.3200, P2.L3.F.LC.3260, P2.L3.F.LC.3230, P2.L3.F.LC.3240, P2.L3.F.LC.3250, P2.L3.F.LC.3220, P2.L3.F.LC.3270 | 19d | 0d | 40 | FLOOR | P2-5 | MLF | FLOOR |  |  |  |  |
| P2.L3.F.LC.3290 |  | Flooring / L3 / MRI | 5d | 2026-10-28 | 2026-11-03 | P2.L3.F.LC.3280 | 19d | 0d | 40 | FLOOR | P2-5 | MLF | FLOOR |  |  |  |  |
| P2.L3.F.LC.3300 |  | Building Specialities / L3 / Hybrid OR, MRI | 5d | 2026-11-04 | 2026-11-10 | P2.L3.F.LC.3290 | 39d | 0d | 40 | SPECIAL | P2-5 | MLF | SPECIAL |  |  |  |  |
| P2.L3.F.LC.3310 |  | Interior Building Signage / L3 / Hybrid OR, MRI | 5d | 2026-11-04 | 2026-11-10 | P2.L3.F.LC.3290 | 39d | 0d | 40 | SIGN | P2-5 | MLF | SIGN |  |  |  |  |
| P2.L3.F.LC.3330 |  | Remaining Equipment Post Flooring / L3 / Hybrid OR, MRI | 5d | 2026-11-04 | 2026-11-10 | P2.L3.F.LC.3290, P2.L3.F.LC.3190, P2.L3.F.LC.3450, P2.B2.F.LC.2330 | 19d | 0d | 40 | EQUIP | P2-5 | MLF | EQUIP |  |  |  |  |
| P2.L3.F.LC.3320 |  | Work Completion List - Finishes / L3 / Hybrid OR, MRI | 5d | 2026-11-11 | 2026-11-17 | P2.L3.F.LC.3310, P2.L3.F.LC.3300 | 39d | 0d | 40 | FINISH | P2-5 | MLF | FINISH |  |  |  |  |
| P2.L3.F.LC.3340 |  | Remaining MEP Hook-Ups / L3 / Hybrid OR, MRI | 5d | 2026-11-11 | 2026-11-17 | P2.L3.F.LC.3330, P2.L3.F.LC.3500 | 39d | 0d | 40 | MEP | P2-5 | MLF | MEP |  | Harris |  |  |
| P2.L3.F.LC.3350 |  | OFOI Furniture & Equipment / L3 / Hybrid OR, MRI | 5d | 2026-11-11 | 2026-11-17 | P2.L3.F.LC.3340 SS, OFOI.EQUIP.L3.1050, OFOI.EQUIP.L3.1010, OFOI.EQUIP.L3.1020, OFOI.EQUIP.L3.1030, OFOI.EQUIP.L3.1040, OFOI.EQUIP.L3.1000 | 49d | 10d | 40 | FURN | P2-5 | MLF | FURN |  |  |  |  |
| P2.L3.F.LC.3360 |  | Rough Clean / L3 / Hybrid OR, MRI | 5d | 2026-11-18 | 2026-11-24 | P2.L3.F.LC.3340, P2.L3.F.LC.3320, P2.L3.F.LC.3110 | 39d | 0d | 40 | FCLEAN | P2-5 | MLF | FCLEAN |  |  |  |  |
| P2.L3.F.LC.3370 |  | Prepare Punchlist / L3 / Hybrid OR, MRI | 5d | 2026-11-25 | 2026-12-03 | P2.L3.F.LC.3340 SS, P2.L3.F.LC.3360 | 39d | 0d | 40 | QC | P2-5 | MLF | QC |  |  |  |  |
| P2.L3.F.LC.3380 |  | Correct Punchlist / L3 / Hybrid OR, MRI | 10d | 2026-12-04 | 2026-12-17 | P2.L3.F.LC.3370, P2.L3.F.LC.3350 | 39d | 0d | 80 | FINISH | P2-5 | MLF | FINISH |  |  |  |  |
| P2.L3.F.LC.3390 |  | Final Clean / L3 / Hybrid OR, MRI | 5d | 2026-12-18 | 2026-12-24 | P2.L3.F.LC.3380 | 39d | 51d | 40 | QC | P2-5 | MLF | QC |  |  |  |  |

| ID | WBS | Activity | Type | Duration | Start | Finish | Predecessors | Complete | Remaining | Planned start | Planned finish | Total float | Free float | Temp Orig Dur | *NIH Resp Check* | Resp / SRLM | PHASE | Z.RESP | RESP / Trade | 744 | RESP UPD | Act ID Temp | Update Status | Testing Type |
| --- | --- | --- | --- | --- | --- | --- | --- | --- | --- | --- | --- | --- | --- | --- | --- | --- | --- | --- | --- | --- | --- | --- | --- | --- |
|  | 1 | **MECHANICAL TOWERS / LEVEL 3** |  |  | 2025-03-27 | 2026-06-02 |  |  |  |  |  |  |  |  |  |  |  |  |  |  |  |  |  |  |
|  | 4 | **South Mechanical Tower / Rough In & Finish / Level 3** |  |  | 2025-05-12 | 2026-06-02 |  |  |  |  |  |  |  |  |  |  |  |  |  |  |  |  |  |  |
| P2.L3.SMT.1105 |  | HVAC Duct Connections to Shaft Riser / L3 - S. Mech Tower |  | 5d | 2025-05-12 A | 2025-05-16 A | P2.L3.SMT.1070 | 100% |  | 2025-06-19 | 2025-06-25 |  |  | 40 | ! | HVAC | P2-5 | Harris | HVAC |  |  |  |  |  |
| P2.L3.SMT.1070 |  | Set & Connect - Mech Equipment / L3 - S. Mech Tower |  | 10d | 2025-06-02 A | 2025-06-13 A | P2.L2.SMT.1070 | 100% |  | 2025-07-01 | 2025-07-15 |  |  | 80 |  | HVAC | P2-5 | Harris | HVAC | TS | TS |  |  |  |
| P2.L3.SMT.1020 |  | In Wall - Electrical - CMU / L3 - S. Mech Tower |  | 10d | 2025-06-30 A | 2025-07-05 A | P2.L3.SMT.1010 SS | 100% |  | 2025-07-30 | 2025-08-12 |  |  | 80 |  | ELEC | P2-5 |  | ELEC-2 | TS | TS | P2.B2.26.05.510 |  |  |
| P2.L3.SMT.1030 |  | In Wall - Mech/Plumbing - CMU / L3 - S. Mech Tower |  | 10d | 2025-06-30 A | 2025-07-05 A | P2.L3.SMT.1010 SS | 100% |  | 2025-07-30 | 2025-08-12 |  |  | 80 |  | PLMB | P2-5 | Harris | PLMB | TS | TS | P2.B2.22.05.310 |  |  |
| P2.L3.SMT.1000 |  | Insulation - Exterior Wall Assembly / L3 - S. Mech Tower |  | 5d | 2025-07-01 A | 2025-07-08 A | P2.FAC.2.Z1.140 | 100% |  | 2025-08-01 | 2025-08-07 |  |  | 40 |  | INSUL | P2-5 |  | INSUL-1 | TS | TS |  |  |  |
| P2.L3.SMT.1130 |  | Test/Inspect Duct & Piping / L3 - S. Mech Tower |  | 5d | 2025-08-08 A | 2025-08-14 A | P2.L3.SMT.1100, P2.L3.SMT.1105 | 100% |  |  |  |  |  | 40 | ! | MECH | P2-5 | Harris | MECH-2 | TS | TS |  |  |  |
| P2.L3.SMT.1100 |  | HVAC Piping Connections to Shaft Riser / L3 - S. Mech Tower |  | 5d | 2025-09-02 A | 2025-09-08 A | P2.L3.SMT.1070 | 100% |  | 2025-10-01 | 2025-10-07 |  |  | 40 | ! | HVAC | P2-5 | Harris | HVAC | TS | TS |  | O |  |
| P2.L3.SMT.1010 |  | CMU - Lay Block / L3 - S. Mech Tower |  | 10d | 2025-09-18 A | 2025-09-24 A | P2.L2.SMT.1010, P2.L3.SMT.1000 | 100% |  | 2025-10-15 | 2025-10-28 |  |  | 80 |  | CMU | P2-5 |  | CMU | TS | TS | P2.B2.04.20.210 | O | AT3 |
| P2.L3.SMT.1040 |  | Paint - CMU Block Fill / L3 - S. Mech Tower |  | 10d | 2025-09-25 A | 2025-10-10 A | P2.L3.SMT.1010 | 100% |  | 2025-10-29 | 2025-11-11 |  |  | 80 |  | PAINT | P2-5 |  | PAINT-1 | TS | TS | P2.B2.09.97.110 |  |  |
| P2.L3.SMT.1050 |  | CMU - Point & Patch / L3 - S. Mech Tower |  | 10d | 2025-10-13 A | 2025-10-15 A | P2.L3.SMT.1030, P2.L3.SMT.1020, P2.L3.SMT.1040 | 100% |  | 2025-10-13 | 2025-10-24 |  |  | 80 |  | CMU | P2-5 |  | CMU | TS | TS | P2.B2.04.20.310 |  |  |
| P2.L3.SMT.1060 |  | Paint Prime & 1st Coat - CMU / L3 - S. Mech Tower |  | 10d | 2025-10-15 A | 2025-10-17 A | P2.L3.SMT.1050 SS | 100% |  | 2025-10-13 | 2025-10-24 |  |  | 80 |  | PAINT | P2-5 |  | PAINT-1 | TS | TS | P2.B2.09.97.210 |  |  |
| P2.L3.SMT.1080 |  | Set & Connect - Elect Panels and Equipment / L3 - S. Mech Tower |  | 5d | 2025-10-27 A | 2025-11-07 A | P2.L3.SMT.1060 | 100% |  | 2025-10-27 | 2025-10-31 |  |  | 40 |  | ELEC | P2-5 |  | ELEC-2 | TS | TS |  |  |  |
| P2.L3.SMT.1120 |  | BAS - Equip Tie In / L3 - S. Mech Tower |  | 5d | 2025-10-27 A | 2025-11-07 A | P2.L3.SMT.1070, P2.L3.SMT.1060 | 100% |  | 2025-10-27 | 2025-10-31 |  |  | 40 |  | BAS | P2-5 | Harris | BAS-1 | TS | TS |  |  |  |
| P2.L3.SMT.1150 |  | Insulate HVAC / Plumbing Pipe / L3 - S. Mech Tower |  | 5d | 2025-12-01 A | 2025-12-05 A | P2.L3.SMT.1130 | 100% |  | 2026-03-13 | 2026-03-19 |  |  | 40 | ! | INSUL | P2-5 | Harris | INSUL-3 | TS | TS |  |  |  |
| P2.L3.SMT.1180 |  | Paint - Finish Coat / L3 - S. Mech Tower |  | 2d | 2025-12-01 A | 2025-12-02 A | P2.L3.SMT.1170 | 100% |  | 2026-01-30 | 2026-02-02 |  |  | 16 |  | PAINT | P2-5 |  | PAINT-1 | TS | TS |  | O |  |
| P2.L3.SMT.1140 |  | Pull Wire - In From Distribution Panels / Out to Branch Circuits / L3 - S. Mech Tower |  | 5d | 2025-12-15 A | 2025-12-19 A | P2.L3.SMT.1090 | 100% |  | 2026-01-16 | 2026-01-22 |  |  | 40 |  | ELEC | P2-5 |  | ELEC-2 | TS | TS |  | O |  |
| P2.L3.SMT.1090 |  | Panelboards, Interconnect Wiring, and Remaining Room Buildout of All Elec/FA Systems / L3 - S. Mech Tower |  | 10d | 2026-02-02 A | 2026-02-13 A | BP1.262.3.200, BP1.262.3.100, P2.L3.SMT.1080 | 100% |  | 2026-03-02 | 2026-03-13 |  |  | 80 |  | ELEC | P2-5 |  | ELEC-2 | TS | TS |  | O |  |
| P2.L3.SMT.1160 |  | Electrical Tie in to Equipment / L3 - S. Mech Tower |  | 5d | 2026-03-02 A | 2026-03-06 A | P2.L3.SMT.1070, P2.L3.SMT.1140 | 100% |  |  |  |  |  | 40 |  | ELEC | P2-5 |  | ELEC-2 | TS | TS |  | O |  |
| P2.L3.SMT.1170 |  | Test & Terminate / L3 - S. Mech Tower |  | 5d | 2026-03-02 A | 2026-03-06 A | P2.L3.SMT.1140 | 100% |  |  |  |  |  | 40 |  | ELEC | P2-5 |  | ELEC-2 | TS | TS |  | O |  |
| P2.L3.SMT.1210 |  | Doors & Hardware / L3 - S. Mech Tower |  | 2d | 2026-03-16 A | 2026-04-02 | P2.L3.SMT.1180 |  | 2d | 2026-03-23 | 2026-03-24 | 122d | 32d | 16 |  | DFH | P2-5 |  | DFH | TS | TS |  |  | AT29 |
| P2.L3.SMT.1110 |  | HVAC Piping - Equip Tie In / L3 - S. Mech Tower |  | 10d | 2026-03-30 A | 2026-05-08 | P2.L3.SMT.1070, CX.B2.HYDR.1000 | 20% | 8d | 2026-03-30 | 2026-04-10 | 1d | 0d | 80 |  | FIT | P2-5 | Harris | FIT-2 | TS | TS | P2.B2.23.20.610 |  |  |
| P2.L3.SMT.1190 |  | Trim All MEPF Finishes / L3 - S. Mech Tower |  | 2d | 2026-05-11 | 2026-05-12 | P2.L3.SMT.1180, P2.L3.SMT.1110 |  |  |  |  | 1d | 0d | 16 |  | MEP | P2-5 | Harris | MEP-2 | TS | TS |  |  |  |
| P2.L3.SMT.1250 |  | Prep Flooring - Epoxy Floors / L3 - S. Mech Tower |  | 2d | 2026-05-13 | 2026-05-14 | P2.L2.SMT.1200, P2.L3.SMT.1190 |  |  |  |  | 1d | 0d | 16 |  | EPOXYF | P2-5 |  | EPOXYF | TS | TS |  |  |  |
| P2.L3.SMT.1200 |  | Flooring - Epoxy Floors / L3 - S. Mech Tower |  | 2d | 2026-05-15 | 2026-05-18 | P2.L3.SMT.1250 |  |  |  |  | 1d | 0d | 16 |  | EPOXYF | P2-5 |  | EPOXYF | TS | TS |  |  |  |
| P2.L3.SMT.1220 |  | Trades Inspect & Verify R/I Work Completed to Specs / L3 - S. Mech Tower |  | 5d | 2026-05-19 | 2026-05-26 | P2.L3.SMT.1150, P2.L3.SMT.1210, P2.L3.SMT.1120, P2.L3.SMT.1200 |  |  |  |  | 90d | 0d | 40 |  | T | P2-5 |  | T | TS | TS |  |  |  |
| P2.L3.SMT.1240 |  | Energize Elec Panels - Lock Doors and Limit Access / L3 - S. Mech Tower |  | 5d | 2026-05-27 | 2026-06-02 | CX.B2.SWGR.1010, CX.B2.MVEE.1010, P2.L3.SMT.1220 |  |  |  |  | 90d | 0d | 40 |  | ELEC | P2-5 |  | ELEC-2 |  | TS |  |  |  |
| P2.L3.SMT.1230 |  | HVAC System Ready for Start Up / L3 - S. Mech Tower | milestone | 0d | 2026-06-02 | 2026-06-02 | P2.L3.SMT.1160 FF, P2.L3.SMT.1240 |  |  |  |  | 113d | 44d | 0 |  | MECH | P2-5 | Harris | MECH-2 |  | TS |  |  |  |

| ID | WBS | Activity | Type | Duration | Start | Finish | Predecessors | Complete | Planned start | Planned finish | Total float | Free float | Temp Orig Dur | Resp / SRLM | PHASE | Z.RESP | RESP / Trade | Act ID Temp | 744 | RESP UPD | Update Status | *NIH Resp Check* | Testing Type | Pick |
| --- | --- | --- | --- | --- | --- | --- | --- | --- | --- | --- | --- | --- | --- | --- | --- | --- | --- | --- | --- | --- | --- | --- | --- | --- |
|  | 8 | **East Mechanical Tower / Rough In & Finish / Level 3** |  |  | 2025-03-27 | 2026-04-22 |  |  |  |  |  |  |  |  |  |  |  |  |  |  |  |  |  |  |
| P2.L3.EMT.1070 |  | Set & Connect - Mech Equipment / L3 - E. Mech Tower |  | 10d | 2025-03-27 A | 2025-03-31 A | P2.3.03.620, P2.L2.EMT.1070 | 100% | 2025-03-31 | 2025-04-11 |  |  | 80 | HVAC | P2-5 | Harris | HVAC |  |  |  |  |  |  |  |
| P2.L3.EMT.1020 |  | In Wall - Electrical - CMU / L3 - E. Mech Tower |  | 10d | 2025-07-25 A | 2025-07-27 A | P2.L3.EMT.1010 SS | 100% | 2025-08-08 | 2025-08-21 |  |  | 80 | ELEC | P2-5 |  | ELEC-2 | P2.B2.26.05.510 | SM | SM |  |  |  |  |
| P2.L3.EMT.1030 |  | In Wall - Mech/Plumbing - CMU / L3 - E. Mech Tower |  | 10d | 2025-07-25 A | 2025-07-27 A | P2.L3.EMT.1010 SS | 100% | 2025-08-08 | 2025-08-21 |  |  | 80 | PLMB | P2-5 | Harris | PLMB | P2.B2.22.05.310 | SM | SM |  |  |  |  |
| P2.L3.EMT.1270 |  | OH - Elevator Priority Conduit / L3 - E. Mech Tower |  | 5d | 2025-07-25 A | 2025-07-30 A | P2.3.03.620, P2.L4.N.1030 | 100% | 2025-08-01 | 2025-08-07 |  |  | 40 | ELEC | P2-5 |  | ELEC-2 |  | SM | SM |  |  |  |  |
| P2.L3.EMT.1000 |  | Insulation - Exterior Wall Assembly / L3 - E. Mech Tower |  | 5d | 2025-08-18 A | 2025-08-22 A | P2.FAC.2.Z3.140 | 100% | 2025-08-01 | 2025-08-07 |  |  | 40 | INSUL | P2-5 |  | INSUL-1 |  | SM | SM |  |  |  |  |
| P2.L3.EMT.1100 |  | HVAC Piping Connections to Shaft Riser / L3 - E. Mech Tower |  | 5d | 2025-09-03 A | 2025-09-19 A | P2.L3.EMT.1070 | 100% | 2025-10-01 | 2025-10-07 |  |  | 40 | HVAC | P2-5 | Harris | HVAC |  | SM | SM | O | ! |  |  |
| P2.L3.EMT.1010 |  | CMU - Lay Block / L3 - E. Mech Tower |  | 10d | 2025-09-10 A | 2025-09-24 A | BP4.040.3.100, P2.L3.EMT.1000 | 100% | 2025-10-01 | 2025-10-14 |  |  | 80 | CMU | P2-5 |  | CMU | P2.B2.04.20.210 | SM | SM | O |  | AT3 |  |
| P2.L3.EMT.1040 |  | Paint - CMU Block Fill / L3 - E. Mech Tower |  | 10d | 2025-09-29 A | 2025-10-14 A | P2.L3.EMT.1010 | 100% | 2025-10-15 | 2025-10-28 |  |  | 80 | PAINT | P2-5 |  | PAINT-1 | P2.B2.09.97.110 | SM | SM |  |  |  |  |
| P2.L3.EMT.1050 |  | CMU - Point & Patch / L3 - E. Mech Tower |  | 10d | 2025-09-29 A | 2025-10-14 A | P2.L3.EMT.1020, P2.L3.EMT.1040, P2.L3.EMT.1030 | 100% | 2025-10-29 | 2025-11-11 |  |  | 80 | CMU | P2-5 |  | CMU | P2.B2.04.20.310 | SM | SM |  |  |  |  |
| P2.L3.EMT.1060 |  | Paint Prime & 1st Coat - CMU / L3 - E. Mech Tower |  | 10d | 2025-09-29 A | 2025-10-14 A | P2.L3.EMT.1050 SS | 100% | 2025-10-29 | 2025-11-11 |  |  | 80 | PAINT | P2-5 |  | PAINT-1 | P2.B2.09.97.210 | SM | SM |  |  |  |  |
| P2.L3.EMT.1280 |  | Pull Wire - Elevator Priority Conduit / L3 - E. Mech Tower |  | 5d | 2025-10-01 A | 2025-10-07 A | P2.L3.EMT.1270 | 100% |  |  |  |  | 40 | ELEC | P2-5 |  | ELEC-2 |  | SM | SM |  |  |  |  |
| P2.L3.EMT.1080 |  | Set & Connect - Elect Panels and Equipment / L3 - E. Mech Tower |  | 5d | 2025-10-15 A | 2025-10-21 A | P2.L3.EMT.1060 | 100% |  |  |  |  | 40 | ELEC | P2-5 |  | ELEC-2 |  | SM | SM |  |  |  |  |
| P2.L3.EMT.1120 |  | BAS - Equip Tie In / L3 - E. Mech Tower |  | 5d | 2025-10-15 A | 2025-10-21 A | P2.L3.EMT.1070, P2.L3.EMT.1060 | 100% |  |  |  |  | 40 | BAS | P2-5 | Harris | BAS-1 |  | SM | SM |  |  |  |  |
| P2.L3.EMT.1200 |  | Flooring Prep - Epoxy Floors / L3 - E. Mech Tower |  | 3d | 2025-11-17 A | 2025-11-19 A | P2.L3.EMT.1080 | 100% | 2025-12-15 | 2025-12-17 |  |  | 16 | EPOXYF | P2-5 |  | EPOXYF |  | SM | SM |  |  |  |  |
| P2.L3.EMT.1140 |  | Pull Wire - In From Distribution Panels / Out to Branch Circuits / L3 - E. Mech Tower |  | 5d | 2025-11-18 A | 2026-01-07 A | P2.L3.EMT.1080 | 100% | 2025-12-01 | 2025-12-05 |  |  | 40 | ELEC | P2-5 |  | ELEC-2 |  | SM | SM | O |  |  |  |
| P2.L3.EMT.1260 |  | Energize Elec Panels - Elevator Priority / L3 - E. Mech Tower | milestone | 0d | 2025-12-01 A | 2025-12-01 A | BP1.262.3.100, P2.L3.EMT.1280 | 100% |  |  |  |  | 40 | ELEC | P2-5 |  | ELEC-2 |  | SM | SM | O |  |  |  |
| FRG.P2.L3.EMT.1010 |  | AHU Piping Install / L3 - E. Mech Tower - FRAGNET |  | 15d | 2025-12-08 A | 2026-01-22 A | FRG.P2.L2.EMT.1010 | 100% | 2026-01-02 | 2026-01-22 |  |  | 80 | Harris Fragnet | P2-5 | Harris | FIT-2 | P2.B2.23.20.410 | TA | SM | O |  |  | 2 |
| P2.L3.EMT.1110 |  | HVAC Piping - Equip Tie In / L3 - E. Mech Tower |  | 10d | 2026-01-01 A | 2026-01-30 A | P2.L3.EMT.1070 | 100% | 2026-03-30 | 2026-04-10 |  |  | 80 | FIT | P2-5 | Harris | FIT-2 | P2.B2.23.20.610 | SM | SM |  |  |  |  |
| P2.L3.EMT.1090 |  | Panelboards, Interconnect Wiring, and Remaining Room Buildout of All Elec/FA Systems / L3 - E. Mech Tower |  | 10d | 2026-03-02 A | 2026-03-27 A | BP1.262.3.200, BP1.262.3.100, P2.L3.EMT.1080, P2.L3.EMT.1140 | 100% | 2026-03-18 | 2026-03-31 |  |  | 80 | ELEC | P2-5 |  | ELEC-2 |  | SM | SM | O |  |  |  |
| P2.L3.EMT.1105 |  | HVAC Duct Connections to Shaft Riser / L3 - E. Mech Tower |  | 5d | 2026-03-02 A | 2026-03-27 A | P2.L3.EMT.1070 | 100% | 2026-03-02 | 2026-03-06 |  |  | 40 | HVAC | P2-5 | Harris | HVAC |  | SM | SM | O | ! |  |  |
| P2.L3.EMT.1130 |  | Test/Inspect Duct & Piping / L3 - E. Mech Tower |  | 5d | 2026-04-01 | 2026-04-07 | P2.L3.EMT.1105, P2.L3.EMT.1100 |  |  |  | 142d | 0d | 40 | MECH | P2-5 | Harris | MECH-2 |  | SM | SM | O | ! |  |  |
| P2.L3.EMT.1160 |  | Electrical Tie in to Equipment / L3 - E. Mech Tower |  | 5d | 2026-04-01 | 2026-04-07 | P2.L3.EMT.1140, P2.L3.EMT.1070 |  |  |  | 33d | 6d | 40 | ELEC | P2-5 |  | ELEC-2 |  | SM | SM | O |  |  |  |
| P2.L3.EMT.1170 |  | Test & Terminate / L3 - E. Mech Tower |  | 5d | 2026-04-01 | 2026-04-07 | P2.L3.EMT.1140 |  |  |  | 27d | 0d | 40 | ELEC | P2-5 |  | ELEC-2 |  | SM | SM | O |  |  |  |
| P2.L3.EMT.1250 |  | Flooring - Epoxy Floors / L3 - E. Mech Tower |  | 2d | 2026-04-01 | 2026-04-02 | P2.L3.EMT.1200 |  |  |  | 30d | 3d | 16 | EPOXYF | P2-5 |  | EPOXYF |  | SM | SM | O |  |  |  |
| P2.L3.EMT.1150 |  | Insulate HVAC / Plumbing Pipe / L3 - E. Mech Tower |  | 5d | 2026-04-08 | 2026-04-14 | P2.L3.EMT.1110, P2.L3.EMT.1130 |  |  |  | 142d | 1d | 40 | INSUL | P2-5 | Harris | INSUL-3 |  | SM | SM |  | ! |  |  |
| P2.L3.EMT.1180 |  | Paint - Finish Coat / L3 - E. Mech Tower |  | 2d | 2026-04-08 | 2026-04-09 | P2.L3.EMT.1170, P2.L3.EMT.1250 |  |  |  | 27d | 0d | 16 | PAINT | P2-5 |  | PAINT-1 |  | SM | SM | O |  |  |  |
| P2.L3.EMT.1190 |  | Trim All MEPF Finishes / L3 - E. Mech Tower |  | 2d | 2026-04-10 | 2026-04-13 | P2.L3.EMT.1180 |  |  |  | 27d | 0d | 16 | MEP | P2-5 | Harris | MEP-2 |  | SM | SM | O |  |  |  |
| P2.L3.EMT.1210 |  | Doors & Hardware / L3 - E. Mech Tower |  | 2d | 2026-04-14 | 2026-04-15 | P2.L3.EMT.1190 |  |  |  | 27d | 0d | 16 | DFH | P2-5 |  | DFH |  | SM | SM | O |  | AT29 |  |
| P2.L3.EMT.1220 |  | Trades Inspect & Verify R/I Work Completed to Specs / L3 - E. Mech Tower |  | 5d | 2026-04-16 | 2026-04-22 | P2.L3.EMT.1210, P2.L3.EMT.1120, P2.L3.EMT.1150, FRG.P2.L3.EMT.1010, P2.L3.EMT.1180 |  |  |  | 141d | 0d | 40 | T | P2-5 |  | T |  | SM | SM |  |  |  |  |
| P2.L3.EMT.1240 |  | Energize Elec Panels - Lock Doors and Limit Access / L3 - E. Mech Tower |  | 1d | 2026-04-16 | 2026-04-16 | CX.B2.SWGR.1010, CX.B2.MVEE.1010, P2.L3.EMT.1090, P2.L3.EMT.1140, P2.L3.EMT.1160, P2.L3.EMT.1170, P2.L3.EMT.1190, P2.L3.EMT.1210 |  |  |  | 27d | 0d | 40 | ELEC | P2-5 |  | ELEC-2 |  |  | SM |  |  |  |  |
| P2.L3.EMT.1230 |  | HVAC System Ready for Start Up / L3 - E. Mech Tower | milestone | 0d | 2026-04-22 | 2026-04-22 | P2.L3.EMT.1240, P2.L3.EMT.1160 FF, P2.L3.EMT.1220 FF, FRG.P2.L3.EMT.1010 |  |  |  | 141d | 72d | 0 | MECH | P2-5 | Harris | MECH-2 |  |  | SM |  |  |  |  |

| ID | WBS | Activity | Duration | Start | Finish | Predecessors | Complete | Remaining | Planned start | Planned finish | Total float | Free float | Temp Orig Dur | Act ID Temp | Resp / SRLM | PHASE | Z.RESP | RESP / Trade | Testing Type | Pick | 744 | RESP UPD | Update Status | **NEAR CRITICAL** |
| --- | --- | --- | --- | --- | --- | --- | --- | --- | --- | --- | --- | --- | --- | --- | --- | --- | --- | --- | --- | --- | --- | --- | --- | --- |
|  | L4 | **L4 / BUILDOUT** |  | 2024-12-24 | 2027-03-03 |  |  |  |  |  |  |  |  |  |  |  |  |  |  |  |  |  |  |  |
|  | L4 | **CORE & SUPPORT SPACES / LEVEL 4** |  | 2024-12-24 | 2027-03-03 |  |  |  |  |  |  |  |  |  |  |  |  |  |  |  |  |  |  |  |
|  | 2 | **ROUGH IN - Core & Support Spaces / Level 4** |  | 2024-12-24 | 2026-09-09 |  |  |  |  |  |  |  |  |  |  |  |  |  |  |  |  |  |  |  |
|  | Z112 | **South / Level 4** |  | 2025-02-17 | 2026-08-18 |  |  |  |  |  |  |  |  |  |  |  |  |  |  |  |  |  |  |  |
| P2.L4.S.1000 |  | Layout - All Trades / L4 / South | 5d | 2025-02-17 A | 2025-03-03 A | P2.5.03.610 | 100% |  | 2025-03-03 | 2025-03-07 |  |  | 40 | P2.B2.01.010 | R/I.OH | P2-5 | Harris | R/I.OH |  |  |  |  |  |  |
| P2.L4.S.1010 |  | Framing - Top Track / L4 / South | 10d | 2025-02-26 A | 2025-03-10 A | P2.L4.S.1000, P2.L3.S.1010 | 100% |  | 2025-03-13 | 2025-03-26 |  |  | 80 | P2.B2.09.21.110 | GYP | P2-5 |  | GYP-1 |  |  |  |  |  |  |
| P2.L4.S.1020 |  | OH - Structural Supports (All Trades) / L4 / South | 5d | 2025-03-10 A | 2025-03-17 A | P2.L4.S.1000 | 100% |  | 2025-03-06 | 2025-03-12 |  |  | 80 | P2.B2.05.45.110 | R/I.OH | P2-5 | Harris | R/I.OH | AT24 |  |  |  |  |  |
| P2.L4.S.1030 |  | OH - MEPF - Hangers & Supports / L4 / South | 10d | 2025-03-10 A | 2025-03-21 A | P2.L4.S.1000, P2.BIM.L4.40.140 | 100% |  | 2025-03-06 | 2025-03-19 |  |  | 80 | P2.B2.20.05.410 | MEP | P2-5 | Harris | MEP-2 |  |  |  |  |  |  |
| P2.L4.S.1170 |  | OH - Fire Suppression / L4 / South | 10d | 2025-05-05 A | 2025-05-23 A | P2.L4.S.1030, P2.L4.S.1150 | 100% |  | 2025-06-30 | 2025-07-14 |  |  | 80 | P2.B2.21.13.210 | FP | P2-5 |  | FP-1 |  | 1 |  |  |  |  |
| P2.L4.S.1090 |  | Framing - Priority Walls & Door Frames / L4 / South | 10d | 2025-05-21 A | 2025-05-30 A | P2.L4.S.1010, P2.L3.S.1090 | 100% |  | 2025-04-01 | 2025-04-14 |  |  | 80 | P2.B2.09.21.310 | GYP | P2-5 |  | GYP-1 |  |  |  |  |  |  |
| P2.L4.S.1130 |  | Framing - Priority Walls - AHJ Inspections / L4 / South | 5d | 2025-05-22 A | 2025-06-19 A | P2.L4.S.1090 | 100% |  | 2025-06-09 | 2025-06-13 |  |  | 80 | P2.B2.01.43.010 | FM | P2-5 |  | FM |  |  | ND | ND |  |  |
| P2.L4.S.1160 |  | Spray/Seal/Firestop - Head of Wall - Priority Walls / L4 / South | 5d | 2025-05-27 A | 2025-06-19 A | P2.L4.S.1140 FF | 100% |  | 2025-06-16 | 2025-06-20 |  |  | 80 | P2.B2.07.84.410 | FIRESTO | P2-5 |  | FIRESTO | AT47 |  | ND | ND |  |  |
| P2.L4.S.1180 |  | OH - Plumbing Piping / L4 / South | 10d | 2025-05-30 A | 2025-06-30 A | P2.L4.S.1030, P2.L4.S.1150, P2.L3.S.1180 | 100% |  | 2025-06-30 | 2025-07-14 |  |  | 80 | P2.B2.22.14.210 | PLMB | P2-5 | Harris | PLMB |  | 1 | MLF | MLF |  |  |
| P2.L4.S.1190 |  | OH - Electrical - 480/277v Distribution / L4 / South | 10d | 2025-05-30 A | 2025-06-30 A | P2.L4.S.1030, P2.L4.S.1150 | 100% |  | 2025-06-30 | 2025-07-14 |  |  | 80 | P2.B2.26.05.210 | ELEC | P2-5 |  | ELEC-2 |  | 1 | MLF | MLF |  |  |
| P2.L4.S.1140 |  | Hang/Tape/Finish - Priority Walls / L4 / South | 5d | 2025-06-09 A | 2025-06-30 A | P2.L4.S.1020, P2.L4.S.1130 | 100% |  | 2025-07-07 | 2025-07-11 |  |  | 80 | P2.B2.09.21.210 | GYP | P2-5 |  | GYP-1 |  |  | ND | ND |  |  |
| P2.L4.S.1150 |  | Paint Prime & 1st Coat - Priority Walls / L4 / South | 10d | 2025-06-10 A | 2025-06-25 A | P2.L4.S.1160 SS | 100% |  | 2025-07-10 | 2025-07-23 |  |  | 80 | P2.B2.09.91.110 | PAINT | P2-5 |  | PAINT-1 |  |  | MLF | MLF |  |  |
| P2.L4.S.1220 |  | OH - HVAC Piping (High) / L4 / South | 20d | 2025-06-12 A | 2025-07-31 A | P2.L4.S.1030, P2.L4.S.1170 | 100% |  | 2025-07-24 | 2025-08-20 |  |  | 80 | P2.B2.23.20.410 | FIT | P2-5 | Harris | FIT-2 |  | 2 | MLF | MLF |  |  |
| P2.L4.S.1230 |  | OH - Electrical - 208/120v Branch / L4 / South | 10d | 2025-06-23 A | 2025-08-04 A | P2.L4.S.1190 | 100% |  | 2025-08-04 | 2025-08-15 |  |  | 80 | P2.B2.26.05.310 | ELEC | P2-5 |  | ELEC-2 |  | 2 | MLF | MLF |  |  |
| P2.L4.S.1200 |  | Firestop - Thru Wall - Priority Walls / L4 / South | 5d | 2025-07-01 A | 2025-07-08 A | P2.L4.S.1150 | 100% |  | 2025-08-01 | 2025-08-07 |  |  | 80 | P2.B2.07.84.110 | FIRESTO | P2-5 |  | FIRESTO | AT48 |  | MLF | MLF |  |  |
| P2.L4.S.1210 |  | OH - Hang Duct - HP Mains / L4 / South | 10d | 2025-07-21 A | 2025-08-26 A | P2.L4.S.1200, P2.L4.S.1030, P2.L3.S.1210 FF+5d | 100% |  | 2025-08-08 | 2025-08-21 |  |  | 80 | P2.B2.23.30.210 | HVAC | P2-5 | Harris | HVAC |  | 1 | MLF | MLF |  |  |
| P2.L4.S.1310 |  | OH - Set & Connect Mech Equipment / L4 / South | 10d | 2025-07-22 A | 2025-08-04 A | P2.L4.S.1260 | 100% |  | 2025-09-23 | 2025-10-06 |  |  | 80 | P2.B2.23.82.110 | HVAC | P2-5 | Harris | HVAC |  | 3 | MLF | MLF |  |  |
| P2.L4.S.1560 |  | OH - HVAC Piping (Low) / L4 / South | 20d | 2025-07-22 A | 2025-08-07 A | P2.L4.S.1220 | 100% |  | 2025-09-02 | 2025-09-29 |  |  | 80 | P2.B2.23.20.410 | FIT | P2-5 | Harris | FIT-2 |  | 2 | MLF | MLF |  |  |
| P2.L4.S.1270 |  | OH - HVAC Piping - Test / L4 / South | 20d | 2025-08-07 A | 2025-08-27 A | P2.L4.S.1560 | 100% |  | 2025-09-30 | 2025-10-27 |  |  | 80 | P2.B2.23.20.510 | FIT | P2-5 | Harris | FIT-2 |  | 3 | MLF | MLF |  |  |
| FRG.P2.L4.S.1820 |  | HVAC Piping - Hanging Copper Racks / L4 / South - FRAGNET | 20d | 2025-08-14 A | 2025-09-18 A | P2.L4.S.1560 | 100% |  | 2025-09-10 | 2025-10-07 |  |  | 80 | P2.B2.23.20.410 | Harris Fragnet | P2-5 | Harris | FIT-2 |  | 2 | TA | TA | O |  |
| P2.L4.S.1290 |  | OH - Insulate HP Duct / L4 / South | 10d | 2025-08-22 A | 2025-10-02 A | P2.L4.S.1260 | 100% |  | 2025-09-23 | 2025-10-06 |  |  | 80 | P2.B2.23.07.310 | INSUL | P2-5 | Harris | INSUL-3 |  | 3 | MLF | MLF |  |  |
| P2.L4.S.1260 |  | OH - DALT - HP Mains / L4 / South | 10d | 2025-08-27 A | 2025-09-30 A | P2.L4.S.1210 | 100% |  | 2025-09-09 | 2025-09-22 |  |  | 80 | P2.B2.23.30.310 | TAB | P2-5 | Harris | TAB-1 |  | 2 | MLF | MLF | O |  |
| P2.L4.S.1340 |  | OH - Insulate HVAC Pipe / L4 / South | 10d | 2025-08-28 A | 2025-10-06 A | P2.L4.S.1290, P2.L4.S.1270, FRG.P2.L4.S.1820 | 100% |  | 2025-10-13 | 2025-10-24 |  |  | 80 | P2.B2.22.07.610 | INSUL | P2-5 | Harris | INSUL-3 |  | 4 | MLF | MLF |  |  |
| P2.L4.S.1380 |  | OH - Conduit - Low Volt - Fire Alarm / L4 / South | 10d | 2025-09-01 A | 2025-09-11 A | P2.L4.S.1310, P2.L4.S.1350 | 100% |  | 2025-11-19 | 2025-12-04 |  |  | 80 |  | FA | P2-5 |  | FA-1 |  | 5 | MLF | MLF |  |  |
| P2.L4.S.1370 |  | OH - Conduit - Low Volt - BAS/Controls / L4 / South | 10d | 2025-09-08 A | 2025-10-13 A | P2.L4.S.1310, P2.L4.S.1340 | 100% |  | 2025-10-07 | 2025-10-20 |  |  | 80 |  | BAS | P2-5 | Harris | BAS-1 |  | 5 | MLF | MLF |  |  |
| P2.L4.S.1300 |  | OH - Hang Duct - LP Branch / L4 / South | 20d | 2025-09-16 A | 2025-12-09 A | P2.L4.S.1260 | 100% |  | 2025-10-08 | 2025-11-04 |  |  | 80 | P2.B2.23.30.410 | HVAC | P2-5 | Harris | HVAC |  | 3 | MLF | MLF | O |  |
| P2.L4.S.1390 |  | OH - Conduit - Low Volt - Telecom / L4 / South | 10d | 2025-09-22 A | 2025-10-27 A | P2.L4.S.1350 | 100% |  | 2025-11-19 | 2025-12-04 |  |  | 80 |  | ELEC | P2-5 |  | ELEC-2 |  | 5 | MLF | MLF |  |  |
| P2.L4.S.1240 |  | OH - Plumbing - Test / L4 / South | 10d | 2025-10-08 A | 2025-10-16 A | P2.L4.S.1180 | 100% |  | 2025-10-01 | 2025-10-14 |  |  | 80 | P2.B2.22.14.310 | PLMB | P2-5 | Harris | PLMB |  | 2 | MLF | MLF |  |  |
| P2.L4.S.1280 |  | OH - Insulate Plumbing / L4 / South | 10d | 2025-10-17 A | 2025-10-28 A | P2.L4.S.1240 | 100% |  | 2025-10-15 | 2025-10-28 |  |  | 80 | P2.B2.22.07.510 | INSUL | P2-5 | Harris | INSUL-3 |  | 3 | MLF | MLF |  |  |
| P2.L4.S.1420 |  | Framing - Balance of Framing & Door Frames / L4 / South | 10d | 2025-11-17 A | 2025-11-20 A | P2.L2.N.1410 | 100% |  | 2025-12-08 | 2025-12-19 |  |  | 80 | A1310 | GYP | P2-5 |  | GYP-1 |  |  | MLF | MLF |  |  |
| P2.L4.S.1430 |  | In Wall - Plumbing - Framing / L4 / South | 10d | 2025-12-01 A | 2025-12-12 A | P2.L4.S.1420 | 100% |  | 2026-01-02 | 2026-01-15 |  |  | 80 | P2.B2.22.05.410 | PLMB | P2-5 | Harris | PLMB |  |  |  | MLF | O |  |
| P2.L4.S.1450 |  | In Wall - Backing/Blocking/Supports / L4 / South | 10d | 2025-12-01 A | 2025-12-12 A | P2.L4.S.1420 | 100% |  | 2026-01-02 | 2026-01-15 |  |  | 80 | P2.B2.09.21.510 | R/I.IW | P2-5 |  | R/I.IW |  |  |  | MLF | O |  |
| P2.L4.S.1440 |  | In Wall - Electrical - Framing / L4 / South | 10d | 2025-12-15 A | 2025-12-22 A | P2.L4.S.1230, P2.L4.S.1420 | 100% |  | 2026-01-02 | 2026-01-15 |  |  | 80 | P2.B2.26.05.610 | ELEC | P2-5 |  | ELEC-2 |  |  |  | MLF | O |  |
| P2.L4.S.1480 |  | Spray/Seal/Firestop - Head of Wall / L4 / South | 10d | 2025-12-15 A | 2025-12-22 A | P2.L4.S.1420 FF | 100% |  | 2026-01-02 | 2026-01-15 |  |  | 80 | P2.B2.07.84.310 | FIRSAFE | P2-5 |  | FIRSAFE | AT47 | To Finishes - Paint |  | MLF | O |  |
| P2.L4.S.1460 |  | AHJ Inspections - Wall Close In / L4 / South | 5d | 2025-12-26 A | 2025-12-31 A | P2.L4.S.1450, P2.L4.S.1430, P2.L4.S.1440 | 100% |  | 2026-01-16 | 2026-01-22 |  |  | 40 | P2.B2.01.43.110 | FM | P2-5 |  | FM |  |  |  | MLF | O |  |
| P2.L4.S.1320 |  | OH - Electrical - Equip Tie In / L4 / South | 10d | 2026-02-02 A | 2026-02-11 A | P2.L4.S.1310 | 100% |  | 2026-03-02 | 2026-03-13 |  |  | 80 | P2.B2.26.05.410 | ELEC | P2-5 |  | ELEC-2 |  | 4 | MLF | MLF | O |  |
| P2.L4.S.1360 |  | Pull Wire - Electrical - 208/120v Branch & Equip / L4 / South | 20d | 2026-02-12 A | 2026-03-27 A | P2.L4.S.1230, P2.L4.S.1320, P2.L4.S.1440 | 100% |  | 2026-03-02 | 2026-03-27 |  |  | 80 |  | ELEC | P2-5 |  | ELEC-2 |  | To Trim Devices & Term Panel |  | MLF | O |  |
| P2.L4.S.1350 |  | OH - Insulate LP Duct / L4 / South | 10d | 2026-03-09 A | 2026-03-31 A | P2.L4.S.1300 | 100% |  | 2026-03-02 | 2026-03-13 |  |  | 80 | P2.B2.23.07.410 | INSUL | P2-5 | Harris | INSUL-3 |  | 4 | MLF | MLF | O |  |
| P2.L4.S.1410 |  | OH - Conduit - Low Volt - Medical Services/Nurse Call (?) / L4 / South | 10d | 2026-03-16 A | 2026-03-27 A | P2.L4.S.1350 | 100% |  |  |  |  |  | 80 |  | ELEC | P2-5 |  | ELEC-2 |  | 5 | MLF | MLF | O |  |
| P2.L4.S.1500 |  | Pull Wire - Low Volt - BAS/Controls / L4 / South | 10d | 2026-03-16 A | 2026-03-31 A | P2.L4.S.1370 | 100% |  | 2026-03-02 | 2026-03-13 |  |  | 80 |  | BAS | P2-5 | Harris | BAS-1 |  | To Trim Finishes |  | MLF |  | 2.2 |
| P2.L4.S.1330 |  | OH - HVAC Piping - Equip Tie In / L4 / South | 15d | 2026-03-30 A | 2026-05-08 | P2.L4.S.1310, P2.L4.S.1270, CX.B2.HYDR.1000 | 47% | 8d | 2026-03-30 | 2026-04-17 | 114d | 50d | 80 | P2.B2.23.20.610 | FIT | P2-5 | Harris | FIT-2 |  |  | MLF | MLF |  |  |
| P2.L4.S.1540 |  | Pull Wire - Low Volt - Medical Services/Nurse Call (?) / L4 / South | 10d | 2026-03-30 A | 2026-04-07 | P2.L4.S.1410 | 50% | 5d | 2026-03-30 | 2026-04-10 | 137d | 73d | 80 |  | LOWVOLT | P2-5 |  | LOWVOLT-1 |  | To Trim Finishes |  | MLF |  | 2.2 |
| P2.L4.S.1250 |  | Pull Wire - Electrical - 480/277v Distribution / L4 / South | 10d | 2026-04-01 | 2026-04-14 | P2.L4.S.1190, P2.4.HE.3959.1050, P2.4.HE.5966.1050 |  |  |  |  | 132d | 68d | 80 |  | ELEC | P2-5 |  | ELEC-2 |  | To Trim Devices & Term Panel | MLF | MLF | O |  |
| P2.L4.S.1400 |  | OH - Conduit - Low Volt - Security / L4 / South | 10d | 2026-04-01 | 2026-04-14 | P2.L4.S.1340 |  |  |  |  | 122d | 0d | 80 |  | ELEC | P2-5 |  | ELEC-2 |  | 5 | MLF | MLF | O |  |
| P2.L4.S.1510 |  | Pull Wire - Low Volt - Fire Alarm / L4 / South | 10d | 2026-04-01 | 2026-04-14 | P2.L4.S.1380 |  |  |  |  | 132d | 68d | 80 |  | FA | P2-5 |  | FA-1 |  | To Trim Finishes |  | MLF |  | 2.2 |
| P2.L4.S.1520 |  | Pull Wire - Low Volt - Telecom / L4 / South | 10d | 2026-04-01 | 2026-04-14 | P2.L4.S.1390 |  |  |  |  | 132d | 68d | 80 |  | CIT | P2-5 |  | CIT |  | To Trim Finishes |  | MLF |  | 2.2 |
| P2.L4.S.1530 |  | Pull Wire - Low Volt - Security / L4 / South | 10d | 2026-04-15 | 2026-04-28 | P2.L4.S.1400 |  |  |  |  | 122d | 58d | 80 |  | LOWVOLT | P2-5 |  | LOWVOLT-1 |  | To Trim Finishes |  | MLF |  | 2.2 |
| P2.L4.S.1490 |  | Firestop - Thru Wall / L4 / South | 10d | 2026-07-08 | 2026-07-21 | P2.L4.S.1280, P2.L3.N.1470 |  |  |  |  | 64d | 0d | 80 | P2.B2.07.84.210 | FIRESTO | P2-5 |  | FIRESTO | AT48 | To Finishes - Paint |  | MLF |  | 2.2 |
| P2.L4.S.1550 |  | Trades Inspect & Verify R/I Work Completed to Specs / L4 / South | 5d | 2026-07-22 | 2026-07-28 | P2.L4.S.1490, P2.L4.S.1480, P2.L4.S.1530, P2.L4.S.1250, P2.L4.S.1540, P2.L4.S.1360, P2.L4.S.1500, P2.L4.S.1510, P2.L4.S.1520, P2.L4.S.1330 |  |  |  |  | 64d | 30d | 40 |  | T | P2-5 |  | T |  |  |  | MLF |  | 2.2 |
| P2.L4.S.1470 |  | Hang-Tape-Finish - Walls / L4 / South | 15d | 2026-07-29 | 2026-08-18 | P2.L4.S.1460, P2.SUM.175, P2.MR.W.9030, P2.L2.S.1470, P2.L2.N.1180 |  |  |  |  | 13d | 0d | 80 | P2.B2.09.21.710 | GYP | P2-5 |  | GYP-1 |  |  |  | MLF |  | 2.2 |

Notes:
- FRG.P2.L4.S.1820: NOTES: 9/11 finish per Harris schedule
- P2.L4.S.1340: NOTES: Unactualized Start per remaining activities in Harris schedule

| ID | WBS | Activity | Duration | Start | Finish | Predecessors | Complete | Remaining | Planned start | Planned finish | Total float | Free float | Temp Orig Dur | Act ID Temp | Resp / SRLM | PHASE | Z.RESP | RESP / Trade | Testing Type | Pick | 744 | RESP UPD | Update Status | **NEAR CRITICAL** |
| --- | --- | --- | --- | --- | --- | --- | --- | --- | --- | --- | --- | --- | --- | --- | --- | --- | --- | --- | --- | --- | --- | --- | --- | --- |
|  | Z1111 | **North / Level 4** |  | 2025-03-03 | 2026-09-09 |  |  |  |  |  |  |  |  |  |  |  |  |  |  |  |  |  |  |  |
| P2.L4.N.1000 |  | Layout - All Trades / L4 / North | 5d | 2025-03-03 A | 2025-03-07 A | P2.5.03.630 | 100% |  | 2025-04-01 | 2025-04-07 |  |  | 40 | P2.B2.01.010 | R/I.OH | P2-5 | Harris | R/I.OH |  |  |  |  |  |  |
| P2.L4.N.1010 |  | Framing - Top Track / L4 / North | 10d | 2025-03-03 A | 2025-03-07 A | P2.L3.N.1010, P2.L4.N.1000 FF+5d | 100% |  | 2025-04-01 | 2025-04-14 |  |  | 80 | P2.B2.09.21.110 | GYP | P2-5 |  | GYP-1 |  |  |  |  |  |  |
| P2.L4.N.1030 |  | OH - MEPF - Hangers & Supports / L4 / North | 10d | 2025-03-10 A | 2025-03-22 A | P2.L4.N.1000, P2.BIM.L4.40.140 | 100% |  | 2025-04-08 | 2025-04-21 |  |  | 80 | P2.B2.20.05.410 | MEP | P2-5 | Harris | MEP-2 |  |  |  |  |  |  |
| P2.L4.N.1090 |  | Framing - Priority Walls & Door Frames / L4 / North | 10d | 2025-03-25 A | 2025-04-04 A | P2.L4.N.1030, P2.L4.N.1010, P2.L3.N.1090 SS | 100% |  | 2025-04-22 | 2025-05-05 |  |  | 80 | P2.B2.09.21.310 | GYP | P2-5 |  | GYP-1 |  |  |  |  |  |  |
| P2.L4.N.1130 |  | Framing - Priority Walls - AHJ Inspections / L4 / North | 5d | 2025-04-07 A | 2025-04-11 A | P2.L4.N.1090 | 100% |  | 2025-05-08 | 2025-05-14 |  |  | 80 | P2.B2.01.43.010 | FM | P2-5 |  | FM |  |  |  |  |  |  |
| P2.L4.N.1020 |  | OH - Structural Supports (All Trades) / L4 / North | 5d | 2025-04-28 A | 2025-04-30 A | P2.L4.N.1000 | 100% |  | 2025-05-01 | 2025-05-07 |  |  | 80 | P2.B2.05.45.110 | R/I.OH | P2-5 | Harris | R/I.OH | AT24 |  |  |  |  |  |
| P2.L4.N.1160 |  | Spray/Seal/Firestop - Head of Wall - Priority Walls / L4 / North | 5d | 2025-04-28 A | 2025-05-01 A | P2.L4.N.1140 FF | 100% |  | 2025-06-09 | 2025-06-13 |  |  | 80 | P2.B2.07.84.410 | FIRESTO | P2-5 |  | FIRESTO | AT47 |  |  |  |  |  |
| P2.L4.N.1170 |  | OH - Fire Suppression / L4 / North | 10d | 2025-05-12 A | 2025-05-23 A | P2.L4.N.1030, P2.L4.N.1150 | 100% |  | 2025-06-23 | 2025-07-07 |  |  | 80 | P2.B2.21.13.210 | FP | P2-5 |  | FP-1 |  | 1 |  |  |  |  |
| P2.L4.N.1180 |  | OH - Plumbing Piping / L4 / North | 10d | 2025-05-19 A | 2025-05-30 A | P2.L4.N.1030, P2.L3.N.1180 | 100% |  | 2025-06-24 | 2025-07-08 |  |  | 80 | P2.B2.22.14.210 | PLMB | P2-5 | Harris | PLMB |  | 1 |  |  |  |  |
| P2.L4.N.1190 |  | OH - Electrical - 480/277v Distribution / L4 / North | 10d | 2025-05-22 A | 2025-08-07 A | P2.L4.N.1030, P2.L4.N.1150 | 100% |  | 2025-06-23 | 2025-07-07 |  |  | 80 | P2.B2.26.05.210 | ELEC | P2-5 |  | ELEC-2 |  | 1 | MLF | MLF |  |  |
| P2.L4.N.1220 |  | OH - HVAC Piping (High) / L4 / North | 20d | 2025-06-02 A | 2025-06-30 A | P2.L4.N.1030, P2.L4.N.1170 | 100% |  | 2025-07-30 | 2025-08-26 |  |  | 80 | P2.B2.23.20.410 | FIT | P2-5 | Harris | FIT-2 |  | 2 | MLF | MLF |  |  |
| P2.L4.N.1140 |  | Hang/Tape/Finish - Priority Walls / L4 / North | 10d | 2025-06-12 A | 2025-06-30 A | P2.L4.N.1020, P2.L4.N.1130 | 100% |  | 2025-07-01 | 2025-07-15 |  |  | 80 | P2.B2.09.21.210 | GYP | P2-5 |  | GYP-1 |  |  | ND | ND |  |  |
| P2.L4.N.1150 |  | Paint Prime & 1st Coat - Priority Walls / L4 / North | 10d | 2025-06-16 A | 2025-06-27 A | P2.L4.N.1160 SS | 100% |  | 2025-07-16 | 2025-07-29 |  |  | 80 | P2.B2.09.91.110 | PAINT | P2-5 |  | PAINT-1 |  |  | MLF | MLF |  |  |
| P2.L4.N.1230 |  | OH - Electrical - 208/120v Branch / L4 / North | 10d | 2025-06-16 A | 2025-06-27 A | P2.L4.N.1190 | 100% |  | 2025-08-06 | 2025-08-19 |  |  | 80 | P2.B2.26.05.310 | ELEC | P2-5 |  | ELEC-2 |  | 2 | MLF | MLF |  |  |
| P2.L4.N.1560 |  | OH - HVAC Piping (Low) / L4 / North | 20d | 2025-06-23 A | 2025-08-14 A | P2.L4.N.1220 | 100% |  | 2025-08-27 | 2025-09-24 |  |  | 80 | P2.B2.23.20.410 | FIT | P2-5 | Harris | FIT-2 |  | 2 | MLF | MLF |  |  |
| P2.L4.N.1200 |  | Firestop - Thru Wall - Priority Walls / L4 / North | 5d | 2025-06-30 A | 2025-07-07 A | P2.L4.N.1150 | 100% |  | 2025-07-30 | 2025-08-05 |  |  | 80 | P2.B2.07.84.110 | FIRESTO | P2-5 |  | FIRESTO | AT48 |  | MLF | MLF |  |  |
| P2.L4.N.1210 |  | OH - Hang Duct - HP Mains / L4 / North | 10d | 2025-08-01 A | 2025-08-14 A | P2.L4.N.1030, P2.L4.N.1200, P2.L3.N.1210 FF | 100% |  | 2025-09-02 | 2025-09-15 |  |  | 80 | P2.B2.23.30.210 | HVAC | P2-5 | Harris | HVAC |  | 1 | MLF | MLF |  |  |
| FRG.P2.L4.N.1810 |  | HVAC Piping - Hanging Copper Racks / L4 / North - FRAGNET | 20d | 2025-08-14 A | 2025-09-18 A | P2.L4.N.1560 | 100% |  | 2025-09-10 | 2025-10-07 |  |  | 80 | P2.B2.23.20.410 | Harris Fragnet | P2-5 | Harris | FIT-2 |  | 2 | TA | TA | O |  |
| P2.L4.N.1260 |  | OH - DALT - HP Mains / L4 / North | 10d | 2025-08-15 A | 2025-08-28 A | P2.L4.N.1210 | 100% |  | 2025-09-16 | 2025-09-29 |  |  | 80 | P2.B2.23.30.310 | TAB | P2-5 | Harris | TAB-1 |  | 2 | MLF | MLF |  |  |
| P2.L4.N.1270 |  | OH - HVAC Piping - Test / L4 / North | 20d | 2025-08-15 A | 2025-10-03 A | P2.L4.N.1560, FRG.P2.L4.N.1810 | 100% |  | 2025-10-13 | 2025-11-07 |  |  | 80 | P2.B2.23.20.510 | FIT | P2-5 | Harris | FIT-2 |  | 3 | MLF | MLF |  |  |
| P2.L4.N.1310 |  | OH - Set & Connect Mech Equipment / L4 / North | 10d | 2025-08-15 A | 2025-08-29 A | P2.L4.N.1260 | 100% |  | 2025-09-30 | 2025-10-13 |  |  | 80 | P2.B2.23.82.110 | HVAC | P2-5 | Harris | HVAC |  | 3 | MLF | MLF |  |  |
| P2.L4.N.1290 |  | OH - Insulate HP Duct / L4 / North | 10d | 2025-08-29 A | 2025-10-13 A | P2.L4.N.1260 | 100% |  | 2025-09-30 | 2025-10-13 |  |  | 80 | P2.B2.23.07.310 | INSUL | P2-5 | Harris | INSUL-3 |  | 3 | MLF | MLF |  |  |
| P2.L4.N.1340 |  | OH - Insulate HVAC Pipe / L4 / North | 10d | 2025-08-29 A | 2025-12-05 A | P2.L4.N.1290, P2.L4.N.1270 | 100% |  | 2025-11-10 | 2025-11-21 |  |  | 80 | P2.B2.22.07.610 | INSUL | P2-5 | Harris | INSUL-3 |  | 4 | MLF | MLF | O |  |
| P2.L4.N.1380 |  | OH - Conduit - Low Volt - Fire Alarm / L4 / North | 10d | 2025-09-01 A | 2025-09-11 A | P2.L4.N.1310 | 100% |  | 2025-11-12 | 2025-11-25 |  |  | 80 |  | FA | P2-5 |  | FA-1 |  | 5 | MLF | MLF |  |  |
| P2.L4.N.1300 |  | OH - Hang Duct - LP Branch / L4 / North | 15d | 2025-09-22 A | 2026-02-20 A | P2.L4.N.1260 | 100% |  | 2025-10-08 | 2025-10-28 |  |  | 80 | P2.B2.23.30.410 | HVAC | P2-5 | Harris | HVAC |  | 3 | MLF | MLF | O |  |
| P2.L4.N.1350 |  | OH - Insulate LP Duct / L4 / North | 10d | 2025-09-29 A | 2026-04-14 | P2.L4.N.1300 |  | 10d | 2025-10-29 | 2025-11-11 | 80d | 0d | 80 | P2.B2.23.07.410 | INSUL | P2-5 | Harris | INSUL-3 |  | 4 | MLF | MLF | O |  |
| P2.L4.N.1390 |  | OH - Conduit - Low Volt - Telecom / L4 / North | 10d | 2025-09-29 A | 2025-12-15 A | P2.L4.N.1380 | 100% |  | 2025-11-12 | 2025-11-25 |  |  | 80 |  | ELEC | P2-5 |  | ELEC-2 |  | 5 | MLF | MLF |  |  |
| P2.L4.N.1240 |  | OH - Plumbing - Test / L4 / North | 15d | 2025-12-01 A | 2025-12-15 A | P2.L4.N.1180 | 100% |  | 2026-01-02 | 2026-01-22 |  |  | 80 | P2.B2.22.14.310 | PLMB | P2-5 | Harris | PLMB |  | 2 | MLF | MLF | O |  |
| P2.L4.N.1280 |  | OH - Insulate Plumbing / L4 / North | 10d | 2025-12-01 A | 2025-12-10 A | P2.L4.N.1240 | 100% |  | 2026-01-23 | 2026-02-05 |  |  | 80 | P2.B2.22.07.510 | INSUL | P2-5 | Harris | INSUL-3 |  | 3 | MLF | MLF | O |  |
| P2.L4.N.1420 |  | Framing - Balance of Framing & Door Frames / L4 / North | 10d | 2025-12-03 A | 2025-12-15 A | P2.L2.N.1410 | 100% |  | 2026-01-02 | 2026-01-15 |  |  | 80 | A1310 | GYP | P2-5 |  | GYP-1 |  |  |  | MLF | O |  |
| P2.L4.N.1430 |  | In Wall - Plumbing - Framing / L4 / North | 10d | 2025-12-15 A | 2025-12-29 A | P2.L4.N.1420 | 100% |  | 2026-01-16 | 2026-01-29 |  |  | 80 | P2.B2.22.05.410 | PLMB | P2-5 | Harris | PLMB |  |  |  | MLF | O |  |
| P2.L4.N.1440 |  | In Wall - Electrical - Framing / L4 / North | 10d | 2025-12-15 A | 2025-12-29 A | P2.L4.N.1420, P2.L4.N.1230 | 100% |  | 2026-01-16 | 2026-01-29 |  |  | 80 | P2.B2.26.05.610 | ELEC | P2-5 |  | ELEC-2 |  |  |  | MLF | O |  |
| P2.L4.N.1450 |  | In Wall - Backing/Blocking/Supports / L4 / North | 10d | 2025-12-15 A | 2025-12-29 A | P2.L4.N.1420 | 100% |  | 2026-01-16 | 2026-01-29 |  |  | 80 | P2.B2.09.21.510 | R/I.IW | P2-5 |  | R/I.IW |  |  |  | MLF | O |  |
| P2.L4.N.1400 |  | OH - Conduit - Low Volt - Security / L4 / North | 10d | 2026-01-02 A | 2026-01-15 A | P2.L4.N.1340 | 100% |  |  |  |  |  | 80 |  | ELEC | P2-5 |  | ELEC-2 |  | 5 | MLF | MLF | O |  |
| P2.L4.N.1460 |  | AHJ Inspections - Wall Close In / L4 / North | 5d | 2026-01-02 A | 2026-01-08 A | P2.L4.N.1440, P2.L4.N.1450, P2.L4.N.1430 | 100% |  |  |  |  |  | 40 | P2.B2.01.43.110 | FM | P2-5 |  | FM |  |  |  | MLF | O |  |
| P2.L4.N.1480 |  | Spray/Seal/Firestop - Head of Wall / L4 / North | 10d | 2026-01-02 A | 2026-01-15 A | P2.L4.N.1420 FF | 100% |  |  |  |  |  | 80 | P2.B2.07.84.310 | FIRSAFE | P2-5 |  | FIRSAFE | AT47 | To Finishes - Paint |  | MLF | O |  |
| P2.L4.N.1250 |  | Pull Wire - Electrical - 480/277v Distribution / L4 / North | 10d | 2026-03-02 A | 2026-03-13 A | P2.L4.N.1190, P2.4.HE.2948.1050, P2.4.HE.2803.1050 | 100% |  |  |  |  |  | 80 |  | ELEC | P2-5 |  | ELEC-2 |  | To Trim Devices & Term Panel | MLF | MLF | O |  |
| P2.L4.N.1320 |  | OH - Electrical - Equip Tie In / L4 / North | 10d | 2026-03-02 A | 2026-03-13 A | P2.L4.N.1310 | 100% |  |  |  |  |  | 80 | P2.B2.26.05.410 | ELEC | P2-5 |  | ELEC-2 |  | 4 | MLF | MLF | O |  |
| P2.L4.N.1370 |  | OH - Conduit - Low Volt - BAS/Controls / L4 / North | 10d | 2026-03-09 A | 2026-03-27 A | P2.L4.N.1310, P2.L4.N.1340, P2.L4.N.1460 | 100% |  | 2026-03-02 | 2026-03-13 |  |  | 80 |  | BAS | P2-5 | Harris | BAS-1 |  | 5 | MLF | MLF | O |  |
| P2.L4.N.1500 |  | Pull Wire - Low Volt - BAS/Controls / L4 / North | 10d | 2026-03-09 A | 2026-03-31 A | P2.L4.N.1370 | 100% |  | 2026-03-16 | 2026-03-27 |  |  | 80 |  | BAS | P2-5 | Harris | BAS-1 |  | To Trim Finishes |  | MLF |  | 2.2 |
| P2.L4.N.1410 |  | OH - Conduit - Low Volt - Medical Services/Nurse Call (?) / L4 / North | 10d | 2026-03-16 A | 2026-03-27 A | P2.L4.N.1370 | 100% |  |  |  |  |  | 80 |  | ELEC | P2-5 |  | ELEC-2 |  | 5 | MLF | MLF | O |  |
| P2.L4.N.1330 |  | OH - HVAC Piping - Equip Tie In / L4 / North | 15d | 2026-03-30 A | 2026-05-08 | P2.L4.N.1310, P2.L4.N.1270, CX.B2.HYDR.1000 | 47% | 8d | 2026-03-30 | 2026-04-17 | 72d | 80d | 80 | P2.B2.23.20.610 | FIT | P2-5 | Harris | FIT-2 |  |  | MLF | MLF |  |  |
| P2.L4.N.1540 |  | Pull Wire - Low Volt - Medical Services/Nurse Call (?) / L4 / North | 10d | 2026-03-30 A | 2026-04-07 | P2.L4.N.1410 | 50% | 5d | 2026-03-30 | 2026-04-10 | 95d | 103d | 80 |  | LOWVOLT | P2-5 |  | LOWVOLT-1 |  | To Trim Finishes |  | MLF |  | 2.2 |
| P2.L4.N.1360 |  | Pull Wire - Electrical - 208/120v Branch & Equip / L4 / North | 20d | 2026-03-31 A | 2026-04-01 | P2.L4.N.1320, P2.L4.N.1230, P2.L4.N.1440 | 95% | 1d | 2026-03-16 | 2026-04-10 | 99d | 107d | 80 |  | ELEC | P2-5 |  | ELEC-2 |  | To Trim Devices & Term Panel |  | MLF | O |  |
| P2.L4.N.1510 |  | Pull Wire - Low Volt - Fire Alarm / L4 / North | 10d | 2026-04-01 | 2026-04-14 | P2.L4.N.1380 |  |  |  |  | 90d | 98d | 80 |  | FA | P2-5 |  | FA-1 |  | To Trim Finishes |  | MLF |  | 2.2 |
| P2.L4.N.1530 |  | Pull Wire - Low Volt - Security / L4 / North | 10d | 2026-04-01 | 2026-04-14 | P2.L4.N.1400 |  |  |  |  | 90d | 98d | 80 |  | LOWVOLT | P2-5 |  | LOWVOLT-1 |  | To Trim Finishes |  | MLF |  | 2.2 |
| P2.L4.N.1520 |  | Pull Wire - Low Volt - Telecom / L4 / North | 10d | 2026-04-15 | 2026-04-28 | P2.L4.N.1390, P2.L4.N.1350 |  |  |  |  | 80d | 88d | 80 |  | LOWVOLT | P2-5 |  | LOWVOLT-1 |  | To Trim Finishes |  | MLF |  | 2.2 |
| P2.L4.N.1470 |  | Hang-Tape-Finish - Walls / L4 / North | 15d | 2026-07-29 | 2026-08-18 | P2.L4.N.1460, P2.SUM.175, P2.FAC.5.Z2.220, P2.FAC.5.Z3.150, P2.L2.N.1180, P2.L2.S.1470 |  |  |  |  | -8d | 0d | 80 | P2.B2.09.21.710 | GYP | P2-5 |  | GYP-1 |  |  |  | MLF |  | 2.2 |
| P2.L4.N.1490 |  | Firestop - Thru Wall / L4 / North | 10d | 2026-08-19 | 2026-09-01 | P2.L4.N.1470, P2.L4.N.1280 |  |  |  |  | -8d | 0d | 80 | P2.B2.07.84.210 | FIRESTO | P2-5 |  | FIRESTO | AT48 | To Finishes - Paint |  | MLF |  | 2.2 |
| P2.L4.N.1550 |  | Trades Inspect & Verify R/I Work Completed to Specs / L4 / North | 5d | 2026-09-02 | 2026-09-09 | P2.L4.N.1360, P2.L4.N.1500, P2.L4.N.1480, P2.L4.N.1490, P2.L4.N.1510, P2.L4.N.1520, P2.L4.N.1530, P2.L4.N.1250, P2.L4.N.1540, P2.L4.N.1330 |  |  |  |  | -8d | 0d | 40 |  | T | P2-5 |  | T |  |  |  | MLF |  | 2.2 |

Notes:
- FRG.P2.L4.N.1810: NOTES: 9/11 finish per Harris schedule
- P2.L4.N.1270: NOTES: Unactualized Start per remaining activities in Harris schedule
- P2.L4.N.1340: NOTES: Unactualized Start per remaining activities in Harris schedule

| ID | WBS | Activity | Type | Duration | Start | Finish | Predecessors | Complete | Planned start | Planned finish | Temp Orig Dur | Resp / SRLM | PHASE | RESP / Trade | 744 | RESP UPD | Update Status | Testing Type | Z.RESP |
| --- | --- | --- | --- | --- | --- | --- | --- | --- | --- | --- | --- | --- | --- | --- | --- | --- | --- | --- | --- |
|  | 1 | **House Electrical Rooms / Level 4** |  |  | 2025-05-19 | 2026-03-31 |  |  |  |  |  |  |  |  |  |  |  |  |  |
|  | 9 | **House Electrical Room 4-3959** |  |  | 2025-05-19 | 2026-03-20 |  |  |  |  |  |  |  |  |  |  |  |  |  |
| P2.4.HE.3959.1000 |  | Framing and Blocking / L4 / South / 3959 |  | 3d | 2025-05-19 A | 2025-05-23 A | P2.L4.S.1090 | 100% | 2025-06-09 | 2025-06-11 | 24 | GYP | P2-5 | GYP-1 |  |  |  |  |  |
| P2.4.HE.3959.1010 |  | In Wall Rough In / L4 / South / 3959 |  | 2d | 2025-06-02 A | 2025-06-04 A | P2.4.HE.3959.1000 | 100% | 2025-07-01 | 2025-07-02 | 16 | R/I.IW | P2-5 | R/I.IW | ND | ND |  |  |  |
| P2.4.HE.3959.1020 |  | Inspections - Wall Close In / L4 / South / 3959 |  | 2d | 2025-06-06 A | 2025-06-13 A | P2.4.HE.3959.1010 | 100% | 2025-07-03 | 2025-07-07 | 16 | AHJ | P2-5 | AHJ | ND | ND |  |  |  |
| P2.4.HE.3959.1030 |  | Hang-Tape-Finish / L4 / South / 3959 |  | 5d | 2025-06-16 A | 2025-06-23 A | P2.4.HE.3959.1020, P2.FAC.2.Z1.180, P2.L11.5-9.140 | 100% | 2025-09-11 | 2025-09-17 | 40 | GYP | P2-5 | GYP-1 | ND | ND |  |  |  |
| P2.4.HE.3959.1040 |  | Paint Prime & 1st Coat / L4 / South / 3959 |  | 2d | 2025-06-23 A | 2025-06-30 A | P2.4.HE.3959.1030 | 100% | 2025-09-18 | 2025-09-19 | 16 | PAINT | P2-5 | PAINT-1 | ND | ND |  |  |  |
| P2.4.HE.3959.1050 |  | Cans/Troughs/Backboxes/XFMRs / L4 / South / 3959 |  | 5d | 2025-07-09 A | 2025-07-15 A | P2.4.HE.3959.1040 | 100% | 2025-08-15 | 2025-08-21 | 40 | ELEC | P2-5 | ELEC-2 | ND | ND |  |  |  |
| P2.4.HE.3959.1060 |  | Risers and OH Conduit Connections / L4 / South / 3959 |  | 5d | 2025-08-01 A | 2025-08-08 A | P2.4.HE.3959.1050 | 100% | 2025-09-04 | 2025-09-10 | 40 | ELEC | P2-5 | ELEC-2 | ND | ND |  |  |  |
| P2.4.HE.3959.1070 |  | Pull Wire - In From Distribution Panels / Out to Branch Circuits / L4 / South / 3959 |  | 5d | 2025-11-03 A | 2025-11-07 A | P2.4.HE.3959.1060, P2.L4.INT.S.1270, P2.L4.S.1360 | 100% | 2025-12-01 | 2025-12-05 | 40 | ELEC | P2-5 | ELEC-2 | ND | ND |  |  |  |
| P2.4.HE.3959.1080 |  | Panelboards, Interconnect Wiring, and Remaining Room Buildout of All Systems / L4 / South / 3959 |  | 10d | 2025-12-01 A | 2025-12-12 A | P2.4.HE.3959.1060, BP1.262.3.100, BP1.262.3.220 | 100% | 2026-01-02 | 2026-01-15 | 80 | ELEC | P2-5 | ELEC-2 | ND | ND | O |  |  |
| P2.4.HE.3959.1100 |  | Paint - Finish Coat / L4 / South / 3959 |  | 2d | 2025-12-10 A | 2025-12-12 A | P2.4.HE.3959.1090 | 100% | 2026-02-20 | 2026-02-23 | 16 | PAINT | P2-5 | PAINT-1 | ND | ND | O |  |  |
| P2.4.HE.3959.1090 |  | Test & Terminate / L4 / South / 3959 |  | 5d | 2025-12-15 A | 2025-12-19 A | P2.4.HE.3959.1080, P2.4.HE.3959.1070 | 100% | 2026-02-13 | 2026-02-19 | 40 | ELEC | P2-5 | ELEC-2 | ND | ND | O |  |  |
| P2.4.HE.3959.1130 |  | Doors & Hardware / L4 / South / 3959 |  | 2d | 2025-12-18 A | 2025-12-24 A | P2.4.HE.3959.1120 | 100% | 2026-03-02 | 2026-03-03 | 16 | DFH | P2-5 | DFH | ND | ND | O | AT29 |  |
| P2.4.HE.3959.1120 |  | Flooring / L4 / South / 3959 |  | 2d | 2026-03-02 A | 2026-03-05 A | P2.4.HE.3959.1110 | 100% | 2026-03-25 | 2026-03-26 | 16 | FLOOR | P2-5 | FLOOR | ND | ND | O |  |  |
| P2.4.HE.3959.1110 |  | Trim All MEPF Finishes / L4 / South / 3959 |  | 2d | 2026-03-13 A | 2026-03-20 A | P2.4.HE.3959.1100 | 100% | 2026-03-23 | 2026-03-24 | 16 | MEP | P2-5 | MEP-2 | ND | ND | O |  | Harris |
| P2.4.HE.3959.1140 |  | Panels Ready to Energize - Lock Doors and Limit Access / L4 / South / 3959 | milestone | 0d | 2026-03-20 A | 2026-03-20 A | P2.4.HE.3959.1090, P2.4.HE.3959.1130 FF | 100% | 2026-03-26 | 2026-03-26 | 0 | ELEC | P2-5 | ELEC-2 | ND | ND |  |  |  |
|  | 8 | **House Electrical Room 4-2948** |  |  | 2025-05-21 | 2026-03-31 |  |  |  |  |  |  |  |  |  |  |  |  |  |
| P2.4.HE.2948.1000 |  | Framing and Blocking / L4 / North / 2948 |  | 3d | 2025-05-21 A | 2025-05-28 A | P2.L4.N.1090 | 100% | 2025-06-02 | 2025-06-04 | 24 | GYP | P2-5 | GYP-1 |  |  |  |  |  |
| P2.4.HE.2948.1010 |  | In Wall Rough In / L4 / North / 2948 |  | 2d | 2025-06-02 A | 2025-06-04 A | P2.4.HE.2948.1000 | 100% | 2025-07-01 | 2025-07-02 | 16 | R/I.IW | P2-5 | R/I.IW | ND | ND |  |  |  |
| P2.4.HE.2948.1020 |  | Inspections - Wall Close In / L4 / North / 2948 |  | 2d | 2025-06-04 A | 2025-06-06 A | P2.4.HE.2948.1010 | 100% | 2025-07-03 | 2025-07-07 | 16 | AHJ | P2-5 | AHJ | ND | ND |  |  |  |
| P2.4.HE.2948.1030 |  | Hang-Tape-Finish / L4 / North / 2948 |  | 5d | 2025-06-09 A | 2025-06-17 A | P2.4.HE.2948.1020, P2.MR.W.160 | 100% | 2025-07-08 | 2025-07-14 | 40 | GYP | P2-5 | GYP-1 | ND | ND |  |  |  |
| P2.4.HE.2948.1040 |  | Paint Prime & 1st Coat / L4 / North / 2948 |  | 2d | 2025-06-23 A | 2025-06-30 A | P2.4.HE.2948.1030 | 100% | 2025-07-15 | 2025-07-16 | 16 | PAINT | P2-5 | PAINT-1 | ND | ND |  |  |  |
| P2.4.HE.2948.1050 |  | Cans/Troughs/Backboxes/XFMRs / L4 / North / 2948 |  | 5d | 2025-07-07 A | 2025-07-09 A | P2.4.HE.2948.1040 | 100% | 2025-08-01 | 2025-08-07 | 40 | ELEC | P2-5 | ELEC-2 | ND | ND |  |  |  |
| P2.4.HE.2948.1060 |  | Risers and OH Conduit Connections / L4 / North / 2948 |  | 5d | 2025-08-11 A | 2025-08-14 A | P2.4.HE.2948.1050 | 100% | 2025-09-02 | 2025-09-08 | 40 | ELEC | P2-5 | ELEC-2 | ND | ND |  |  |  |
| P2.4.HE.2948.1070 |  | Pull Wire - In From Distribution Panels / Out to Branch Circuits / L4 / North / 2948 |  | 5d | 2025-11-03 A | 2025-11-07 A | P2.4.HE.2948.1060 | 100% | 2025-12-01 | 2025-12-05 | 40 | ELEC | P2-5 | ELEC-2 | ND | ND |  |  |  |
| P2.4.HE.2948.1080 |  | Panelboards, Interconnect Wiring, and Remaining Room Buildout of All Systems / L4 / North / 2948 |  | 10d | 2025-12-01 A | 2025-12-12 A | P2.4.HE.2948.1060, BP1.262.3.100, BP1.262.3.220 | 100% | 2026-01-02 | 2026-01-15 | 80 | ELEC | P2-5 | ELEC-2 | ND | ND | O |  |  |
| P2.4.HE.2948.1100 |  | Paint - Finish Coat / L4 / North / 2948 |  | 2d | 2025-12-10 A | 2025-12-12 A | P2.4.HE.2948.1090 | 100% | 2026-03-27 | 2026-03-30 | 16 | PAINT | P2-5 | PAINT-1 | ND | ND | O |  |  |
| P2.4.HE.2948.1090 |  | Test & Terminate / L4 / North / 2948 |  | 5d | 2025-12-15 A | 2025-12-19 A | P2.4.HE.2948.1070, P2.4.HE.2948.1080 | 100% | 2026-03-20 | 2026-03-26 | 40 | ELEC | P2-5 | ELEC-2 | ND | ND | O |  |  |
| P2.4.HE.2948.1130 |  | Doors & Hardware / L4 / North / 2948 |  | 2d | 2025-12-18 A | 2025-12-24 A | P2.4.HE.2948.1120 | 100% | 2026-04-06 | 2026-04-07 | 16 | DFH | P2-5 | DFH | ND | ND | O | AT29 |  |
| P2.4.HE.2948.1120 |  | Flooring / L4 / North / 2948 |  | 2d | 2026-03-02 A | 2026-03-05 A | P2.4.HE.2948.1110 | 100% | 2026-04-22 | 2026-04-23 | 16 | FLOOR | P2-5 | FLOOR | ND | ND | O |  |  |
| P2.4.HE.2948.1110 |  | Trim All MEPF Finishes / L4 / North / 2948 |  | 2d | 2026-03-19 A | 2026-03-30 A | P2.4.HE.2948.1100 | 100% | 2026-04-20 | 2026-04-21 | 16 | MEP | P2-5 | MEP-2 | ND | ND | O |  | Harris |
| P2.4.HE.2948.1140 |  | Panels Ready to Energize - Lock Doors and Limit Access / L4 / North / 2948 | milestone | 0d | 2026-03-31 A | 2026-03-31 A | P2.4.HE.2948.1090, P2.4.HE.2948.1130 FF | 100% | 2026-04-23 | 2026-04-23 | 0 | ELEC | P2-5 | ELEC-2 | ND | ND |  |  |  |

| ID | WBS | Activity | Type | Duration | Start | Finish | Predecessors | Complete | Planned start | Planned finish | Temp Orig Dur | Resp / SRLM | 744 | PHASE | RESP UPD | RESP / Trade | Update Status | Testing Type | Z.RESP |
| --- | --- | --- | --- | --- | --- | --- | --- | --- | --- | --- | --- | --- | --- | --- | --- | --- | --- | --- | --- |
|  | 7 | **House Electrical Room 4-2803** |  |  | 2025-05-19 | 2026-03-31 |  |  |  |  |  |  |  |  |  |  |  |  |  |
| P2.4.HE.2803.1010 |  | In Wall Rough In / L4 / North / 2803 |  | 2d | 2025-05-19 A | 2025-06-04 A | P2.4.HE.2803.1000 | 100% | 2025-07-01 | 2025-07-02 | 16 | R/I.IW | ND | P2-5 | ND | R/I.IW |  |  |  |
| P2.4.HE.2803.1000 |  | Framing and Blocking / L4 / North / 2803 |  | 3d | 2025-05-21 A | 2025-05-28 A | P2.L4.N.1090 | 100% | 2025-06-02 | 2025-06-04 | 24 | GYP |  | P2-5 |  | GYP-1 |  |  |  |
| P2.4.HE.2803.1020 |  | Inspections - Wall Close In / L4 / North / 2803 |  | 2d | 2025-06-04 A | 2025-06-05 A | P2.4.HE.2803.1010 | 100% | 2025-07-03 | 2025-07-07 | 16 | AHJ | ND | P2-5 | ND | AHJ |  |  |  |
| P2.4.HE.2803.1030 |  | Hang-Tape-Finish / L4 / North / 2803 |  | 5d | 2025-06-11 A | 2025-06-19 A | P2.4.HE.2803.1020, P2.FAC.2.Z1.190, P2.MR.2-8.140 | 100% | 2025-08-22 | 2025-08-28 | 40 | GYP | ND | P2-5 | ND | GYP-1 |  |  |  |
| P2.4.HE.2803.1040 |  | Paint Prime & 1st Coat / L4 / North / 2803 |  | 2d | 2025-06-23 A | 2025-06-30 A | P2.4.HE.2803.1030 | 100% | 2025-08-29 | 2025-09-02 | 16 | PAINT | ND | P2-5 | ND | PAINT-1 |  |  |  |
| P2.4.HE.2803.1050 |  | Cans/Troughs/Backboxes/XFMRs / L4 / North / 2803 |  | 5d | 2025-07-21 A | 2025-07-24 A | P2.4.HE.2803.1040 | 100% | 2025-08-12 | 2025-08-18 | 40 | ELEC | ND | P2-5 | ND | ELEC-2 |  |  |  |
| P2.4.HE.2803.1060 |  | Risers and OH Conduit Connections / L4 / North / 2803 |  | 5d | 2025-08-14 A | 2025-08-18 A | P2.4.HE.2803.1050 | 100% | 2025-09-04 | 2025-09-10 | 40 | ELEC | ND | P2-5 | ND | ELEC-2 |  |  |  |
| P2.4.HE.2803.1070 |  | Pull Wire - In From Distribution Panels / Out to Branch Circuits / L4 / North / 2803 |  | 5d | 2025-11-05 A | 2025-11-11 A | P2.4.HE.2803.1060 | 100% | 2025-12-03 | 2025-12-09 | 40 | ELEC | ND | P2-5 | ND | ELEC-2 |  |  |  |
| P2.4.HE.2803.1080 |  | Panelboards, Interconnect Wiring, and Remaining Room Buildout of All Systems / L4 / North / 2803 |  | 10d | 2025-12-01 A | 2025-12-12 A | P2.4.HE.2803.1060, BP1.262.3.100, BP1.262.3.220 | 100% | 2026-01-02 | 2026-01-15 | 80 | ELEC | ND | P2-5 | ND | ELEC-2 | O |  |  |
| P2.4.HE.2803.1100 |  | Paint - Finish Coat / L4 / North / 2803 |  | 2d | 2025-12-10 A | 2025-12-12 A | P2.4.HE.2803.1090 | 100% | 2026-03-27 | 2026-03-30 | 16 | PAINT | ND | P2-5 | ND | PAINT-1 | O |  |  |
| P2.4.HE.2803.1090 |  | Test & Terminate / L4 / North / 2803 |  | 5d | 2025-12-15 A | 2025-12-19 A | P2.4.HE.2803.1070, P2.4.HE.2803.1080 | 100% | 2026-03-20 | 2026-03-26 | 40 | ELEC | ND | P2-5 | ND | ELEC-2 | O |  |  |
| P2.4.HE.2803.1130 |  | Doors & Hardware / L4 / North / 2803 |  | 2d | 2025-12-18 A | 2025-12-24 A | P2.4.HE.2803.1120 | 100% | 2026-04-06 | 2026-04-07 | 16 | DFH | ND | P2-5 | ND | DFH | O | AT29 |  |
| P2.4.HE.2803.1120 |  | Flooring / L4 / North / 2803 |  | 2d | 2026-03-02 A | 2026-03-05 A | P2.4.HE.2803.1110 | 100% | 2026-04-22 | 2026-04-23 | 16 | FLOOR | ND | P2-5 | ND | FLOOR | O |  |  |
| P2.4.HE.2803.1110 |  | Trim All MEPF Finishes / L4 / North / 2803 |  | 2d | 2026-03-19 A | 2026-03-30 A | P2.4.HE.2803.1100 | 100% | 2026-04-20 | 2026-04-21 | 16 | MEP | ND | P2-5 | ND | MEP-2 | O |  | Harris |
| P2.4.HE.2803.1140 |  | Panels Ready to Energize - Lock Doors and Limit Access / L4 / North / 2803 | milestone | 0d | 2026-03-31 A | 2026-03-31 A | P2.4.HE.2803.1090, P2.4.HE.2803.1130 FF | 100% | 2026-04-23 | 2026-04-23 | 0 | ELEC | ND | P2-5 | ND | ELEC-2 |  |  |  |
|  | 6 | **House Electrical Room 4-5966** |  |  | 2025-05-21 | 2026-03-31 |  |  |  |  |  |  |  |  |  |  |  |  |  |
| P2.4.HE.5966.1000 |  | Framing and Blocking / L4 / South / 5966 |  | 3d | 2025-05-21 A | 2025-05-30 A | P2.L4.S.1090 | 100% | 2025-06-09 | 2025-06-11 | 24 | GYP |  | P2-5 |  | GYP-1 |  |  |  |
| P2.4.HE.5966.1010 |  | In Wall Rough In / L4 / South / 5966 |  | 2d | 2025-06-04 A | 2025-06-13 A | P2.4.HE.5966.1000 | 100% | 2025-07-01 | 2025-07-02 | 16 | R/I.IW | ND | P2-5 | ND | R/I.IW |  |  |  |
| P2.4.HE.5966.1020 |  | Inspections - Wall Close In / L4 / South / 5966 |  | 2d | 2025-06-13 A | 2025-06-18 A | P2.4.HE.5966.1010 | 100% | 2025-07-03 | 2025-07-07 | 16 | AHJ | ND | P2-5 | ND | AHJ |  |  |  |
| P2.4.HE.5966.1030 |  | Hang-Tape-Finish / L4 / South / 5966 |  | 5d | 2025-06-18 A | 2025-06-23 A | P2.4.HE.5966.1020, P2.LR.L7.170 | 100% | 2025-09-09 | 2025-09-15 | 40 | GYP | ND | P2-5 | ND | GYP-1 |  |  |  |
| P2.4.HE.5966.1040 |  | Paint Prime & 1st Coat / L4 / South / 5966 |  | 2d | 2025-06-25 A | 2025-06-30 A | P2.4.HE.5966.1030 | 100% | 2025-09-16 | 2025-09-17 | 16 | PAINT | ND | P2-5 | ND | PAINT-1 |  |  |  |
| P2.4.HE.5966.1050 |  | Cans/Troughs/Backboxes/XFMRs / L4 / South / 5966 |  | 5d | 2025-07-14 A | 2025-07-17 A | P2.4.HE.5966.1040 | 100% | 2025-08-28 | 2025-09-04 | 40 | ELEC | ND | P2-5 | ND | ELEC-2 |  |  |  |
| P2.4.HE.5966.1060 |  | Risers and OH Conduit Connections / L4 / South / 5966 |  | 5d | 2025-08-11 A | 2025-08-19 A | P2.4.HE.5966.1050 | 100% | 2025-09-26 | 2025-10-02 | 40 | ELEC | ND | P2-5 | ND | ELEC-2 |  |  |  |
| P2.4.HE.5966.1070 |  | Pull Wire - In From Distribution Panels / Out to Branch Circuits / L4 / South / 5966 |  | 5d | 2025-11-10 A | 2025-11-14 A | P2.4.HE.5966.1060, P2.L4.INT.S.1270, P2.L4.S.1360 | 100% | 2025-12-08 | 2025-12-12 | 40 | ELEC | ND | P2-5 | ND | ELEC-2 |  |  |  |
| P2.4.HE.5966.1080 |  | Panelboards, Interconnect Wiring, and Remaining Room Buildout of All Systems / L4 / South / 5966 |  | 10d | 2025-12-01 A | 2025-12-12 A | P2.4.HE.5966.1060, BP1.262.3.100, BP1.262.3.220 | 100% | 2026-01-02 | 2026-01-15 | 80 | ELEC | ND | P2-5 | ND | ELEC-2 | O |  |  |
| P2.4.HE.5966.1100 |  | Paint - Finish Coat / L4 / South / 5966 |  | 2d | 2025-12-10 A | 2025-12-12 A | P2.4.HE.5966.1090 | 100% | 2026-02-20 | 2026-02-23 | 16 | PAINT | ND | P2-5 | ND | PAINT-1 | O |  |  |
| P2.4.HE.5966.1090 |  | Test & Terminate / L4 / South / 5966 |  | 5d | 2025-12-15 A | 2025-12-19 A | P2.4.HE.5966.1080, P2.4.HE.5966.1070 | 100% | 2026-02-13 | 2026-02-19 | 40 | ELEC | ND | P2-5 | ND | ELEC-2 | O |  |  |
| P2.4.HE.5966.1130 |  | Doors & Hardware / L4 / South / 5966 |  | 2d | 2025-12-18 A | 2025-12-24 A | P2.4.HE.5966.1120 | 100% | 2026-03-02 | 2026-03-03 | 16 | DFH | ND | P2-5 | ND | DFH | O | AT29 |  |
| P2.4.HE.5966.1120 |  | Flooring / L4 / South / 5966 |  | 2d | 2026-03-02 A | 2026-03-05 A | P2.4.HE.5966.1110 | 100% | 2026-03-25 | 2026-03-26 | 16 | FLOOR | ND | P2-5 | ND | FLOOR | O |  |  |
| P2.4.HE.5966.1110 |  | Trim All MEPF Finishes / L4 / South / 5966 |  | 2d | 2026-03-19 A | 2026-03-30 A | P2.4.HE.5966.1100 | 100% | 2026-03-23 | 2026-03-24 | 16 | MEP | ND | P2-5 | ND | MEP-2 | O |  | Harris |
| P2.4.HE.5966.1140 |  | Panels Ready to Energize - Lock Doors and Limit Access / L4 / South / 5966 | milestone | 0d | 2026-03-31 A | 2026-03-31 A | P2.4.HE.5966.1090, P2.4.HE.5966.1130 FF | 100% | 2026-03-26 | 2026-03-26 | 0 | ELEC | ND | P2-5 | ND | ELEC-2 |  |  |  |

| ID | WBS | Activity | Type | Duration | Start | Finish | Predecessors | Complete | Planned start | Planned finish | Total float | Free float | Temp Orig Dur | Resp / SRLM | 744 | PHASE | Z.RESP | RESP UPD | RESP / Trade | Update Status | Testing Type |
| --- | --- | --- | --- | --- | --- | --- | --- | --- | --- | --- | --- | --- | --- | --- | --- | --- | --- | --- | --- | --- | --- |
|  | 2 | **L4 / IT CLOSETS** |  |  | 2024-12-24 | 2026-06-10 |  |  |  |  |  |  |  |  |  |  |  |  |  |  |  |
|  | 1 | **IT Closet 4-3930** |  |  | 2025-08-08 | 2026-05-18 |  |  |  |  |  |  |  |  |  |  |  |  |  |  |  |
| P2.4.IT.3930.130 |  | HVAC Equipment / L4 / South / 3930 |  | 5d | 2025-08-08 A | 2025-09-18 A | P2.4.IT.3930.110 | 100% | 2025-10-22 | 2025-10-28 |  |  | 40 | HVAC | ND | P2-5 | Harris | ND | HVAC |  |  |
| P2.4.IT.3930.100 |  | Hang Plywood Backboards / L4 / South / 3930 |  | 2d | 2025-09-15 A | 2025-09-17 A | P2.L4.S.1140 | 100% | 2025-10-01 | 2025-10-02 |  |  | 16 | CRAFT | ND | P2-5 |  | ND | CRAFT | O |  |
| P2.4.IT.3930.110 |  | Paint Prime & 1st Coat / L4 / South / 3930 |  | 2d | 2025-09-22 A | 2025-09-25 A | P2.4.IT.3930.100 | 100% | 2025-10-03 | 2025-10-06 |  |  | 16 | PAINT | ND | P2-5 |  | ND | PAINT-1 | O |  |
| P2.4.IT.3930.120 |  | Electrical Panels / Conduit Connections / Wire Terminations / L4 / South / 3930 |  | 5d | 2025-10-08 A | 2025-10-14 A | P2.4.IT.3930.110, P2.4.HE.3959.1070 FF | 100% | 2025-10-03 | 2025-10-09 |  |  | 40 | ELEC | ND | P2-5 |  | ND | ELEC-2 |  |  |
| P2.4.IT.3930.150 |  | Flooring / L4 / South / 3930 |  | 5d | 2025-11-17 A | 2025-11-21 A | P2.4.IT.3930.110 | 100% | 2026-02-17 | 2026-02-23 |  |  | 40 | FLOOR | ND | P2-5 |  | ND | FLOOR | O |  |
| P2.4.IT.3930.230 |  | Doors & Hardware / L4 / South / 3930 |  | 2d | 2025-12-18 A | 2025-12-24 A | P2.4.IT.3930.150 | 100% | 2026-03-23 | 2026-03-24 |  |  | 16 | DFH |  | P2-5 |  | ND | DFH |  | AT29 |
| P2.4.IT.3930.170 |  | OH Cable Tray / L4 / South / 3930 |  | 5d | 2026-02-23 A | 2026-02-27 A | P2.L4.S.1390, P2.L4.N.1390, P2.L4.INT.S.1340, P2.L4.INT.N.1340 | 100% | 2026-03-30 | 2026-04-03 |  |  | 40 | ELEC |  | P2-5 |  | ND | ELEC-2 |  |  |
| P2.4.IT.3930.180 |  | Grounding and Bonding / L4 / South / 3930 |  | 2d | 2026-03-09 A | 2026-03-12 A | P2.4.IT.3930.150 | 100% | 2026-03-25 | 2026-03-26 |  |  | 16 | ELEC | ND | P2-5 |  | ND | ELEC-2 | O |  |
| P2.4.IT.3930.140 |  | Trim all MEPF / L4 / South / 3930 |  | 2d | 2026-04-01 | 2026-04-02 | P2.4.IT.3930.130, P2.4.IT.3930.120 |  |  |  | 115d | 0d | 16 | MEP | ND | P2-5 | Harris | ND | MEP-2 | O |  |
| P2.4.IT.3930.350 |  | Room Ready - CIT / L4 / South / 3930 |  | 5d | 2026-04-03 | 2026-04-09 | P2.4.IT.3930.150, P2.4.IT.3930.170, P2.4.IT.3930.180, P2.4.IT.3930.140 |  |  |  | 115d | 0d | 40 | CIT |  | P2-5 |  | ND | CIT |  |  |
| P2.4.IT.3930.160 |  | Equipment Racks and Ladders / L4 / South / 3930 |  | 5d | 2026-04-10 | 2026-04-16 | P2.4.IT.3930.150, P2.4.IT.3930.350 |  |  |  | 115d | 0d | 40 | CIT |  | P2-5 |  | ND | CIT |  |  |
| P2.4.IT.3930.240 |  | Energize Elec Panels Serving Comms Racks / L4 / South / 3930 |  | 3d | 2026-04-14 | 2026-04-16 | P2.4.HE.3959.1140, P2.4.IT.3930.230, CX.B2.SWGR.1010, CX.B2.MVEE.1010 |  |  |  | 27d | 10d | 24 | ELEC |  | P2-5 |  | ND | ELEC-2 |  |  |
| P2.4.IT.3930.190 |  | Pull Wire - Backbone Cabling Into Racks / L4 / South / 3930 |  | 5d | 2026-04-17 | 2026-04-23 | P2.4.IT.3930.160, P2.4.IT.3930.350 |  |  |  | 115d | 0d | 40 | CIT |  | P2-5 |  | ND | CIT |  |  |
| P2.4.IT.3930.200 |  | Pull Wire - Horizontal Cabling Out to Termination Points / L4 / South / 3930 |  | 5d | 2026-04-17 | 2026-04-23 | P2.4.IT.3930.160, P2.4.IT.3930.350 |  |  |  | 115d | 0d | 40 | CIT |  | P2-5 |  | ND | CIT |  |  |
| P2.4.IT.3930.210 |  | Paint - Finish Coat / L4 / South / 3930 |  | 2d | 2026-04-24 | 2026-04-27 | P2.4.IT.3930.190, P2.4.IT.3930.200 |  |  |  | 115d | 0d | 16 | PAINT |  | P2-5 |  | ND | PAINT-1 |  |  |
| P2.4.IT.3930.220 |  | Terminations and Punch Downs - All Cabling / L4 / South / 3930 |  | 15d | 2026-04-28 | 2026-05-18 | P2.4.IT.3930.210, P2.4.IT.3930.160, P2.4.IT.3930.350 |  |  |  | 115d | 0d | 40 | CIT |  | P2-5 |  | ND | CIT |  |  |
| P2.4.IT.3930.250 |  | Comms Racks In Service / L4 / South / 3930 | milestone | 0d | 2026-05-18 | 2026-05-18 | P2.4.IT.3930.240, P2.4.IT.3930.220 |  |  |  | 115d | 81d | 0 | CIT |  | P2-5 |  | ND | CIT |  |  |
|  | 2 | **IT Closet 4-2818** |  |  | 2025-08-08 | 2026-05-21 |  |  |  |  |  |  |  |  |  |  |  |  |  |  |  |
| P2.4.IT.2818.130 |  | HVAC Equipment / L4 / North / 2818 |  | 5d | 2025-08-08 A | 2025-09-18 A | P2.4.IT.2818.110 | 100% | 2025-10-01 | 2025-10-07 |  |  | 40 | HVAC | ND | P2-5 | Harris | ND | HVAC | O |  |
| P2.4.IT.2818.100 |  | Hang Plywood Backboards / L4 / North / 2818 |  | 2d | 2025-09-15 A | 2025-09-17 A | P2.L4.N.1140 | 100% | 2025-10-01 | 2025-10-02 |  |  | 16 | CRAFT | ND | P2-5 |  | ND | CRAFT | O |  |
| P2.4.IT.2818.110 |  | Paint Prime & 1st Coat / L4 / North / 2818 |  | 2d | 2025-09-22 A | 2025-09-25 A | P2.4.IT.2818.100 | 100% | 2025-10-03 | 2025-10-06 |  |  | 16 | PAINT | ND | P2-5 |  | ND | PAINT-1 | O |  |
| P2.4.IT.2818.150 |  | Flooring / L4 / North / 2818 |  | 5d | 2025-11-17 A | 2025-11-21 A | P2.4.IT.2818.110 | 100% | 2026-03-24 | 2026-03-30 |  |  | 40 | FLOOR | ND | P2-5 |  | ND | FLOOR | O |  |
| P2.4.IT.2818.120 |  | Electrical Panels / Conduit Connections / Wire Terminations / L4 / North / 2818 |  | 5d | 2025-12-01 A | 2025-12-05 A | P2.4.IT.2818.110, P2.4.HE.2803.1070 FF | 100% | 2026-03-13 | 2026-03-19 |  |  | 40 | ELEC | ND | P2-5 |  | ND | ELEC-2 | O |  |
| P2.4.IT.2818.230 |  | Doors & Hardware / L4 / North / 2818 |  | 2d | 2025-12-18 A | 2025-12-24 A | P2.4.IT.2818.150 | 100% | 2026-04-27 | 2026-04-28 |  |  | 16 | DFH |  | P2-5 |  | ND | DFH |  | AT29 |
| P2.4.IT.2818.180 |  | Grounding and Bonding / L4 / North / 2818 |  | 2d | 2026-03-09 A | 2026-03-12 A | P2.4.IT.2818.150 | 100% | 2026-04-22 | 2026-04-23 |  |  | 16 | ELEC | ND | P2-5 |  | ND | ELEC-2 | O |  |
| P2.4.IT.2818.170 |  | OH Cable Tray / L4 / North / 2818 |  | 5d | 2026-04-01 | 2026-04-07 | P2.L4.N.1390, P2.L4.S.1390, P2.L4.INT.N.1340, P2.L4.INT.S.1340 |  |  |  | 112d | 0d | 40 | ELEC |  | P2-5 |  | ND | ELEC-2 |  |  |
| P2.4.IT.2818.140 |  | Trim all MEPF / L4 / North / 2818 |  | 2d | 2026-04-06 | 2026-04-07 | P2.4.IT.2818.120, P2.4.IT.2818.130, P2.4.IT.2818.170 FF |  |  |  | 112d | 0d | 16 | MEP | ND | P2-5 | Harris | ND | MEP-2 | O |  |
| P2.4.IT.2818.360 |  | Room Ready - CIT / L4 / North / 2818 |  | 5d | 2026-04-08 | 2026-04-14 | P2.4.IT.2818.150, P2.4.IT.2818.170, P2.4.IT.2818.180, P2.4.IT.2818.140 |  |  |  | 112d | 0d | 40 | CIT |  | P2-5 |  | ND | CIT |  |  |
| P2.4.IT.2818.240 |  | Energize Elec Panels Serving Comms Racks / L4 / North / 2818 |  | 3d | 2026-04-14 | 2026-04-16 | P2.4.HE.2803.1140, P2.4.IT.2818.230, CX.B2.SWGR.1010, CX.B2.MVEE.1010 |  |  |  | 117d | 25d | 24 | ELEC |  | P2-5 |  | ND | ELEC-2 |  |  |
| P2.4.IT.2818.160 |  | Equipment Racks and Ladders / L4 / North / 2818 |  | 5d | 2026-04-15 | 2026-04-21 | P2.4.IT.2818.150, P2.4.IT.2818.360 |  |  |  | 112d | 0d | 40 | CIT |  | P2-5 |  | ND | CIT |  |  |
| P2.4.IT.2818.190 |  | Pull Wire - Backbone Cabling Into Racks / L4 / North / 2818 |  | 5d | 2026-04-22 | 2026-04-28 | P2.4.IT.2818.160, P2.4.IT.2818.360 |  |  |  | 112d | 0d | 40 | CIT |  | P2-5 |  | ND | CIT |  |  |
| P2.4.IT.2818.200 |  | Pull Wire - Horizontal Cabling Out to Termination Points / L4 / North / 2818 |  | 5d | 2026-04-22 | 2026-04-28 | P2.4.IT.2818.160, P2.4.IT.2818.360 |  |  |  | 112d | 0d | 40 | CIT |  | P2-5 |  | ND | CIT |  |  |
| P2.4.IT.2818.210 |  | Paint - Finish Coat / L4 / North / 2818 |  | 2d | 2026-04-29 | 2026-04-30 | P2.4.IT.2818.190, P2.4.IT.2818.200 |  |  |  | 112d | 0d | 16 | PAINT |  | P2-5 |  | ND | PAINT-1 |  |  |
| P2.4.IT.2818.220 |  | Terminations and Punch Downs - All Cabling / L4 / North / 2818 |  | 15d | 2026-05-01 | 2026-05-21 | P2.4.IT.2818.210, P2.4.IT.2818.160, P2.4.IT.2818.360 |  |  |  | 112d | 0d | 40 | CIT |  | P2-5 |  | ND | CIT |  |  |
| P2.4.IT.2818.250 |  | Comms Racks In Service / L4 / North / 2818 | milestone | 0d | 2026-05-21 | 2026-05-21 | P2.4.IT.2818.240, P2.4.IT.2818.220 |  |  |  | 112d | 78d | 0 | CIT |  | P2-5 |  | ND | CIT |  |  |

| ID | WBS | Activity | Type | Duration | Start | Finish | Predecessors | Complete | Planned start | Planned finish | Total float | Free float | Temp Orig Dur | Testing Type | *NIH Resp Check* | Resp / SRLM | PHASE | RESP / Trade | 744 | RESP UPD | Update Status | Z.RESP |
| --- | --- | --- | --- | --- | --- | --- | --- | --- | --- | --- | --- | --- | --- | --- | --- | --- | --- | --- | --- | --- | --- | --- |
|  | 3 | **IT Closet 4-3875** |  |  | 2024-12-24 | 2026-06-10 |  |  |  |  |  |  |  |  |  |  |  |  |  |  |  |  |
| P2.2.IT.3875.260 |  | Work-Plan Investigation of Level 4F510-18 Lab Offices for Demo, Utility Re-route, and Temp Partition (IT Closet 4-3875) |  | 20d | 2024-12-24 A | 2025-01-23 A | P2C.DES.205 | 100% | 2025-01-03 | 2025-01-30 |  |  | 40 | AT45 | ! | HP | P2-5 | HP |  |  |  |  |
| P2.2.IT.3875.270 |  | Work-Plan Development for Demo, Utility Re-route, and Temp Partition (IT Closet 4-3875) |  | 20d | 2025-01-24 A | 2025-02-10 A | P2.2.IT.3875.260 | 100% | 2025-03-03 | 2025-03-28 |  |  | 40 | AT45 | ! | HP | P2-5 | HP |  |  |  |  |
| P2.2.IT.3875.280 |  | NIH Notification - Review and Approval of Demo and Temp Partition Work Plan (IT Closet 4-3875) |  | 20d | 2025-02-19 A | 2025-04-01 A | P2.2.IT.3875.270 | 100% | 2025-03-31 | 2025-04-25 |  |  | 40 | AT45 | ! | NIH | P2-5 | NIH |  |  |  |  |
| P2.2.IT.3875.290 |  | NIH Vacate Lab Offices 4F510, 4F512, 4F514, 4F516, & Storage 4F518 |  | 20d | 2025-05-01 A | 2025-08-04 A | P2.2.IT.3875.280 | 100% | 2025-07-01 | 2025-07-29 |  |  | 40 | AT45 | ! | NIH | P2-5 | NIH | ND | ND |  |  |
| P2.2.IT.3875.300 |  | Temp Barracades (IT Closet 4-3875) |  | 5d | 2025-08-04 A | 2025-08-11 A | P2.2.IT.3875.290 | 100% | 2025-09-02 | 2025-09-08 |  |  | 40 | AT45 | ! | HP | P2-5 | HP | ND | ND |  |  |
| P2.2.IT.3875.310 |  | Utility Shut-downs and Rerouting (IT Closet 4-3875) |  | 10d | 2025-08-12 A | 2025-09-30 A | P2.2.IT.3875.300 | 100% | 2025-09-09 | 2025-09-22 |  |  | 40 | AT45 | ! | MEP | P2-5 | MEP-2 | ND | ND | O |  |
| P2.2.IT.3875.320 |  | Demo Existing Walls and Ceiling |  | 10d | 2025-10-01 A | 2025-10-10 A | P2.2.IT.3875.310 | 100% | 2025-10-01 | 2025-10-14 |  |  | 40 | AT45 | ! | DEMO.1 | P2-5 | DEMO.1 | ND | ND |  |  |
| P2.2.IT.3875.330 |  | Work Plan Completion Inspection |  | 5d | 2025-10-01 A | 2025-10-08 A | P2.2.IT.3875.320 | 100% | 2025-10-15 | 2025-10-21 |  |  | 40 | AT45 | ! | NIH | P2-5 | NIH | ND | ND |  |  |
| P2.4.IT.3875.100 |  | Hang Plywood Backboards / L4 / South / 3875 |  | 2d | 2026-04-01 | 2026-04-02 | P2.L4.S.1140, P2.2.IT.3875.330 |  |  |  | 99d | 0d | 16 |  |  | CRAFT | P2-5 | CRAFT | ND | JH | O |  |
| P2.4.IT.3875.110 |  | Paint Prime & 1st Coat / L4 / South / 3875 |  | 2d | 2026-04-03 | 2026-04-06 | P2.4.IT.3875.100 |  |  |  | 99d | 0d | 16 |  |  | PAINT | P2-5 | PAINT-1 | ND | JH | O |  |
| P2.4.IT.3875.120 |  | Electrical Panels / Conduit Connections / Wire Terminations / L4 / South / 3875 |  | 5d | 2026-04-07 | 2026-04-13 | P2.4.IT.3875.110, P2.4.HE.2948.1070 FF |  |  |  | 99d | 0d | 40 |  |  | ELEC | P2-5 | ELEC-2 | ND | JH | O |  |
| P2.4.IT.3875.130 |  | HVAC Equipment / L4 / South / 3875 |  | 5d | 2026-04-07 | 2026-04-13 | P2.4.IT.3875.110 |  |  |  | 99d | 0d | 40 |  |  | HVAC | P2-5 | HVAC | ND | JH | O | Harris |
| P2.4.IT.3875.140 |  | Trim all MEPF / L4 / South / 3875 |  | 2d | 2026-04-14 | 2026-04-15 | P2.4.IT.3875.130, P2.4.IT.3875.120 |  |  |  | 99d | 0d | 16 |  |  | MEP | P2-5 | MEP-2 | ND | JH | O | Harris |
| P2.4.IT.3875.170 |  | OH Cable Tray / L4 / South / 3875 |  | 5d | 2026-04-14 | 2026-04-20 | P2.L4.S.1390, P2.4.IT.3875.120, P2.L4.N.1390, P2.L4.INT.S.1340, P2.L4.INT.N.1340 |  |  |  | 103d | 4d | 40 |  |  | ELEC | P2-5 | ELEC-2 |  | JH |  |  |
| P2.4.IT.3875.150 |  | Flooring / L4 / South / 3875 |  | 5d | 2026-04-16 | 2026-04-22 | P2.4.IT.3875.140 |  |  |  | 99d | 0d | 40 |  |  | FLOOR | P2-5 | FLOOR | ND | JH | O |  |
| P2.4.IT.3875.180 |  | Grounding and Bonding / L4 / South / 3875 |  | 2d | 2026-04-23 | 2026-04-24 | P2.4.IT.3875.150 |  |  |  | 99d | 0d | 16 |  |  | ELEC | P2-5 | ELEC-2 | ND | JH | O |  |
| P2.4.IT.3875.370 |  | Room Ready - CIT / L4 / South / 3875 |  | 5d | 2026-04-27 | 2026-05-01 | P2.4.IT.3875.150, P2.4.IT.3875.170, P2.4.IT.3875.180 |  |  |  | 99d | 0d | 40 |  |  | CIT | P2-5 | CIT |  | JH |  |  |
| P2.4.IT.3875.160 |  | Equipment Racks and Ladders / L4 / South / 3875 |  | 5d | 2026-05-04 | 2026-05-08 | P2.4.IT.3875.150, P2.4.IT.3875.370 |  |  |  | 99d | 0d | 40 |  |  | CIT | P2-5 | CIT |  | JH |  |  |
| P2.4.IT.3875.190 |  | Pull Wire - Backbone Cabling Into Racks / L4 / South / 3875 |  | 5d | 2026-05-11 | 2026-05-15 | P2.4.IT.3875.160, P2.4.IT.3875.370 |  |  |  | 99d | 0d | 40 |  |  | CIT | P2-5 | CIT |  | JH |  |  |
| P2.4.IT.3875.200 |  | Pull Wire - Horizontal Cabling Out to Termination Points / L4 / South / 3875 |  | 5d | 2026-05-11 | 2026-05-15 | P2.4.IT.3875.160, P2.4.IT.3875.370 |  |  |  | 99d | 0d | 40 |  |  | CIT | P2-5 | CIT |  | JH |  |  |
| P2.4.IT.3875.210 |  | Paint - Finish Coat / L4 / South / 3875 |  | 2d | 2026-05-18 | 2026-05-19 | P2.4.IT.3875.190, P2.4.IT.3875.200 |  |  |  | 99d | 0d | 16 |  |  | PAINT | P2-5 | PAINT-1 |  | JH |  |  |
| P2.4.IT.3875.220 |  | Terminations and Punch Downs - All Cabling / L4 / South / 3875 |  | 15d | 2026-05-20 | 2026-06-10 | P2.4.IT.3875.210, P2.4.IT.3875.160, P2.4.IT.3875.370 |  |  |  | 99d | 0d | 40 |  |  | CIT | P2-5 | CIT |  | JH |  |  |
| P2.4.IT.3875.230 |  | Doors & Hardware / L4 / South / 3875 |  | 2d | 2026-05-20 | 2026-05-21 | P2.4.IT.3875.210 |  |  |  | 109d | 0d | 16 | AT29 |  | DFH | P2-5 | DFH |  | JH |  |  |
| P2.4.IT.3875.240 |  | Energize Elec Panels Serving Comms Racks / L4 / South / 3875 |  | 3d | 2026-05-22 | 2026-05-27 | P2.4.HE.2948.1140, P2.4.IT.3875.230, CX.B2.SWGR.1010, CX.B2.MVEE.1010 |  |  |  | 109d | 10d | 24 |  |  | ELEC | P2-5 | ELEC-2 |  | JH |  |  |
| P2.4.IT.3875.250 |  | Comms Racks In Service / L4 / South / 3875 | milestone | 0d | 2026-06-10 | 2026-06-10 | P2.4.IT.3875.240, P2.4.IT.3875.220 |  |  |  | 99d | 65d | 0 |  |  | CIT | P2-5 | CIT |  | JH |  |  |

| ID | WBS | Activity | Duration | Start | Finish | Predecessors | Total float | Free float | Pick | Temp Orig Dur | Resp / SRLM | PHASE | RESP UPD | RESP / Trade | *NIH Resp Check* | Z.RESP | Testing Type |
| --- | --- | --- | --- | --- | --- | --- | --- | --- | --- | --- | --- | --- | --- | --- | --- | --- | --- |
|  | 6 | **FINISHES - Core & Support Spaces / Level 4** |  | 2025-06-02 | 2027-03-03 |  |  |  |  |  |  |  |  |  |  |  |  |
|  | 7KSF1 | **Office Spaces - Z1 (2,429 sf) / Level 4** |  | 2026-08-19 | 2027-02-02 |  |  |  |  |  |  |  |  |  |  |  |  |
|  | 1 | **Finishes** |  | 2026-08-19 | 2027-02-02 |  |  |  |  |  |  |  |  |  |  |  |  |
| P2.L4.F.CS.1000 |  | Paint Prime & 1st Coat Walls / L4 / South / Z1 | 5d | 2026-08-19 | 2026-08-25 | P2.L4.S.1470 | 13d | 0d | From R/I Work Completion | 40 | PAINT | P2-5 | MLF | PAINT-1 |  |  |  |
| P2.L4.F.CS.1020 |  | R/I - Ceiling Assemblies & Supports - All Trades (A/V, Oper Part, Glass Part, etc.) / L4 / South / Z1 | 5d | 2026-08-26 | 2026-09-01 | P2.L4.F.CS.1000 | 13d | 0d |  | 40 | ACT | P2-5 | MLF | ACT | ! |  |  |
| P2.L4.F.CS.1010 |  | T-Grid / L4 / South / Z1 | 5d | 2026-09-02 | 2026-09-09 | P2.L4.F.CS.1020 | 13d | 0d |  | 40 | ACT | P2-5 | MLF | ACT |  |  |  |
| P2.L4.F.CS.1030 |  | Diffusers in T-Grid / L4 / South / Z1 | 5d | 2026-09-10 | 2026-09-16 | P2.L4.F.CS.1010 | 18d | 5d |  | 40 | HVAC | P2-5 | MLF | HVAC |  | Harris |  |
| P2.L4.F.CS.1040 |  | Lights & Elec Devices in T-Grid / L4 / South / Z1 | 10d | 2026-09-10 | 2026-09-23 | P2.L4.F.CS.1010 | 13d | 0d |  | 40 | ELEC | P2-5 | MLF | ELEC-2 |  |  |  |
| P2.L4.F.CS.1050 |  | Sprinkler Heads in T-Grid / L4 / South / Z1 | 5d | 2026-09-10 | 2026-09-16 | P2.L4.F.CS.1010 | 18d | 5d |  | 40 | FP | P2-5 | MLF | FP-1 |  |  |  |
| P2.L4.F.CS.1060 |  | Low Voltage in T-Grid / L4 / South / Z1 | 5d | 2026-09-10 | 2026-09-16 | P2.L4.F.CS.1010 | 18d | 5d |  | 40 | LOWVOLT | P2-5 | MLF | LOWVOLT-1 |  |  |  |
| P2.L4.F.CS.1070 |  | Fire Alarm in T-Grid / L4 / South / Z1 | 5d | 2026-09-10 | 2026-09-16 | P2.L4.F.CS.1010 | 18d | 5d |  | 40 | FA | P2-5 | MLF | FA-1 |  |  |  |
| P2.L4.F.CS.1080 |  | OH Ceiling Signoff / L4 / South / Z1 | 5d | 2026-09-24 | 2026-09-30 | P2.L4.F.CS.1060, P2.L4.F.CS.1070, P2.L4.F.CS.1030, P2.L4.F.CS.1040, P2.L4.F.CS.1050 | 13d | 0d |  | 40 | MEP | P2-5 | MLF | MEP |  | Harris |  |
| P2.L4.F.CS.1090 |  | Millwork / L4 / South / Z1 | 5d | 2026-10-01 | 2026-10-07 | P2.L4.F.CS.1080 | 13d | 0d |  | 40 | MILL | P2-5 | MLF | MILL |  |  |  |
| P2.L4.F.CS.1100 |  | Plumbing Fixtures / L4 / South / Z1 | 5d | 2026-10-01 | 2026-10-07 | P2.L4.F.CS.1080, P2.L4.F.CS.1090 FF | 13d | 0d |  | 40 | PLMB | P2-5 | MLF | PLMB |  | Harris |  |
| P2.L4.F.CS.1110 |  | Drop Ceiling Tile / L4 / South / Z1 | 5d | 2026-10-08 | 2026-10-14 | P2.L4.F.CS.1080, P2.L4.F.CS.1100 | 13d | 0d |  | 40 | ACT | P2-5 | MLF | ACT |  |  |  |
| P2.L4.F.CS.1120 |  | Floor Prep / L4 / South / Z1 | 5d | 2026-10-15 | 2026-10-21 | P2.L4.F.CS.1110, P2.L4.F.CS.1090 | 13d | 0d |  | 40 | FLOOR | P2-5 | MLF | FLOOR |  |  |  |
| P2.L4.F.CS.1130 |  | Floor Finishes / L4 / South / Z1 | 5d | 2026-10-22 | 2026-10-28 | P2.L4.F.CS.1120 | 13d | 0d |  | 40 | FLOOR | P2-5 | MLF | FLOOR |  |  |  |
| P2.L4.F.CS.1140 |  | Doors & Hardware / L4 / South / Z1 | 5d | 2026-10-29 | 2026-11-04 | P2.L4.F.CS.1130 | 13d | 0d |  | 40 | DFH | P2-5 | MLF | DFH |  |  | AT29 |
| P2.L4.F.CS.1150 |  | Paint - Finish Coat / L4 / South / Z1 | 5d | 2026-11-05 | 2026-11-11 | P2.L4.F.CS.1140, P2.L4.F.CS.1130 | 13d | 0d |  | 40 | PAINT | P2-5 | MLF | PAINT-1 |  |  |  |
| P2.L4.F.CS.1180 |  | Building Specialities / L4 / South / Z1 | 5d | 2026-11-12 | 2026-11-18 | P2.L4.F.CS.1150 | 13d | 0d |  | 40 | SPECIAL | P2-5 | MLF | SPECIAL |  |  |  |
| P2.L4.F.CS.1200 |  | Floor Base / L4 / South / Z1 | 5d | 2026-11-12 | 2026-11-18 | P2.L4.F.CS.1150 | 18d | 0d |  | 40 | FLOOR | P2-5 | MLF | FLOOR |  |  |  |
| P2.L4.F.CS.1190 |  | Interior Building Signage / L4 / South / Z1 | 5d | 2026-11-19 | 2026-11-25 | P2.L4.F.CS.1150, P2.L4.F.CS.1180 | 13d | 0d |  | 40 | SIGN | P2-5 | MLF | SIGN |  |  |  |
| P2.L4.F.CS.1210 |  | Demountable Partitions / L4 / South / Z1 | 5d | 2026-11-19 | 2026-11-25 | P2.L4.F.CS.1200 | 18d | 0d |  | 40 | DPART | P2-5 | MLF | DPART | TBD |  |  |
| P2.L4.F.CS.1170 |  | Trim T-Stats / L4 / South / Z1 | 5d | 2026-11-30 | 2026-12-04 | P2.L4.F.CS.1150, P2.L4.F.CS.1190 | 13d | 0d |  | 40 | BAS | P2-5 | MLF | BAS-1 |  | Harris |  |
| P2.L4.F.CS.1220 |  | Trim Electrical / L4 / South / Z1 | 5d | 2026-11-30 | 2026-12-04 | P2.L4.F.CS.1210, P2.L4.F.CS.1170 SS | 18d | 5d |  | 40 | ELEC | P2-5 | MLF | ELEC-2 |  |  |  |
| P2.L4.F.CS.1160 |  | Set AV/IT Devices and Configure / L4 / South / Z1 | 5d | 2026-12-07 | 2026-12-11 | P2.L4.F.CS.1150, P2.L4.F.CS.1170 | 13d | 0d |  | 40 | LOWVOLT | P2-5 | MLF | LOWVOLT-1 |  |  |  |
| P2.L4.F.CS.1230 |  | Trim Telephone/ Data / L4 / South / Z1 | 5d | 2026-12-07 | 2026-12-11 | P2.L4.F.CS.1170, P2.L4.F.CS.1220 SS | 13d | 0d |  | 40 | LOWVOLT | P2-5 | MLF | LOWVOLT-1 |  |  |  |
| P2.L4.F.CS.1240 |  | Work Completion List - Finishes / L4 / South / Z1 | 5d | 2026-12-14 | 2026-12-18 | P2.L4.F.CS.1190, P2.L4.F.CS.1140, P2.L4.F.CS.1100, P2.L4.F.CS.1230, P2.L4.F.CS.1180, P2.L4.F.CS.1160 | 13d | 0d |  | 40 | FINISH | P2-5 | MLF | FINISH |  |  |  |
| P2.L4.F.CS.1250 |  | Rough Clean / L4 / South / Z1 | 5d | 2026-12-21 | 2026-12-28 | P2.L4.F.CS.1240 | 13d | 0d |  | 40 | FCLEAN | P2-5 | MLF | FCLEAN |  |  |  |
| P2.L4.F.CS.1260 |  | FF&E / L4 / South / Z1 | 5d | 2026-12-29 | 2027-01-05 | P2.L4.F.CS.1250 | 13d | 0d |  | 40 | FURN | P2-5 | MLF | FURN |  |  |  |
| P2.L4.F.CS.1270 |  | Prepare Punchlist / L4 / South / Z1 | 5d | 2027-01-06 | 2027-01-12 | P2.L4.F.CS.1260 | 13d | 0d |  | 40 | QC | P2-5 | MLF | QC |  |  |  |
| P2.L4.F.CS.1280 |  | Correct Punchlist / L4 / South / Z1 | 10d | 2027-01-13 | 2027-01-26 | P2.L4.F.CS.1270 | 13d | 0d |  | 80 | FINISH | P2-5 | MLF | FINISH |  |  |  |
| P2.L4.F.CS.1290 |  | Final Clean / L4 / South / Z1 | 5d | 2027-01-27 | 2027-02-02 | P2.L4.F.CS.1280 | 13d | 25d | To QC | 40 | QC | P2-5 | MLF | QC |  |  |  |

| ID | WBS | Activity | Duration | Start | Finish | Predecessors | Total float | Free float | Pick | Temp Orig Dur | Resp / SRLM | PHASE | RESP UPD | RESP / Trade | *NIH Resp Check* | Z.RESP | Testing Type |
| --- | --- | --- | --- | --- | --- | --- | --- | --- | --- | --- | --- | --- | --- | --- | --- | --- | --- |
|  | 2 | **Closeout** |  |  |  |  |  |  |  |  |  |  |  |  |  |  |  |
|  | 7KSF | **Office Spaces - Z2 (2,300 sf) / Level 4** |  | 2026-08-19 | 2027-02-16 |  |  |  |  |  |  |  |  |  |  |  |  |
|  | 1 | **Finishes** |  | 2026-08-19 | 2027-02-16 |  |  |  |  |  |  |  |  |  |  |  |  |
| P2.L4.F.CS.2000 |  | Paint Prime & 1st Coat Walls / L4 / North / Z2 | 5d | 2026-08-19 | 2026-08-25 | P2.L4.N.1470 | 3d | 0d | From R/I Work Completion | 40 | PAINT | P2-5 | MLF | PAINT-1 |  |  |  |
| P2.L4.F.CS.2020 |  | R/I - Ceiling Assemblies & Supports - All Trades (A/V, Oper Part, Glass Part, etc.) / L4 / North / Z2 | 5d | 2026-08-26 | 2026-09-01 | P2.L4.F.CS.2000 | 3d | 0d |  | 40 | ACT | P2-5 | MLF | ACT | ! |  |  |
| P2.L4.F.CS.2010 |  | T-Grid / L4 / North / Z2 | 5d | 2026-09-02 | 2026-09-09 | P2.L4.F.CS.2020 | 3d | 0d |  | 40 | ACT | P2-5 | MLF | ACT |  |  |  |
| P2.L4.F.CS.2030 |  | Diffusers in T-Grid / L4 / North / Z2 | 5d | 2026-09-10 | 2026-09-16 | P2.L4.F.CS.2010 | 8d | 5d |  | 40 | HVAC | P2-5 | MLF | HVAC |  | Harris |  |
| P2.L4.F.CS.2040 |  | Lights & Elec Devices in T-Grid / L4 / North / Z2 | 10d | 2026-09-10 | 2026-09-23 | P2.L4.F.CS.2010 | 3d | 0d |  | 40 | ELEC | P2-5 | MLF | ELEC-2 |  |  |  |
| P2.L4.F.CS.2050 |  | Sprinkler Heads in T-Grid / L4 / North / Z2 | 5d | 2026-09-10 | 2026-09-16 | P2.L4.F.CS.2010 | 8d | 5d |  | 40 | FP | P2-5 | MLF | FP-1 |  |  |  |
| P2.L4.F.CS.2060 |  | Low Voltage in T-Grid / L4 / North / Z2 | 5d | 2026-09-10 | 2026-09-16 | P2.L4.F.CS.2010 | 8d | 5d |  | 40 | LOWVOLT | P2-5 | MLF | LOWVOLT-1 |  |  |  |
| P2.L4.F.CS.2070 |  | Fire Alarm in T-Grid / L4 / North / Z2 | 5d | 2026-09-10 | 2026-09-16 | P2.L4.F.CS.2010 | 8d | 5d |  | 40 | FA | P2-5 | MLF | FA-1 |  |  |  |
| P2.L4.F.CS.2080 |  | OH Ceiling Signoff / L4 / North / Z2 | 5d | 2026-09-24 | 2026-09-30 | P2.L4.F.CS.2070, P2.L4.F.CS.2060, P2.L4.F.CS.2050, P2.L4.F.CS.2030, P2.L4.F.CS.2040 | 3d | 0d |  | 40 | MEP | P2-5 | MLF | MEP |  | Harris |  |
| P2.L4.F.CS.2110 |  | Drop Ceiling Tile / L4 / North / Z2 | 5d | 2026-10-01 | 2026-10-07 | P2.L4.F.CS.2080 | 3d | 0d |  | 40 | ACT | P2-5 | MLF | ACT |  |  |  |
| P2.L4.F.CS.2090 |  | Millwork / L4 / North / Z2 | 5d | 2026-10-08 | 2026-10-14 | P2.L4.F.CS.2080, P2.L4.F.CS.2110 | 3d | 0d |  | 40 | MILL | P2-5 | MLF | MILL |  |  |  |
| P2.L4.F.CS.2100 |  | Plumbing Fixtures / L4 / North / Z2 | 5d | 2026-10-15 | 2026-10-21 | P2.L4.F.CS.2080, P2.L4.F.CS.2090, P2.L4.F.CS.2090 FF | 48d | 45d |  | 40 | PLMB | P2-5 | MLF | PLMB |  | Harris |  |
| P2.L4.F.CS.2120 |  | Floor Prep / L4 / North / Z2 | 5d | 2026-10-15 | 2026-10-21 | P2.L4.F.CS.2110, P2.L4.F.CS.2090 | 3d | 0d |  | 40 | FLOOR | P2-5 | MLF | FLOOR |  |  |  |
| P2.L4.F.CS.2130 |  | Floor Finishes / L4 / North / Z2 | 5d | 2026-10-22 | 2026-10-28 | P2.L4.F.CS.2120 | 3d | 0d |  | 40 | FLOOR | P2-5 | MLF | FLOOR |  |  |  |
| P2.L4.F.CS.2140 |  | Doors & Hardware / L4 / North / Z2 | 5d | 2026-10-29 | 2026-11-04 | P2.L4.F.CS.2130 | 3d | 0d |  | 40 | DFH | P2-5 | MLF | DFH |  |  | AT29 |
| P2.L4.F.CS.2150 |  | Paint - Finish Coat / L4 / North / Z2 | 5d | 2026-11-05 | 2026-11-11 | P2.L4.F.CS.2130, P2.L4.F.CS.2140 | 3d | 0d |  | 40 | PAINT | P2-5 | MLF | PAINT-1 |  |  |  |
| P2.L4.F.CS.2200 |  | Floor Base / L4 / North / Z2 | 5d | 2026-11-12 | 2026-11-18 | P2.L4.F.CS.2150 | 3d | 0d |  | 40 | FLOOR | P2-5 | MLF | FLOOR |  |  |  |
| P2.L4.F.CS.2180 |  | Building Specialities / L4 / North / Z2 | 5d | 2026-11-19 | 2026-11-25 | P2.L4.F.CS.2150, P2.L4.F.CS.2200 | 3d | 0d |  | 40 | SPECIAL | P2-5 | MLF | SPECIAL |  |  |  |
| P2.L4.F.CS.2210 |  | Demountable Partitions / L4 / North / Z2 | 5d | 2026-11-19 | 2026-11-25 | P2.L4.F.CS.2200 | 13d | 10d |  | 40 | DPART | P2-5 | MLF | DPART | TBD |  |  |
| P2.L4.F.CS.2190 |  | Interior Building Signage / L4 / North / Z2 | 5d | 2026-11-30 | 2026-12-04 | P2.L4.F.CS.2150, P2.L4.F.CS.2180 | 3d | 0d |  | 40 | SIGN | P2-5 | MLF | SIGN |  |  |  |
| P2.L4.F.CS.2170 |  | Trim T-Stats / L4 / North / Z2 | 5d | 2026-12-07 | 2026-12-11 | P2.L4.F.CS.2150, P2.L4.F.CS.2190 | 3d | 0d |  | 40 | BAS | P2-5 | MLF | BAS-1 |  | Harris |  |
| P2.L4.F.CS.2160 |  | Set AV/IT Devices and Configure / L4 / North / Z2 | 5d | 2026-12-14 | 2026-12-18 | P2.L4.F.CS.2150, P2.L4.F.CS.2170 | 8d | 5d |  | 40 | LOWVOLT | P2-5 | MLF | LOWVOLT-1 |  |  |  |
| P2.L4.F.CS.2220 |  | Trim Electrical / L4 / North / Z2 | 5d | 2026-12-14 | 2026-12-18 | P2.L4.F.CS.2210, P2.L4.F.CS.2170, P2.L4.F.CS.2170 SS | 3d | 0d |  | 40 | ELEC | P2-5 | MLF | ELEC-2 |  |  |  |
| P2.L4.F.CS.2230 |  | Trim Telephone/ Data / L4 / North / Z2 | 5d | 2026-12-21 | 2026-12-28 | P2.L4.F.CS.2220, P2.L4.F.CS.2220 SS | 3d | 0d |  | 40 | LOWVOLT | P2-5 | MLF | LOWVOLT-1 |  |  |  |
| P2.L4.F.CS.2240 |  | Work Completion List - Finishes / L4 / North / Z2 | 5d | 2026-12-29 | 2027-01-05 | P2.L4.F.CS.2160, P2.L4.F.CS.2190, P2.L4.F.CS.2140, P2.L4.F.CS.2230, P2.L4.F.CS.2180, P2.L4.F.CS.2100 | 3d | 0d |  | 40 | FINISH | P2-5 | MLF | FINISH |  |  |  |
| P2.L4.F.CS.2250 |  | Rough Clean / L4 / North / Z2 | 5d | 2027-01-06 | 2027-01-12 | P2.L4.F.CS.2240 | 3d | 0d |  | 40 | FCLEAN | P2-5 | MLF | FCLEAN |  |  |  |
| P2.L4.F.CS.2260 |  | FF&E / L4 / North / Z2 | 5d | 2027-01-13 | 2027-01-19 | P2.L4.F.CS.2250 | 3d | 0d |  | 40 | FURN | P2-5 | MLF | FURN |  |  |  |
| P2.L4.F.CS.2270 |  | Prepare Punchlist / L4 / North / Z2 | 5d | 2027-01-20 | 2027-01-26 | P2.L4.F.CS.2260 | 3d | 0d |  | 40 | QC | P2-5 | MLF | QC |  |  |  |
| P2.L4.F.CS.2280 |  | Correct Punchlist / L4 / North / Z2 | 10d | 2027-01-27 | 2027-02-09 | P2.L4.F.CS.2270 | 3d | 0d |  | 80 | FINISH | P2-5 | MLF | FINISH |  |  |  |
| P2.L4.F.CS.2290 |  | Final Clean / L4 / North / Z2 | 5d | 2027-02-10 | 2027-02-16 | P2.L4.F.CS.2280 | 3d | 15d | To QC | 40 | QC | P2-5 | MLF | QC |  |  |  |

| ID | WBS | Activity | Duration | Start | Finish | Predecessors | Total float | Free float | Pick | Temp Orig Dur | Resp / SRLM | PHASE | RESP UPD | RESP / Trade | *NIH Resp Check* | Z.RESP | Testing Type |
| --- | --- | --- | --- | --- | --- | --- | --- | --- | --- | --- | --- | --- | --- | --- | --- | --- | --- |
|  | 2 | **Closeout** |  |  |  |  |  |  |  |  |  |  |  |  |  |  |  |
|  | 7KSF11 | **Office Spaces - Z3 (1,943 sf) / Level 4** |  | 2026-08-19 | 2027-02-02 |  |  |  |  |  |  |  |  |  |  |  |  |
|  | 1 | **Finishes** |  | 2026-08-19 | 2027-02-02 |  |  |  |  |  |  |  |  |  |  |  |  |
| P2.L4.F.CS.3000 |  | Paint Prime & 1st Coat Walls / L4 / North / Z3 | 5d | 2026-08-19 | 2026-08-25 | P2.L4.F.CS.2000 SS, P2.L4.F.CS.2000 FF, P2.L4.N.1470 | 7d | 0d | From R/I Work Completion | 40 | PAINT | P2-5 | MLF | PAINT-1 |  |  |  |
| P2.L4.F.CS.3010 |  | T-Grid / L4 / North / Z3 | 5d | 2026-08-26 | 2026-09-01 | P2.L4.F.CS.3000 | 13d | 0d |  | 40 | ACT | P2-5 | MLF | ACT |  |  |  |
| P2.L4.F.CS.3020 |  | R/I - Ceiling Assemblies & Supports - All Trades (A/V, Oper Part, Glass Part, etc.) / L4 / North / Z3 | 5d | 2026-08-26 | 2026-09-01 | P2.L4.F.CS.3000 | 53d | 40d |  | 40 | ACT | P2-5 | MLF | ACT | ! |  |  |
| P2.L4.F.CS.3030 |  | Diffusers in T-Grid / L4 / North / Z3 | 5d | 2026-09-02 | 2026-09-09 | P2.L4.F.CS.3010 | 18d | 5d |  | 40 | HVAC | P2-5 | MLF | HVAC |  | Harris |  |
| P2.L4.F.CS.3040 |  | Lights & Elec Devices in T-Grid / L4 / North / Z3 | 10d | 2026-09-02 | 2026-09-16 | P2.L4.F.CS.3010 | 13d | 0d |  | 40 | ELEC | P2-5 | MLF | ELEC-2 |  |  |  |
| P2.L4.F.CS.3050 |  | Sprinkler Heads in T-Grid / L4 / North / Z3 | 5d | 2026-09-02 | 2026-09-09 | P2.L4.F.CS.3010 | 18d | 5d |  | 40 | FP | P2-5 | MLF | FP-1 |  |  |  |
| P2.L4.F.CS.3060 |  | Low Voltage in T-Grid / L4 / North / Z3 | 5d | 2026-09-02 | 2026-09-09 | P2.L4.F.CS.3010 | 18d | 5d |  | 40 | LOWVOLT | P2-5 | MLF | LOWVOLT-1 |  |  |  |
| P2.L4.F.CS.3070 |  | Fire Alarm in T-Grid / L4 / North / Z3 | 5d | 2026-09-02 | 2026-09-09 | P2.L4.F.CS.3010 | 18d | 5d |  | 40 | FA | P2-5 | MLF | FA-1 |  |  |  |
| P2.L4.F.CS.3080 |  | OH Ceiling Signoff / L4 / North / Z3 | 5d | 2026-09-17 | 2026-09-23 | P2.L4.F.CS.3060, P2.L4.F.CS.3070, P2.L4.F.CS.3030, P2.L4.F.CS.3040, P2.L4.F.CS.3050 | 13d | 0d |  | 40 | MEP | P2-5 | MLF | MEP |  | Harris |  |
| P2.L4.F.CS.3110 |  | Drop Ceiling Tile / L4 / North / Z3 | 5d | 2026-09-24 | 2026-09-30 | P2.L4.F.CS.3080 | 13d | 0d |  | 40 | ACT | P2-5 | MLF | ACT |  |  |  |
| P2.L4.F.CS.3090 |  | Millwork / L4 / North / Z3 | 5d | 2026-10-01 | 2026-10-07 | P2.L4.F.CS.3080, P2.L4.F.CS.3110 | 13d | 0d |  | 40 | MILL | P2-5 | MLF | MILL |  |  |  |
| P2.L4.F.CS.3100 |  | Plumbing Fixtures / L4 / North / Z3 | 5d | 2026-10-01 | 2026-10-07 | P2.L4.F.CS.3090 FF, P2.L4.F.CS.3080 | 13d | 0d |  | 40 | PLMB | P2-5 | MLF | PLMB |  | Harris |  |
| P2.L4.F.CS.3120 |  | Floor Prep / L4 / North / Z3 | 5d | 2026-10-08 | 2026-10-14 | P2.L4.F.CS.3110, P2.L4.F.CS.3090, P2.L4.F.CS.3100 | 13d | 0d |  | 40 | FLOOR | P2-5 | MLF | FLOOR |  |  |  |
| P2.L4.F.CS.3130 |  | Floor Finishes / L4 / North / Z3 | 5d | 2026-10-15 | 2026-10-21 | P2.L4.F.CS.3120 | 13d | 0d |  | 40 | FLOOR | P2-5 | MLF | FLOOR |  |  |  |
| P2.L4.F.CS.3140 |  | Doors & Hardware / L4 / North / Z3 | 5d | 2026-10-22 | 2026-10-28 | P2.L4.F.CS.3130 | 13d | 0d |  | 40 | DFH | P2-5 | MLF | DFH |  |  | AT29 |
| P2.L4.F.CS.3150 |  | Paint - Finish Coat / L4 / North / Z3 | 5d | 2026-10-29 | 2026-11-04 | P2.L4.F.CS.3140, P2.L4.F.CS.3130, P2.L4.F.CS.3020 | 13d | 0d |  | 40 | PAINT | P2-5 | MLF | PAINT-1 |  |  |  |
| P2.L4.F.CS.3200 |  | Floor Base / L4 / North / Z3 | 5d | 2026-11-05 | 2026-11-11 | P2.L4.F.CS.3150 | 13d | 0d |  | 40 | FLOOR | P2-5 | MLF | FLOOR |  |  |  |
| P2.L4.F.CS.3180 |  | Building Specialities / L4 / North / Z3 | 5d | 2026-11-12 | 2026-11-18 | P2.L4.F.CS.3200, P2.L4.F.CS.3150 | 13d | 0d |  | 40 | SPECIAL | P2-5 | MLF | SPECIAL |  |  |  |
| P2.L4.F.CS.3210 |  | Demountable Partitions / L4 / North / Z3 | 5d | 2026-11-12 | 2026-11-18 | P2.L4.F.CS.3200 | 18d | 0d |  | 40 | DPART | P2-5 | MLF | DPART | TBD |  |  |
| P2.L4.F.CS.3170 |  | Trim T-Stats / L4 / North / Z3 | 5d | 2026-11-19 | 2026-11-25 | P2.L4.F.CS.3150, P2.L4.F.CS.3180 | 13d | 0d |  | 40 | BAS | P2-5 | MLF | BAS-1 |  | Harris |  |
| P2.L4.F.CS.3220 |  | Trim Electrical / L4 / North / Z3 | 5d | 2026-11-19 | 2026-11-25 | P2.L4.F.CS.3210, P2.L4.F.CS.3170 SS | 18d | 0d |  | 40 | ELEC | P2-5 | MLF | ELEC-2 |  |  |  |
| P2.L4.F.CS.3160 |  | Set AV/IT Devices and Configure / L4 / North / Z3 | 5d | 2026-11-30 | 2026-12-04 | P2.L4.F.CS.3150, P2.L4.F.CS.3170 | 13d | 0d |  | 40 | LOWVOLT | P2-5 | MLF | LOWVOLT-1 |  |  |  |
| P2.L4.F.CS.3230 |  | Trim Telephone/ Data / L4 / North / Z3 | 5d | 2026-11-30 | 2026-12-04 | P2.L4.F.CS.3220, P2.L4.F.CS.3220 SS | 18d | 5d |  | 40 | LOWVOLT | P2-5 | MLF | LOWVOLT-1 |  |  |  |
| P2.L4.F.CS.3190 |  | Interior Building Signage / L4 / North / Z3 | 5d | 2026-12-07 | 2026-12-11 | P2.L4.F.CS.3160, P2.L4.F.CS.3150 | 13d | 0d |  | 40 | SIGN | P2-5 | MLF | SIGN |  |  |  |
| P2.L4.F.CS.3240 |  | Work Completion List - Finishes / L4 / North / Z3 | 5d | 2026-12-14 | 2026-12-18 | P2.L4.F.CS.3160, P2.L4.F.CS.3190, P2.L4.F.CS.3140, P2.L4.F.CS.3100, P2.L4.F.CS.3230, P2.L4.F.CS.3180 | 13d | 0d |  | 40 | FINISH | P2-5 | MLF | FINISH |  |  |  |
| P2.L4.F.CS.3250 |  | Rough Clean / L4 / North / Z3 | 5d | 2026-12-21 | 2026-12-28 | P2.L4.F.CS.3240 | 13d | 0d |  | 40 | FCLEAN | P2-5 | MLF | FCLEAN |  |  |  |
| P2.L4.F.CS.3260 |  | FF&E / L4 / North / Z3 | 5d | 2026-12-29 | 2027-01-05 | P2.L4.F.CS.3250 | 13d | 0d |  | 40 | FURN | P2-5 | MLF | FURN |  |  |  |
| P2.L4.F.CS.3270 |  | Prepare Punchlist / L4 / North / Z3 | 5d | 2027-01-06 | 2027-01-12 | P2.L4.F.CS.3260 | 13d | 0d |  | 40 | QC | P2-5 | MLF | QC |  |  |  |
| P2.L4.F.CS.3280 |  | Correct Punchlist / L4 / North / Z3 | 10d | 2027-01-13 | 2027-01-26 | P2.L4.F.CS.3270 | 13d | 0d |  | 80 | FINISH | P2-5 | MLF | FINISH |  |  |  |
| P2.L4.F.CS.3290 |  | Final Clean / L4 / North / Z3 | 5d | 2027-01-27 | 2027-02-02 | P2.L4.F.CS.3280 | 13d | 25d | To QC | 40 | QC | P2-5 | MLF | QC |  |  |  |

| ID | WBS | Activity | Duration | Start | Finish | Predecessors | Complete | Planned start | Planned finish | Total float | Free float | Pick | Temp Orig Dur | *NIH Resp Check* | Resp / SRLM | 744 | PHASE | Z.RESP | RESP UPD | RESP / Trade | Update Status | Testing Type |
| --- | --- | --- | --- | --- | --- | --- | --- | --- | --- | --- | --- | --- | --- | --- | --- | --- | --- | --- | --- | --- | --- | --- |
|  | 2 | **Closeout** |  |  |  |  |  |  |  |  |  |  |  |  |  |  |  |  |  |  |  |  |
|  | 5 | **Bathrooms - Break Rooms - Locker Rooms / Level 4** |  | 2025-06-02 | 2026-09-30 |  |  |  |  |  |  |  |  |  |  |  |  |  |  |  |  |  |
|  | 4 | **Toilets 4-2802A / 4-2802B** |  | 2025-06-02 | 2026-09-30 |  |  |  |  |  |  |  |  |  |  |  |  |  |  |  |  |  |
| P2.L4.BR.1000 |  | Plumbing - Set Pipe Carriers / L4 / Toilets 2802X | 3d | 2025-06-02 A | 2025-06-05 A | P2.L4.N.1240, P2.L3.BR.4000 | 100% | 2025-07-23 | 2025-07-25 |  |  | ? | 24 | ! | PLMB | MLF | P2-5 | Harris | MLF | PLMB |  |  |
| P2.L4.BR.1050 |  | Duct Drops _ Hard Lids / L4 / Toilets 2802X | 2d | 2025-09-29 A | 2025-09-30 A | P2.L4.BR.1010 | 100% | 2025-10-28 | 2025-10-29 |  |  |  | 16 | T.R/I.IW.MECH.HVAC.SM | HVAC | MLF | P2-5 | Harris | MLF | HVAC | O |  |
| P2.L4.BR.1010 |  | Framing & Blocking - Walls and Hard Lid Ceilings / L4 / Toilets 2802X | 2d | 2025-12-01 A | 2025-12-10 A | P2.L4.BR.1000 | 100% | 2026-01-23 | 2026-01-26 |  |  |  | 16 | ! | GYP | MLF | P2-5 |  | MLF | GYP-1 | O |  |
| P2.L4.BR.1020 |  | Plumbing - Test Pipe / L4 / Toilets 2802X | 2d | 2025-12-11 A | 2025-12-15 A | P2.L4.BR.1000 | 100% | 2026-01-23 | 2026-01-26 |  |  |  | 16 |  | PLMB | MLF | P2-5 | Harris | MLF | PLMB | O |  |
| P2.L4.BR.1070 |  | In Wall - Insulate Plumbing / L4 / Toilets 2802X | 2d | 2025-12-11 A | 2025-12-15 A | P2.L4.BR.1020, P2.L4.BR.1050 | 100% | 2026-01-27 | 2026-01-28 |  |  |  | 16 |  | INSUL | MLF | P2-5 | Harris | MLF | INSUL-3 | O |  |
| P2.L4.BR.1030 |  | R/I - Electrical _ Hard Lids / L4 / Toilets 2802X | 5d | 2026-04-01 | 2026-04-07 | P2.L4.BR.1010, P2.L4.BR.1070 |  |  |  | 98d | 0d |  | 16 | ! | ELEC | MLF | P2-5 |  | MLF | ELEC-3 | O |  |
| P2.L4.BR.1040 |  | Trim Sprinkler Drops _ Hard Lids / L4 / Toilets 2802X | 2d | 2026-04-01 | 2026-04-02 | P2.L4.BR.1010 |  |  |  | 106d | 8d |  | 16 | ! | FP | MLF | P2-5 |  | MLF | FP-1 | O |  |
| P2.L4.BR.1060 |  | R/I - Fire Alarm _ Hard Lids / L4 / Toilets 2802X | 5d | 2026-04-08 | 2026-04-14 | P2.L4.BR.1030, P2.L4.BR.1010 |  |  |  | 98d | 0d |  | 16 | ! | ELEC | MLF | P2-5 |  | MLF | ELEC-3 |  |  |
| P2.L4.BR.1080 |  | Inspection - Close In - Walls and Hard Lid Ceilings / L4 / Toilets 2802X | 3d | 2026-04-15 | 2026-04-17 | P2.L4.BR.1030, P2.L4.BR.1040, P2.L4.BR.1050, P2.L4.BR.1060, P2.L4.BR.1070 |  |  |  | 98d | 80d |  | 24 | ! | AHJ | MLF | P2-5 |  | MLF | AHJ |  |  |
| P2.L4.BR.1090 |  | Hang-Tape-Finish _ Walls / L4 / Toilets 2802X | 5d | 2026-08-12 | 2026-08-18 | P2.L4.BR.1080, P2.SUM.175, P2.L4.N.1470 SS, P2.L4.S.1470 SS, P2.L4.N.1470 FF, P2.L4.S.1470 FF |  |  |  | 18d | 0d |  | 40 | ! | GYP | MLF | P2-5 |  | MLF | GYP-1 |  |  |
| P2.L4.BR.1100 |  | Paint Prime & Final Coat _ Walls & Hard Lid Ceilings / L4 / Toilets 2802X | 2d | 2026-08-19 | 2026-08-20 | P2.L4.BR.1090 |  |  |  | 18d | 0d |  | 16 | ! | PAINT | MLF | P2-5 |  | MLF | PAINT-1 |  |  |
| P2.L4.BR.1140 |  | Trim - HVAC G/R/D's / L4 / Toilets 2802X | 2d | 2026-08-21 | 2026-08-24 | BP1.233.3.410, P2.L4.BR.1100 |  |  |  | 18d | 0d |  | 16 | ! | HVAC | MLF | P2-5 | Harris | MLF | HVAC |  |  |
| P2.L4.BR.1120 |  | Pull Wire & Trim Devices - Electrical / L4 / Toilets 2802X | 2d | 2026-08-25 | 2026-08-26 | P2.L4.BR.1100, P2.L4.BR.1140 |  |  |  | 18d | 0d |  | 16 | ! | ELEC | MLF | P2-5 |  | MLF | ELEC-2 |  |  |
| P2.L4.BR.1130 |  | Lights - Set & Terminate / L4 / Toilets 2802X | 2d | 2026-08-25 | 2026-08-26 | P2.L4.BR.1120 SS |  |  |  | 23d | 5d |  | 16 | ! | ELEC | MLF | P2-5 |  | MLF | ELEC-2 |  |  |
| P2.L4.BR.1110 |  | Pull Wire & Trim Devices - Fire Alarm / L4 / Toilets 2802X | 5d | 2026-08-27 | 2026-09-02 | P2.L4.BR.1100, P2.L4.BR.1120 |  |  |  | 18d | 0d |  | 16 | ! | ELEC | MLF | P2-5 |  | MLF | ELEC-2 |  |  |
| P2.L4.BR.1150 |  | Wall Tile / L4 / Toilets 2802X | 5d | 2026-09-03 | 2026-09-10 | P2.L4.BR.1110, P2.L4.BR.1130, P2.L4.BR.1140 |  |  |  | 18d | 0d |  | 40 | ! | TILE | MLF | P2-5 |  | MLF | TILE |  |  |
| P2.L4.BR.1200 |  | Flooring Prep - Epoxy Floors / L4 / Toilets 2802X | 1d | 2026-09-11 | 2026-09-11 | P2.L4.BR.1150, P2.L3.BR.4220 |  |  |  | 18d | 0d |  | 40 | ! | EPOXYF |  | P2-5 |  | MLF | EPOXYF |  |  |
| P2.L4.BR.1210 |  | Flooring - Epoxy Floors / L4 / Toilets 2802X | 2d | 2026-09-14 | 2026-09-15 | P2.L4.BR.1200 |  |  |  | 50d | 0d |  | 40 | ! | EPOXYF |  | P2-5 |  | MLF | EPOXYF |  |  |
| P2.L4.BR.1160 |  | Doors & Hardware / L4 / Toilets 2802X | 2d | 2026-09-16 | 2026-09-17 | P2.L4.BR.1210, P2.L4.BR.1150 |  |  |  | 50d | 0d |  | 16 | ! | DFH |  | P2-5 |  | MLF | DFH |  | AT29 |
| P2.L4.BR.1170 |  | Plumbing Fixtures / Sinks / Showers / L4 / Toilets 2802X | 2d | 2026-09-18 | 2026-09-21 | P2.L4.BR.1210, P2.L4.BR.1150, P2.L4.BR.1160 |  |  |  | 98d | 0d |  | 16 | ! | PLMB |  | P2-5 | Harris | MLF | PLMB |  |  |
| P2.L4.BR.1180 |  | Bathroom Accessories / L4 / Toilets 2802X | 2d | 2026-09-22 | 2026-09-23 | P2.L4.BR.1170 |  |  |  | 98d | 0d |  | 16 | ! | SPECIAL |  | P2-5 |  | MLF | SPECIAL |  |  |
| P2.L4.BR.1190 |  | Work Completion List - Finishes / L4 / Toilets 2802X | 5d | 2026-09-24 | 2026-09-30 | P2.L4.BR.1110, P2.L4.BR.1180, P2.L4.BR.1160 |  |  |  | 98d | 110d | To Punch | 40 |  | AHJ |  | P2-5 |  | MLF | AHJ |  |  |

| ID | WBS | Activity | Duration | Start | Finish | Predecessors | Total float | Free float | Temp Orig Dur | Resp / SRLM | PHASE | RESP UPD | RESP / Trade | Z.RESP |
| --- | --- | --- | --- | --- | --- | --- | --- | --- | --- | --- | --- | --- | --- | --- |
|  | 1 | **Corridors & Lobbies / Level 4** |  | 2026-09-10 | 2027-03-03 |  |  |  |  |  |  |  |  |  |
| P2.L4.CL.1000 |  | Paint Prime & 1st Coat Walls / L4 / Corr & Lobbies | 5d | 2026-09-10 | 2026-09-16 | P2.L4.N.1550, P2.L4.F.CS.3000 SS, P2.L4.F.CS.3000 FF | -8d | 0d | 40 | PAINT | P2-5 | MLF | PAINT-1 |  |
| P2.L4.CL.1010 |  | Framing - Hard Lid Ceilings / L4 / Corr & Lobbies | 10d | 2026-09-17 | 2026-09-30 | P2.L4.CL.1000 | -8d | 0d | 80 | GYP | P2-5 | MLF | GYP-1 |  |
| P2.L4.CL.1020 |  | T-Grid / L4 / Corr & Lobbies | 10d | 2026-09-17 | 2026-09-30 | P2.L4.CL.1000 | -8d | 0d | 80 | ACT | P2-5 | MLF | ACT |  |
| P2.L4.CL.1040 |  | R/I - Trim Sprinkler Heads- All Ceilings / L4 / Corr & Lobbies | 5d | 2026-09-28 | 2026-10-02 | P2.L4.CL.1010 FF+2d | 5d | 13d | 40 | FP | P2-5 | MLF | FP-1 |  |
| P2.L4.CL.1070 |  | Trim - Sprinkler Heads @ T-Grid / L4 / Corr & Lobbies | 5d | 2026-09-28 | 2026-10-02 | P2.L4.CL.1020 FF+2d | 43d | 33d | 40 | FP | P2-5 | MLF | FP-1 |  |
| P2.L4.CL.1030 |  | R/I - Electrical - All Ceilings / L4 / Corr & Lobbies | 15d | 2026-10-01 | 2026-10-21 | P2.L4.CL.1020, P2.L4.CL.1010 | -8d | 0d | 40 | ELEC | P2-5 | MLF | ELEC-2 |  |
| P2.L4.CL.1050 |  | R/I - HVAC- All Ceilings / L4 / Corr & Lobbies | 5d | 2026-10-01 | 2026-10-07 | P2.L4.CL.1020, P2.L4.CL.1010 | 2d | 10d | 40 | HVAC | P2-5 | MLF | HVAC | Harris |
| P2.L4.CL.1060 |  | R/I - All Remaining Low Voltage - All Ceilings / L4 / Corr & Lobbies | 5d | 2026-10-01 | 2026-10-07 | P2.L4.CL.1020, P2.L4.CL.1010 | 2d | 10d | 40 | LOWVOLT | P2-5 | MLF | LOWVOLT-1 |  |
| P2.L4.CL.1080 |  | R/I - Fire Alarm/Life Safety - All Ceilings / L4 / Corr & Lobbies | 5d | 2026-10-01 | 2026-10-07 | P2.L4.S.1170, P2.L4.CL.1020, P2.L4.CL.1010 | 2d | 10d | 40 | FA | P2-5 | MLF | FA-1 |  |
| P2.L4.CL.1090 |  | Inspections - Close In- All Ceilings / L4 / Corr & Lobbies | 5d | 2026-10-22 | 2026-10-28 | P2.L4.CL.1030, P2.L4.CL.1040, P2.L4.CL.1050, P2.L4.CL.1060, P2.L4.CL.1080 | -8d | 0d | 40 | AHJ | P2-5 | MLF | AHJ |  |
| P2.L4.CL.1100 |  | Pull Wire - Electrical / L4 / Corr & Lobbies | 10d | 2026-10-22 | 2026-11-04 | P2.L4.CL.1030 | -7d | 0d | 40 | ELEC | P2-5 | MLF | ELEC-2 |  |
| P2.L4.CL.1130 |  | Hang/Tape/Finish- Hard Lid Ceilings / L4 / Corr & Lobbies | 10d | 2026-10-29 | 2026-11-11 | P2.L4.CL.1090, P2.L4.CL.1010 | -8d | 0d | 80 | GYP | P2-5 | MLF | GYP-1 |  |
| P2.L4.CL.1110 |  | Pull Wire - Fire Alarm / L4 / Corr & Lobbies | 5d | 2026-11-05 | 2026-11-11 | P2.L4.CL.1100, P2.L4.CL.1080 | -7d | 0d | 40 | FA | P2-5 | MLF | FA-1 |  |
| P2.L4.CL.1120 |  | Pull Wire - All Remianing Low Voltage Systems / L4 / Corr & Lobbies | 5d | 2026-11-12 | 2026-11-18 | P2.L4.CL.1110, P2.L4.CL.1060 | -3d | 0d | 40 | LOWVOLT | P2-5 | MLF | LOWVOLT-1 |  |
| P2.L4.CL.1190 |  | Paint - Hard Lid Ceilings / L4 / Corr & Lobbies | 5d | 2026-11-12 | 2026-11-18 | P2.L4.CL.1130 | -8d | 0d | 40 | PAINT | P2-5 | MLF | PAINT-1 |  |
| P2.L4.CL.1140 |  | Drop Ceiling Tiles @ T-Grid / L4 / Corr & Lobbies | 5d | 2026-11-19 | 2026-11-25 | P2.L4.CL.1110, P2.L4.CL.1120, P2.L4.CL.1070, P2.L4.CL.1100 | 10d | 18d | 40 | ACT | P2-5 | MLF | ACT |  |
| P2.L4.CL.1150 |  | Ceiling Mounted - Electrical Devices and Lights / L4 / Corr & Lobbies | 20d | 2026-11-19 | 2026-12-18 | P2.L4.CL.1100, P2.L4.CL.1190 | -8d | 0d | 120 | ELEC | P2-5 | MLF | ELEC-2 |  |
| P2.L4.CL.1160 |  | Ceiling Mounted - Fire Alarm/Life Saftey Devices / L4 / Corr & Lobbies | 15d | 2026-11-19 | 2026-12-11 | P2.L4.CL.1110, P2.L4.CL.1020, P2.L4.CL.1190 | -3d | 5d | 120 | FA | P2-5 | MLF | FA-1 |  |
| P2.L4.CL.1170 |  | Ceiling Mounted - All Low Voltage Devices / L4 / Corr & Lobbies | 15d | 2026-11-19 | 2026-12-11 | P2.L4.CL.1120, P2.L4.CL.1190 | -3d | 5d | 120 | LOWVOLT | P2-5 | MLF | LOWVOLT-1 |  |
| P2.L4.CL.1180 |  | Ceiling Mounted - HVAC GRD's / L4 / Corr & Lobbies | 15d | 2026-11-19 | 2026-12-11 | P2.L4.CL.1020, P2.L4.CL.1190 | -3d | 5d | 120 | HVAC | P2-5 | MLF | HVAC | Harris |
| P2.L4.CL.1320 |  | Prep Flooring / L4 / Corr & Lobbies | 2d | 2026-12-21 | 2026-12-22 | P2.L4.CL.1150, P2.L4.CL.1160, P2.L4.CL.1170, P2.L4.CL.1180, P2.L4.CL.1140 SS+2d, P2.L3.CL.1200 | -8d | 0d | 80 | FLOOR | P2-5 | MLF | FLOOR |  |
| P2.L4.CL.1200 |  | Flooring / L4 / Corr & Lobbies | 8d | 2026-12-23 | 2027-01-05 | P2.L4.CL.1320 | -8d | 0d | 80 | FLOOR | P2-5 | MLF | FLOOR |  |
| P2.L4.CL.1210 |  | Final Paint / L4 / Corr & Lobbies | 5d | 2026-12-31 | 2027-01-07 | P2.L4.CL.1200 FF+2d, P2.L4.CL.1140, BP7.097.3.100 | -8d | 0d | 40 | PAINT | P2-5 | MLF | PAINT-1 |  |
| P2.L4.CL.1220 |  | Floor Base / L4 / Corr & Lobbies | 5d | 2027-01-08 | 2027-01-14 | P2.L4.CL.1210 | 7d | 0d | 40 | FLOOR | P2-5 | MLF | FLOOR |  |
| P2.L4.CL.1250 |  | Trim - HVAC - Wall Mounted Devices / L4 / Corr & Lobbies | 5d | 2027-01-08 | 2027-01-14 | P2.L4.CL.1210 | -8d | 0d | 40 | BAS | P2-5 | MLF | BAS-1 | Harris |
| P2.L4.CL.1230 |  | Trim - All Electrical - Wall Mounted Devices / L4 / Corr & Lobbies | 5d | 2027-01-15 | 2027-01-21 | P2.L4.CL.1210, P2.L4.CL.1250 | -8d | 0d | 40 | ELEC | P2-5 | MLF | ELEC-2 |  |
| P2.L4.CL.1330 |  | Wall Protection / L4 / Corr & Lobbies | 5d | 2027-01-15 | 2027-01-21 | BP7.102.3.300, P2.L4.CL.1220 | 7d | 15d | 40 | WALLPRO | P2-5 | MLF | WALLPRO |  |
| P2.L4.CL.1240 |  | Trim - Fire Alarm - Wall Mounted Devices / L4 / Corr & Lobbies | 5d | 2027-01-22 | 2027-01-28 | P2.L4.CL.1210, P2.L4.CL.1230 | -8d | 0d | 40 | FA | P2-5 | MLF | FA-1 |  |
| P2.L4.CL.1260 |  | Trim - All Remining Low Voltage Systems - Wall Mounted Devices / L4 / Corr & Lobbies | 5d | 2027-01-29 | 2027-02-04 | P2.L4.CL.1210, P2.L4.CL.1240 | -8d | 0d | 40 | LOWVOLT | P2-5 | MLF | LOWVOLT-1 |  |
| P2.L4.CL.1270 |  | Building Signage / L4 / Corr & Lobbies | 5d | 2027-02-05 | 2027-02-11 | P2.L4.CL.1260, P2.L4.CL.1210 | -8d | 0d | 40 | SIGN | P2-5 | MLF | SIGN |  |
| P2.L4.CL.1280 |  | Work Completion List / L4 / Corr & Lobbies | 5d | 2027-02-12 | 2027-02-18 | P2.L4.CL.1270, P2.L4.CL.1250, P2.L4.CL.1260, P2.L4.CL.1220, P2.L4.CL.1230, P2.L4.CL.1240, P2.L4.CL.1330 | -8d | 0d | 40 | T | P2-5 | MLF | T |  |
| P2.L4.CL.1290 |  | Rough Clean / L4 / Corr & Lobbies | 2d | 2027-02-19 | 2027-02-22 | P2.L4.CL.1280 | -8d | 0d | 16 | FCLEAN | P2-5 | MLF | FCLEAN |  |
| P2.L4.CL.1300 |  | Punchlist / L4 / Corr & Lobbies | 5d | 2027-02-23 | 2027-03-01 | P2.L4.CL.1290 | -8d | 0d | 40 | AHJ | P2-5 | MLF | AHJ |  |
| P2.L4.CL.1310 |  | Final Clean / L4 / Corr & Lobbies | 2d | 2027-03-02 | 2027-03-03 | P2.L4.CL.1300 | -8d | 4d | 16 | FCLEAN | P2-5 | MLF | FCLEAN |  |

| ID | WBS | Activity | Duration | Start | Finish | Predecessors | Complete | Remaining | Planned start | Planned finish | Total float | Free float | Temp Orig Dur | Act ID Temp | Resp / SRLM | PHASE | Z.RESP | RESP / Trade | Testing Type | Pick | 744 | RESP UPD | Update Status | *NIH Resp Check* |
| --- | --- | --- | --- | --- | --- | --- | --- | --- | --- | --- | --- | --- | --- | --- | --- | --- | --- | --- | --- | --- | --- | --- | --- | --- |
|  | INT | **INTERSTITIAL / LEVEL 4** |  | 2025-03-31 | 2026-07-29 |  |  |  |  |  |  |  |  |  |  |  |  |  |  |  |  |  |  |  |
|  | 1 | **South Interstitial 4-3905** |  | 2025-03-31 | 2026-07-29 |  |  |  |  |  |  |  |  |  |  |  |  |  |  |  |  |  |  |  |
|  | Z1 | **Rough In - South Interstitial 4-3905** |  | 2025-03-31 | 2026-05-21 |  |  |  |  |  |  |  |  |  |  |  |  |  |  |  |  |  |  |  |
| P2.L4.INT.S.1000 |  | Layout - All Trades / L4 / South Int | 5d | 2025-03-31 A | 2025-04-18 A | P2.4.I.03.310 | 100% |  | 2025-03-03 | 2025-03-07 |  |  | 40 | P2.B2.01.010 | R/I.OH | P2-5 | Harris | R/I.OH |  |  |  |  |  |  |
| P2.L4.INT.S.1040 |  | Fireproof Interstitial Steel / L4 / South Int | 5d | 2025-03-31 A | 2025-04-04 A | P2.L4.INT.S.1030, P2.L4.INT.S.1010, P2.L4.INT.S.1020 | 100% |  | 2025-05-21 | 2025-05-28 |  |  | 40 | P2.1.09.81.140X10 | SPRAY | P2-5 |  | SPRAY | AT49 |  |  |  |  |  |
| P2.L4.INT.S.1010 |  | Framing - Top Track / L4 / South Int | 5d | 2025-04-14 A | 2025-04-18 A | P2.L4.N.1010, P2.L4.INT.S.1000 | 100% |  | 2025-05-01 | 2025-05-07 |  |  | 80 | P2.B2.09.21.110 | GYP | P2-5 |  | GYP-1 |  |  |  |  |  |  |
| P2.L4.INT.S.1020 |  | OH - Structural Supports (All Trades) / L4 / South Int | 5d | 2025-04-14 A | 2025-04-18 A | P2.L4.INT.S.1000 | 100% |  | 2025-05-07 | 2025-05-13 |  |  | 80 | P2.B2.05.45.110 | R/I.OH | P2-5 | Harris | R/I.OH | AT24 |  |  |  |  |  |
| P2.L4.INT.S.1030 |  | OH - MEPF - Hangers & Supports / L4 / South Int | 10d | 2025-04-14 A | 2025-04-30 A | P2.L4.INT.S.1000, P2.BIM.L4.40.140 | 100% |  | 2025-05-07 | 2025-05-20 |  |  | 80 | P2.B2.20.05.410 | MEP | P2-5 | Harris | MEP-2 |  |  |  |  |  |  |
| P2.L4.INT.S.1130 |  | OH - Fire Suppression / L4 / South Int | 10d | 2025-05-07 A | 2025-05-30 A | P2.L4.INT.S.1040 | 100% |  | 2025-07-02 | 2025-07-16 |  |  | 80 | P2.B2.21.13.210 | FP | P2-5 |  | FP-1 |  | 1 |  |  |  |  |
| P2.L4.INT.S.1160 |  | OH - Electrical - 480/277v Distribution / L4 / South Int | 20d | 2025-05-19 A | 2025-06-15 A | P2.L4.INT.S.1120 FF+2d, P2.L4.INT.S.1100 FF+2d, P2.L4.INT.S.1040 | 100% |  | 2025-06-18 | 2025-07-16 |  |  | 80 | P2.B2.26.05.210 | ELEC | P2-5 |  | ELEC-2 |  | 1 | MLF | MLF |  |  |
| P2.L4.INT.S.1140 |  | OH - Hang Duct - HP Mains / L4 / South Int | 15d | 2025-05-30 A | 2025-06-30 A | P2.L4.INT.S.1040 | 100% |  | 2025-06-02 | 2025-06-20 |  |  | 80 | P2.B2.23.30.210 | HVAC | P2-5 | Harris | HVAC |  | 1 | MLF | MLF |  |  |
| P2.L4.INT.S.1050 |  | In Wall - Electrical - Framing / L4 / South Int | 10d | 2025-06-02 A | 2025-06-13 A | P2.L4.INT.S.1070 SS | 100% |  | 2025-07-01 | 2025-07-15 |  |  | 80 | P2.B2.26.05.610 | ELEC | P2-5 |  | ELEC-2 |  |  | MLF | MLF |  |  |
| P2.L4.INT.S.1060 |  | In Wall - Backing/Blocking/Supports / L4 / South Int | 10d | 2025-06-02 A | 2025-06-13 A | P2.L4.INT.S.1070 SS | 100% |  | 2025-07-01 | 2025-07-15 |  |  | 80 | P2.B2.09.21.510 | R/I.IW | P2-5 |  | R/I.IW |  |  | MLF | MLF |  |  |
| P2.L4.INT.S.1190 |  | OH - Electrical - 208/120v Branch / L4 / South Int | 10d | 2025-06-02 A | 2025-06-30 A | P2.L4.INT.S.1160 | 100% |  | 2025-08-15 | 2025-08-28 |  |  | 80 | P2.B2.26.05.310 | ELEC | P2-5 |  | ELEC-2 |  | 2 | MLF | MLF |  |  |
| P2.L4.INT.S.1070 |  | Framing - Perimeter Studs and Door Frames / L4 / South Int | 10d | 2025-06-09 A | 2025-06-20 A | P2.L4.INT.S.1040 | 100% |  | 2025-07-01 | 2025-07-15 |  |  | 80 | A1310 | GYP | P2-5 |  | GYP-1 |  |  | MLF | MLF |  |  |
| P2.L4.INT.S.1150 |  | OH - Plumbing Piping (High) / L4 / South Int | 15d | 2025-06-09 A | 2025-07-31 A | P2.L4.S.1180, P2.L4.INT.S.1120 FF+2d, P2.L4.INT.S.1100 FF+2d, P2.L4.INT.S.1040 | 100% |  | 2025-08-07 | 2025-08-27 |  |  | 80 | P2.B2.22.14.210 | PLMB | P2-5 | Harris | PLMB |  | 1 | MLF | MLF |  |  |
| P2.L4.INT.S.1180 |  | OH - HVAC Piping / L4 / South Int | 20d | 2025-06-09 A | 2025-08-15 A | P2.L4.INT.S.1130, P2.L4.INT.S.1040 | 100% |  | 2025-08-15 | 2025-09-12 |  |  | 80 | P2.B2.23.20.410 | FIT | P2-5 | Harris | FIT-2 |  | 2 | MLF | MLF |  |  |
| P2.L4.INT.S.1210 |  | OH - DALT - HP Mains / L4 / South Int | 10d | 2025-06-30 A | 2025-09-26 A | P2.L4.INT.S.1140 | 100% |  | 2025-07-22 | 2025-08-04 |  |  | 80 | P2.B2.23.30.310 | TAB | P2-5 | Harris | TAB-1 |  | 2 | MLF | TS | O |  |
| P2.L4.INT.S.1080 |  | AHJ Inspections - Wall Close In / | 5d | 2025-08-18 A | 2025-09-12 A | P2.L4.INT.S.1050 FF, P2.L4.INT.S.1060 FF, P2.L4.INT.S.1070 | 100% |  | 2025-08-01 | 2025-08-07 |  |  | 40 | P2.B2.01.43.110 | FM | P2-5 |  | FM |  |  | MLF | TS | O |  |
| P2.L4.INT.S.2090 |  | OH - Plumbing Piping (Low) / L4 / South Int | 15d | 2025-08-18 A | 2025-09-12 A | P2.L4.INT.S.1150 | 100% |  | 2025-10-17 | 2025-11-06 |  |  | 80 | P2.B2.22.14.210 | PLMB | P2-5 | Harris | PLMB |  | 1 | MLF | TS |  |  |
| FRG.P2.L4.INT.S.1770 |  | HVAC Piping - Hang Remaining Steel Racks / L4 / South Int - FRAGNET | 18d | 2025-09-02 A | 2025-09-30 A | P2.L4.INT.S.1180 | 100% |  | 2025-10-01 | 2025-10-24 |  |  | 80 | P2.B2.23.20.410 | Harris Fragnet | P2-5 | Harris | FIT-2 |  | 2 | TA | TA | O |  |
| P2.L4.INT.S.1090 |  | Hang-Tape-Finish - Walls and Hard Lid Ceilings / L4 / South Int | 10d | 2025-09-23 A | 2025-10-07 A | P2.L4.INT.S.1080 | 100% |  | 2025-10-08 | 2025-10-21 |  |  | 80 | P2.B2.09.21.710 | GYP | P2-5 |  | GYP-1 |  |  | MLF | TS |  |  |
| P2.L4.INT.S.1120 |  | Paint Prime & 1st Coat / L4 / South Int | 5d | 2025-10-08 A | 2025-10-14 A | P2.L4.INT.S.1100 SS, P2.L4.INT.S.1090 | 100% |  |  |  |  |  | 40 |  | PAINT | P2-5 |  | PAINT-1 |  |  | MLF | TS |  |  |
| P2.L4.INT.S.1220 |  | OH - Plumbing - Test / L4 / South Int | 10d | 2025-10-13 A | 2025-10-17 A | P2.L4.INT.S.2090 | 100% |  | 2025-10-17 | 2025-10-30 |  |  | 80 | P2.B2.22.14.310 | PLMB | P2-5 | Harris | PLMB |  | 2 | MLF | TS |  |  |
| P2.L4.INT.S.1175 |  | Set & Connect - Elect Panels and Equipment / L4 / South Int | 5d | 2025-10-27 A | 2025-11-14 A | P2.L4.INT.S.1100, P2.L4.INT.S.1120 | 100% |  | 2025-10-15 | 2025-10-21 |  |  | 40 |  | ELEC | P2-5 |  | ELEC-2 |  |  | MLF | TS |  |  |
| P2.L4.INT.S.1230 |  | OH - Insulate HP Duct / L4 / South Int | 10d | 2025-10-27 A | 2026-01-08 A | P2.L4.INT.S.1210 | 100% |  | 2025-10-01 | 2025-10-14 |  |  | 80 | P2.B2.23.07.310 | INSUL | P2-5 | Harris | INSUL-3 |  | 3 | MLF | TS | O |  |
| P2.L4.INT.S.1240 |  | OH - Hang Duct - LP Branch / L4 / South Int | 20d | 2025-10-27 A | 2025-12-12 A | P2.L4.INT.S.1210 | 100% |  | 2025-10-01 | 2025-10-28 |  |  | 80 | P2.B2.23.30.410 | HVAC | P2-5 | Harris | HVAC |  | 3 | MLF | TS | O |  |
| P2.L4.INT.S.1250 |  | OH - HVAC Piping - Test / L4 / South Int | 10d | 2025-10-27 A | 2025-12-05 A | P2.L4.INT.S.1180, FRG.P2.L4.INT.S.1770 | 100% |  | 2025-10-01 | 2025-10-14 |  |  | 80 | P2.B2.23.20.510 | FIT | P2-5 | Harris | FIT-2 |  | 3 | MLF | TS | O |  |
| P2.L4.INT.S.1300 |  | OH - Insulate HVAC Pipe / L4 / South Int | 10d | 2025-10-27 A | 2026-04-07 | P2.L4.INT.S.1230, P2.L4.INT.S.1250 | 50% | 5d | 2025-10-15 | 2025-10-28 | 62d | 15d | 80 | P2.B2.22.07.610 | INSUL | P2-5 | Harris | INSUL-3 |  | 4 | MLF | TS | O |  |
| P2.L4.INT.S.1260 |  | OH - Insulate Plumbing / L4 / South Int | 10d | 2025-10-31 A | 2025-12-05 A | P2.L4.INT.S.1220 | 100% |  | 2025-10-31 | 2025-11-13 |  |  | 80 | P2.B2.22.07.510 | INSUL | P2-5 | Harris | INSUL-3 |  | 3 | MLF | TS | O |  |
| P2.L4.INT.S.1100 |  | Spray/Seal/Firestop - Head of Wall / L4 / South Int | 5d | 2025-12-01 A | 2025-12-05 A | P2.L4.INT.S.1070 | 100% |  | 2026-01-02 | 2026-01-08 |  |  | 40 | P2.B2.07.84.310 | FIRSAFE | P2-5 |  | FIRSAFE | AT47 | To Finishes - Paint | MLF | TS | O |  |
| P2.L4.INT.S.1280 |  | Pull Wire - Electrical - 480/277v Distribution / L4 / South Int | 10d | 2025-12-01 A | 2025-12-12 A | P2.L4.INT.S.1200 | 100% |  | 2026-02-13 | 2026-02-26 |  |  | 80 |  | ELEC | P2-5 |  | ELEC-2 |  | To Trim Devices & Term Panel | MLF | TS |  |  |
| P2.L4.INT.S.1310 |  | OH - Insulate LP Duct / L4 / South Int | 10d | 2025-12-01 A | 2026-02-13 A | P2.L4.INT.S.1240 | 100% |  | 2025-12-30 | 2026-01-13 |  |  | 80 | P2.B2.23.07.410 | INSUL | P2-5 | Harris | INSUL-3 |  | 4 | MLF | TS | O |  |
| P2.L4.INT.S.1330 |  | OH - Conduit - Low Volt - Fire Alarm / L4 / South Int | 10d | 2025-12-01 A | 2025-12-12 A | P2.L4.INT.S.1310 | 100% |  | 2026-01-30 | 2026-02-12 |  |  | 80 |  | FA | P2-5 |  | FA-1 |  | 5 | MLF | TS | O |  |
| P2.L4.INT.S.1320 |  | OH - Conduit - Low Volt - BAS/Controls / L4 / South Int | 10d | 2025-12-15 A | 2025-12-29 A | P2.L4.INT.S.1330 | 100% |  | 2026-01-16 | 2026-01-29 |  |  | 80 |  | BAS | P2-5 | Harris | BAS-1 |  | 5 | MLF | TS | O |  |
| P2.L4.INT.S.1170 |  | Set & Connect - Mech Equipment / L4 / South Int | 20d | 2026-01-05 A | 2026-04-07 | P2.L4.INT.S.1040 | 75% | 5d | 2026-01-02 | 2026-01-29 | 62d | 15d | 80 |  | HVAC | P2-5 | Harris | HVAC |  |  | MLF | TS | O |  |
| P2.L4.INT.S.1340 |  | OH - Conduit - Low Volt - Telecom / L4 / South Int | 10d | 2026-02-16 A | 2026-02-27 A | P2.L4.INT.S.1310 | 100% |  | 2026-03-16 | 2026-03-27 |  |  | 80 |  | ELEC | P2-5 |  | ELEC-2 |  | 5 | MLF | TS | O |  |
| P2.L4.INT.S.1270 |  | Pull Wire - Electrical - 208/120v Branch & Equip / L4 / South Int | 20d | 2026-02-23 A | 2026-03-20 A | P2.L4.INT.S.1050, P2.L4.INT.S.1190 | 100% |  | 2026-03-02 | 2026-03-27 |  |  | 80 |  | ELEC | P2-5 |  | ELEC-2 |  | To Trim Devices & Term Panel | MLF | TS | O |  |
| P2.L4.INT.S.1200 |  | OH - Electrical - Equip Tie In / L4 / South Int | 10d | 2026-03-09 A | 2026-03-20 A | P2.L4.INT.S.1160, P2.L4.INT.S.1175 | 100% |  |  |  |  |  | 80 | P2.B2.26.05.410 | ELEC | P2-5 |  | ELEC-2 |  | 4 | MLF | TS | O |  |
| P2.L4.INT.S.1350 |  | OH - Conduit - Low Volt - Security / L4 / South Int | 10d | 2026-03-09 A | 2026-03-20 A | P2.L4.INT.S.1180 | 100% |  |  |  |  |  | 80 |  | ELEC | P2-5 |  | ELEC-2 |  | 5 | MLF | TS | O |  |
| P2.L4.INT.S.1360 |  | Pull Wire - Low Volt - BAS/Controls / L4 / South Int | 10d | 2026-03-09 A | 2026-03-20 A | P2.L4.INT.S.1320 | 100% |  | 2026-04-20 | 2026-05-01 |  |  | 80 |  | BAS | P2-5 | Harris | BAS-1 |  | To Trim Finishes | MLF | TS |  |  |
| P2.L4.INT.S.1110 |  | Firestop - Thru Wall / L4 / South Int | 5d | 2026-04-01 | 2026-04-07 | P2.L4.INT.S.1160, P2.L4.INT.S.1180, P2.L4.INT.S.1130, P2.L4.INT.S.1150, P2.L4.INT.S.2090, P2.L4.INT.S.1320, P2.L4.INT.S.1330, P2.L4.INT.S.1340, P2.L4.INT.S.1350, P2.L4.INT.S.1120 SS, P2.L4.INT.S.1340 FF |  |  |  |  | 77d | 30d | 40 | P2.B2.07.84.210 | FIRESTO | P2-5 |  | FIRESTO | AT48 | To Finishes - Paint | MLF | TS |  |  |
| P2.L4.INT.S.1370 |  | Pull Wire - Low Volt - Fire Alarm / L4 / South Int | 10d | 2026-04-01 | 2026-04-14 | P2.L4.INT.S.1330, P2.L4.INT.S.1090 |  |  |  |  | 72d | 25d | 80 |  | FA | P2-5 |  | FA-1 |  | To Trim Finishes | MLF | TS |  |  |
| P2.L4.INT.S.1380 |  | Pull Wire - Low Volt - Telecom / L4 / South Int | 10d | 2026-04-01 | 2026-04-14 | P2.L4.INT.S.1340, P2.L4.INT.S.1090 |  |  |  |  | 72d | 25d | 80 |  | CIT | P2-5 |  | CIT |  | To Trim Finishes | MLF | TS |  |  |
| P2.L4.INT.S.1390 |  | Pull Wire - Low Volt - Security / L4 / South Int | 10d | 2026-04-01 | 2026-04-14 | P2.L4.INT.S.1350 |  |  |  |  | 72d | 25d | 80 |  | LOWVOLT | P2-5 |  | LOWVOLT-1 |  | To Trim Finishes | MLF | TS | O |  |
| P2.L4.INT.S.1290 |  | OH - HVAC Piping - Equip Tie In / L4 / South Int | 15d | 2026-04-29 | 2026-05-19 | P2.L4.INT.S.1170, P2.L4.INT.S.1250, CX.B2.HYDR.1000, P2.L4.INT.S.1300 |  |  |  |  | 47d | 0d | 80 | P2.B2.23.20.610 | FIT | P2-5 | Harris | FIT-2 |  |  | MLF | TS |  |  |
| P2.L4.INT.S.1400 |  | Trades Inspect & Verify R/I Work Completed to Specs / L4 / South Int | 2d | 2026-05-20 | 2026-05-21 | P2.L4.INT.S.1110, P2.L4.INT.S.1360, P2.L4.INT.S.1370, P2.L4.INT.S.1380, P2.L4.INT.S.1390, P2.L4.INT.S.1280, P2.L4.INT.S.1260, P2.L4.INT.S.1270, P2.L4.INT.S.1290 |  |  |  |  | 47d | 0d | 16 |  | T | P2-5 |  | T |  | To Finishes | MLF | TS |  | ! |

Notes:
- P2.L4.INT.S.1130: NOTES: Removed tie to OOS logic. to FP head of wall and paint 1st coat
- P2.L4.INT.S.1180: NOTES: Removed tie to OH- fire suppression due to OOS pushing HVAC piping
- FRG.P2.L4.INT.S.1770: NOTES: Per Harris Schedule 9/25

| ID | WBS | Activity | Duration | Start | Finish | Predecessors | Complete | Remaining | Planned start | Planned finish | Total float | Free float | Temp Orig Dur | Resp / SRLM | 744 | PHASE | RESP UPD | RESP / Trade | *NIH Resp Check* | Testing Type | Z.RESP | Pick | Act ID Temp | Update Status | NOTES |
| --- | --- | --- | --- | --- | --- | --- | --- | --- | --- | --- | --- | --- | --- | --- | --- | --- | --- | --- | --- | --- | --- | --- | --- | --- | --- |
|  | 2 | **Finishes - South Interstitial 4-3905 (8,384 sf) / Level 4** |  | 2026-05-22 | 2026-07-29 |  |  |  |  |  |  |  |  |  |  |  |  |  |  |  |  |  |  |  |  |
| P2.L4.INT.S.2100 |  | Flooring Prep - Epoxy Floors / L4 / South Int | 5d | 2026-05-22 | 2026-05-29 | P2.L4.INT.S.1400 |  |  |  |  | 115d | 0d | 80 | EPOXYF | MLF | P2-5 | TS | EPOXYF |  |  |  |  |  |  |  |
| P2.L4.INT.S.2000 |  | Flooring - Epoxy Floors / L4 / South Int | 2d | 2026-06-01 | 2026-06-02 | P2.L4.INT.S.2100 |  |  |  |  | 115d | 0d | 80 | EPOXYF | MLF | P2-5 | TS | EPOXYF |  |  |  |  |  |  |  |
| P2.L4.INT.S.2010 |  | Paint - Finish Coat / L4 / South Int | 5d | 2026-06-03 | 2026-06-09 | P2.L4.INT.S.2000 |  |  |  |  | 115d | 0d | 40 | PAINT | MLF | P2-5 | TS | PAINT-1 | ! |  |  |  |  |  |  |
| P2.L4.INT.S.2020 |  | Doors & Hardware / L4 / South Int | 5d | 2026-06-10 | 2026-06-16 | P2.L4.INT.S.2010 |  |  |  |  | 115d | 0d | 40 | DFH | MLF | P2-5 | TS | DFH |  | AT29 |  |  |  |  |  |
| P2.L4.INT.S.2040 |  | Building Signage / L4 / South Int | 5d | 2026-06-10 | 2026-06-16 | P2.L4.INT.S.2010 |  |  |  |  | 147d | 5d | 40 | SIGN | MLF | P2-5 | TS | SIGN |  |  |  |  |  |  |  |
| P2.L4.INT.S.2030 |  | Trim All MEP Finishes / L4 / South Int | 5d | 2026-06-17 | 2026-06-23 | P2.L4.INT.S.2020, P2.L4.INT.S.2010 |  |  |  |  | 142d | 0d | 40 | MEP | MLF | P2-5 | TS | MEP-2 |  |  | Harris |  |  |  |  |
| P2.L4.INT.S.2050 |  | Rough Clean / L4 / South Int | 5d | 2026-06-24 | 2026-06-30 | P2.L4.INT.S.2030, P2.L4.INT.S.2040 |  |  |  |  | 142d | 0d | 40 | FCLEAN | MLF | P2-5 | TS | FCLEAN |  |  |  |  |  |  |  |
| P2.L4.INT.S.2060 |  | Prepare Punchlist / L4 / South Int | 5d | 2026-07-01 | 2026-07-08 | P2.L4.INT.S.1400, P2.L4.INT.S.2050 |  |  |  |  | 142d | 0d | 40 | QC | MLF | P2-5 | TS | QC |  |  |  |  |  |  |  |
| P2.L4.INT.S.2070 |  | Correct Punchlist / L4 / South Int | 10d | 2026-07-09 | 2026-07-22 | P2.L4.INT.S.2060 FF, P2.L4.INT.S.2060 |  |  |  |  | 142d | 0d | 80 | FINISH |  | P2-5 | TS | FINISH |  |  |  |  |  |  |  |
| P2.L4.INT.S.2080 |  | Final Clean / L4 / South Int | 5d | 2026-07-23 | 2026-07-29 | P2.L4.INT.S.2070 FF, P2.L4.INT.S.2070 |  |  |  |  | 142d | 154d | 40 | FCLEAN |  | P2-5 | TS | FCLEAN |  |  |  | To QC |  |  |  |
|  | 2 | **North Interstitial 4-2835** |  | 2025-04-07 | 2026-07-27 |  |  |  |  |  |  |  |  |  |  |  |  |  |  |  |  |  |  |  |  |
|  | Z11 | **Rough In - North Interstitial 4-2835** |  | 2025-04-07 | 2026-05-14 |  |  |  |  |  |  |  |  |  |  |  |  |  |  |  |  |  |  |  |  |
| P2.L4.INT.N.1040 |  | Fireproof Interstitial Steel / L4 / North Int | 5d | 2025-04-07 A | 2025-04-11 A | P2.L4.INT.N.1020, P2.L4.INT.N.1030, P2.L4.INT.N.1010 | 100% |  | 2025-05-22 | 2025-05-29 |  |  | 40 | SPRAY |  | P2-5 |  | SPRAY |  | AT49 |  |  | P2.1.09.81.140X10 |  |  |
| P2.L4.INT.N.1000 |  | Layout - All Trades / L4 / North Int | 5d | 2025-04-21 A | 2025-04-28 A | P2.4.I.03.320 | 100% |  | 2025-05-01 | 2025-05-07 |  |  | 40 | R/I.OH |  | P2-5 |  | R/I.OH |  |  | Harris |  | P2.B2.01.010 |  |  |
| P2.L4.INT.N.1010 |  | Framing - Top Track / L4 / North Int | 5d | 2025-04-21 A | 2025-04-26 A | P2.L4.INT.S.1010, P2.L4.INT.N.1000 | 100% |  | 2025-05-08 | 2025-05-14 |  |  | 80 | GYP |  | P2-5 |  | GYP-1 |  |  |  |  | P2.B2.09.21.110 |  |  |
| P2.L4.INT.N.1020 |  | OH - Structural Supports (All Trades) / L4 / North Int | 5d | 2025-04-21 A | 2025-04-30 A | P2.L4.INT.N.1000 | 100% |  | 2025-05-08 | 2025-05-14 |  |  | 80 | R/I.OH |  | P2-5 |  | R/I.OH |  | AT24 | Harris |  | P2.B2.05.45.110 |  |  |
| P2.L4.INT.N.1030 |  | OH - MEPF - Hangers & Supports / L4 / North Int | 10d | 2025-04-21 A | 2025-04-30 A | P2.L4.INT.N.1000 | 100% |  | 2025-05-08 | 2025-05-21 |  |  | 80 | MEP |  | P2-5 |  | MEP-2 |  |  | Harris |  | P2.B2.20.05.410 |  |  |
| P2.L4.INT.N.1130 |  | OH - Fire Suppression / L4 / North Int | 10d | 2025-04-23 A | 2025-05-05 A | P2.L4.INT.N.1040 | 100% |  | 2025-05-15 | 2025-05-29 |  |  | 80 | FP |  | P2-5 |  | FP-1 |  |  |  | 1 | P2.B2.21.13.210 |  |  |
| P2.L4.INT.N.1050 |  | In Wall - Electrical - Framing / L4 / North Int | 10d | 2025-06-02 A | 2025-06-13 A | P2.L4.INT.N.1070 SS | 100% |  | 2025-07-01 | 2025-07-15 |  |  | 80 | ELEC | MLF | P2-5 | MLF | ELEC-2 |  |  |  |  | P2.B2.26.05.610 |  |  |
| P2.L4.INT.N.1060 |  | In Wall - Backing/Blocking/Supports / L4 / North Int | 10d | 2025-06-02 A | 2025-06-13 A | P2.L4.INT.N.1070 SS | 100% |  | 2025-07-01 | 2025-07-15 |  |  | 80 | R/I.IW | MLF | P2-5 | MLF | R/I.IW |  |  |  |  | P2.B2.09.21.510 |  |  |
| P2.L4.INT.N.1180 |  | OH - HVAC Piping (Chilled Water) West / L4 / North Int | 20d | 2025-06-02 A | 2025-06-27 A | P2.L4.INT.N.1130, P2.L4.INT.N.1040 | 100% |  | 2025-07-01 | 2025-07-29 |  |  | 80 | FIT | MLF | P2-5 | MLF | FIT-2 |  |  | Harris | 2 | P2.B2.23.20.410 |  |  |
| P2.L4.INT.N.1070 |  | Framing - Perimeter Studs and Door Frames / L4 / North Int | 10d | 2025-06-16 A | 2025-06-30 A | P2.L4.INT.N.1040 | 100% |  | 2025-07-01 | 2025-07-15 |  |  | 80 | GYP | MLF | P2-5 | MLF | GYP-1 |  |  |  |  | A1310 |  |  |
| P2.L4.INT.N.1140 |  | OH - Hang Duct - HP Mains (Supply) / L4 / North Int | 20d | 2025-06-18 A | 2025-07-22 A | P2.L4.INT.S.1140, P2.L4.INT.N.1040 | 100% |  | 2025-07-22 | 2025-08-18 |  |  | 80 | HVAC | MLF | P2-5 | MLF | HVAC |  |  | Harris | 1 | P2.B2.23.30.210 |  |  |
| P2.L4.INT.N.1280 |  | Pull Wire - Electrical - 480/277v Distribution / L4 / North Int | 10d | 2025-06-20 A | 2025-07-25 A | P2.L4.INT.N.1200 | 100% |  | 2025-09-25 | 2025-10-08 |  |  | 80 | ELEC | MLF | P2-5 | MLF | ELEC-2 |  |  |  | To Trim Devices & Term Panel |  |  |  |
| P2.L4.INT.N.2130 |  | OH - HVAC Piping (Chilled Water) East / L4 / North Int | 20d | 2025-06-20 A | 2025-07-25 A | P2.L4.INT.N.2120 | 100% |  | 2025-08-27 | 2025-09-24 |  |  | 80 | FIT | MLF | P2-5 | MLF | FIT-2 |  |  | Harris | 2 | P2.B2.23.20.410 |  |  |
| P2.L4.INT.N.1160 |  | OH - Electrical - 480/277v Distribution / L4 / North Int | 20d | 2025-06-23 A | 2025-07-25 A | P2.L4.INT.N.1100, P2.L4.INT.N.1040, P2.L4.INT.N.1120 | 100% |  | 2025-08-13 | 2025-09-10 |  |  | 80 | ELEC | MLF | P2-5 | MLF | ELEC-2 |  |  |  | 1 | P2.B2.26.05.210 |  |  |
| P2.L4.INT.N.2120 |  | OH - HVAC Piping (Reheat) West / L4 / North Int | 20d | 2025-06-30 A | 2025-07-28 A | P2.L4.INT.N.1180 | 100% |  | 2025-07-30 | 2025-08-26 |  |  | 80 | FIT | MLF | P2-5 | MLF | FIT-2 |  |  | Harris | 2 | P2.B2.23.20.410 |  |  |
| P2.L4.INT.N.2100 |  | OH - Hang Duct - HP Mains (Return) / L4 / North Int | 20d | 2025-07-23 A | 2025-09-08 A | P2.L4.INT.N.1140 | 100% |  | 2025-08-22 | 2025-09-19 |  |  | 80 | HVAC | MLF | P2-5 | TS | HVAC |  |  | Harris | 1 | P2.B2.23.30.210 | O |  |
| P2.L4.INT.N.1150 |  | OH - Plumbing Piping (High) / L4 / North Int | 20d | 2025-07-30 A | 2025-08-30 A | P2.L4.N.1180, P2.L4.INT.N.1100, P2.L4.INT.N.1040, P2.L4.INT.N.1120 | 100% |  | 2025-08-29 | 2025-09-26 |  |  | 80 | PLMB | MLF | P2-5 | MLF | PLMB |  |  | Harris | 1 | P2.B2.22.14.210 |  |  |
| P2.L4.INT.N.2140 |  | OH - HVAC Piping (Reheat) / L4 / North Int | 20d | 2025-08-01 A | 2025-08-28 A | P2.L4.INT.N.2130 | 100% |  |  |  |  |  | 80 | FIT | MLF | P2-5 | MLF | FIT-2 |  |  | Harris | 2 | P2.B2.23.20.410 |  |  |
| P2.L4.INT.N.2090 |  | OH - Plumbing Piping (Low) / L4 / North Int | 20d | 2025-08-11 A | 2025-09-24 A | P2.L4.INT.N.1150 | 100% |  | 2025-10-23 | 2025-11-19 |  |  | 80 | PLMB | MLF | P2-5 | TS | PLMB |  |  | Harris | 1 | P2.B2.22.14.210 | O |  |
| P2.L4.INT.N.1080 |  | AHJ Inspections - Wall Close In / L4 / North Int | 5d | 2025-08-18 A | 2025-09-13 A | P2.L4.INT.N.1050 FF, P2.L4.INT.N.1060 FF, P2.L4.INT.N.1070 | 100% |  | 2025-08-01 | 2025-08-07 |  |  | 40 | FM | MLF | P2-5 | TS | FM |  |  |  |  | P2.B2.01.43.110 | O |  |
| P2.L4.INT.N.1190 |  | OH - Electrical - 208/120v Branch / L4 / North Int | 10d | 2025-08-29 A | 2025-09-08 A | P2.L4.INT.N.1160 | 100% |  | 2025-08-29 | 2025-09-12 |  |  | 80 | ELEC | MLF | P2-5 | TS | ELEC-2 |  |  |  | 2 | P2.B2.26.05.310 | O |  |
| FRG.P2.L4.INT.N.1760 |  | HVAC Piping - Hang Remaining Steel Racks / L4 / North Int - FRAGNET | 18d | 2025-09-02 A | 2025-09-30 A | P2.L4.INT.N.2140 | 100% |  | 2025-10-01 | 2025-10-24 |  |  | 80 | Harris Fragnet | TA | P2-5 | TA | FIT-2 |  |  | Harris | 2 | P2.B2.23.20.410 | O | Per Harris Schedule 9/25 |
| P2.L4.INT.N.1210 |  | OH - DALT - HP Mains / L4 / North Int | 10d | 2025-09-15 A | 2025-09-26 A | P2.L4.INT.N.2100 | 100% |  | 2025-10-01 | 2025-10-14 |  |  | 80 | TAB | MLF | P2-5 | TS | TAB-1 |  |  | Harris | 2 | P2.B2.23.30.310 | O |  |
| P2.L4.INT.N.1090 |  | Hang-Tape-Finish / L4 / North Int | 10d | 2025-09-23 A | 2025-10-07 A | P2.L4.INT.N.1080 | 100% |  | 2025-10-02 | 2025-10-15 |  |  | 80 | GYP | MLF | P2-5 | TS | GYP-1 |  |  |  |  | P2.B2.09.21.710 |  |  |
| P2.L4.INT.N.1240 |  | OH - Hang Duct - LP Branch (Supply) / L4 / North Int | 20d | 2025-09-30 A | 2026-02-06 A | P2.L4.INT.N.1210 | 100% |  | 2025-10-15 | 2025-11-11 |  |  | 80 | HVAC | MLF | P2-5 | TS | HVAC |  |  | Harris | 3 | P2.B2.23.30.410 | O |  |
| P2.L4.INT.N.2110 |  | OH - Hang Duct - LP Branch (Return) / L4 / North Int | 20d | 2025-09-30 A | 2026-02-06 A | P2.L4.INT.N.1210 | 100% |  | 2025-10-22 | 2025-11-18 |  |  | 80 | HVAC | MLF | P2-5 | TS | HVAC |  |  | Harris | 3 | P2.B2.23.30.410 | O |  |
| P2.L4.INT.N.1120 |  | Paint Prime & 1st Coat / L4 / North Int | 5d | 2025-10-08 A | 2025-10-14 A | P2.L4.INT.N.1100 SS | 100% |  |  |  |  |  | 40 | PAINT | MLF | P2-5 | TS | PAINT-1 |  |  |  |  |  |  |  |
| P2.L4.INT.N.1220 |  | OH - Plumbing - Test / L4 / North Int | 10d | 2025-10-13 A | 2025-10-17 A | P2.L4.INT.N.2090 | 100% |  | 2025-10-15 | 2025-10-28 |  |  | 80 | PLMB | MLF | P2-5 | TS | PLMB |  |  | Harris | 2 | P2.B2.22.14.310 |  |  |
| P2.L4.INT.N.1100 |  | Spray/Seal/Firestop - Head of Wall / L4 / North Int | 5d | 2025-11-03 A | 2025-11-07 A | P2.L4.INT.N.1090 | 100% |  | 2025-12-01 | 2025-12-05 |  |  | 40 | FIRSAFE | MLF | P2-5 | TS | FIRSAFE |  | AT47 |  | To Finishes - Paint | P2.B2.07.84.310 |  |  |
| P2.L4.INT.N.1175 |  | Set & Connect - Elect Panels and Equipment / L4 / North Int | 5d | 2025-12-01 A | 2025-12-05 A | P2.L4.INT.N.1100, P2.L4.INT.N.1120 | 100% |  | 2026-01-02 | 2026-01-08 |  |  | 40 | ELEC | MLF | P2-5 | TS | ELEC-2 |  |  |  |  |  | O |  |
| P2.L4.INT.N.1250 |  | OH - HVAC Piping - Test / L4 / North Int | 10d | 2025-12-01 A | 2025-12-12 A | P2.L4.INT.N.2140, FRG.P2.L4.INT.N.1760, P2.L4.INT.N.1100 | 100% |  | 2026-01-02 | 2026-01-15 |  |  | 80 | FIT | MLF | P2-5 | TS | FIT-2 |  |  | Harris | 3 | P2.B2.23.20.510 | O |  |
| P2.L4.INT.N.1260 |  | OH - Insulate Plumbing / L4 / North Int | 10d | 2025-12-01 A | 2026-01-08 A | P2.L4.INT.N.1220 | 100% |  | 2026-01-02 | 2026-01-15 |  |  | 80 | INSUL | MLF | P2-5 | TS | INSUL-3 |  |  | Harris | 3 | P2.B2.22.07.510 | O |  |
| P2.L4.INT.N.1330 |  | OH - Conduit - Low Volt - Fire Alarm / L4 / North Int | 10d | 2025-12-01 A | 2025-12-12 A | P2.L4.INT.N.1240 | 100% |  | 2026-01-30 | 2026-02-12 |  |  | 80 | FA |  | P2-5 | TS | FA-1 |  |  |  | 5 |  | O |  |
| P2.L4.INT.N.1320 |  | OH - Conduit - Low Volt - BAS/Controls / L4 / North Int | 10d | 2025-12-30 A | 2026-03-13 A | P2.L4.INT.N.1260 | 100% |  | 2026-01-30 | 2026-02-12 |  |  | 80 | BAS |  | P2-5 | TS | BAS-1 |  |  | Harris | 5 |  | O |  |
| P2.L4.INT.N.1230 |  | OH - Insulate HP Duct / L4 / North Int | 10d | 2026-01-02 A | 2026-02-13 A | P2.L4.INT.N.1210 | 100% |  | 2026-01-02 | 2026-01-15 |  |  | 80 | INSUL | MLF | P2-5 | TS | INSUL-3 |  |  | Harris | 3 | P2.B2.23.07.310 | O |  |
| P2.L4.INT.N.1170 |  | Set & Connect - Mech Equipment / L4 / North Int | 20d | 2026-02-09 A | 2026-03-30 A | P2.L4.INT.N.1040, P2.L4.INT.N.1240 | 100% |  | 2026-03-09 | 2026-04-03 |  |  | 80 | HVAC | MLF | P2-5 | TS | HVAC |  |  | Harris |  |  | O |  |
| P2.L4.INT.N.1200 |  | OH - Electrical - Equip Tie In / L4 / North Int | 10d | 2026-03-09 A | 2026-03-20 A | P2.L4.INT.N.1160, P2.L4.INT.N.1170, P2.L4.INT.N.1175 | 100% |  |  |  |  |  | 80 | ELEC | MLF | P2-5 | TS | ELEC-2 |  |  |  | 4 | P2.B2.26.05.410 |  |  |
| P2.L4.INT.N.1340 |  | OH - Conduit - Low Volt - Telecom / L4 / North Int | 10d | 2026-03-16 A | 2026-03-27 A | P2.L4.INT.N.1175 | 100% |  |  |  |  |  | 80 | ELEC |  | P2-5 | TS | ELEC-2 |  |  |  | 5 |  | O |  |
| P2.L4.INT.N.1350 |  | OH - Conduit - Low Volt - Security / L4 / North Int | 10d | 2026-03-16 A | 2026-03-27 A | P2.L4.INT.N.1175 | 100% |  |  |  |  |  | 80 | ELEC |  | P2-5 | TS | ELEC-2 |  |  |  | 5 |  | O |  |
| P2.L4.INT.N.1270 |  | Pull Wire - Electrical - 208/120v Branch & Equip / L4 / North Int | 20d | 2026-03-23 A | 2026-04-17 | P2.L4.INT.N.1190, P2.L4.INT.N.1200, P2.L4.INT.N.1050 | 35% | 13d |  |  | 132d | 17d | 80 | ELEC | MLF | P2-5 | TS | ELEC-2 |  |  |  | To Trim Devices & Term Panel |  |  |  |
| P2.L4.INT.N.1360 |  | Pull Wire - Low Volt - BAS/Controls / L4 / North Int | 10d | 2026-03-31 A | 2026-04-13 | P2.L4.INT.N.1320 | 10% | 9d | 2026-05-13 | 2026-05-27 | 15d | 11d | 80 | BAS |  | P2-5 | TS | BAS-1 |  |  | Harris | To Trim Finishes |  |  |  |
| P2.L4.INT.N.1110 |  | Firestop - Thru Wall / L4 / North Int | 5d | 2026-04-01 | 2026-04-07 | P2.L4.INT.N.1120 SS |  |  |  |  | 140d | 25d | 40 | FIRESTO | MLF | P2-5 | TS | FIRESTO |  | AT48 |  | To Finishes - Paint | P2.B2.07.84.210 | O |  |
| P2.L4.INT.N.1300 |  | OH - Insulate HVAC Pipe / L4 / North Int | 10d | 2026-04-01 | 2026-04-14 | P2.L4.INT.N.1250, P2.L4.INT.N.1230 |  |  |  |  | 125d | 10d | 80 | INSUL | MLF | P2-5 | TS | INSUL-3 |  |  | Harris | 4 | P2.B2.22.07.610 | O |  |
| P2.L4.INT.N.1310 |  | OH - Insulate LP Duct / L4 / North Int | 10d | 2026-04-01 | 2026-04-14 | P2.L4.INT.N.2110, P2.L4.INT.N.1230 |  |  |  |  | 125d | 10d | 80 | INSUL |  | P2-5 | TS | INSUL-3 |  |  | Harris | 4 | P2.B2.23.07.410 | O |  |
| P2.L4.INT.N.1370 |  | Pull Wire - Low Volt - Fire Alarm / L4 / North Int | 10d | 2026-04-01 | 2026-04-14 | P2.L4.INT.N.1090, P2.L4.INT.N.1330 |  |  |  |  | 135d | 20d | 80 | FA |  | P2-5 | TS | FA-1 |  |  |  | To Trim Finishes |  |  |  |
| P2.L4.INT.N.1380 |  | Pull Wire - Low Volt - Telecom / L4 / North Int | 10d | 2026-04-01 | 2026-04-14 | P2.L4.INT.N.1090, P2.L4.INT.N.1340 |  |  |  |  | 135d | 20d | 80 | CIT |  | P2-5 | TS | CIT |  |  |  | To Trim Finishes |  |  |  |
| P2.L4.INT.N.1390 |  | Pull Wire - Low Volt - Security / L4 / North Int | 10d | 2026-04-01 | 2026-04-14 | P2.L4.INT.N.1350 |  |  |  |  | 135d | 20d | 80 | LOWVOLT |  | P2-5 | TS | LOWVOLT-1 |  |  |  | To Trim Finishes |  |  |  |
| P2.L4.INT.N.1290 |  | OH - HVAC Piping - Equip Tie In / L4 / North Int | 10d | 2026-04-29 | 2026-05-12 | P2.L4.INT.N.1170, P2.L4.INT.N.1250 FF+3d, CX.B2.HYDR.1000, P2.L4.INT.N.1300, P2.L4.INT.N.1310 |  |  |  |  | 115d | 0d | 80 | FIT | MLF | P2-5 | TS | FIT-2 |  |  | Harris |  | P2.B2.23.20.610 |  |  |
| P2.L4.INT.N.1400 |  | Trades Inspect & Verify R/I Work Completed to Specs / L4 / North Int | 2d | 2026-05-13 | 2026-05-14 | P2.L4.INT.N.1260, P2.L4.INT.N.1110, P2.L4.INT.N.1390, P2.L4.INT.N.1280, P2.L4.INT.N.1270, P2.L4.INT.N.1360, P2.L4.INT.N.1370, P2.L4.INT.N.1380, P2.L4.INT.N.1290 |  |  |  |  | 115d | 0d | 16 | T |  | P2-5 | TS | T | ! |  |  | To Finishes |  |  |  |

| ID | WBS | Activity | Type | Duration | Start | Finish | Predecessors | Complete | Planned start | Planned finish | Total float | Free float | Temp Orig Dur | Resp / SRLM | 744 | PHASE | RESP UPD | RESP / Trade | *NIH Resp Check* | Testing Type | Z.RESP | Pick | Act ID Temp | Update Status | NOTES |
| --- | --- | --- | --- | --- | --- | --- | --- | --- | --- | --- | --- | --- | --- | --- | --- | --- | --- | --- | --- | --- | --- | --- | --- | --- | --- |
|  | 1 | **Finishes - North Interstitial 4-2835 (21,357 sf) / Level 4** |  |  | 2026-05-15 | 2026-07-27 |  |  |  |  |  |  |  |  |  |  |  |  |  |  |  |  |  |  |  |
| P2.L4.INT.N.2000 |  | Flooring Prep - Epoxy Floors / L4 / North Int |  | 7d | 2026-05-15 | 2026-05-26 | P2.L4.INT.N.1400 |  |  |  | 117d | 0d | 80 | EPOXYF | MLF | P2-5 | TS | EPOXYF |  |  |  |  |  |  |  |
| P2.L4.INT.N.2150 |  | Flooring - Epoxy Floors / L4 / North Int |  | 3d | 2026-05-27 | 2026-05-29 | P2.L4.INT.N.2000 |  |  |  | 117d | 0d | 80 | EPOXYF | MLF | P2-5 | TS | EPOXYF |  |  |  |  |  |  |  |
| P2.L4.INT.N.2010 |  | Paint - Finish Coat / L4 / North Int |  | 5d | 2026-06-01 | 2026-06-05 | P2.L4.INT.N.1400, P2.L4.INT.N.2150 |  |  |  | 117d | 0d | 40 | PAINT |  | P2-5 | TS | PAINT-1 | ! |  |  |  |  |  |  |
| P2.L4.INT.N.2020 |  | Doors & Hardware / L4 / North Int |  | 5d | 2026-06-08 | 2026-06-12 | P2.L4.INT.N.2010 |  |  |  | 117d | 0d | 40 | DFH |  | P2-5 | TS | DFH |  | AT29 |  |  |  |  |  |
| P2.L4.INT.N.2040 |  | Building Signage / L4 / North Int |  | 5d | 2026-06-08 | 2026-06-12 | P2.L4.INT.N.2010 |  |  |  | 149d | 5d | 40 | SIGN |  | P2-5 | TS | SIGN |  |  |  |  |  |  |  |
| P2.L4.INT.N.2030 |  | Trim All MEP Finishes / L4 / North Int |  | 5d | 2026-06-15 | 2026-06-19 | P2.L4.INT.N.2020, P2.L4.INT.N.2010 |  |  |  | 144d | 0d | 40 | MEP |  | P2-5 | TS | MEP-2 |  |  | Harris |  |  |  |  |
| P2.L4.INT.N.2050 |  | Rough Clean / L4 / North Int |  | 5d | 2026-06-22 | 2026-06-26 | P2.L4.INT.N.2040, P2.L4.INT.N.2030 |  |  |  | 144d | 0d | 40 | FCLEAN |  | P2-5 | TS | FCLEAN |  |  |  |  |  |  |  |
| P2.L4.INT.N.2060 |  | Prepare Punchlist / L4 / North Int |  | 5d | 2026-06-29 | 2026-07-06 | P2.L4.INT.N.2050 |  |  |  | 144d | 0d | 40 | QC |  | P2-5 | TS | QC |  |  |  |  |  |  |  |
| P2.L4.INT.N.2070 |  | Correct Punchlist / L4 / North Int |  | 10d | 2026-07-07 | 2026-07-20 | P2.L4.INT.N.2060 FF, P2.L4.INT.N.2060 |  |  |  | 144d | 0d | 80 | FINISH |  | P2-5 | TS | FINISH |  |  |  |  |  |  |  |
| P2.L4.INT.N.2080 |  | Final Clean / L4 / North Int |  | 5d | 2026-07-21 | 2026-07-27 | P2.L4.INT.N.2070 FF, P2.L4.INT.N.2070 |  |  |  | 144d | 156d | 40 | FCLEAN |  | P2-5 | TS | FCLEAN |  |  |  | To QC |  |  |  |
|  | 1 | **MECHANICAL TOWERS / LEVEL 4** |  |  | 2025-03-18 | 2026-06-03 |  |  |  |  |  |  |  |  |  |  |  |  |  |  |  |  |  |  |  |
|  | 4 | **South Mechanical Tower / Rough In & Finish / Level 4** |  |  | 2025-06-16 | 2026-05-26 |  |  |  |  |  |  |  |  |  |  |  |  |  |  |  |  |  |  |  |
| P2.L4.SMT.1070 |  | Set & Connect - Mech Equipment / L4 - S. Mech Tower |  | 10d | 2025-06-16 A | 2025-06-27 A | P2.4.03.610, P2.L3.SMT.1070 | 100% | 2025-07-16 | 2025-07-29 |  |  | 80 | HVAC | MLF | P2-5 | MLF | HVAC |  |  | Harris |  |  |  |  |
| P2.L4.SMT.1000 |  | Insulation - Exterior Wall Assembly / L4 - S. Mech Tower |  | 5d | 2025-07-02 A | 2025-07-09 A | P2.FAC.2.Z1.150 | 100% | 2025-08-01 | 2025-08-07 |  |  | 40 | INSUL | MLF | P2-5 | MLF | INSUL-1 |  |  |  |  |  |  |  |
| P2.L4.SMT.1020 |  | In Wall - Electrical - CMU / L4 - S. Mech Tower |  | 10d | 2025-07-10 A | 2025-07-23 A | P2.L4.SMT.1010 SS | 100% | 2025-08-08 | 2025-08-21 |  |  | 80 | ELEC | MLF | P2-5 | MLF | ELEC-2 |  |  |  |  | P2.B2.26.05.510 |  |  |
| P2.L4.SMT.1030 |  | In Wall - Mech/Plumbing - CMU / L4 - S. Mech Tower |  | 10d | 2025-07-10 A | 2025-07-23 A | P2.L4.SMT.1010 SS | 100% | 2025-08-08 | 2025-08-21 |  |  | 80 | PLMB | MLF | P2-5 | MLF | PLMB |  |  | Harris |  | P2.B2.22.05.310 |  |  |
| P2.L4.SMT.1105 |  | HVAC Duct Connections to Shaft Riser / L4 - S. Mech Tower |  | 20d | 2025-08-04 A | 2025-08-28 A | P2.L4.SMT.1070 | 100% | 2025-12-22 | 2026-01-20 |  |  | 40 | HVAC | MLF | P2-5 | TS | HVAC | ! |  | Harris |  |  | O |  |
| P2.L4.SMT.1130 |  | Test/Inspect Duct & Piping / L4 - S. Mech Tower |  | 5d | 2025-08-29 A | 2025-09-29 A | P2.L4.SMT.1260, P2.L4.SMT.1105 | 100% | 2026-01-28 | 2026-02-03 |  |  | 40 | MECH | MLF | P2-5 | TS | MECH-2 | ! |  | Harris |  |  |  |  |
| P2.L4.SMT.1010 |  | CMU - Lay Block / L4 - S. Mech Tower |  | 10d | 2025-09-01 A | 2025-09-04 A | BP4.040.3.100, P2.L4.SMT.1000 | 100% | 2025-10-01 | 2025-10-14 |  |  | 80 | CMU | MLF | P2-5 | TS | CMU |  | AT3 |  |  | P2.B2.04.20.210 | O |  |
| P2.L4.SMT.1050 |  | CMU - Point & Patch / L4 - S. Mech Tower |  | 10d | 2025-09-04 A | 2025-09-08 A | P2.L4.SMT.1030, P2.L4.SMT.1020, P2.L4.SMT.1040 | 100% | 2025-10-29 | 2025-11-11 |  |  | 80 | CMU | MLF | P2-5 | TS | CMU |  |  |  |  | P2.B2.04.20.310 | O |  |
| P2.L4.SMT.1040 |  | Paint - CMU Block Fill / L4 - S. Mech Tower |  | 10d | 2025-09-08 A | 2025-09-12 A | P2.L4.SMT.1010 | 100% | 2025-10-15 | 2025-10-28 |  |  | 80 | PAINT | MLF | P2-5 | TS | PAINT-1 |  |  |  |  | P2.B2.09.97.110 | O |  |
| P2.L4.SMT.1060 |  | Paint Prime & 1st Coat - CMU / L4 - S. Mech Tower |  | 10d | 2025-09-08 A | 2025-09-12 A | P2.L4.SMT.1050 SS | 100% | 2025-10-29 | 2025-11-11 |  |  | 80 | PAINT | MLF | P2-5 | TS | PAINT-1 |  |  |  |  | P2.B2.09.97.210 | O |  |
| P2.L4.SMT.1100 |  | HVAC Piping Connections to Shaft Riser (Chilled Water) / L4 - S. Mech Tower |  | 20d | 2025-09-15 A | 2025-09-26 A | P2.L4.SMT.1070 | 100% | 2025-12-18 | 2026-01-16 |  |  | 40 | HVAC | MLF | P2-5 | TS | HVAC | ! |  | Harris |  |  | O |  |
| FRG.P2.L4.SMT.1030 |  | AHU Piping Install / L4 - S. Mech Tower - FRAGNET |  | 18d | 2025-09-18 A | 2025-11-12 A | P2.L4.SMT.1030, P2.L4.SMT.1010 | 100% | 2025-10-15 | 2025-11-07 |  |  | 80 | Harris Fragnet | TA | P2-5 | TS | FIT-2 |  |  | Harris | 2 | P2.B2.23.20.410 |  | Per harris Schedule 9/25 |
| P2.L4.SMT.1260 |  | HVAC Piping Connections to Shaft Riser (Reheat) / L4 - S. Mech Tower |  | 20d | 2025-09-22 A | 2025-09-26 A | P2.L4.SMT.1100 | 100% | 2025-12-30 | 2026-01-27 |  |  | 40 | HVAC | MLF | P2-5 | TS | HVAC | ! |  | Harris |  |  |  |  |
| P2.L4.SMT.1080 |  | Set & Connect - Elect Panels and Equipment / L4 - S. Mech Tower |  | 5d | 2025-11-24 A | 2025-11-26 A | P2.L4.SMT.1060 | 100% | 2025-12-01 | 2025-12-05 |  |  | 40 | ELEC | MLF | P2-5 | TS | ELEC-2 |  |  |  |  |  |  |  |
| P2.L4.SMT.1110 |  | HVAC Piping - Equip Tie In (Chilled Water) / L4 - S. Mech Tower |  | 20d | 2025-12-01 A | 2025-12-31 A | P2.L4.SMT.1070, FRG.P2.L4.SMT.1030 | 100% | 2026-01-26 | 2026-02-20 |  |  | 80 | FIT | MLF | P2-5 | TS | FIT-2 |  |  | Harris |  | P2.B2.23.20.610 | O |  |
| P2.L4.SMT.1150 |  | Insulate HVAC / Plumbing Pipe / L4 - S. Mech Tower |  | 5d | 2025-12-01 A | 2025-12-05 A | P2.L4.SMT.1250, P2.L4.SMT.1130 | 100% | 2026-04-24 | 2026-04-30 |  |  | 40 | INSUL | MLF | P2-5 | TS | INSUL-3 | ! |  | Harris |  |  |  |  |
| P2.L4.SMT.1120 |  | BAS - Equip Tie In / L4 - S. Mech Tower |  | 5d | 2025-12-15 A | 2025-12-19 A | P2.L4.SMT.1070, P2.L4.SMT.1060 | 100% | 2026-01-02 | 2026-01-08 |  |  | 40 | BAS | MLF | P2-5 | TS | BAS-1 |  |  | Harris |  |  | O |  |
| P2.L4.SMT.1250 |  | HVAC Piping - Equip Tie In (Reheat) / L4 - S. Mech Tower |  | 20d | 2026-02-02 A | 2026-02-27 A | P2.L4.SMT.1110, FRG.P2.L4.SMT.1030 | 100% | 2026-04-20 | 2026-05-15 |  |  | 80 | FIT | MLF | P2-5 | TS | FIT-2 |  |  | Harris |  | P2.B2.23.20.610 |  |  |
| P2.L4.SMT.1090 |  | Panelboards, Interconnect Wiring, and Remaining Room Buildout of All Elec/FA Systems / L4 - S. Mech Tower |  | 10d | 2026-03-02 A | 2026-03-13 A | BP1.262.3.200, BP1.262.3.100, P2.L4.SMT.1080 | 100% |  |  |  |  | 80 | ELEC | MLF | P2-5 | TS | ELEC-2 |  |  |  |  |  |  |  |
| P2.L4.SMT.1140 |  | Pull Wire - In From Distribution Panels / Out to Branch Circuits / L4 - S. Mech Tower |  | 5d | 2026-04-01 | 2026-04-07 | P2.L4.SMT.1090 |  |  |  | 5d | 0d | 40 | ELEC |  | P2-5 | TS | ELEC-2 |  |  |  |  |  |  |  |
| P2.L4.SMT.1160 |  | Electrical Tie in to Equipment / L4 - S. Mech Tower |  | 5d | 2026-04-08 | 2026-04-14 | P2.L4.SMT.1140, P2.L4.SMT.1070 |  |  |  | 139d | 9d | 40 | ELEC |  | P2-5 | TS | ELEC-2 |  |  |  |  |  |  |  |
| P2.L4.SMT.1170 |  | Test & Terminate / L4 - S. Mech Tower |  | 5d | 2026-04-08 | 2026-04-14 | P2.L4.SMT.1140 |  |  |  | 5d | 0d | 40 | ELEC |  | P2-5 | TS | ELEC-2 |  |  |  |  |  |  |  |
| P2.L4.SMT.1180 |  | Paint - Finish Coat / L4 - S. Mech Tower |  | 2d | 2026-04-15 | 2026-04-16 | P2.L4.SMT.1170 |  |  |  | 5d | 0d | 16 | PAINT |  | P2-5 | TS | PAINT-1 |  |  |  |  |  |  |  |
| P2.L4.SMT.1190 |  | Trim All MEPF Finishes / L4 - S. Mech Tower |  | 2d | 2026-04-17 | 2026-04-20 | P2.L4.SMT.1180 |  |  |  | 5d | 0d | 16 | MEP |  | P2-5 | TS | MEP-2 |  |  | Harris |  |  |  |  |
| P2.L4.SMT.1210 |  | Doors & Hardware / L4 - S. Mech Tower |  | 2d | 2026-04-21 | 2026-04-22 | P2.L4.SMT.1190 |  |  |  | 5d | 0d | 16 | DFH |  | P2-5 | TS | DFH |  | AT29 |  |  |  |  |  |
| P2.L4.SMT.1220 |  | Trades Inspect & Verify R/I Work Completed to Specs / L4 - S. Mech Tower |  | 5d | 2026-04-23 | 2026-04-29 | P2.L4.SMT.1210, P2.L4.SMT.1120, P2.L4.SMT.1150, DDD2650 |  |  |  | 5d | 0d | 40 | T |  | P2-5 | TS | T |  |  |  |  |  |  |  |
| P2.L4.SMT.1240 |  | Energize Elec Panels - Lock Doors and Limit Access / L4 - S. Mech Tower |  | 3d | 2026-04-23 | 2026-04-27 | P2.L4.SMT.1220 SS, CX.B2.SWGR.1010, CX.B2.MVEE.1010 |  |  |  | 5d | 0d | 40 | ELEC |  | P2-5 | TS | ELEC-2 |  |  |  |  |  |  |  |
| P2.L4.SMT.1230 |  | HVAC System Ready for Start Up / L4 - S. Mech Tower | milestone | 0d | 2026-04-27 | 2026-04-27 | P2.L4.SMT.1160 FF, P2.L4.SMT.1240 |  |  |  | 130d | 96d | 0 | MECH |  | P2-5 | TS | MECH-2 |  |  | Harris |  |  |  |  |
| P2.L4.SMT.1270 |  | Flooring Prep - Epoxy Floors / L4 - S. Mech Tower |  | 3d | 2026-05-19 | 2026-05-21 | P2.L4.SMT.1080, P2.L3.SMT.1200 |  |  |  | 1d | 0d | 16 | EPOXYF | MLF | P2-5 | TS | EPOXYF |  |  |  |  |  |  |  |
| P2.L4.SMT.1200 |  | Flooring - Epoxy Floors / L4 - S. Mech Tower |  | 2d | 2026-05-22 | 2026-05-26 | P2.L4.SMT.1270 |  |  |  | 1d | 0d | 16 | EPOXYF | MLF | P2-5 | TS | EPOXYF |  |  |  |  |  |  |  |

| ID | WBS | Activity | Type | Duration | Start | Finish | Predecessors | Complete | Remaining | Planned start | Planned finish | Total float | Free float | Temp Orig Dur | Resp / SRLM | PHASE | Z.RESP | RESP / Trade | *NIH Resp Check* | 744 | RESP UPD | Update Status | Testing Type | Act ID Temp | Pick |
| --- | --- | --- | --- | --- | --- | --- | --- | --- | --- | --- | --- | --- | --- | --- | --- | --- | --- | --- | --- | --- | --- | --- | --- | --- | --- |
|  | 8 | **East Mechanical Tower / Rough In & Finish / Level 4** |  |  | 2025-03-18 | 2026-06-03 |  |  |  |  |  |  |  |  |  |  |  |  |  |  |  |  |  |  |  |
| P2.L4.EMT.1080 |  | Set & Connect - Mech Equipment / L4 - E. Mech Tower |  | 10d | 2025-03-18 A | 2025-04-18 A | P2.L3.EMT.1070, P2.4.03.630 | 100% |  | 2025-05-01 | 2025-05-14 |  |  | 80 | HVAC | P2-5 | Harris | HVAC |  |  |  |  |  |  |  |
| P2.L4.EMT.1000 |  | HVAC - Quench Vent Piping / L4 - E. Mech Tower L4 - E. Mech Tower |  | 5d | 2025-08-11 A | 2025-09-05 A | P2.L2.EMT.1250 | 100% |  | 2025-10-29 | 2025-11-04 |  |  | 40 | HVAC | P2-5 | Harris | HVAC | T.MEP.MECH.PLMB | SM | SM |  |  |  |  |
| P2.L4.EMT.1105 |  | HVAC Duct Connections to Shaft Riser / L4 - E. Mech Tower |  | 5d | 2025-08-22 A | 2025-08-28 A | P2.L4.EMT.1080 | 100% |  | 2025-10-29 | 2025-11-04 |  |  | 40 | HVAC | P2-5 | Harris | HVAC | ! | SM | SM |  |  |  |  |
| P2.L4.EMT.1010 |  | Insulation - Exterior Wall Assembly / L4 - E. Mech Tower |  | 5d | 2025-09-01 A | 2025-09-05 A | P2.FAC.2.Z3.150 | 100% |  | 2025-10-01 | 2025-10-07 |  |  | 40 | INSUL | P2-5 |  | INSUL-1 |  | SM | SM | O |  |  |  |
| P2.L4.EMT.1110 |  | HVAC Piping Connections to Shaft Riser / L4 - E. Mech Tower |  | 15d | 2025-09-22 A | 2025-09-26 A | P2.L4.EMT.1080 | 100% |  | 2025-10-29 | 2025-11-18 |  |  | 40 | HVAC | P2-5 | Harris | HVAC | ! | SM | SM |  |  |  |  |
| P2.L4.EMT.1020 |  | CMU - Lay Block / L4 - E. Mech Tower |  | 10d | 2025-10-08 A | 2025-10-15 A | P2.L2.EMT.1010, P2.L4.EMT.1010, P2.L3.EMT.1010 | 100% |  | 2025-10-01 | 2025-10-14 |  |  | 80 | CMU | P2-5 |  | CMU |  | SM | SM |  | AT3 | P2.B2.04.20.210 |  |
| P2.L4.EMT.1050 |  | Paint - CMU Block Fill / L4 - E. Mech Tower |  | 10d | 2025-10-15 A | 2025-10-16 A | P2.L4.EMT.1020 | 100% |  | 2025-10-15 | 2025-10-28 |  |  | 80 | PAINT | P2-5 |  | PAINT-1 |  | SM | SM |  |  | P2.B2.09.97.110 |  |
| P2.L4.EMT.1060 |  | CMU - Point & Patch / L4 - E. Mech Tower |  | 10d | 2025-10-16 A | 2025-10-17 A | P2.L4.EMT.1050, P2.L4.EMT.1020 | 100% |  | 2025-10-29 | 2025-11-11 |  |  | 80 | CMU | P2-5 |  | CMU |  | SM | SM |  |  | P2.B2.04.20.310 |  |
| P2.L4.EMT.1070 |  | Paint Prime & 1st Coat - CMU / L4 - E. Mech Tower |  | 10d | 2025-10-20 A | 2025-10-23 A | P2.L4.EMT.1060 SS | 100% |  | 2025-10-29 | 2025-11-11 |  |  | 80 | PAINT | P2-5 |  | PAINT-1 |  | SM | SM |  |  | P2.B2.09.97.210 |  |
| P2.L4.EMT.1130 |  | BAS - Equip Tie In / L4 - E. Mech Tower |  | 5d | 2025-11-03 A | 2025-11-07 A | P2.L4.EMT.1080, P2.L4.EMT.1070 | 100% |  | 2025-12-01 | 2025-12-05 |  |  | 40 | BAS | P2-5 | Harris | BAS-1 |  | SM | SM |  |  |  |  |
| P2.L4.EMT.1090 |  | Set & Connect - Elect Panels and Equipment / L4 - E. Mech Tower |  | 5d | 2025-11-10 A | 2025-11-15 A | P2.L4.EMT.1070 | 100% |  | 2025-12-01 | 2025-12-05 |  |  | 40 | ELEC | P2-5 |  | ELEC-2 |  | SM | SM |  |  |  |  |
| P2.L4.EMT.1210 |  | Flooring Prep - Epoxy Floors / L4 - E. Mech Tower |  | 3d | 2025-11-24 A | 2025-11-26 A | P2.L4.EMT.1090 | 100% |  | 2025-12-22 | 2025-12-24 |  |  | 16 | EPOXYF | P2-5 |  | EPOXYF |  | SM | SM |  |  |  |  |
| P2.L4.EMT.1140 |  | Test/Inspect Duct & Piping / L4 - E. Mech Tower |  | 5d | 2025-12-22 A | 2025-12-31 A | P2.L4.EMT.1110, P2.L4.EMT.1105 | 100% |  | 2026-01-23 | 2026-01-29 |  |  | 40 | MECH | P2-5 | Harris | MECH-2 | ! |  | SM | O |  |  |  |
| P2.L4.EMT.1120 |  | HVAC Piping - Equip Tie In / L4 - E. Mech Tower |  | 20d | 2026-01-21 A | 2026-03-04 A | P2.L4.EMT.1080 | 100% |  | 2026-03-30 | 2026-04-24 |  |  | 80 | FIT | P2-5 | Harris | FIT-2 |  | SM | SM |  |  | P2.B2.23.20.610 |  |
| FRG.P2.L4.EMT.1020 |  | AHU Piping Install / L4 - E. Mech Tower - FRAGNET |  | 20d | 2026-01-21 A | 2026-03-04 A | FRG.P2.L3.EMT.1010 | 100% |  | 2026-01-23 | 2026-02-19 |  |  | 80 | Harris Fragnet | P2-5 | Harris | FIT-2 |  | TA | SM | O |  | P2.B2.23.20.410 | 2 |
| P2.L4.EMT.1100 |  | Panelboards, Interconnect Wiring, and Remaining Room Buildout of All Elec/FA Systems / L4 - E. Mech Tower |  | 10d | 2026-02-20 A | 2026-04-09 | BP1.262.3.200, BP1.262.3.100, P2.L4.EMT.1260, P2.L4.EMT.1090 | 50% | 5d | 2026-03-20 | 2026-04-02 | 17d | 0d | 80 | ELEC | P2-5 |  | ELEC-2 |  | SM | SM | O |  |  |  |
| P2.L4.EMT.1150 |  | Pull Wire - In From Distribution Panels / Out to Branch Circuits / L4 - E. Mech Tower |  | 5d | 2026-03-19 A | 2026-04-23 | P2.L4.EMT.1100 |  | 10d | 2026-03-25 | 2026-03-31 | 17d | 0d | 40 | ELEC | P2-5 |  | ELEC-2 |  |  | SM |  |  |  |  |
| P2.L4.EMT.1260 |  | Flooring - Epoxy Floors / L4 - E. Mech Tower |  | 2d | 2026-04-01 | 2026-04-02 | P2.L4.EMT.1210 |  |  |  |  | 17d | 0d | 16 | EPOXYF | P2-5 |  | EPOXYF |  | SM | SM | O |  |  |  |
| P2.L4.EMT.1170 |  | Electrical Tie in to Equipment / L4 - E. Mech Tower |  | 5d | 2026-04-24 | 2026-04-30 | P2.L4.EMT.1150, P2.L4.EMT.1080 |  |  |  |  | 127d | 0d | 40 | ELEC | P2-5 |  | ELEC-2 |  |  | SM |  |  |  |  |
| P2.L4.EMT.1180 |  | Test & Terminate / L4 - E. Mech Tower |  | 5d | 2026-04-24 | 2026-04-30 | P2.L4.EMT.1150 |  |  |  |  | 51d | 0d | 40 | ELEC | P2-5 |  | ELEC-2 |  |  | SM |  |  |  |  |
| P2.L4.EMT.1250 |  | Energize Elec Panels - Lock Doors and Limit Access / L4 - E. Mech Tower |  | 5d | 2026-04-24 | 2026-04-30 | CX.B2.SWGR.1010, CX.B2.MVEE.1010, FRG.P2.L4.EMT.1020, P2.L4.EMT.1150 |  |  |  |  | 17d | 0d | 40 | ELEC | P2-5 |  | ELEC-2 |  |  | SM |  |  |  |  |
| P2.L4.EMT.1240 |  | HVAC System Ready for Start Up / L4 - E. Mech Tower | milestone | 0d | 2026-04-30 | 2026-04-30 | P2.L4.EMT.1170 FF, P2.L4.EMT.1250, FRG.P2.L4.EMT.1020 |  |  |  |  | 127d | 93d | 0 | MECH | P2-5 | Harris | MECH-2 |  |  | SM |  |  |  |  |
| P2.L4.EMT.1190 |  | Paint - Finish Coat / L4 - E. Mech Tower |  | 2d | 2026-05-01 | 2026-05-04 | P2.L4.EMT.1180 |  |  |  |  | 51d | 0d | 16 | PAINT | P2-5 |  | PAINT-1 |  |  | SM |  |  |  |  |
| P2.L4.EMT.1200 |  | Trim All MEPF Finishes / L4 - E. Mech Tower |  | 2d | 2026-05-05 | 2026-05-06 | P2.L4.EMT.1190 |  |  |  |  | 51d | 0d | 16 | MEP | P2-5 | Harris | MEP-2 |  |  | SM |  |  |  |  |
| P2.L4.EMT.1160 |  | Insulate HVAC / Plumbing Pipe / L4 - E. Mech Tower |  | 15d | 2026-05-06 | 2026-05-27 | P2.L4.EMT.1140, P2.L4.EMT.1120, DDD3250 |  |  |  |  | 39d | 0d | 40 | INSUL | P2-5 | Harris | INSUL-3 | ! |  | SM |  |  |  |  |
| P2.L4.EMT.1220 |  | Doors & Hardware / L4 - E. Mech Tower |  | 2d | 2026-05-07 | 2026-05-08 | P2.L4.EMT.1200 |  |  |  |  | 51d | 12d | 16 | DFH | P2-5 |  | DFH |  |  | SM |  | AT29 |  |  |
| P2.L4.EMT.1230 |  | Trades Inspect & Verify R/I Work Completed to Specs / L4 - E. Mech Tower |  | 5d | 2026-05-28 | 2026-06-03 | P2.L4.EMT.1000, P2.L4.EMT.1220, P2.L4.EMT.1130, P2.L4.EMT.1160, P2.L4.EMT.1190 |  |  |  |  | 39d | 30d | 40 | T | P2-5 |  | T |  |  | SM |  |  |  |  |

| ID | WBS | Activity | Type | Duration | Start | Finish | Predecessors | Complete | Remaining | Planned start | Planned finish | Total float | Free float | Temp Orig Dur | Act ID Temp | Resp / SRLM | PHASE | Z.RESP | RESP / Trade | Testing Type | Pick | 744 | RESP UPD | Update Status | NOTES | **NEAR CRITICAL** |
| --- | --- | --- | --- | --- | --- | --- | --- | --- | --- | --- | --- | --- | --- | --- | --- | --- | --- | --- | --- | --- | --- | --- | --- | --- | --- | --- |
|  | L5 | **L5 / BUILDOUT** |  |  | 2025-03-03 | 2026-11-25 |  |  |  |  |  |  |  |  |  |  |  |  |  |  |  |  |  |  |  |  |
|  | L5 | **CORE & SUPPORT SPACES / LEVEL 5** |  |  | 2025-03-03 | 2026-11-25 |  |  |  |  |  |  |  |  |  |  |  |  |  |  |  |  |  |  |  |  |
|  | 1 | **ROUGH IN - Core & Support Spaces / Level 5** |  |  | 2025-03-03 | 2026-05-27 |  |  |  |  |  |  |  |  |  |  |  |  |  |  |  |  |  |  |  |  |
|  | Z112 | **South / Level 5** |  |  | 2025-03-03 | 2026-05-27 |  |  |  |  |  |  |  |  |  |  |  |  |  |  |  |  |  |  |  |  |
| P2.L5.S.1000 |  | Layout - All Trades / L5 / South |  | 5d | 2025-03-03 A | 2025-03-24 A | P2.5.03.610, P2.6.03.610 | 100% |  | 2025-03-03 | 2025-03-07 |  |  | 40 | P2.B2.01.010 | R/I.OH | P2-5 | Harris | R/I.OH |  |  |  |  |  |  |  |
| P2.L5.S.1020 |  | OH - Structural Supports (All Trades) / L5 / South |  | 5d | 2025-03-10 A | 2025-03-28 A | P2.L5.S.1000 | 100% |  | 2025-03-10 | 2025-03-14 |  |  | 80 | P2.B2.05.45.110 | R/I.OH | P2-5 | Harris | R/I.OH | AT24 |  |  |  |  |  |  |
| P2.L5.S.1010 |  | Framing - Top Track / L5 / South |  | 10d | 2025-04-08 A | 2025-04-16 A | P2.L4.S.1010, P2.L5.S.1000 | 100% |  | 2025-03-24 | 2025-04-04 |  |  | 80 | P2.B2.09.21.110 | GYP | P2-5 |  | GYP-1 |  |  |  |  |  |  |  |
| P2.L5.S.1030 |  | OH - MEPF - Hangers & Supports / L5 / South |  | 10d | 2025-04-08 A | 2025-04-18 A | P2.L5.S.1000, P2.BIM.L5.40.140 | 100% |  | 2025-05-01 | 2025-05-14 |  |  | 80 | P2.B2.20.05.410 | MEP | P2-5 | Harris | MEP-2 |  |  |  |  |  |  |  |
| P2.L5.S.1090 |  | Framing - Priority Walls & Door Frames / L5 / South |  | 10d | 2025-04-09 A | 2025-04-25 A | P2.L5.S.1010, P2.L4.S.1090 SS | 100% |  | 2025-05-08 | 2025-05-21 |  |  | 80 | P2.B2.09.21.310 | GYP | P2-5 |  | GYP-1 |  |  |  |  |  |  |  |
| P2.L5.S.1170 |  | OH - Fire Suppression / L5 / South |  | 10d | 2025-04-09 A | 2025-05-29 A | P2.L5.S.1030, P2.L5.S.1150 | 100% |  | 2025-06-27 | 2025-07-11 |  |  | 80 | P2.B2.21.13.210 | FP | P2-5 |  | FP-1 |  | 1 |  |  |  |  |  |
| P2.L5.S.1130 |  | Framing - Priority Walls - AHJ Inspections / L5 / South |  | 5d | 2025-04-10 A | 2025-04-29 A | P2.L5.S.1090 | 100% |  | 2025-05-22 | 2025-05-29 |  |  | 80 | P2.B2.01.43.010 | FM | P2-5 |  | FM |  |  |  |  |  |  |  |
| P2.L5.S.1180 |  | OH - Plumbing Piping (High) / L5 / South |  | 20d | 2025-04-14 A | 2025-06-30 A | P2.L4.S.1180, P2.L5.S.1030, P2.L5.S.1150 | 100% |  | 2025-07-02 | 2025-07-30 |  |  | 80 | P2.B2.22.14.210 | PLMB | P2-5 | Harris | PLMB |  | 1 | TA | TA |  |  |  |
| P2.L5.S.1230 |  | OH - Electrical - 208/120v Branch / L5 / South |  | 10d | 2025-04-14 A | 2025-07-03 A | P2.L5.S.1190 | 100% |  | 2025-07-14 | 2025-07-25 |  |  | 80 | P2.B2.26.05.310 | ELEC | P2-5 |  | ELEC-2 |  | 2 | TA | TA |  |  |  |
| P2.L5.S.1140 |  | Hang/Tape/Finish - Priority Walls / L5 / South |  | 10d | 2025-04-23 A | 2025-05-23 A | P2.L5.S.1020, P2.L5.S.1130 | 100% |  | 2025-05-30 | 2025-06-12 |  |  | 80 | P2.B2.09.21.210 | GYP | P2-5 |  | GYP-1 |  |  |  |  |  |  |  |
| P2.L5.S.1160 |  | Spray/Seal/Firestop - Head of Wall - Priority Walls / L5 / South |  | 5d | 2025-04-28 A | 2025-04-30 A | P2.L5.S.1140 | 100% |  | 2025-06-09 | 2025-06-13 |  |  | 80 | P2.B2.07.84.410 | FIRESTO | P2-5 |  | FIRESTO | AT47 |  |  |  |  |  |  |
| P2.L5.S.1190 |  | OH - Electrical - 480/277v Distribution / L5 / South |  | 10d | 2025-05-19 A | 2025-07-01 A | P2.L5.S.1030, P2.L5.S.1150 | 100% |  | 2025-06-23 | 2025-07-07 |  |  | 80 | P2.B2.26.05.210 | ELEC | P2-5 |  | ELEC-2 |  | 1 | TA | TA |  |  |  |
| P2.L5.S.1150 |  | Paint Prime & 1st Coat - Priority Walls / L5 / South |  | 10d | 2025-06-02 A | 2025-06-13 A | P2.L5.S.1160 SS | 100% |  | 2025-07-01 | 2025-07-15 |  |  | 80 | P2.B2.09.91.110 | PAINT | P2-5 |  | PAINT-1 |  |  | TA | TA |  |  |  |
| P2.L5.S.1220 |  | OH - HVAC Piping / L5 / South |  | 20d | 2025-06-18 A | 2025-07-31 A | P2.L5.S.1170, P2.L5.S.1030 | 100% |  | 2025-07-16 | 2025-08-12 |  |  | 80 | P2.B2.23.20.410 | FIT | P2-5 | Harris | FIT-2 |  | 2 | TA | TA |  |  |  |
| P2.L5.S.1210 |  | OH - Hang Duct - HP Mains / L5 / South |  | 10d | 2025-07-07 A | 2025-07-30 A | P2.L5.S.1030, P2.L4.S.1210 FF | 100% |  | 2025-08-08 | 2025-08-21 |  |  | 80 | P2.B2.23.30.210 | HVAC | P2-5 | Harris | HVAC |  | 1 | TA | TA |  |  |  |
| P2.L5.S.1260 |  | OH - DALT - HP Mains / L5 / South |  | 10d | 2025-07-24 A | 2025-09-29 A | P2.L5.S.1210 | 100% |  | 2025-08-22 | 2025-09-05 |  |  | 80 | P2.B2.23.30.310 | TAB | P2-5 | Harris | TAB-1 |  | 2 | TA | TA | O |  |  |
| P2.L5.S.1300 |  | OH - Hang Duct - LP Branch / L5 / South |  | 20d | 2025-07-31 A | 2025-09-10 A | P2.L5.S.1260 | 100% |  | 2025-08-15 | 2025-09-12 |  |  | 80 | P2.B2.23.30.410 | HVAC | P2-5 | Harris | HVAC |  | 3 | TA | TA | O |  |  |
| P2.L5.S.1270 |  | OH - HVAC Piping - Test / L5 / South |  | 10d | 2025-08-01 A | 2025-08-14 A | P2.L5.S.1220 | 100% |  |  |  |  |  | 80 | P2.B2.23.20.510 | FIT | P2-5 | Harris | FIT-2 |  | 3 | TA | TA |  |  |  |
| FRG.P2.L5.S.1770 |  | HVAC Piping - Delivery / L5 / South - FRAGNET | milestone | 0d | 2025-08-08 A | 2025-08-08 A | P2.L5.S.1030 FF | 100% |  |  |  |  |  | 80 | P2.B2.23.20.410 | Harris Fragnet | P2-5 | Harris | FIT-2 |  | 2 | TA | TA | O |  |  |
| FRG.P2.L5.S.1780 |  | HVAC Piping - Stick Build Copper Racks / L5 / South - FRAGNET |  | 20d | 2025-08-11 A | 2025-09-09 A | FRG.P2.L5.S.1770 | 100% |  | 2025-09-02 | 2025-09-29 |  |  | 80 | P2.B2.23.20.410 | Harris Fragnet | P2-5 | Harris | FIT-2 |  | 2 | TA | TA | O |  |  |
| P2.L5.S.1290 |  | OH - Insulate HP Duct / L5 / South |  | 10d | 2025-08-14 A | 2025-11-04 A | P2.L5.S.1260 | 100% |  | 2025-08-15 | 2025-08-28 |  |  | 80 | P2.B2.23.07.310 | INSUL | P2-5 | Harris | INSUL-3 |  | 3 | TA | TA |  |  |  |
| P2.L5.S.1560 |  | OH - Plumbing Piping (Low) / L5 / South |  | 15d | 2025-09-08 A | 2025-09-18 A | P2.L5.S.1180 | 100% |  | 2025-10-03 | 2025-10-23 |  |  | 80 | P2.B2.22.14.210 | PLMB | P2-5 | Harris | PLMB |  | 1 | TA | TA | O |  |  |
| FRG.P2.L5.S.1790 |  | HVAC Piping - Hanging Copper Racks / L5 / South - FRAGNET |  | 20d | 2025-09-10 A | 2025-09-29 A | FRG.P2.L5.S.1780 | 100% |  | 2025-10-09 | 2025-11-05 |  |  | 80 | P2.B2.23.20.410 | Harris Fragnet | P2-5 | Harris | FIT-2 |  | 2 | TA | TA | O |  |  |
| P2.L5.S.1340 |  | OH - Insulate HVAC Pipe / L5 / South |  | 10d | 2025-09-18 A | 2025-09-30 A | P2.L5.S.1290, P2.L5.S.1270, FRG.P2.L5.S.1800 | 100% |  | 2025-11-05 | 2025-11-18 |  |  | 80 | P2.B2.22.07.610 | INSUL | P2-5 | Harris | INSUL-3 |  | 4 | TA | TA | O | unactualized start per remaining work on Harris schedule |  |
| FRG.P2.L5.S.1800 |  | HVAC Piping - Finish Copper Racks / L5 / South - FRAGNET |  | 20d | 2025-09-19 A | 2025-09-29 A | FRG.P2.L5.S.1790 | 100% |  | 2025-10-08 | 2025-11-04 |  |  | 80 | P2.B2.23.20.410 | Harris Fragnet | P2-5 | Harris | FIT-2 |  | 2 | TA | TA | O | Per Harris Schedule 11/4/25. |  |
| P2.L5.S.1420 |  | Framing - Balance of Framing & Door Frames / L5 / South |  | 10d | 2025-09-29 A | 2025-10-24 A | P2.L5.S.1150 | 100% |  | 2026-01-07 | 2026-01-20 |  |  | 80 | A1310 | GYP | P2-5 |  | GYP-1 |  |  | TA | TA |  |  |  |
| P2.L5.S.1380 |  | OH - Conduit - Low Volt - Fire Alarm / L5 / South |  | 10d | 2025-10-20 A | 2026-02-21 A | P2.L5.S.1310 | 100% |  | 2025-10-22 | 2025-11-04 |  |  | 80 |  | FA | P2-5 |  | FA-1 |  | 5 | TA | JPC |  |  |  |
| P2.L5.S.1430 |  | In Wall - Plumbing - Framing / L5 / South |  | 10d | 2025-10-20 A | 2025-11-07 A | P2.L5.S.1420 | 100% |  | 2025-10-20 | 2025-10-31 |  |  | 80 | P2.B2.22.05.410 | PLMB | P2-5 | Harris | PLMB |  |  | TA | TA |  |  |  |
| P2.L5.S.1440 |  | In Wall - Electrical - Framing / L5 / South |  | 10d | 2025-10-20 A | 2025-11-30 A | P2.L5.S.1420, P2.L5.S.1230, P2.L5.S.1430 FF+5d | 100% |  | 2025-10-20 | 2025-10-31 |  |  | 80 | P2.B2.26.05.610 | ELEC | P2-5 |  | ELEC-2 |  |  | TA | TA |  |  |  |
| P2.L5.S.1450 |  | In Wall - Backing/Blocking/Supports / L5 / South |  | 10d | 2025-10-20 A | 2025-11-14 A | P2.L5.S.1420 | 100% |  | 2025-10-13 | 2025-10-24 |  |  | 80 | P2.B2.09.21.510 | R/I.IW | P2-5 |  | R/I.IW |  |  | TA | TA |  |  |  |
| P2.L5.S.1240 |  | OH - Plumbing - Test / L5 / South |  | 10d | 2025-10-27 A | 2025-11-07 A | P2.L5.S.1560 | 100% |  | 2025-10-01 | 2025-10-14 |  |  | 80 | P2.B2.22.14.310 | PLMB | P2-5 | Harris | PLMB |  | 2 | TA | TA |  |  |  |
| P2.L5.S.1250 |  | Pull Wire - Electrical - 480/277v Distribution / L5 / South |  | 10d | 2025-11-10 A | 2026-03-13 A | P2.L5.S.1190, P2.5.HE.3989.1050, P2.5.HE.5966.1050 | 100% |  | 2025-12-08 | 2025-12-19 |  |  | 80 |  | ELEC | P2-5 |  | ELEC-2 |  | To Trim Devices & Term Panel | TA | JPC | O |  |  |
| P2.L5.S.1280 |  | OH - Insulate Plumbing / L5 / South |  | 10d | 2025-11-10 A | 2025-11-26 A | P2.L5.S.1240 | 100% |  | 2025-12-08 | 2025-12-19 |  |  | 80 | P2.B2.22.07.510 | INSUL | P2-5 | Harris | INSUL-3 |  | 3 | TA | TA |  |  |  |
| P2.L5.S.1370 |  | OH - Conduit - Low Volt - BAS/Controls / L5 / South |  | 10d | 2025-11-17 A | 2026-04-14 | P2.L5.S.1310, P2.L5.S.1340 |  | 10d | 2025-12-15 | 2025-12-29 | 4d | 0d | 80 |  | BAS | P2-5 | Harris | BAS-1 |  | 5 | TA | JPC | O |  |  |
| P2.L5.S.1390 |  | OH - Conduit - Low Volt - Telecom / L5 / South |  | 10d | 2025-12-22 A | 2026-02-21 A | P2.L5.S.1420 | 100% |  | 2026-01-23 | 2026-02-05 |  |  | 80 |  | ELEC | P2-5 |  | ELEC-2 |  | 5 | TA | TA | O |  |  |
| P2.L5.S.1460 |  | AHJ Inspections - Wall Close In / L5 / South |  | 5d | 2025-12-29 A | 2026-01-22 A | P2.L5.S.1440, P2.L5.S.1450, P2.L5.S.1430 | 100% |  | 2026-01-02 | 2026-01-08 |  |  | 40 | P2.B2.01.43.110 | FM | P2-5 |  | FM |  |  |  | TA | O |  | 1.1 |
| P2.L5.S.1470 |  | Hang-Tape-Finish - Walls and Hard Lid Ceilings / L5 / South |  | 15d | 2026-01-12 A | 2026-02-20 A | P2.SUM.175, P2.L5.S.1460 | 100% |  | 2026-02-02 | 2026-02-20 |  |  | 80 | P2.B2.09.21.710 | GYP | P2-5 |  | GYP-1 |  |  |  | TA | O |  | 1.1 |
| P2.L5.S.1480 |  | Spray/Seal/Firestop - Head of Wall / L5 / South |  | 10d | 2026-01-12 A | 2026-01-23 A | P2.L5.S.1470 | 100% |  | 2026-01-30 | 2026-02-12 |  |  | 80 | P2.B2.07.84.310 | FIRSAFE | P2-5 |  | FIRSAFE | AT47 | To Finishes - Paint |  | TA | O |  |  |
| P2.L5.S.1490 |  | Firestop - Thru Wall / L5 / South |  | 10d | 2026-01-12 A | 2026-02-28 A | P2.L5.S.1470, P2.L5.S.1280 | 100% |  | 2026-01-30 | 2026-02-12 |  |  | 80 | P2.B2.07.84.210 | FIRESTO | P2-5 |  | FIRESTO | AT48 | To Finishes - Paint |  | TA | O |  |  |
| P2.L5.S.1200 |  | Firestop - Thru Wall - Priority Walls / L5 / South |  | 5d | 2026-01-19 A | 2026-02-21 A | P2.L5.S.1150 | 100% |  | 2026-01-02 | 2026-01-08 |  |  | 80 | P2.B2.07.84.110 | FIRESTO | P2-5 |  | FIRESTO | AT48 |  | TA | TA | O |  |  |
| P2.L5.S.1400 |  | OH - Conduit - Low Volt - Security / L5 / South |  | 10d | 2026-02-05 A | 2026-04-07 | P2.L5.S.1340 | 50% | 5d | 2026-03-02 | 2026-03-13 | 31d | 0d | 80 |  | ELEC | P2-5 |  | ELEC-2 |  | 5 | TA | JPC | O |  |  |
| P2.L5.S.1310 |  | OH - Set & Connect Mech Equipment / L5 / South |  | 10d | 2026-02-23 A | 2026-03-20 A | P2.L5.S.1260, FRG.P2.L5.S.1800 | 100% |  | 2026-03-02 | 2026-03-13 |  |  | 80 | P2.B2.23.82.110 | HVAC | P2-5 | Harris | HVAC |  | 3 | TA | JPC | O |  |  |
| P2.L5.S.1350 |  | OH - Insulate LP Duct / L5 / South |  | 10d | 2026-02-28 A | 2026-04-07 | P2.L5.S.1300, P2.L5.S.1200 | 50% | 5d | 2026-03-04 | 2026-03-17 | 121d | 5d | 80 | P2.B2.23.07.410 | INSUL | P2-5 | Harris | INSUL-3 |  | 4 | TA | JPC | O |  |  |
| P2.L5.S.1320 |  | OH - Electrical - Equip Tie In / L5 / South |  | 10d | 2026-04-01 | 2026-04-14 | P2.L5.S.1310 |  |  |  |  | 36d | 25d | 80 | P2.B2.26.05.410 | ELEC | P2-5 |  | ELEC-2 |  | 4 | TA | JPC | O |  |  |
| P2.L5.S.1360 |  | Pull Wire - Electrical - 208/120v Branch & Equip / L5 / South |  | 20d | 2026-04-01 | 2026-04-28 | P2.L5.S.1230, P2.L5.S.1440 |  |  |  |  | 26d | 15d | 80 |  | ELEC | P2-5 |  | ELEC-2 |  | To Trim Devices & Term Panel |  | JPC | O |  |  |
| P2.L5.S.1510 |  | Pull Wire - Low Volt - Fire Alarm / L5 / South |  | 10d | 2026-04-01 | 2026-04-14 | P2.L5.S.1380 |  |  |  |  | 36d | 25d | 80 |  | FA | P2-5 |  | FA-1 |  | To Trim Finishes |  | JPC |  |  |  |
| P2.L5.S.1520 |  | Pull Wire - Low Volt - Telecom / L5 / South |  | 10d | 2026-04-01 | 2026-04-14 | P2.L5.S.1390 |  |  |  |  | 36d | 25d | 80 |  | CIT | P2-5 |  | CIT |  | To Trim Finishes |  | JPC |  |  |  |
| P2.L5.S.1530 |  | Pull Wire - Low Volt - Security / L5 / South |  | 10d | 2026-04-08 | 2026-04-21 | P2.L5.S.1400 |  |  |  |  | 31d | 20d | 80 |  | LOWVOLT | P2-5 |  | LOWVOLT-1 |  | To Trim Finishes |  | JPC | O |  |  |
| P2.L5.S.1500 |  | Pull Wire - Low Volt - BAS/Controls / L5 / South |  | 10d | 2026-04-15 | 2026-04-28 | P2.L5.S.1370 |  |  |  |  | 4d | 5d | 80 |  | BAS | P2-5 | Harris | BAS-1 |  | To Trim Finishes |  | JPC | O |  |  |
| P2.L5.S.1330 |  | OH - HVAC Piping - Equip Tie In / L5 / South |  | 15d | 2026-04-29 | 2026-05-19 | P2.L5.S.1310, P2.L5.S.1270, CX.B2.HYDR.1000 |  |  |  |  | 11d | 0d | 80 | P2.B2.23.20.610 | FIT | P2-5 | Harris | FIT-2 |  |  | TA | JPC |  |  |  |
| P2.L5.S.1550 |  | Trades Inspect & Verify R/I Work Completed to Specs / L5 / South |  | 5d | 2026-05-20 | 2026-05-27 | P2.L5.S.1360, P2.L5.S.1500, P2.L5.S.1510, P2.L5.S.1520, P2.L5.S.1530, P2.L5.S.1490, P2.L5.S.1480, P2.L5.S.1250, P2.L5.S.1330, P2.L5.S.1320 |  |  |  |  | 11d | 10d | 40 |  | T | P2-5 |  | T |  |  |  | JPC |  |  |  |

| ID | WBS | Activity | Type | Duration | Start | Finish | Predecessors | Complete | Remaining | Planned start | Planned finish | Total float | Free float | Temp Orig Dur | Act ID Temp | Resp / SRLM | PHASE | Z.RESP | RESP / Trade | Testing Type | Pick | 744 | RESP UPD | Update Status | **NEAR CRITICAL** |
| --- | --- | --- | --- | --- | --- | --- | --- | --- | --- | --- | --- | --- | --- | --- | --- | --- | --- | --- | --- | --- | --- | --- | --- | --- | --- |
|  | Z1121 | **North / Level 5** |  |  | 2025-03-03 | 2026-05-27 |  |  |  |  |  |  |  |  |  |  |  |  |  |  |  |  |  |  |  |
| P2.L5.N.1000 |  | Layout - All Trades / L5 / North |  | 5d | 2025-03-03 A | 2025-03-28 A | P2.6.03.630 | 100% |  | 2025-03-03 | 2025-03-07 |  |  | 40 | P2.B2.01.010 | R/I.OH | P2-5 | Harris | R/I.OH |  |  |  |  |  |  |
| P2.L5.N.1020 |  | OH - Structural Supports (All Trades) / L5 / North |  | 5d | 2025-03-10 A | 2025-03-31 A | P2.L5.N.1000 | 100% |  | 2025-03-10 | 2025-03-14 |  |  | 80 | P2.B2.05.45.110 | R/I.OH | P2-5 | Harris | R/I.OH | AT24 |  |  |  |  |  |
| P2.L5.N.1010 |  | Framing - Top Track / L5 / North |  | 10d | 2025-04-14 A | 2025-04-28 A | P2.L4.N.1010, P2.L5.N.1000 | 100% |  | 2025-05-01 | 2025-05-14 |  |  | 80 | P2.B2.09.21.110 | GYP | P2-5 |  | GYP-1 |  |  |  |  |  |  |
| P2.L5.N.1030 |  | OH - MEPF - Hangers & Supports / L5 / North |  | 10d | 2025-04-14 A | 2025-04-25 A | P2.L5.N.1000, P2.BIM.L5.40.140 | 100% |  | 2025-05-01 | 2025-05-14 |  |  | 80 | P2.B2.20.05.410 | MEP | P2-5 | Harris | MEP-2 |  |  |  |  |  |  |
| P2.L5.N.1170 |  | OH - Fire Suppression / L5 / North |  | 10d | 2025-04-14 A | 2025-05-23 A | P2.L5.N.1030, P2.L5.N.1150 | 100% |  | 2025-06-27 | 2025-07-11 |  |  | 80 | P2.B2.21.13.210 | FP | P2-5 |  | FP-1 |  | 1 |  |  |  |  |
| P2.L5.N.1180 |  | OH - Plumbing Piping (High) / L5 / North |  | 20d | 2025-04-14 A | 2025-06-03 A | P2.L4.N.1180, P2.L5.N.1030 | 100% |  | 2025-06-23 | 2025-07-21 |  |  | 80 | P2.B2.22.14.210 | PLMB | P2-5 | Harris | PLMB |  | 1 | TA | TA |  |  |
| P2.L5.N.1090 |  | Framing - Priority Walls & Door Frames / L5 / North |  | 10d | 2025-04-23 A | 2025-05-23 A | P2.L4.N.1090, P2.L5.N.1010 | 100% |  | 2025-05-15 | 2025-05-29 |  |  | 80 | P2.B2.09.21.310 | GYP | P2-5 |  | GYP-1 |  |  |  |  |  |  |
| P2.L5.N.1140 |  | Hang/Tape/Finish - Priority Walls / L5 / North |  | 10d | 2025-05-13 A | 2025-06-30 A | P2.L5.N.1020, P2.L5.N.1130 | 100% |  | 2025-06-16 | 2025-06-27 |  |  | 80 | P2.B2.09.21.210 | GYP | P2-5 |  | GYP-1 |  |  | ND | ND |  |  |
| P2.L5.N.1130 |  | Framing - Priority Walls - AHJ Inspections / L5 / North |  | 5d | 2025-05-14 A | 2025-05-27 A | P2.L5.N.1090 | 100% |  | 2025-06-09 | 2025-06-13 |  |  | 80 | P2.B2.01.43.010 | FM | P2-5 |  | FM |  |  |  |  |  |  |
| P2.L5.N.1160 |  | Spray/Seal/Firestop - Head of Wall - Priority Walls / L5 / North |  | 5d | 2025-05-19 A | 2025-05-23 A | P2.L5.N.1140 FF | 100% |  | 2025-06-23 | 2025-06-27 |  |  | 80 | P2.B2.07.84.410 | FIRESTO | P2-5 |  | FIRESTO | AT47 |  |  |  |  |  |
| P2.L5.N.1150 |  | Paint Prime & 1st Coat - Priority Walls / L5 / North |  | 10d | 2025-05-22 A | 2025-06-30 A | P2.L5.N.1160 SS | 100% |  | 2025-06-23 | 2025-07-07 |  |  | 80 | P2.B2.09.91.110 | PAINT | P2-5 |  | PAINT-1 |  |  | TA | TA |  |  |
| P2.L5.N.1230 |  | OH - Electrical - 208/120v Branch / L5 / North |  | 10d | 2025-06-16 A | 2025-10-10 A | P2.L5.N.1190 | 100% |  | 2025-07-24 | 2025-08-06 |  |  | 80 | P2.B2.26.05.310 | ELEC | P2-5 |  | ELEC-2 |  | 2 | TA | TA |  |  |
| P2.L5.N.1190 |  | OH - Electrical - 480/277v Distribution / L5 / North |  | 10d | 2025-07-01 A | 2025-07-15 A | P2.L5.N.1030, P2.L5.N.1150 | 100% |  | 2025-08-01 | 2025-08-14 |  |  | 80 | P2.B2.26.05.210 | ELEC | P2-5 |  | ELEC-2 |  | 1 | TA | TA |  |  |
| FRG.P2.L5.N.1000 |  | HVAC Piping - Steel Racks Delivery / L5 / North - FRAGNET | milestone | 0d | 2025-08-01 A | 2025-08-01 A | P2.L5.N.1030 FF | 100% |  |  |  |  |  | 80 | P2.B2.23.20.410 | Harris Fragnet | P2-5 | Harris | FIT-2 |  | 2 | TA | TA | O |  |
| FRG.P2.L5.N.1010 |  | HVAC Piping - Delivery / L5 / North - FRAGNET | milestone | 0d | 2025-08-08 A | 2025-08-08 A | P2.L5.N.1030 FF | 100% |  |  |  |  |  | 80 | P2.B2.23.20.410 | Harris Fragnet | P2-5 | Harris | FIT-2 |  | 2 | TA | TA | O |  |
| FRG.P2.L5.N.1020 |  | HVAC Piping - Welding Steel Racks / L5 / North - FRAGNET |  | 20d | 2025-08-08 A | 2025-09-29 A | FRG.P2.L5.N.1000 | 100% |  | 2025-08-08 | 2025-09-05 |  |  | 80 | P2.B2.23.20.410 | Harris Fragnet | P2-5 | Harris | FIT-2 |  | 2 | TA | TA | O |  |
| FRG.P2.L5.N.1030 |  | HVAC Piping - Stick Build Copper Racks / L5 / North - FRAGNET |  | 20d | 2025-08-11 A | 2025-09-09 A | FRG.P2.L5.N.1010 | 100% |  | 2025-09-02 | 2025-09-29 |  |  | 80 | P2.B2.23.20.410 | Harris Fragnet | P2-5 | Harris | FIT-2 |  | 2 | TA | TA | O |  |
| P2.L5.N.1210 |  | OH - Hang Duct - HP Mains / L5 / North |  | 20d | 2025-08-13 A | 2025-09-29 A | P2.L5.N.1030 | 100% |  | 2025-08-08 | 2025-09-05 |  |  | 80 | P2.B2.23.30.210 | HVAC | P2-5 | Harris | HVAC |  | 1 | TA | TA | O |  |
| FRG.P2.L5.N.1760 |  | HVAC Piping - Hanging Copper Racks / L5 / North - FRAGNET |  | 20d | 2025-09-10 A | 2025-10-02 A | FRG.P2.L5.N.1030 | 100% |  | 2025-10-01 | 2025-10-28 |  |  | 80 | P2.B2.23.20.410 | Harris Fragnet | P2-5 | Harris | FIT-2 |  | 2 | TA | TA |  |  |
| P2.L5.N.1260 |  | OH - DALT - HP Mains / L5 / North |  | 10d | 2025-09-15 A | 2025-09-26 A | P2.L5.N.1210 | 100% |  | 2025-10-01 | 2025-10-14 |  |  | 80 | P2.B2.23.30.310 | TAB | P2-5 | Harris | TAB-1 |  | 2 | TA | TA | O |  |
| P2.L5.N.1560 |  | OH - Plumbing Piping (Low) / L5 / North |  | 20d | 2025-09-18 A | 2025-09-24 A | P2.L5.N.1180 | 100% |  | 2025-10-01 | 2025-10-28 |  |  | 80 | P2.B2.22.14.210 | PLMB | P2-5 | Harris | PLMB |  | 1 | TA | TA | O |  |
| P2.L5.N.1220 |  | OH - HVAC Piping / L5 / North |  | 20d | 2025-10-06 A | 2025-10-26 A | P2.L5.N.1170, P2.L5.N.1030, FRG.P2.L5.N.1760, FRG.P2.L5.N.1020 | 100% |  | 2025-10-03 | 2025-10-30 |  |  | 80 | P2.B2.23.20.410 | FIT | P2-5 | Harris | FIT-2 |  | 2 | TA | TA | O |  |
| P2.L5.N.1420 |  | Framing - Balance of Framing & Door Frames / L5 / North |  | 10d | 2025-10-13 A | 2025-10-31 A | P2.L5.N.1150 | 100% |  | 2025-10-01 | 2025-10-14 |  |  | 80 | A1310 | GYP | P2-5 |  | GYP-1 |  |  | TA | TA |  |  |
| P2.L5.N.1430 |  | In Wall - Plumbing - Framing / L5 / North |  | 10d | 2025-10-13 A | 2025-11-07 A | P2.L5.N.1420 | 100% |  | 2025-10-13 | 2025-10-24 |  |  | 80 | P2.B2.22.05.410 | PLMB | P2-5 | Harris | PLMB |  |  | TA | TA |  |  |
| P2.L5.N.1440 |  | In Wall - Electrical - Framing / L5 / North |  | 10d | 2025-10-13 A | 2025-11-14 A | P2.L5.N.1230, P2.L5.N.1420, P2.L5.N.1430 FF+5d | 100% |  | 2025-10-20 | 2025-10-31 |  |  | 80 | P2.B2.26.05.610 | ELEC | P2-5 |  | ELEC-2 |  |  | TA | TA |  |  |
| P2.L5.N.1450 |  | In Wall - Backing/Blocking/Supports / L5 / North |  | 10d | 2025-10-13 A | 2025-11-07 A | P2.L5.N.1420 | 100% |  | 2025-10-13 | 2025-10-24 |  |  | 80 | P2.B2.09.21.510 | R/I.IW | P2-5 |  | R/I.IW |  |  | TA | TA |  |  |
| P2.L5.N.1240 |  | OH - Plumbing - Test / L5 / North |  | 10d | 2025-10-27 A | 2025-11-04 A | P2.L5.N.1560 | 100% |  | 2025-10-01 | 2025-10-14 |  |  | 80 | P2.B2.22.14.310 | PLMB | P2-5 | Harris | PLMB |  | 2 | TA | TA |  |  |
| P2.L5.N.1300 |  | OH - Hang Duct - LP Branch / L5 / North |  | 15d | 2025-10-29 A | 2025-11-14 A | P2.L5.N.1260, P2.L5.N.1290 | 100% |  | 2025-10-29 | 2025-11-18 |  |  | 80 | P2.B2.23.30.410 | HVAC | P2-5 | Harris | HVAC |  | 3 | TA | TA |  |  |
| P2.L5.N.1280 |  | OH - Insulate Plumbing / L5 / North |  | 10d | 2025-11-05 A | 2025-11-19 A | P2.L5.N.1240 | 100% |  | 2025-12-08 | 2025-12-19 |  |  | 80 | P2.B2.22.07.510 | INSUL | P2-5 | Harris | INSUL-3 |  | 3 | TA | TA |  |  |
| P2.L5.N.1270 |  | OH - HVAC Piping - Test / L5 / North |  | 5d | 2025-11-19 A | 2025-11-24 A | P2.L5.N.1220 | 100% |  | 2025-12-08 | 2025-12-12 |  |  | 80 | P2.B2.23.20.510 | FIT | P2-5 | Harris | FIT-2 |  | 3 | TA | TA | O |  |
| P2.L5.N.1290 |  | OH - Insulate HP Duct / L5 / North |  | 20d | 2025-12-01 A | 2025-12-12 A | P2.L5.N.1260 | 100% |  | 2026-01-02 | 2026-01-29 |  |  | 80 | P2.B2.23.07.310 | INSUL | P2-5 | Harris | INSUL-3 |  | 3 | TA | TA | O |  |
| P2.L5.N.1340 |  | OH - Insulate HVAC Pipe / L5 / North |  | 10d | 2025-12-15 A | 2026-02-21 A | P2.L5.N.1270, P2.L5.N.1290 | 100% |  | 2026-01-30 | 2026-02-12 |  |  | 80 | P2.B2.22.07.610 | INSUL | P2-5 | Harris | INSUL-3 |  | 4 | TA | TA | O |  |
| P2.L5.N.1380 |  | OH - Conduit - Low Volt - Fire Alarm / L5 / North |  | 10d | 2025-12-22 A | 2026-02-14 A | P2.L5.N.1020 | 100% |  | 2026-02-20 | 2026-03-05 |  |  | 80 |  | FA | P2-5 |  | FA-1 |  | 5 | TA | TA |  |  |
| P2.L5.N.1390 |  | OH - Conduit - Low Volt - Telecom / L5 / North |  | 10d | 2025-12-22 A | 2026-04-14 | P2.L5.N.1290 |  | 10d | 2026-02-20 | 2026-03-05 | 26d | 0d | 80 |  | ELEC | P2-5 |  | ELEC-2 |  | 5 | TA | JPC |  |  |
| P2.L5.N.1480 |  | Spray/Seal/Firestop - Head of Wall / L5 / North |  | 10d | 2026-01-12 A | 2026-01-23 A | P2.L5.N.1470 | 100% |  | 2026-01-30 | 2026-02-12 |  |  | 80 | P2.B2.07.84.310 | FIRSAFE | P2-5 |  | FIRSAFE | AT47 | To Finishes - Paint |  | TA | O |  |
| P2.L5.N.1460 |  | AHJ Inspections - Wall Close In / L5 / North |  | 5d | 2026-01-15 A | 2026-01-22 A | P2.L5.N.1440, P2.L5.N.1450, P2.L5.N.1430 | 100% |  | 2026-01-02 | 2026-01-08 |  |  | 40 | P2.B2.01.43.110 | FM | P2-5 |  | FM |  |  | TA | TA | O | 1 |
| P2.L5.N.1490 |  | Firestop - Thru Wall / L5 / North |  | 10d | 2026-01-19 A | 2026-02-21 A | P2.L5.N.1470, P2.L5.N.1280 | 100% |  | 2026-01-30 | 2026-02-12 |  |  | 80 | P2.B2.07.84.210 | FIRESTO | P2-5 |  | FIRESTO | AT48 | To Finishes - Paint |  | TA | O |  |
| P2.L5.N.1200 |  | Firestop - Thru Wall - Priority Walls / L5 / North |  | 5d | 2026-01-20 A | 2026-02-21 A | P2.L5.N.1150 | 100% |  | 2026-01-02 | 2026-01-08 |  |  | 80 | P2.B2.07.84.110 | FIRESTO | P2-5 |  | FIRESTO | AT48 |  | TA | TA | O |  |
| P2.L5.N.1470 |  | Hang-Tape-Finish - Walls and Hard Lid Ceilings / L5 / North |  | 15d | 2026-01-21 A | 2026-02-27 A | P2.SUM.175, P2.L5.N.1460 | 100% |  | 2026-01-09 | 2026-01-29 |  |  | 80 | P2.B2.09.21.710 | GYP | P2-5 |  | GYP-1 |  |  |  | TA | O | 1 |
| P2.L5.N.1310 |  | OH - Set & Connect Mech Equipment / L5 / North |  | 10d | 2026-02-23 A | 2026-04-07 | P2.L5.N.1260 | 50% | 5d | 2026-03-02 | 2026-03-13 | -1d | 0d | 80 | P2.B2.23.82.110 | HVAC | P2-5 | Harris | HVAC |  | 3 | TA | JPC | O |  |
| P2.L5.N.1250 |  | Pull Wire - Electrical - 480/277v Distribution / L5 / North |  | 10d | 2026-04-01 | 2026-04-14 | P2.L5.N.1190, P2.5.HE.2949.1050, P2.5.HE.2803.1050 |  |  |  |  | 36d | 25d | 80 |  | ELEC | P2-5 |  | ELEC-2 |  | To Trim Devices & Term Panel | TA | JPC | O |  |
| P2.L5.N.1350 |  | OH - Insulate LP Duct / L5 / North |  | 10d | 2026-04-01 | 2026-04-14 | P2.L5.N.1300, P2.L5.N.1200 |  |  |  |  | 21d | 10d | 80 | P2.B2.23.07.410 | INSUL | P2-5 | Harris | INSUL-3 |  | 4 | TA | JPC |  |  |
| P2.L5.N.1400 |  | OH - Conduit - Low Volt - Security / L5 / North |  | 10d | 2026-04-01 | 2026-04-14 | P2.L5.N.1340 |  |  |  |  | 26d | 0d | 80 |  | ELEC | P2-5 |  | ELEC-2 |  | 5 | TA | JPC |  |  |
| P2.L5.N.1510 |  | Pull Wire - Low Volt - Fire Alarm / L5 / North |  | 10d | 2026-04-01 | 2026-04-14 | P2.L5.N.1380 |  |  |  |  | 36d | 25d | 80 |  | FA | P2-5 |  | FA-1 |  | To Trim Finishes |  | JPC |  |  |
| P2.L5.N.1320 |  | OH - Electrical - Equip Tie In / L5 / North |  | 10d | 2026-04-08 | 2026-04-21 | P2.L5.N.1310 |  |  |  |  | 11d | 0d | 80 | P2.B2.26.05.410 | ELEC | P2-5 |  | ELEC-2 |  | 4 | TA | JPC | O |  |
| P2.L5.N.1370 |  | OH - Conduit - Low Volt - BAS/Controls / L5 / North |  | 10d | 2026-04-08 | 2026-04-21 | P2.L5.N.1310, P2.L5.N.1340 |  |  |  |  | -1d | 0d | 80 |  | BAS | P2-5 | Harris | BAS-1 |  | 5 | TA | JPC |  |  |
| P2.L5.N.1520 |  | Pull Wire - Low Volt - Telecom / L5 / North |  | 10d | 2026-04-15 | 2026-04-28 | P2.L5.N.1390 |  |  |  |  | 26d | 15d | 80 |  | CIT | P2-5 |  | CIT |  | To Trim Finishes |  | JPC |  |  |
| P2.L5.N.1530 |  | Pull Wire - Low Volt - Security / L5 / North |  | 10d | 2026-04-15 | 2026-04-28 | P2.L5.N.1400 |  |  |  |  | 26d | 15d | 80 |  | LOWVOLT | P2-5 |  | LOWVOLT-1 |  | To Trim Finishes |  | JPC |  |  |
| P2.L5.N.1360 |  | Pull Wire - Electrical - 208/120v Branch & Equip / L5 / North |  | 20d | 2026-04-22 | 2026-05-19 | P2.L5.N.1230, P2.L5.N.1320, P2.L5.N.1440 |  |  |  |  | 11d | 0d | 80 |  | ELEC | P2-5 |  | ELEC-2 |  | To Trim Devices & Term Panel | TA | JPC | O |  |
| P2.L5.N.1500 |  | Pull Wire - Low Volt - BAS/Controls / L5 / North |  | 10d | 2026-04-22 | 2026-05-05 | P2.L5.N.1370 |  |  |  |  | -1d | 0d | 80 |  | BAS | P2-5 | Harris | BAS-1 |  | To Trim Finishes |  | JPC |  |  |
| P2.L5.N.1330 |  | OH - HVAC Piping - Equip Tie In / L5 / North |  | 15d | 2026-04-29 | 2026-05-19 | P2.L5.N.1270, P2.L5.N.1310, CX.B2.HYDR.1000, P2.L5.N.1350 |  |  |  |  | 11d | 0d | 80 | P2.B2.23.20.610 | FIT | P2-5 | Harris | FIT-2 |  |  | TA | JPC |  |  |
| P2.L5.N.1550 |  | Trades Inspect & Verify R/I Work Completed to Specs / L5 / North |  | 5d | 2026-05-20 | 2026-05-27 | P2.L5.N.1490, P2.L5.N.1480, P2.L5.N.1510, P2.L5.N.1520, P2.L5.N.1530, P2.L5.N.1250, P2.L5.N.1360, P2.L5.N.1500, P2.L5.N.1330 |  |  |  |  | 11d | 10d | 40 |  | T | P2-5 |  | T |  |  |  | JPC |  |  |

Notes:
- FRG.P2.L5.N.1000: NOTES: Per Harris schedule
- P2.L5.N.1220: NOTES: Per Harris Schedule 11/4/25. unactualized start to show new completion date.

| ID | WBS | Activity | Type | Duration | Start | Finish | Predecessors | Complete | Planned start | Planned finish | Total float | Free float | Temp Orig Dur | Resp / SRLM | PHASE | RESP / Trade | 744 | RESP UPD | Update Status | Testing Type | Z.RESP |
| --- | --- | --- | --- | --- | --- | --- | --- | --- | --- | --- | --- | --- | --- | --- | --- | --- | --- | --- | --- | --- | --- |
|  | 1 | **House Electrical Rooms / Level 5** |  |  | 2025-04-28 | 2026-04-07 |  |  |  |  |  |  |  |  |  |  |  |  |  |  |  |
|  | 9 | **House Electrical Room 5-3989** |  |  | 2025-05-12 | 2026-04-07 |  |  |  |  |  |  |  |  |  |  |  |  |  |  |  |
| P2.5.HE.3989.1000 |  | Framing and Blocking / L5 / South / 3989 |  | 3d | 2025-05-12 A | 2025-05-16 A | P2.L5.S.1090 | 100% | 2025-06-02 | 2025-06-04 |  |  | 24 | GYP | P2-5 | GYP-1 |  |  |  |  |  |
| P2.5.HE.3989.1010 |  | In Wall Rough In / L5 / South / 3989 |  | 2d | 2025-05-20 A | 2025-05-28 A | P2.5.HE.3989.1000 | 100% | 2025-06-05 | 2025-06-06 |  |  | 16 | R/I.IW | P2-5 | R/I.IW |  |  |  |  |  |
| P2.5.HE.3989.1020 |  | Inspections - Wall Close In / L5 / South / 3989 |  | 2d | 2025-05-23 A | 2025-05-27 A | P2.5.HE.3989.1010 | 100% | 2025-06-09 | 2025-06-10 |  |  | 16 | AHJ | P2-5 | AHJ |  |  |  |  |  |
| P2.5.HE.3989.1030 |  | Hang-Tape-Finish / L5 / South / 3989 |  | 5d | 2025-06-16 A | 2025-06-19 A | P2.5.HE.3989.1020, P2.FAC.2.Z1.180, P2.L11.5-9.140 | 100% | 2025-09-11 | 2025-09-17 |  |  | 40 | GYP | P2-5 | GYP-1 | ND | ND |  |  |  |
| P2.5.HE.3989.1040 |  | Paint Prime & 1st Coat / L5 / South / 3989 |  | 2d | 2025-07-01 A | 2025-07-02 A | P2.5.HE.3989.1030 | 100% | 2025-08-15 | 2025-08-18 |  |  | 16 | PAINT | P2-5 | PAINT-1 | ND | ND |  |  |  |
| P2.5.HE.3989.1050 |  | Cans/Troughs/Backboxes/XFMRs / L5 / South / 3989 |  | 5d | 2025-07-21 A | 2025-07-24 A | P2.5.HE.3989.1040 | 100% | 2025-08-19 | 2025-08-25 |  |  | 40 | ELEC | P2-5 | ELEC-2 | ND | ND |  |  |  |
| P2.5.HE.3989.1060 |  | Risers and OH Conduit Connections / L5 / South / 3989 |  | 5d | 2025-08-20 A | 2025-08-27 A | P2.5.HE.3989.1050 | 100% | 2025-09-04 | 2025-09-10 |  |  | 40 | ELEC | P2-5 | ELEC-2 | ND | ND |  |  |  |
| P2.5.HE.3989.1070 |  | Pull Wire - In From Distribution Panels / Out to Branch Circuits / L5 / South / 3989 |  | 5d | 2025-11-03 A | 2025-11-07 A | P2.5.HE.3989.1060, P2.5.HE.3989.1080 | 100% | 2025-12-01 | 2025-12-05 |  |  | 40 | ELEC | P2-5 | ELEC-2 | ND | ND |  |  |  |
| P2.5.HE.3989.1080 |  | Panelboards, Interconnect Wiring, and Remaining Room Buildout of All Systems / L5 / South / 3989 |  | 10d | 2025-12-01 A | 2025-12-12 A | BP1.262.3.100, BP1.262.3.210, P2.5.HE.3989.1060 | 100% | 2026-01-02 | 2026-01-15 |  |  | 80 | ELEC | P2-5 | ELEC-2 | ND | ND | O |  |  |
| P2.5.HE.3989.1100 |  | Paint - Finish Coat / L5 / South / 3989 |  | 2d | 2025-12-10 A | 2025-12-12 A | P2.5.HE.3989.1040 | 100% | 2026-03-26 | 2026-03-27 |  |  | 16 | PAINT | P2-5 | PAINT-1 | ND | ND | O |  |  |
| P2.5.HE.3989.1130 |  | Doors & Hardware / L5 / South / 3989 |  | 2d | 2025-12-18 A | 2025-12-24 A | P2.5.HE.3989.1120 | 100% | 2026-04-03 | 2026-04-06 |  |  | 16 | DFH | P2-5 | DFH | ND | ND | O | AT29 |  |
| P2.5.HE.3989.1120 |  | Flooring / L5 / South / 3989 |  | 2d | 2026-03-09 A | 2026-03-12 A | P2.5.HE.3989.1100 | 100% | 2026-04-29 | 2026-04-30 |  |  | 16 | FLOOR | P2-5 | FLOOR | ND | ND | O |  |  |
| P2.5.HE.3989.1090 |  | Test & Terminate / L5 / South / 3989 |  | 5d | 2026-04-01 | 2026-04-07 | P2.5.HE.3989.1070, P2.5.HE.3989.1080 |  |  |  | 19d | 0d | 40 | ELEC | P2-5 | ELEC-2 | ND | ND | O |  |  |
| P2.5.HE.3989.1110 |  | Trim All MEPF Finishes / L5 / South / 3989 |  | 2d | 2026-04-01 | 2026-04-02 | P2.5.HE.3989.1100 |  |  |  | 22d | 3d | 16 | MEP | P2-5 | MEP-2 | ND | ND | O |  | Harris |
| P2.5.HE.3989.1140 |  | Panels Ready to Energize - Lock Doors and Limit Access / L5 / South / 3989 | milestone | 0d | 2026-04-07 | 2026-04-07 | P2.5.HE.3989.1090, P2.5.HE.3989.1130 FF, P2.5.HE.3989.1110 FF |  |  |  | 19d | 20d | 0 | ELEC | P2-5 | ELEC-2 | ND | ND |  |  |  |
|  | 8 | **House Electrical Room 5-2949** |  |  | 2025-04-28 | 2026-04-07 |  |  |  |  |  |  |  |  |  |  |  |  |  |  |  |
| P2.5.HE.2949.1000 |  | Framing and Blocking / L5 / North / 2949 |  | 3d | 2025-04-28 A | 2025-05-02 A | P2.L5.N.1090 | 100% | 2025-06-09 | 2025-06-11 |  |  | 24 | GYP | P2-5 | GYP-1 |  |  |  |  |  |
| P2.5.HE.2949.1010 |  | In Wall Rough In / L5 / North / 2949 |  | 2d | 2025-05-01 A | 2025-05-02 A | P2.5.HE.2949.1000 | 100% | 2025-06-12 | 2025-06-13 |  |  | 16 | R/I.IW | P2-5 | R/I.IW |  |  |  |  |  |
| P2.5.HE.2949.1030 |  | Hang-Tape-Finish / L5 / North / 2949 |  | 5d | 2025-05-02 A | 2025-05-08 A | P2.5.HE.2949.1020, P2.MR.W.160 | 100% | 2025-06-18 | 2025-06-24 |  |  | 40 | GYP | P2-5 | GYP-1 |  |  |  |  |  |
| P2.5.HE.2949.1020 |  | Inspections - Wall Close In / L5 / North / 2949 |  | 2d | 2025-05-05 A | 2025-05-05 A | P2.5.HE.2949.1010 | 100% | 2025-06-16 | 2025-06-17 |  |  | 16 | AHJ | P2-5 | AHJ |  |  |  |  |  |
| P2.5.HE.2949.1040 |  | Paint Prime & 1st Coat / L5 / North / 2949 |  | 2d | 2025-05-08 A | 2025-05-09 A | P2.5.HE.2949.1030 | 100% | 2025-06-25 | 2025-06-26 |  |  | 16 | PAINT | P2-5 | PAINT-1 |  |  |  |  |  |
| P2.5.HE.2949.1050 |  | Cans/Troughs/Backboxes/XFMRs / L5 / North / 2949 |  | 5d | 2025-06-23 A | 2025-06-30 A | P2.5.HE.2949.1040 | 100% | 2025-07-01 | 2025-07-08 |  |  | 40 | ELEC | P2-5 | ELEC-2 | ND | ND |  |  |  |
| P2.5.HE.2949.1060 |  | Risers and OH Conduit Connections / L5 / North / 2949 |  | 5d | 2025-06-23 A | 2025-06-30 A | P2.5.HE.2949.1050 | 100% | 2025-07-09 | 2025-07-15 |  |  | 40 | ELEC | P2-5 | ELEC-2 | ND | ND |  |  |  |
| P2.5.HE.2949.1070 |  | Pull Wire - In From Distribution Panels / Out to Branch Circuits / L5 / North / 2949 |  | 5d | 2025-11-03 A | 2025-11-07 A | P2.5.HE.2949.1060 | 100% | 2025-12-01 | 2025-12-05 |  |  | 40 | ELEC | P2-5 | ELEC-2 | ND | ND |  |  |  |
| P2.5.HE.2949.1080 |  | Panelboards, Interconnect Wiring, and Remaining Room Buildout of All Systems / L5 / North / 2949 |  | 10d | 2025-12-01 A | 2025-12-12 A | BP1.262.3.100, BP1.262.3.210, P2.5.HE.2949.1060 | 100% | 2026-01-02 | 2026-01-15 |  |  | 80 | ELEC | P2-5 | ELEC-2 | ND | ND | O |  |  |
| P2.5.HE.2949.1100 |  | Paint - Finish Coat / L5 / North / 2949 |  | 2d | 2025-12-10 A | 2025-12-12 A | P2.5.HE.2949.1040 | 100% | 2026-03-26 | 2026-03-27 |  |  | 16 | PAINT | P2-5 | PAINT-1 | ND | ND | O |  |  |
| P2.5.HE.2949.1130 |  | Doors & Hardware / L5 / North / 2949 |  | 2d | 2025-12-18 A | 2025-12-24 A | P2.5.HE.2949.1120 | 100% | 2026-04-03 | 2026-04-06 |  |  | 16 | DFH | P2-5 | DFH | ND | ND | O | AT29 |  |
| P2.5.HE.2949.1120 |  | Flooring / L5 / North / 2949 |  | 2d | 2026-03-09 A | 2026-03-12 A | P2.5.HE.2949.1100 | 100% | 2026-04-29 | 2026-04-30 |  |  | 16 | FLOOR | P2-5 | FLOOR | ND | ND | O |  |  |
| P2.5.HE.2949.1090 |  | Test & Terminate / L5 / North / 2949 |  | 5d | 2026-04-01 | 2026-04-07 | P2.5.HE.2949.1070, P2.5.HE.2949.1080 |  |  |  | 19d | 0d | 40 | ELEC | P2-5 | ELEC-2 | ND | ND | O |  |  |
| P2.5.HE.2949.1110 |  | Trim All MEPF Finishes / L5 / North / 2949 |  | 2d | 2026-04-01 | 2026-04-02 | P2.5.HE.2949.1100 |  |  |  | 22d | 3d | 16 | MEP | P2-5 | MEP-2 | ND | ND | O |  | Harris |
| P2.5.HE.2949.1140 |  | Panels Ready to Energize - Lock Doors and Limit Access / L5 / North / 2949 | milestone | 0d | 2026-04-07 | 2026-04-07 | P2.5.HE.2949.1090, P2.5.HE.2949.1130 FF, P2.5.HE.2949.1110 FF |  |  |  | 19d | 20d | 0 | ELEC | P2-5 | ELEC-2 | ND | ND |  |  |  |

| ID | WBS | Activity | Type | Duration | Start | Finish | Predecessors | Complete | Planned start | Planned finish | Total float | Free float | Temp Orig Dur | Resp / SRLM | PHASE | RESP / Trade | 744 | RESP UPD | Update Status | Testing Type | Z.RESP |
| --- | --- | --- | --- | --- | --- | --- | --- | --- | --- | --- | --- | --- | --- | --- | --- | --- | --- | --- | --- | --- | --- |
|  | 7 | **House Electrical Room 5-2803** |  |  | 2025-05-26 | 2026-04-07 |  |  |  |  |  |  |  |  |  |  |  |  |  |  |  |
| P2.5.HE.2803.1000 |  | Framing and Blocking / L5 / North / 2803 |  | 3d | 2025-05-26 A | 2025-05-27 A | P2.L5.N.1090 | 100% | 2025-06-09 | 2025-06-11 |  |  | 24 | GYP | P2-5 | GYP-1 |  |  |  |  |  |
| P2.5.HE.2803.1010 |  | In Wall Rough In / L5 / North / 2803 |  | 2d | 2025-06-09 A | 2025-06-19 A | P2.5.HE.2803.1000 | 100% | 2025-07-01 | 2025-07-02 |  |  | 16 | R/I.IW | P2-5 | R/I.IW | ND | ND |  |  |  |
| P2.5.HE.2803.1020 |  | Inspections - Wall Close In / L5 / North / 2803 |  | 2d | 2025-06-16 A | 2025-06-19 A | P2.5.HE.2803.1010 | 100% | 2025-07-03 | 2025-07-07 |  |  | 16 | AHJ | P2-5 | AHJ | ND | ND |  |  |  |
| P2.5.HE.2803.1030 |  | Hang-Tape-Finish / L5 / North / 2803 |  | 5d | 2025-06-23 A | 2025-06-30 A | P2.5.HE.2803.1020, P2.FAC.2.Z1.190, P2.MR.2-8.140 | 100% | 2025-08-22 | 2025-08-28 |  |  | 40 | GYP | P2-5 | GYP-1 | ND | ND |  |  |  |
| P2.5.HE.2803.1040 |  | Paint Prime & 1st Coat / L5 / North / 2803 |  | 2d | 2025-07-01 A | 2025-07-02 A | P2.5.HE.2803.1030 | 100% | 2025-08-12 | 2025-08-13 |  |  | 16 | PAINT | P2-5 | PAINT-1 | ND | ND |  |  |  |
| P2.5.HE.2803.1050 |  | Cans/Troughs/Backboxes/XFMRs / L5 / North / 2803 |  | 5d | 2025-07-21 A | 2025-07-24 A | P2.5.HE.2803.1040 | 100% | 2025-08-14 | 2025-08-20 |  |  | 40 | ELEC | P2-5 | ELEC-2 | ND | ND |  |  |  |
| P2.5.HE.2803.1060 |  | Risers and OH Conduit Connections / L5 / North / 2803 |  | 5d | 2025-08-20 A | 2025-08-25 A | P2.5.HE.2803.1050 | 100% | 2025-09-04 | 2025-09-10 |  |  | 40 | ELEC | P2-5 | ELEC-2 | ND | ND |  |  |  |
| P2.5.HE.2803.1070 |  | Pull Wire - In From Distribution Panels / Out to Branch Circuits / L5 / North / 2803 |  | 5d | 2025-11-05 A | 2025-11-11 A | P2.5.HE.2803.1060 | 100% | 2025-12-03 | 2025-12-09 |  |  | 40 | ELEC | P2-5 | ELEC-2 | ND | ND |  |  |  |
| P2.5.HE.2803.1080 |  | Panelboards, Interconnect Wiring, and Remaining Room Buildout of All Systems / L5 / North / 2803 |  | 10d | 2025-12-01 A | 2025-12-12 A | BP1.262.3.100, BP1.262.3.210, P2.5.HE.2803.1060 | 100% | 2026-01-02 | 2026-01-15 |  |  | 80 | ELEC | P2-5 | ELEC-2 | ND | ND | O |  |  |
| P2.5.HE.2803.1100 |  | Paint - Finish Coat / L5 / North / 2803 |  | 2d | 2025-12-10 A | 2025-12-12 A | P2.5.HE.2803.1040 | 100% | 2026-03-26 | 2026-03-27 |  |  | 16 | PAINT | P2-5 | PAINT-1 | ND | ND | O |  |  |
| P2.5.HE.2803.1130 |  | Doors & Hardware / L5 / North / 2803 |  | 2d | 2025-12-18 A | 2025-12-24 A | P2.5.HE.2803.1120 | 100% | 2026-04-03 | 2026-04-06 |  |  | 16 | DFH | P2-5 | DFH | ND | ND | O | AT29 |  |
| P2.5.HE.2803.1120 |  | Flooring / L5 / North / 2803 |  | 2d | 2026-03-09 A | 2026-03-12 A | P2.5.HE.2803.1100 | 100% | 2026-04-29 | 2026-04-30 |  |  | 16 | FLOOR | P2-5 | FLOOR | ND | ND | O |  |  |
| P2.5.HE.2803.1090 |  | Test & Terminate / L5 / North / 2803 |  | 5d | 2026-04-01 | 2026-04-07 | P2.5.HE.2803.1080, P2.5.HE.2803.1070 |  |  |  | 19d | 0d | 40 | ELEC | P2-5 | ELEC-2 | ND | ND | O |  |  |
| P2.5.HE.2803.1110 |  | Trim All MEPF Finishes / L5 / North / 2803 |  | 2d | 2026-04-01 | 2026-04-02 | P2.5.HE.2803.1100 |  |  |  | 22d | 3d | 16 | MEP | P2-5 | MEP-2 | ND | ND | O |  | Harris |
| P2.5.HE.2803.1140 |  | Panels Ready to Energize - Lock Doors and Limit Access / L5 / North / 2803 | milestone | 0d | 2026-04-07 | 2026-04-07 | P2.5.HE.2803.1090, P2.5.HE.2803.1130 FF, P2.5.HE.2803.1110 FF |  |  |  | 19d | 20d | 0 | ELEC | P2-5 | ELEC-2 | ND | ND |  |  |  |
|  | 6 | **House Electrical Room 5-5966** |  |  | 2025-06-02 | 2026-04-07 |  |  |  |  |  |  |  |  |  |  |  |  |  |  |  |
| P2.5.HE.5966.1000 |  | Framing and Blocking / L5 / South / 5966 |  | 3d | 2025-06-02 A | 2025-06-04 A | P2.L5.S.1090 | 100% | 2025-07-01 | 2025-07-03 |  |  | 24 | GYP | P2-5 | GYP-1 | ND | ND |  |  |  |
| P2.5.HE.5966.1010 |  | In Wall Rough In / L5 / South / 5966 |  | 2d | 2025-06-04 A | 2025-06-09 A | P2.5.HE.5966.1000 | 100% | 2025-07-07 | 2025-07-08 |  |  | 16 | R/I.IW | P2-5 | R/I.IW | ND | ND |  |  |  |
| P2.5.HE.5966.1020 |  | Inspections - Wall Close In / L5 / South / 5966 |  | 2d | 2025-06-09 A | 2025-06-13 A | P2.5.HE.5966.1010 | 100% | 2025-07-09 | 2025-07-10 |  |  | 16 | AHJ | P2-5 | AHJ | ND | ND |  |  |  |
| P2.5.HE.5966.1030 |  | Hang-Tape-Finish / L5 / South / 5966 |  | 5d | 2025-06-16 A | 2025-06-27 A | P2.5.HE.5966.1020, P2.LR.L7.170 | 100% | 2025-09-09 | 2025-09-15 |  |  | 40 | GYP | P2-5 | GYP-1 | ND | ND |  |  |  |
| P2.5.HE.5966.1040 |  | Paint Prime & 1st Coat / L5 / South / 5966 |  | 2d | 2025-07-14 A | 2025-07-15 A | P2.5.HE.5966.1030 | 100% | 2025-08-28 | 2025-08-29 |  |  | 16 | PAINT | P2-5 | PAINT-1 | ND | ND |  |  |  |
| P2.5.HE.5966.1050 |  | Cans/Troughs/Backboxes/XFMRs / L5 / South / 5966 |  | 5d | 2025-07-16 A | 2025-07-22 A | P2.5.HE.5966.1040 | 100% | 2025-09-02 | 2025-09-08 |  |  | 40 | ELEC | P2-5 | ELEC-2 | ND | ND |  |  |  |
| P2.5.HE.5966.1060 |  | Risers and OH Conduit Connections / L5 / South / 5966 |  | 5d | 2025-08-20 A | 2025-08-27 A | P2.5.HE.5966.1050 | 100% | 2025-09-26 | 2025-10-02 |  |  | 40 | ELEC | P2-5 | ELEC-2 | ND | ND |  |  |  |
| P2.5.HE.5966.1070 |  | Pull Wire - In From Distribution Panels / Out to Branch Circuits / L5 / South / 5966 |  | 5d | 2025-11-10 A | 2025-11-14 A | P2.5.HE.5966.1060 | 100% | 2025-12-08 | 2025-12-12 |  |  | 40 | ELEC | P2-5 | ELEC-2 | ND | ND |  |  |  |
| P2.5.HE.5966.1080 |  | Panelboards, Interconnect Wiring, and Remaining Room Buildout of All Systems / L5 / South / 5966 |  | 10d | 2025-12-01 A | 2025-12-12 A | BP1.262.3.100, BP1.262.3.210, P2.5.HE.5966.1060 | 100% | 2026-02-27 | 2026-03-12 |  |  | 80 | ELEC | P2-5 | ELEC-2 | ND | ND | O |  |  |
| P2.5.HE.5966.1100 |  | Paint - Finish Coat / L5 / South / 5966 |  | 2d | 2025-12-10 A | 2025-12-12 A | P2.5.HE.5966.1040 | 100% | 2026-03-26 | 2026-03-27 |  |  | 16 | PAINT | P2-5 | PAINT-1 | ND | ND | O |  |  |
| P2.5.HE.5966.1130 |  | Doors & Hardware / L5 / South / 5966 |  | 2d | 2025-12-18 A | 2025-12-24 A | P2.5.HE.5966.1120 | 100% | 2026-04-03 | 2026-04-06 |  |  | 16 | DFH | P2-5 | DFH | ND | ND | O | AT29 |  |
| P2.5.HE.5966.1120 |  | Flooring / L5 / South / 5966 |  | 2d | 2026-03-09 A | 2026-03-12 A | P2.5.HE.5966.1100 | 100% | 2026-04-29 | 2026-04-30 |  |  | 16 | FLOOR | P2-5 | FLOOR | ND | ND | O |  |  |
| P2.5.HE.5966.1090 |  | Test & Terminate / L5 / South / 5966 |  | 5d | 2026-04-01 | 2026-04-07 | P2.5.HE.5966.1080, P2.5.HE.5966.1070 |  |  |  | 19d | 0d | 40 | ELEC | P2-5 | ELEC-2 | ND | ND | O |  |  |
| P2.5.HE.5966.1110 |  | Trim All MEPF Finishes / L5 / South / 5966 |  | 2d | 2026-04-01 | 2026-04-02 | P2.5.HE.5966.1100 |  |  |  | 22d | 3d | 16 | MEP | P2-5 | MEP-2 | ND | ND | O |  | Harris |
| P2.5.HE.5966.1140 |  | Panels Ready to Energize - Lock Doors and Limit Access / L5 / South / 5966 | milestone | 0d | 2026-04-07 | 2026-04-07 | P2.5.HE.5966.1090, P2.5.HE.5966.1130 FF, P2.5.HE.5966.1110 FF |  |  |  | 19d | 20d | 0 | ELEC | P2-5 | ELEC-2 | ND | ND |  |  |  |

| ID | WBS | Activity | Duration | Start | Finish | Predecessors | Total float | Free float | Pick | Temp Orig Dur | Resp / SRLM | PHASE | RESP UPD | RESP / Trade | *NIH Resp Check* | Z.RESP | Testing Type |
| --- | --- | --- | --- | --- | --- | --- | --- | --- | --- | --- | --- | --- | --- | --- | --- | --- | --- |
|  | 3 | **FINISHES - Core & Support Spaces / Level 5** |  | 2025-06-17 | 2026-11-25 |  |  |  |  |  |  |  |  |  |  |  |  |
|  | 7KSF11 | **DLM Chief - Admin - Offices - Z1/Z2 (2,643 sf) / Level 5** |  | 2026-04-01 | 2026-09-25 |  |  |  |  |  |  |  |  |  |  |  |  |
|  | 1 | **Finishes** |  | 2026-04-01 | 2026-09-25 |  |  |  |  |  |  |  |  |  |  |  |  |
| P2.L5.F.CS.1000 |  | Paint Prime & 1st Coat Walls / L5 / DLM Offices Z1 | 5d | 2026-04-01 | 2026-04-07 | P2.L5.S.1470 | 101d | 0d | From R/I Work Completion | 40 | PAINT | P2-5 | JPC | PAINT-1 |  |  |  |
| P2.L5.F.CS.1010 |  | T-Grid / L5 / DLM Offices Z1 | 5d | 2026-04-08 | 2026-04-14 | P2.L5.F.CS.1000 | 101d | 0d |  | 40 | ACT | P2-5 | JPC | ACT |  |  |  |
| P2.L5.F.CS.1020 |  | R/I - Ceiling Assemblies & Supports - All Trades (A/V, Oper Part, Glass Part, etc.) / L5 / DLM Offices Z1 | 5d | 2026-04-15 | 2026-04-21 | P2.L5.S.1350, P2.L5.F.CS.1010 | 116d | 15d |  | 40 | ACT | P2-5 | JPC | ACT | ! |  |  |
| P2.L5.F.CS.1040 |  | Lights & Elec Devices in T-Grid / L5 / DLM Offices Z1 | 10d | 2026-04-15 | 2026-04-28 | P2.L5.F.CS.1010 | 101d | 0d |  | 40 | ELEC | P2-5 | JPC | ELEC-2 |  |  |  |
| P2.L5.F.CS.1050 |  | Sprinkler Heads in T-Grid / L5 / DLM Offices Z1 | 5d | 2026-04-15 | 2026-04-21 | P2.L5.F.CS.1010 | 106d | 0d |  | 40 | FP | P2-5 | JPC | FP-1 |  |  |  |
| P2.L5.F.CS.1070 |  | Fire Alarm in T-Grid / L5 / DLM Offices Z1 | 5d | 2026-04-15 | 2026-04-21 | P2.L5.F.CS.1010 | 111d | 10d |  | 40 | FA | P2-5 | JPC | FA-1 |  |  |  |
| P2.L5.F.CS.1030 |  | Diffusers in T-Grid / L5 / DLM Offices Z1 | 5d | 2026-04-22 | 2026-04-28 | P2.L5.F.CS.1050, P2.L5.F.CS.1010 | 106d | 5d |  | 40 | HVAC | P2-5 | JPC | HVAC |  | Harris |  |
| P2.L5.F.CS.1060 |  | Low Voltage in T-Grid / L5 / DLM Offices Z1 | 5d | 2026-04-29 | 2026-05-05 | P2.L5.F.CS.1010, P2.L5.F.CS.1040 | 101d | 0d |  | 40 | LOWVOLT | P2-5 | JPC | LOWVOLT-1 |  |  |  |
| P2.L5.F.CS.1080 |  | OH Ceiling Signoff / L5 / DLM Offices Z1 | 5d | 2026-05-06 | 2026-05-12 | P2.L5.F.CS.1060, P2.L5.F.CS.1070, P2.L5.F.CS.1030, P2.L5.F.CS.1040, P2.L5.F.CS.1050 | 101d | 0d |  | 40 | MEP | P2-5 | JPC | MEP |  | Harris |  |
| P2.L5.F.CS.1110 |  | Drop Ceiling Tile / L5 / DLM Offices Z1 | 5d | 2026-05-13 | 2026-05-19 | P2.L5.F.CS.1080, P2.L5.F.CS.1020 | 101d | 0d |  | 40 | ACT | P2-5 | JPC | ACT |  |  |  |
| P2.L5.F.CS.1090 |  | Millwork / L5 / DLM Offices Z1 | 5d | 2026-05-20 | 2026-05-27 | P2.L5.F.CS.1110, P2.L5.F.CS.1080 | 101d | 0d |  | 40 | MILL | P2-5 | JPC | MILL |  |  |  |
| P2.L5.F.CS.1100 |  | Plumbing Fixtures / L5 / DLM Offices Z1 | 5d | 2026-05-28 | 2026-06-03 | P2.L5.F.CS.1090 FF, P2.L5.F.CS.1090, P2.L5.F.CS.1080 | 101d | 0d |  | 40 | PLMB | P2-5 | JPC | PLMB |  | Harris |  |
| P2.L5.F.CS.1120 |  | Floor Prep / L5 / DLM Offices Z1 | 5d | 2026-06-04 | 2026-06-10 | P2.L5.F.CS.1110, P2.L5.F.CS.1090, P2.L5.F.CS.1100 | 101d | 0d |  | 40 | FLOOR | P2-5 | JPC | FLOOR |  |  |  |
| P2.L5.F.CS.1130 |  | Floor Finishes / L5 / DLM Offices Z1 | 5d | 2026-06-11 | 2026-06-17 | P2.L5.F.CS.1120 | 101d | 0d |  | 40 | FLOOR | P2-5 | JPC | FLOOR |  |  |  |
| P2.L5.F.CS.1140 |  | Doors & Hardware / L5 / DLM Offices Z1 | 5d | 2026-06-18 | 2026-06-24 | P2.L5.F.CS.1130 | 101d | 0d |  | 40 | DFH | P2-5 | JPC | DFH |  |  | AT29 |
| P2.L5.F.CS.1150 |  | Paint - Finish Coat / L5 / DLM Offices Z1 | 5d | 2026-06-25 | 2026-07-01 | P2.L5.F.CS.1140, P2.L5.F.CS.1130 | 101d | 0d |  | 40 | PAINT | P2-5 | JPC | PAINT-1 |  |  |  |
| P2.L5.F.CS.1200 |  | Floor Base / L5 / DLM Offices Z1 | 5d | 2026-07-02 | 2026-07-09 | P2.L5.F.CS.1150 | 101d | 0d |  | 40 | FLOOR | P2-5 | JPC | FLOOR |  |  |  |
| P2.L5.F.CS.1170 |  | Trim T-Stats / L5 / DLM Offices Z1 | 5d | 2026-07-10 | 2026-07-16 | P2.L5.F.CS.1150, P2.L5.F.CS.1200 | 101d | 0d |  | 40 | BAS | P2-5 | JPC | BAS-1 |  | Harris |  |
| P2.L5.F.CS.1210 |  | Demountable Partitions / L5 / DLM Offices Z1 | 5d | 2026-07-10 | 2026-07-16 | P2.L5.F.CS.1200 | 111d | 0d |  | 40 | DPART | P2-5 | JPC | DPART | TBD |  |  |
| P2.L5.F.CS.1160 |  | Set AV/IT Devices and Configure / L5 / DLM Offices Z1 | 5d | 2026-07-17 | 2026-07-23 | P2.L5.F.CS.1170, P2.L5.F.CS.1150 | 101d | 0d |  | 40 | LOWVOLT | P2-5 | JPC | LOWVOLT-1 |  |  |  |
| P2.L5.F.CS.1220 |  | Trim Electrical / L5 / DLM Offices Z1 | 5d | 2026-07-17 | 2026-07-23 | P2.L5.F.CS.1170 SS, P2.L5.F.CS.1210 | 111d | 0d |  | 40 | ELEC | P2-5 | JPC | ELEC-2 |  |  |  |
| P2.L5.F.CS.1230 |  | Trim Telephone/ Data / L5 / DLM Offices Z1 | 5d | 2026-07-17 | 2026-07-23 | P2.L5.F.CS.1220 SS | 111d | 10d |  | 40 | LOWVOLT | P2-5 | JPC | LOWVOLT-1 |  |  |  |
| P2.L5.F.CS.1180 |  | Building Specialities / L5 / DLM Offices Z1 | 5d | 2026-07-24 | 2026-07-30 | P2.L5.F.CS.1160, P2.L5.F.CS.1150 | 101d | 0d |  | 40 | SPECIAL | P2-5 | JPC | SPECIAL |  |  |  |
| P2.L5.F.CS.1190 |  | Interior Building Signage / L5 / DLM Offices Z1 | 5d | 2026-07-31 | 2026-08-06 | P2.L5.F.CS.1180, P2.L5.F.CS.1150 | 101d | 0d |  | 40 | SIGN | P2-5 | JPC | SIGN |  |  |  |
| P2.L5.F.CS.1240 |  | Work Completion List - Finishes / L5 / DLM Offices Z1 | 5d | 2026-08-07 | 2026-08-13 | P2.L5.F.CS.1180, P2.L5.F.CS.1100, P2.L5.F.CS.1230, P2.L5.F.CS.1160, P2.L5.F.CS.1190, P2.L5.F.CS.1140 | 101d | 0d |  | 40 | FINISH | P2-5 | JPC | FINISH |  |  |  |
| P2.L5.F.CS.1250 |  | Rough Clean / L5 / DLM Offices Z1 | 5d | 2026-08-14 | 2026-08-20 | P2.L5.F.CS.1240 | 101d | 0d |  | 40 | FCLEAN | P2-5 | JPC | FCLEAN |  |  |  |
| P2.L5.F.CS.1260 |  | FF&E / L5 / DLM Offices Z1 | 5d | 2026-08-21 | 2026-08-27 | P2.L5.F.CS.1250 | 101d | 0d |  | 40 | FURN | P2-5 | JPC | FURN |  |  |  |
| P2.L5.F.CS.1270 |  | Prepare Punchlist / L5 / DLM Offices Z1 | 5d | 2026-08-28 | 2026-09-03 | P2.L5.F.CS.1260 | 101d | 0d |  | 40 | QC | P2-5 | JPC | QC |  |  |  |
| P2.L5.F.CS.1280 |  | Correct Punchlist / L5 / DLM Offices Z1 | 10d | 2026-09-04 | 2026-09-18 | P2.L5.F.CS.1270 | 101d | 0d |  | 80 | FINISH | P2-5 | JPC | FINISH |  |  |  |
| P2.L5.F.CS.1290 |  | Final Clean / L5 / DLM Offices Z1 | 5d | 2026-09-21 | 2026-09-25 | P2.L5.F.CS.1280 | 101d | 113d | To QC | 40 | QC | P2-5 | JPC | QC |  |  |  |

| ID | WBS | Activity | Duration | Start | Finish | Predecessors | Total float | Free float | Pick | Temp Orig Dur | Resp / SRLM | PHASE | RESP UPD | RESP / Trade | *NIH Resp Check* | Z.RESP | Testing Type |
| --- | --- | --- | --- | --- | --- | --- | --- | --- | --- | --- | --- | --- | --- | --- | --- | --- | --- |
|  | 2 | **Closeout** |  |  |  |  |  |  |  |  |  |  |  |  |  |  |  |
|  | 7KSF1 | **HT Chief - Fellows/Students - Offices - Z2/Z3 (~4,300 sf) / Level 5** |  | 2026-04-01 | 2026-10-09 |  |  |  |  |  |  |  |  |  |  |  |  |
|  | 1 | **Finishes** |  | 2026-04-01 | 2026-10-09 |  |  |  |  |  |  |  |  |  |  |  |  |
| P2.L5.F.CS.2000 |  | Paint Prime & 1st Coat Walls / L5 / Perim Offices Z2,Z3 | 5d | 2026-04-01 | 2026-04-07 | P2.L5.S.1470 | 28d | 0d | From R/I Work Completion | 40 | PAINT | P2-5 | JPC | PAINT-1 |  |  |  |
| P2.L5.F.CS.2020 |  | R/I - Ceiling Assemblies & Supports - All Trades (A/V, Oper Part, Glass Part, etc.) / L5 / Perim Offices Z2,Z3 | 5d | 2026-04-08 | 2026-04-14 | P2.L5.F.CS.2000 | 91d | 0d |  | 40 | ACT | P2-5 | JPC | ACT | ! |  |  |
| P2.L5.F.CS.2010 |  | T-Grid / L5 / Perim Offices Z2,Z3 | 5d | 2026-04-15 | 2026-04-21 | P2.L5.F.CS.2020 | 91d | 0d |  | 40 | ACT | P2-5 | JPC | ACT |  |  |  |
| P2.L5.F.CS.2030 |  | Diffusers in T-Grid / L5 / Perim Offices Z2,Z3 | 5d | 2026-04-22 | 2026-04-28 | P2.L5.F.CS.2010 | 106d | 15d |  | 40 | HVAC | P2-5 | JPC | HVAC |  | Harris |  |
| P2.L5.F.CS.2040 |  | Lights & Elec Devices in T-Grid / L5 / Perim Offices Z2,Z3 | 10d | 2026-04-22 | 2026-05-05 | P2.L5.F.CS.2010 | 91d | 0d |  | 40 | ELEC | P2-5 | JPC | ELEC-2 |  |  |  |
| P2.L5.F.CS.2050 |  | Sprinkler Heads in T-Grid / L5 / Perim Offices Z2,Z3 | 5d | 2026-05-06 | 2026-05-12 | P2.L5.F.CS.2010, P2.L5.F.CS.2040 | 91d | 0d |  | 40 | FP | P2-5 | JPC | FP-1 |  |  |  |
| P2.L5.F.CS.2060 |  | Low Voltage in T-Grid / L5 / Perim Offices Z2,Z3 | 5d | 2026-05-06 | 2026-05-12 | P2.L5.F.CS.2010, P2.L5.F.CS.2040 | 96d | 5d |  | 40 | LOWVOLT | P2-5 | JPC | LOWVOLT-1 |  |  |  |
| P2.L5.F.CS.2070 |  | Fire Alarm in T-Grid / L5 / Perim Offices Z2,Z3 | 5d | 2026-05-13 | 2026-05-19 | P2.L5.F.CS.2010, P2.L5.F.CS.2040, P2.L5.F.CS.2050 | 91d | 0d |  | 40 | FA | P2-5 | JPC | FA-1 |  |  |  |
| P2.L5.F.CS.2080 |  | OH Ceiling Signoff / L5 / Perim Offices Z2,Z3 | 5d | 2026-05-20 | 2026-05-27 | P2.L5.F.CS.2040, P2.L5.F.CS.2050, P2.L5.F.CS.2030, P2.L5.F.CS.2060, P2.L5.F.CS.2070 | 91d | 0d |  | 40 | MEP | P2-5 | JPC | MEP |  | Harris |  |
| P2.L5.F.CS.2110 |  | Drop Ceiling Tile / L5 / Perim Offices Z2,Z3 | 5d | 2026-05-28 | 2026-06-03 | P2.L5.F.CS.2080 | 91d | 0d |  | 40 | ACT | P2-5 | JPC | ACT |  |  |  |
| P2.L5.F.CS.2090 |  | Millwork / L5 / Perim Offices Z2,Z3 | 5d | 2026-06-04 | 2026-06-10 | P2.L5.F.CS.2080, P2.L5.F.CS.2110 | 91d | 0d |  | 40 | MILL | P2-5 | JPC | MILL |  |  |  |
| P2.L5.F.CS.2100 |  | Plumbing Fixtures / L5 / Perim Offices Z2,Z3 | 5d | 2026-06-11 | 2026-06-17 | P2.L5.F.CS.2090 FF, P2.L5.F.CS.2090, P2.L5.F.CS.2080 | 91d | 0d |  | 40 | PLMB | P2-5 | JPC | PLMB |  | Harris |  |
| P2.L5.F.CS.2120 |  | Floor Prep / L5 / Perim Offices Z2,Z3 | 5d | 2026-06-18 | 2026-06-24 | P2.L5.F.CS.2090, P2.L5.F.CS.2100, P2.L5.F.CS.2110 | 91d | 0d |  | 40 | FLOOR | P2-5 | JPC | FLOOR |  |  |  |
| P2.L5.F.CS.2130 |  | Floor Finishes / L5 / Perim Offices Z2,Z3 | 5d | 2026-06-25 | 2026-07-01 | P2.L5.F.CS.2120 | 91d | 0d |  | 40 | FLOOR | P2-5 | JPC | FLOOR |  |  |  |
| P2.L5.F.CS.2140 |  | Doors & Hardware / L5 / Perim Offices Z2,Z3 | 5d | 2026-07-02 | 2026-07-09 | P2.L5.F.CS.2130 | 91d | 0d |  | 40 | DFH | P2-5 | JPC | DFH |  |  | AT29 |
| P2.L5.F.CS.2150 |  | Paint - Finish Coat / L5 / Perim Offices Z2,Z3 | 5d | 2026-07-10 | 2026-07-16 | P2.L5.F.CS.2130, P2.L5.F.CS.2140 | 91d | 0d |  | 40 | PAINT | P2-5 | JPC | PAINT-1 |  |  |  |
| P2.L5.F.CS.2200 |  | Floor Base / L5 / Perim Offices Z2,Z3 | 5d | 2026-07-17 | 2026-07-23 | P2.L5.F.CS.2150 | 91d | 0d |  | 40 | FLOOR | P2-5 | JPC | FLOOR |  |  |  |
| P2.L5.F.CS.2170 |  | Trim T-Stats / L5 / Perim Offices Z2,Z3 | 5d | 2026-07-24 | 2026-07-30 | P2.L5.F.CS.2150, P2.L5.F.CS.2200 | 91d | 0d |  | 40 | BAS | P2-5 | JPC | BAS-1 |  | Harris |  |
| P2.L5.F.CS.2210 |  | Demountable Partitions / L5 / Perim Offices Z2,Z3 | 5d | 2026-07-24 | 2026-07-30 | P2.L5.F.CS.2200 | 101d | 0d |  | 40 | DPART | P2-5 | JPC | DPART | TBD |  |  |
| P2.L5.F.CS.2160 |  | Set AV/IT Devices and Configure / L5 / Perim Offices Z2,Z3 | 5d | 2026-07-31 | 2026-08-06 | P2.L5.F.CS.2170, P2.L5.F.CS.2150 | 91d | 0d |  | 40 | LOWVOLT | P2-5 | JPC | LOWVOLT-1 |  |  |  |
| P2.L5.F.CS.2220 |  | Trim Electrical / L5 / Perim Offices Z2,Z3 | 5d | 2026-07-31 | 2026-08-06 | P2.L5.F.CS.2170 SS, P2.L5.F.CS.2210 | 101d | 0d |  | 40 | ELEC | P2-5 | JPC | ELEC-2 |  |  |  |
| P2.L5.F.CS.2230 |  | Trim Telephone/ Data / L5 / Perim Offices Z2,Z3 | 5d | 2026-07-31 | 2026-08-06 | P2.L5.F.CS.2220 SS | 101d | 10d |  | 40 | LOWVOLT | P2-5 | JPC | LOWVOLT-1 |  |  |  |
| P2.L5.F.CS.2180 |  | Building Specialities / L5 / Perim Offices Z2,Z3 | 5d | 2026-08-07 | 2026-08-13 | P2.L5.F.CS.2160, P2.L5.F.CS.2150 | 91d | 0d |  | 40 | SPECIAL | P2-5 | JPC | SPECIAL |  |  |  |
| P2.L5.F.CS.2190 |  | Interior Building Signage / L5 / Perim Offices Z2,Z3 | 5d | 2026-08-14 | 2026-08-20 | P2.L5.F.CS.2180, P2.L5.F.CS.2150 | 91d | 0d |  | 40 | SIGN | P2-5 | JPC | SIGN |  |  |  |
| P2.L5.F.CS.2240 |  | Work Completion List - Finishes / L5 / Perim Offices Z2,Z3 | 5d | 2026-08-21 | 2026-08-27 | P2.L5.F.CS.2230, P2.L5.F.CS.2180, P2.L5.F.CS.2100, P2.L5.F.CS.2160, P2.L5.F.CS.2190, P2.L5.F.CS.2140 | 91d | 0d |  | 40 | FINISH | P2-5 | JPC | FINISH |  |  |  |
| P2.L5.F.CS.2250 |  | Rough Clean / L5 / Perim Offices Z2,Z3 | 5d | 2026-08-28 | 2026-09-03 | P2.L5.F.CS.2240 | 91d | 0d |  | 40 | FCLEAN | P2-5 | JPC | FCLEAN |  |  |  |
| P2.L5.F.CS.2260 |  | FF&E / L5 / Perim Offices Z2,Z3 | 5d | 2026-09-04 | 2026-09-11 | P2.L5.F.CS.2250 | 91d | 0d |  | 40 | FURN | P2-5 | JPC | FURN |  |  |  |
| P2.L5.F.CS.2270 |  | Prepare Punchlist / L5 / Perim Offices Z2,Z3 | 5d | 2026-09-14 | 2026-09-18 | P2.L5.F.CS.2260 | 91d | 0d |  | 40 | QC | P2-5 | JPC | QC |  |  |  |
| P2.L5.F.CS.2280 |  | Correct Punchlist / L5 / Perim Offices Z2,Z3 | 10d | 2026-09-21 | 2026-10-02 | P2.L5.F.CS.2270 | 91d | 0d |  | 80 | FINISH | P2-5 | JPC | FINISH |  |  |  |
| P2.L5.F.CS.2290 |  | Final Clean / L5 / Perim Offices Z2,Z3 | 5d | 2026-10-05 | 2026-10-09 | P2.L5.F.CS.2280 | 91d | 103d | To QC | 40 | QC | P2-5 | JPC | QC |  |  |  |

| ID | WBS | Activity | Duration | Start | Finish | Predecessors | Complete | Remaining | Planned start | Planned finish | Total float | Free float | Pick | Temp Orig Dur | *NIH Resp Check* | Resp / SRLM | 744 | PHASE | Z.RESP | RESP UPD | RESP / Trade | Update Status | Testing Type |
| --- | --- | --- | --- | --- | --- | --- | --- | --- | --- | --- | --- | --- | --- | --- | --- | --- | --- | --- | --- | --- | --- | --- | --- |
|  | 2 | **Closeout** |  |  |  |  |  |  |  |  |  |  |  |  |  |  |  |  |  |  |  |  |  |
|  | 5 | **Bathrooms - Break Rooms - Locker Rooms / Level 5** |  | 2025-06-17 | 2026-11-06 |  |  |  |  |  |  |  |  |  |  |  |  |  |  |  |  |  |  |
|  | 1 | **Toilets 5-2807 / 5-2809** |  | 2025-06-17 | 2026-10-02 |  |  |  |  |  |  |  |  |  |  |  |  |  |  |  |  |  |  |
| P2.L5.BR.1000 |  | Plumbing - Set Pipe Carriers / L5 / Toilets 280X | 3d | 2025-06-17 A | 2025-06-20 A | P2.L4.BR.1000 | 100% |  | 2025-10-22 | 2025-10-24 |  |  | ? | 24 | ! | PLMB | TA | P2-5 | Harris | TA | PLMB |  |  |
| P2.L5.BR.1020 |  | Plumbing - Test Pipe / L5 / Toilets 280X | 2d | 2025-10-27 A | 2025-10-29 A | P2.L5.BR.1000 | 100% |  | 2025-10-22 | 2025-10-23 |  |  |  | 16 |  | PLMB | TA | P2-5 | Harris | TA | PLMB | O |  |
| P2.L5.BR.1050 |  | Duct Drops _ Hard Lids / L5 / Toilets 280X | 2d | 2025-12-01 A | 2025-12-02 A | P2.L5.BR.1020 FF | 100% |  | 2026-01-29 | 2026-01-30 |  |  |  | 16 | T.R/I.IW.MECH.HVAC.SM | HVAC | TA | P2-5 | Harris | TA | HVAC | O |  |
| P2.L5.BR.1070 |  | In Wall - Insulate Plumbing / L5 / Toilets 280X | 2d | 2025-12-01 A | 2025-12-02 A | P2.L5.BR.1020, P2.L5.BR.1050 | 100% |  | 2026-02-02 | 2026-02-03 |  |  |  | 16 |  | INSUL | TA | P2-5 | Harris | TA | INSUL-3 | O |  |
| P2.L5.BR.1080 |  | Inspection - Close In - Walls and Hard Lid Ceilings / L5 / Toilets 280X | 3d | 2026-01-15 A | 2026-04-16 | P2.L5.BR.1060, P2.L5.BR.1050, P2.L5.BR.1030, P2.L5.BR.1040, P2.L5.BR.1070 | 67% | 1d | 2026-01-22 | 2026-01-26 | 101d | 0d |  | 24 | ! | AHJ | TA | P2-5 |  | JPC | AHJ |  |  |
| P2.L5.BR.1010 |  | Framing & Blocking - Walls and Hard Lid Ceilings / L5 / Toilets 280X | 2d | 2026-01-19 A | 2026-04-01 | P2.L5.BR.1000 | 50% | 1d | 2026-01-02 | 2026-01-05 | 101d | 0d |  | 16 | ! | GYP | TA | P2-5 |  | JPC | GYP-1 | O |  |
| P2.L5.BR.1090 |  | Hang-Tape-Finish _ Walls and Hard Lids Ceilings / L5 / Toilets 280X | 5d | 2026-03-09 A | 2026-04-23 | P2.SUM.175, P2.L5.BR.1080 |  | 5d | 2026-03-20 | 2026-03-26 | 101d | 0d |  | 40 | ! | GYP | TA | P2-5 |  | JPC | GYP-1 |  |  |
| P2.L5.BR.1030 |  | R/I - Electrical _ Hard Lids / L5 / Toilets 280X | 5d | 2026-04-02 | 2026-04-08 | P2.L5.BR.1010, P2.L5.BR.1070 |  |  |  |  | 101d | 0d |  | 16 | ! | ELEC | TA | P2-5 |  | JPC | ELEC-3 |  |  |
| P2.L5.BR.1040 |  | Trim Sprinkler Drops _ Hard Lids / L5 / Toilets 280X | 2d | 2026-04-02 | 2026-04-03 | P2.L5.BR.1010 |  |  |  |  | 109d | 8d |  | 16 | ! | FP | TA | P2-5 |  | JPC | FP-1 | O |  |
| P2.L5.BR.1060 |  | R/I - Fire Alarm _ Hard Lids / L5 / Toilets 280X | 5d | 2026-04-09 | 2026-04-15 | P2.L5.BR.1010, P2.L5.BR.1030 |  |  |  |  | 101d | 0d |  | 16 | ! | ELEC | TA | P2-5 |  | JPC | ELEC-3 |  |  |
| P2.L5.BR.1100 |  | Paint Prime & Final Coat _ Walls & Hard Lid Ceilings / L5 / Toilets 280X | 2d | 2026-04-24 | 2026-04-27 | P2.L5.BR.1090 |  |  |  |  | 101d | 0d |  | 16 | ! | PAINT | TA | P2-5 |  | JPC | PAINT-1 |  |  |
| P2.L5.BR.1140 |  | Trim - HVAC G/R/D's / L5 / Toilets 280X | 2d | 2026-04-28 | 2026-04-29 | BP1.233.3.410, P2.L5.BR.1100 |  |  |  |  | 101d | 0d |  | 16 | ! | HVAC | TA | P2-5 | Harris | JPC | HVAC |  |  |
| P2.L5.BR.1120 |  | Pull Wire & Trim Devices - Electrical / L5 / Toilets 280X | 2d | 2026-04-30 | 2026-05-01 | P2.L5.BR.1140, P2.L5.BR.1100 |  |  |  |  | 101d | 0d |  | 16 | ! | ELEC | TA | P2-5 |  | JPC | ELEC-2 |  |  |
| P2.L5.BR.1130 |  | Lights - Set & Terminate / L5 / Toilets 280X | 2d | 2026-04-30 | 2026-05-01 | P2.L5.BR.1120 SS |  |  |  |  | 106d | 5d |  | 16 | ! | ELEC | TA | P2-5 |  | JPC | ELEC-2 |  |  |
| P2.L5.BR.1110 |  | Pull Wire & Trim Devices - Fire Alarm / L5 / Toilets 280X | 5d | 2026-05-04 | 2026-05-08 | P2.L5.BR.1120, P2.L5.BR.1100 |  |  |  |  | 101d | 0d |  | 16 | ! | ELEC | TA | P2-5 |  | JPC | ELEC-2 |  |  |
| P2.L5.BR.1150 |  | Wall Tile / L5 / Toilets 280X | 5d | 2026-05-11 | 2026-05-15 | P2.L5.BR.1130, P2.L5.BR.1140, P2.L5.BR.1110 |  |  |  |  | 101d | 83d |  | 40 | ! | TILE | TA | P2-5 |  | JPC | TILE |  |  |
| P2.L5.BR.2310 |  | Flooring Prep - Epoxy Floors / L5 / Toilets 280X | 1d | 2026-09-15 | 2026-09-15 | P2.L5.BR.1150, P2.L5.BR.2330 |  |  |  |  | 18d | 0d |  | 40 | ! | EPOXYF |  | P2-5 |  | JPC | EPOXYF |  |  |
| P2.L5.BR.2320 |  | Flooring - Epoxy Floors / L5 / Toilets 280X | 2d | 2026-09-16 | 2026-09-17 | P2.L5.BR.2310 |  |  |  |  | 96d | 0d |  | 40 | ! | EPOXYF |  | P2-5 |  | JPC | EPOXYF |  |  |
| P2.L5.BR.1160 |  | Doors & Hardware / L5 / Toilets 280X | 2d | 2026-09-18 | 2026-09-21 | P2.L5.BR.1150, P2.L5.BR.2320 |  |  |  |  | 96d | 0d |  | 16 | ! | DFH |  | P2-5 |  | JPC | DFH |  | AT29 |
| P2.L5.BR.1170 |  | Plumbing Fixtures / Sinks / Showers / L5 / Toilets 280X | 2d | 2026-09-22 | 2026-09-23 | P2.L5.BR.1160, P2.L5.BR.1150, P2.L5.BR.2320 |  |  |  |  | 96d | 0d |  | 16 | ! | PLMB |  | P2-5 | Harris | JPC | PLMB |  |  |
| P2.L5.BR.1180 |  | Bathroom Accessories / L5 / Toilets 280X | 2d | 2026-09-24 | 2026-09-25 | P2.L5.BR.1170 |  |  |  |  | 96d | 0d |  | 16 | ! | SPECIAL |  | P2-5 |  | JPC | SPECIAL |  |  |
| P2.L5.BR.1190 |  | Work Completion List - Finishes / L5 / Toilets 280X | 5d | 2026-09-28 | 2026-10-02 | P2.L5.BR.1160, P2.L5.BR.1180, P2.L5.BR.1110 |  |  |  |  | 96d | 108d | To Punch | 40 |  | AHJ |  | P2-5 |  | JPC | AHJ |  |  |

| ID | WBS | Activity | Duration | Start | Finish | Predecessors | Complete | Remaining | Planned start | Planned finish | Total float | Free float | Pick | Temp Orig Dur | *NIH Resp Check* | Resp / SRLM | 744 | PHASE | Z.RESP | RESP UPD | RESP / Trade | Update Status | Testing Type |
| --- | --- | --- | --- | --- | --- | --- | --- | --- | --- | --- | --- | --- | --- | --- | --- | --- | --- | --- | --- | --- | --- | --- | --- |
|  | 4 | **Lockers, Toilets, and Showers 5-3964 / 5-3962** |  | 2025-06-17 | 2026-11-06 |  |  |  |  |  |  |  |  |  |  |  |  |  |  |  |  |  |  |
| P2.L5.BR.2000 |  | Plumbing - Set Pipe Carriers / L5 / Toilets 396X | 5d | 2025-06-17 A | 2025-06-20 A | P2.L5.BR.1000 | 100% |  | 2025-10-27 | 2025-10-31 |  |  | ? | 40 | ! | PLMB | TA | P2-5 | Harris | TA | PLMB |  |  |
| P2.L5.BR.2060 |  | Duct Drops _ Hard Lids / L5 / Toilets 396X | 5d | 2025-09-22 A | 2025-09-26 A | P2.L5.BR.2000 | 100% |  | 2025-12-05 | 2025-12-11 |  |  |  | 40 | T.R/I.IW.MECH.HVAC.SM | HVAC |  | P2-5 | Harris | TA | HVAC |  |  |
| P2.L5.BR.2030 |  | Plumbing - Test Pipe @ Chase Walls / L5 / Toilets 396X | 5d | 2025-10-27 A | 2025-11-05 A | P2.L5.BR.2000 | 100% |  | 2025-10-22 | 2025-10-28 |  |  |  | 40 |  | PLMB | TA | P2-5 | Harris | TA | PLMB |  |  |
| P2.L5.BR.2010 |  | Countertop Support Framing / L5 / Toilets 396X | 5d | 2025-11-03 A | 2025-11-07 A | P2.L5.S.1420 | 100% |  | 2025-12-01 | 2025-12-05 |  |  | ? | 40 | T.MISCMTL | MISCMTL | TA | P2-5 |  | TA | MISCMTL |  |  |
| P2.L5.BR.2080 |  | In Wall - Insulate Plumbing / L5 / Toilets 396X | 5d | 2025-12-01 A | 2025-12-05 A | P2.L5.BR.2030 | 100% |  | 2026-01-23 | 2026-01-29 |  |  |  | 40 |  | INSUL | TA | P2-5 | Harris | TA | INSUL-3 | O |  |
| P2.L5.BR.2070 |  | R/I - Fire Alarm _ Hard Lids / L5 / Toilets 396X | 5d | 2025-12-15 A | 2025-12-19 A | P2.L5.BR.2010 | 100% |  | 2026-02-06 | 2026-02-12 |  |  |  | 40 | ! | ELEC |  | P2-5 |  | TA | ELEC-3 |  |  |
| P2.L5.BR.2020 |  | Frame - Chase Walls and Hard Lid Ceilings / L5 / Toilets 396X | 5d | 2026-01-12 A | 2026-04-01 | P2.L5.BR.2010, P2.L5.BR.2000 | 80% | 1d | 2026-01-02 | 2026-01-08 | 76d | 0d |  | 40 | ! | GYP | TA | P2-5 |  | JPC | GYP-1 | O |  |
| P2.L5.BR.2090 |  | Inspection - Close In - Chase Walls and Hard Lid Ceilings / L5 / Toilets 396X | 5d | 2026-01-22 A | 2026-04-09 | P2.L5.BR.2070, P2.L5.BR.2040, P2.L5.BR.2050, P2.L5.BR.2060, P2.L5.BR.2080 | 80% | 1d | 2026-01-16 | 2026-01-22 | 76d | 0d |  | 40 | ! | AHJ |  | P2-5 |  | JPC | AHJ |  |  |
| P2.L5.BR.2100 |  | Hang-Tape-Finish _ Chase Walls and Hard Lids Ceilings / L5 / Toilets 396X | 5d | 2026-03-09 A | 2026-04-16 | P2.SUM.175, P2.L5.BR.2090 |  | 5d | 2026-03-11 | 2026-03-17 | 76d | 0d |  | 40 | ! | GYP |  | P2-5 |  | JPC | GYP-1 |  |  |
| P2.L5.BR.2040 |  | R/I - Electrical _ Hard Lids / L5 / Toilets 396X | 5d | 2026-04-02 | 2026-04-08 | P2.L5.BR.2020 |  |  |  |  | 76d | 0d |  | 40 | ! | ELEC |  | P2-5 |  | JPC | ELEC-3 | O |  |
| P2.L5.BR.2050 |  | Trim Sprinkler Drops _ Hard Lids / L5 / Toilets 396X | 5d | 2026-04-02 | 2026-04-08 | P2.L5.BR.2020 |  |  |  |  | 76d | 0d |  | 40 | ! | FP |  | P2-5 |  | JPC | FP-1 | O |  |
| P2.L5.BR.2110 |  | Paint Prime & 1st Coat _ Walls & Hard Lid Ceilings / L5 / Toilets 396X | 5d | 2026-04-17 | 2026-04-23 | P2.L5.BR.2100 |  |  |  |  | 76d | 0d |  | 40 | ! | PAINT |  | P2-5 |  | JPC | PAINT-1 |  |  |
| P2.L5.BR.2140 |  | Ceiling Grid / L5 / Toilets 396X | 5d | 2026-04-24 | 2026-04-30 | P2.L5.BR.2110 |  |  |  |  | 76d | 0d |  | 40 | ! | ACT |  | P2-5 |  | JPC | ACT |  |  |
| P2.L5.BR.2170 |  | Trim Sprinkler Drops _ Ceiling Tiles / L5 / Toilets 396X | 5d | 2026-05-01 | 2026-05-07 | P2.L5.BR.2140 |  |  |  |  | 76d | 0d |  | 40 | ! | FP |  | P2-5 |  | JPC | FP-1 |  |  |
| P2.L5.BR.2160 |  | Trim - HVAC G/R/D's / L5 / Toilets 396X | 5d | 2026-05-08 | 2026-05-14 | BP1.233.3.410, P2.L5.BR.2170, P2.L5.BR.2140 |  |  |  |  | 76d | 0d |  | 40 | ! | HVAC |  | P2-5 | Harris | JPC | HVAC |  |  |
| P2.L5.BR.2130 |  | Pull Wire - Electrical / L5 / Toilets 396X | 5d | 2026-05-15 | 2026-05-21 | P2.L5.BR.2140, P2.L5.BR.2160, P2.L5.BR.2110 |  |  |  |  | 76d | 0d |  | 40 | ! | ELEC |  | P2-5 |  | JPC | ELEC-2 |  |  |
| P2.L5.BR.2120 |  | Pull Wire - Fire Alarm / L5 / Toilets 396X | 5d | 2026-05-22 | 2026-05-29 | P2.L5.BR.2140, P2.L5.BR.2130, P2.L5.BR.2110 |  |  |  |  | 164d | 93d |  | 40 | ! | ELEC |  | P2-5 |  | JPC | ELEC-2 |  |  |
| P2.L5.BR.2150 |  | Lights - Set & Terminate / L5 / Toilets 396X | 5d | 2026-05-22 | 2026-05-29 | P2.L5.BR.2140, P2.L5.BR.2130 |  |  |  |  | 76d | 0d |  | 40 | ! | ELEC |  | P2-5 |  | JPC | ELEC-2 |  |  |
| P2.L5.BR.2180 |  | Inspection - Ceiling Close In - ACT Ceilings / L5 / Toilets 396X | 5d | 2026-06-01 | 2026-06-05 | P2.L5.BR.2170, P2.L5.BR.2160, P2.L5.BR.2150 |  |  |  |  | 76d | 0d |  | 40 |  | AHJ |  | P2-5 |  | JPC | AHJ |  |  |
| P2.L5.BR.2190 |  | Ceiling Tiles / L5 / Toilets 396X | 5d | 2026-06-08 | 2026-06-12 | P2.L5.BR.2180 |  |  |  |  | 76d | 0d |  | 40 | ! | ACT |  | P2-5 |  | JPC | ACT |  |  |
| P2.L5.BR.2200 |  | Wall Tile / L5 / Toilets 396X | 5d | 2026-06-15 | 2026-06-19 | P2.L5.BR.2190 |  |  |  |  | 76d | 58d |  | 40 | ! | TILE |  | P2-5 |  | JPC | TILE |  |  |
| P2.L5.BR.2330 |  | Flooring Prep - Epoxy Floors / L5 / Toilets 396X | 1d | 2026-09-14 | 2026-09-14 | P2.L4.BR.1200, P2.L5.BR.2200 |  |  |  |  | 18d | 0d |  | 40 | ! | EPOXYF |  | P2-5 |  | JPC | EPOXYF |  |  |
| P2.L5.BR.2340 |  | Flooring - Epoxy Floors / L5 / Toilets 396X | 4d | 2026-09-15 | 2026-09-18 | P2.L5.BR.2330 |  |  |  |  | 71d | 0d |  | 40 | ! | EPOXYF |  | P2-5 |  | JPC | EPOXYF |  |  |
| P2.L5.BR.2210 |  | Paint - Finish Coat / L5 / Toilets 396X | 5d | 2026-09-21 | 2026-09-25 | P2.L5.BR.2340 |  |  |  |  | 71d | 0d |  | 40 | ! | PAINT |  | P2-5 |  | JPC | PAINT-1 |  |  |
| P2.L5.BR.2220 |  | Countertops / L5 / Toilets 396X | 5d | 2026-09-28 | 2026-10-02 | P2.L5.BR.2210 |  |  |  |  | 71d | 0d |  | 40 | ! | MILL |  | P2-5 |  | JPC | MILL |  |  |
| P2.L5.BR.2260 |  | Lockers & Benches / L5 / Toilets 396X | 5d | 2026-10-05 | 2026-10-09 | P2.L5.BR.2220, P2.L5.BR.2210 |  |  |  |  | 71d | 0d |  | 40 | ! | SPECIAL |  | P2-5 |  | JPC | SPECIAL |  |  |
| P2.L5.BR.2270 |  | Plumbing Fixtures / Sinks / Showers / L5 / Toilets 396X | 5d | 2026-10-05 | 2026-10-09 | P2.L5.BR.2220 |  |  |  |  | 76d | 0d |  | 40 | ! | PLMB |  | P2-5 | Harris | JPC | PLMB |  |  |
| P2.L5.BR.2230 |  | Trim - Fire Alarm Devices / L5 / Toilets 396X | 5d | 2026-10-12 | 2026-10-16 | P2.L5.BR.2260, P2.L5.BR.2210, P2.L5.BR.2120 |  |  |  |  | 71d | 0d |  | 40 | ! | FA |  | P2-5 |  | JPC | FA-1 |  |  |
| P2.L5.BR.2280 |  | Toilet Partitions / L5 / Toilets 396X | 5d | 2026-10-12 | 2026-10-16 | P2.L5.BR.2270 |  |  |  |  | 76d | 0d |  | 40 | ! | SPECIAL |  | P2-5 |  | JPC | SPECIAL |  |  |
| P2.L5.BR.2240 |  | Trim - Electrical Devices / L5 / Toilets 396X | 5d | 2026-10-19 | 2026-10-23 | P2.L5.BR.2230, P2.L5.BR.2210 |  |  |  |  | 71d | 0d |  | 40 | ! | ELEC |  | P2-5 |  | JPC | ELEC-2 |  |  |
| P2.L5.BR.2290 |  | Bathroom Accessories / L5 / Toilets 396X | 5d | 2026-10-19 | 2026-10-23 | P2.L5.BR.2270, P2.L5.BR.2280 |  |  |  |  | 76d | 5d |  | 40 | ! | SPECIAL |  | P2-5 |  | JPC | SPECIAL |  |  |
| P2.L5.BR.2250 |  | Doors & Hardware / L5 / Toilets 396X | 5d | 2026-10-26 | 2026-10-30 | P2.L5.BR.2240, P2.L5.BR.2210 |  |  |  |  | 71d | 0d |  | 40 | ! | DFH |  | P2-5 |  | JPC | DFH |  | AT29 |
| P2.L5.BR.2300 |  | Work Completion List - Finishes / L5 / Toilets 396X | 5d | 2026-11-02 | 2026-11-06 | P2.L5.BR.2260, P2.L5.BR.2250, P2.L5.BR.2280, P2.L5.BR.2290, P2.L5.BR.2230, P2.L5.BR.2240 |  |  |  |  | 71d | 83d | To Punch | 40 |  | AHJ |  | P2-5 |  | JPC | AHJ |  |  |

| ID | WBS | Activity | Duration | Start | Finish | Predecessors | Total float | Free float | Temp Orig Dur | Pick #2 | Resp / SRLM | PHASE | RESP UPD | RESP / Trade | Z.RESP |
| --- | --- | --- | --- | --- | --- | --- | --- | --- | --- | --- | --- | --- | --- | --- | --- |
|  | 1 | **Corridors & Lobbies / Level 5** |  | 2026-04-08 | 2026-11-25 |  |  |  |  |  |  |  |  |  |  |
| P2.L5.CL.1000 |  | Paint Prime & 1st Coat Walls / L5 / Corr & Lobbies | 5d | 2026-04-08 | 2026-04-14 | P2.L5.F.CS.2000 | 28d | 0d | 40 | FP | PAINT | P2-5 | JPC | PAINT-1 |  |
| P2.L5.CL.1010 |  | Framing - Hard Lid Ceilings / L5 / Corr & Lobbies | 10d | 2026-04-15 | 2026-04-28 | P2.L5.CL.1000 | 28d | 0d | 80 | FP | GYP | P2-5 | JPC | GYP-1 |  |
| P2.L5.CL.1020 |  | T-Grid / L5 / Corr & Lobbies | 10d | 2026-04-15 | 2026-04-28 | P2.L5.CL.1000 | 28d | 0d | 80 |  | ACT | P2-5 | JPC | ACT |  |
| P2.L5.CL.1040 |  | R/I - Trim Sprinkler Heads- All Ceilings / L5 / Corr & Lobbies | 5d | 2026-04-24 | 2026-04-30 | P2.L5.CL.1020 FF+2d, P2.L5.CL.1010 FF+2d | 28d | 0d | 40 |  | FP | P2-5 | JPC | FP-1 |  |
| P2.L5.CL.1070 |  | Trim - Sprinkler Heads @ T-Grid / L5 / Corr & Lobbies | 5d | 2026-04-24 | 2026-04-30 | P2.L5.CL.1020 FF+2d | 121d | 40d | 40 |  | FP | P2-5 | JPC | FP-1 |  |
| P2.L5.CL.1050 |  | R/I - HVAC- All Ceilings / L5 / Corr & Lobbies | 5d | 2026-05-01 | 2026-05-07 | P2.L5.CL.1020 FF+2d, P2.L5.CL.1010 FF+2d, P2.L5.CL.1040 | 28d | 0d | 40 |  | HVAC | P2-5 | JPC | HVAC | Harris |
| P2.L5.CL.1030 |  | R/I - Electrical - All Ceilings / L5 / Corr & Lobbies | 15d | 2026-05-08 | 2026-05-29 | P2.L5.CL.1020 FF+2d, P2.L5.CL.1010 FF+2d, P2.L5.CL.1050 | 28d | 0d | 40 | FP | ELEC | P2-5 | JPC | ELEC-2 |  |
| P2.L5.CL.1060 |  | R/I - All Remaining Low Voltage - All Ceilings / L5 / Corr & Lobbies | 5d | 2026-06-01 | 2026-06-05 | P2.L5.CL.1020 FF+2d, P2.L5.CL.1010 FF+2d, P2.L5.CL.1030 | 28d | 0d | 40 |  | LOWVOLT | P2-5 | JPC | LOWVOLT-1 |  |
| P2.L5.CL.1100 |  | Pull Wire - Electrical / L5 / Corr & Lobbies | 10d | 2026-06-01 | 2026-06-12 | P2.L5.CL.1030 | 58d | 0d | 40 |  | ELEC | P2-5 | JPC | ELEC-2 |  |
| P2.L5.CL.1080 |  | R/I - Fire Alarm/Life Safety - All Ceilings / L5 / Corr & Lobbies | 5d | 2026-06-08 | 2026-06-12 | P2.L5.CL.1010 FF+2d, P2.L5.CL.1060 | 28d | 0d | 40 |  | FA | P2-5 | JPC | FA-1 |  |
| P2.L5.CL.1090 |  | Inspections - Close In- All Ceilings / L5 / Corr & Lobbies | 5d | 2026-06-15 | 2026-06-19 | P2.L5.CL.1050, P2.L5.CL.1060, P2.L5.CL.1030, P2.L5.CL.1040, P2.L5.CL.1080 | 28d | 0d | 40 | FP | AHJ | P2-5 | JPC | AHJ |  |
| P2.L5.CL.1110 |  | Pull Wire - Fire Alarm / L5 / Corr & Lobbies | 5d | 2026-06-15 | 2026-06-19 | P2.L5.CL.1100, P2.L5.CL.1080 | 63d | 0d | 40 |  | FA | P2-5 | JPC | FA-1 |  |
| P2.L5.CL.1120 |  | Pull Wire - All Remianing Low Voltage Systems / L5 / Corr & Lobbies | 5d | 2026-06-22 | 2026-06-26 | P2.L5.CL.1110, P2.L5.CL.1060 | 68d | 0d | 40 |  | LOWVOLT | P2-5 | JPC | LOWVOLT-1 |  |
| P2.L5.CL.1130 |  | Hang/Tape/Finish- Hard Lid Ceilings / L5 / Corr & Lobbies | 10d | 2026-06-22 | 2026-07-06 | P2.L5.CL.1090 | 28d | 0d | 80 | FP | GYP | P2-5 | JPC | GYP-1 |  |
| P2.L5.CL.1140 |  | Drop Ceiling Tiles @ T-Grid / L5 / Corr & Lobbies | 5d | 2026-06-29 | 2026-07-06 | P2.L5.CL.1070, P2.L5.CL.1100, P2.L5.CL.1110, P2.L5.CL.1120 | 81d | 53d | 40 |  | ACT | P2-5 | JPC | ACT |  |
| P2.L5.CL.1190 |  | Paint - Hard Lid Ceilings / L5 / Corr & Lobbies | 5d | 2026-07-07 | 2026-07-13 | P2.L5.CL.1130 | 28d | 0d | 40 | FP | PAINT | P2-5 | JPC | PAINT-1 |  |
| P2.L5.CL.1180 |  | Ceiling Mounted - HVAC GRD's / L5 / Corr & Lobbies | 15d | 2026-07-14 | 2026-08-03 | P2.L5.CL.1020, P2.L5.CL.1190 | 28d | 0d | 120 |  | HVAC | P2-5 | JPC | HVAC | Harris |
| P2.L5.CL.1150 |  | Ceiling Mounted - Electrical Devices and Lights / L5 / Corr & Lobbies | 20d | 2026-07-28 | 2026-08-24 | P2.L5.CL.1180 SS+10d, P2.L5.CL.1100, P2.L5.CL.1190 | 28d | 0d | 120 | FP | ELEC | P2-5 | JPC | ELEC-2 |  |
| P2.L5.CL.1160 |  | Ceiling Mounted - Fire Alarm/Life Saftey Devices / L5 / Corr & Lobbies | 15d | 2026-08-11 | 2026-08-31 | P2.L5.CL.1150 SS+10d, P2.L5.CL.1020, P2.L5.CL.1110, P2.L5.CL.1190 | 28d | 0d | 120 |  | FA | P2-5 | JPC | FA-1 |  |
| P2.L5.CL.1170 |  | Ceiling Mounted - All Low Voltage Devices / L5 / Corr & Lobbies | 15d | 2026-08-25 | 2026-09-15 | P2.L5.CL.1160 SS+10d, P2.L5.CL.1120, P2.L5.CL.1190 | 28d | 0d | 120 |  | LOWVOLT | P2-5 | JPC | LOWVOLT-1 |  |
| P2.L5.CL.1320 |  | Prep Flooring / L5 / Corr & Lobbies | 2d | 2026-09-16 | 2026-09-17 | P2.L5.CL.1140 SS+2d, P2.L5.CL.1160, P2.L5.CL.1150, P2.L5.CL.1170, P2.L5.CL.1180 | 28d | 0d | 80 | FP | FLOOR | P2-5 | JPC | FLOOR |  |
| P2.L5.CL.1200 |  | Flooring / L5 / Corr & Lobbies | 8d | 2026-09-18 | 2026-09-29 | P2.L5.CL.1320 | 28d | 0d | 80 | FP | FLOOR | P2-5 | JPC | FLOOR |  |
| P2.L5.CL.1210 |  | Final Paint / L5 / Corr & Lobbies | 5d | 2026-09-25 | 2026-10-01 | P2.L5.CL.1200 FF+2d, P2.L5.CL.1140, BP7.097.3.100 | 58d | 0d | 40 | FP | PAINT | P2-5 | JPC | PAINT-1 |  |
| P2.L5.CL.1220 |  | Floor Base / L5 / Corr & Lobbies | 5d | 2026-10-02 | 2026-10-08 | P2.L5.CL.1210 | 78d | 20d | 40 | FP | FLOOR | P2-5 | JPC | FLOOR |  |
| P2.L5.CL.1250 |  | Trim - HVAC - Wall Mounted Devices / L5 / Corr & Lobbies | 5d | 2026-10-02 | 2026-10-08 | P2.L5.CL.1210 | 58d | 0d | 40 |  | BAS | P2-5 | JPC | BAS-1 | Harris |
| P2.L5.CL.1230 |  | Trim - All Electrical - Wall Mounted Devices / L5 / Corr & Lobbies | 5d | 2026-10-09 | 2026-10-15 | P2.L5.CL.1250, P2.L5.CL.1210 | 58d | 0d | 40 |  | ELEC | P2-5 | JPC | ELEC-2 |  |
| P2.L5.CL.1240 |  | Trim - Fire Alarm - Wall Mounted Devices / L5 / Corr & Lobbies | 5d | 2026-10-16 | 2026-10-22 | P2.L5.CL.1230, P2.L5.CL.1210 | 58d | 0d | 40 |  | FA | P2-5 | JPC | FA-1 |  |
| P2.L5.CL.1260 |  | Trim - All Remining Low Voltage Systems - Wall Mounted Devices / L5 / Corr & Lobbies | 5d | 2026-10-23 | 2026-10-29 | P2.L5.CL.1240, P2.L5.CL.1210 | 58d | 0d | 40 |  | LOWVOLT | P2-5 | JPC | LOWVOLT-1 |  |
| P2.L5.CL.1270 |  | Building Signage / L5 / Corr & Lobbies | 5d | 2026-10-30 | 2026-11-05 | P2.L5.CL.1260, P2.L5.CL.1210 | 58d | 0d | 40 |  | SIGN | P2-5 | JPC | SIGN |  |
| P2.L5.CL.1280 |  | Work Completion List / L5 / Corr & Lobbies | 5d | 2026-11-06 | 2026-11-12 | P2.L5.CL.1230, P2.L5.CL.1240, P2.L5.CL.1250, P2.L5.CL.1260, P2.L5.CL.1220, P2.L5.CL.1270 | 58d | 0d | 40 | FP | T | P2-5 | JPC | T |  |
| P2.L5.CL.1290 |  | Rough Clean / L5 / Corr & Lobbies | 2d | 2026-11-13 | 2026-11-16 | P2.L5.CL.1280 | 58d | 0d | 16 | FP | FCLEAN | P2-5 | JPC | FCLEAN |  |
| P2.L5.CL.1300 |  | Punchlist / L5 / Corr & Lobbies | 5d | 2026-11-17 | 2026-11-23 | P2.L5.CL.1290 | 58d | 0d | 40 | FP | AHJ | P2-5 | JPC | AHJ |  |
| P2.L5.CL.1310 |  | Final Clean / L5 / Corr & Lobbies | 2d | 2026-11-24 | 2026-11-25 | P2.L5.CL.1300 | 58d | 70d | 16 | FP | FCLEAN | P2-5 | JPC | FCLEAN |  |

| ID | WBS | Activity | Type | Duration | Start | Finish | Predecessors | Complete | Remaining | Planned start | Planned finish | Total float | Free float | Temp Orig Dur | Resp / SRLM | PHASE | RESP / Trade | Pick #2 | Act ID Temp | Z.RESP | Testing Type | Pick | 744 | RESP UPD | Update Status |
| --- | --- | --- | --- | --- | --- | --- | --- | --- | --- | --- | --- | --- | --- | --- | --- | --- | --- | --- | --- | --- | --- | --- | --- | --- | --- |
|  | 2 | **LAB & CLINICAL SPACES / LEVEL 5 (Below Interstitials)** |  |  | 2025-04-14 | 2026-10-06 |  |  |  |  |  |  |  |  |  |  |  |  |  |  |  |  |  |  |  |
|  | 3 | **ROUGH IN - Lab & Clinical Spaces (Below Interstitials) / Level 5** |  |  | 2025-04-14 | 2026-05-27 |  |  |  |  |  |  |  |  |  |  |  |  |  |  |  |  |  |  |  |
| P2.L5.LC.4170 |  | Snorkel Support to Deck - Install / L5 / Lab & Clinical |  | 1d | 2025-04-14 A | 2025-04-14 A | P2.L5.LC.1020 FF, P2.L5.LC.1000 | 100% |  | 2025-06-02 | 2025-06-02 |  |  | 120 | LABCASE | P2-5 | LABCASE |  |  |  |  |  |  |  |  |
| P2.L5.LC.1030 |  | OH - MEPF - Hangers & Supports / L5 / Lab & Clinical |  | 10d | 2025-04-16 A | 2025-04-30 A | P2.BIM.L5.40.140, P2.L5.LC.1000 | 100% |  | 2025-05-19 | 2025-06-02 |  |  | 80 | MEP | P2-5 | MEP-2 | FP | P2.B2.20.05.410 | Harris |  |  |  |  |  |
| P2.L5.LC.1020 |  | OH - Structural Supports (All Trades) / L5 / Lab & Clinical |  | 10d | 2025-04-22 A | 2025-04-25 A | P2.L5.LC.1000 | 100% |  | 2025-05-19 | 2025-06-02 |  |  | 80 | R/I.OH | P2-5 | R/I.OH |  | P2.B2.05.45.110 | Harris | AT24 |  |  |  |  |
| P2.L5.LC.1000 |  | Layout - All Trades / L5 / Lab & Clinical |  | 5d | 2025-04-23 A | 2025-04-30 A | P2.6.I.05.220 | 100% |  | 2025-05-12 | 2025-05-16 |  |  | 40 | R/I.OH | P2-5 | R/I.OH | FP | P2.B2.01.010 | Harris |  |  |  |  |  |
| P2.L5.LC.1080 |  | OH - Fireproof Interstitial Steel Above / L5 / Lab & Clinical |  | 10d | 2025-04-28 A | 2025-05-16 A | P2.6.I.03.320, P2.L5.LC.1020, P2.L5.LC.1030 | 100% |  | 2025-05-09 | 2025-05-22 |  |  | 80 | SPRAY | P2-5 | SPRAY | FP | P2.1.09.81.140X10 |  | AT49 |  |  |  |  |
| P2.L5.LC.1010 |  | Framing - Top Track / L5 / Lab & Clinical |  | 10d | 2025-05-01 A | 2025-05-14 A | P2.L5.N.1010, P2.L5.LC.1000 | 100% |  | 2025-06-02 | 2025-06-13 |  |  | 80 | GYP | P2-5 | GYP-1 |  | P2.B2.09.21.110 |  |  |  |  |  |  |
| P2.L5.LC.1170 |  | OH - Fire Suppression / L5 / Lab & Clinical |  | 10d | 2025-05-19 A | 2025-06-16 A | P2.L5.LC.1080, P2.L5.LC.1150 | 100% |  | 2025-08-05 | 2025-08-18 |  |  | 80 | FP | P2-5 | FP-1 |  | P2.B2.21.13.210 |  |  | 1 | TA | TA |  |
| P2.L5.LC.1090 |  | Framing - Priority Walls & Door Frames / L5 / Lab & Clinical |  | 10d | 2025-05-27 A | 2025-06-30 A | P2.L5.N.1090, P2.L5.LC.1010, P2.L5.LC.1080 | 100% |  | 2025-06-16 | 2025-06-27 |  |  | 80 | GYP | P2-5 | GYP-1 | FP | P2.B2.09.21.310 |  |  |  | ND | ND |  |
| P2.L5.LC.1130 |  | Framing - Priority Walls - AHJ Inspections / L5 / Lab & Clinical |  | 5d | 2025-06-02 A | 2025-06-30 A | P2.L5.LC.1090 | 100% |  | 2025-07-11 | 2025-07-17 |  |  | 80 | FM | P2-5 | FM | FP | P2.B2.01.43.010 |  |  |  | ND | ND |  |
| P2.L5.LC.1140 |  | Hang/Tape/Finish - Priority Walls / L5 / Lab & Clinical |  | 10d | 2025-06-23 A | 2025-07-25 A | P2.L5.N.1140, P2.L5.LC.1130 | 100% |  | 2025-07-18 | 2025-07-31 |  |  | 80 | GYP | P2-5 | GYP-1 | FP | P2.B2.09.21.210 |  |  |  | ND | ND |  |
| P2.L5.LC.1160 |  | Spray/Seal/Firestop - Head of Wall - Priority Walls / L5 / Lab & Clinical |  | 5d | 2025-06-23 A | 2025-06-30 A | P2.L5.LC.1140 | 100% |  | 2025-08-01 | 2025-08-07 |  |  | 80 | FIRESTO | P2-5 | FIRESTO |  | P2.B2.07.84.410 |  | AT47 |  | ND | ND |  |
| P2.L5.LC.1150 |  | Paint Prime & 1st Coat - Priority Walls / L5 / Lab & Clinical |  | 10d | 2025-06-30 A | 2025-07-15 A | P2.L5.LC.1160 SS | 100% |  | 2025-08-01 | 2025-08-14 |  |  | 80 | PAINT | P2-5 | PAINT-1 | FP | P2.B2.09.91.110 |  |  |  | TA | TA |  |
| P2.L5.LC.1190 |  | OH - Electrical - 480/277v Distribution / L5 / Lab & Clinical |  | 20d | 2025-07-01 A | 2025-07-31 A | P2.L5.LC.1080, P2.L5.LC.1150 | 100% |  | 2025-08-15 | 2025-09-12 |  |  | 80 | ELEC | P2-5 | ELEC-2 |  | P2.B2.26.05.210 |  |  | 1 | TA | TA |  |
| P2.L5.LC.1180 |  | OH - Plumbing Piping (High) / L5 / Lab & Clinical |  | 20d | 2025-07-22 A | 2025-08-29 A | P2.L5.LC.1080, P2.L5.LC.1150 | 100% |  | 2025-08-15 | 2025-09-12 |  |  | 80 | PLMB | P2-5 | PLMB |  | P2.B2.22.14.210 | Harris |  | 1 | TA | TA |  |
| FRG.P2.L5.LC.1730 |  | HVAC Piping - Delivery / L5 / Lab & Clinical - FRAGNET | milestone | 0d | 2025-08-08 A | 2025-08-08 A | P2.L5.LC.1030 FF | 100% |  |  |  |  |  | 80 | Harris Fragnet | P2-5 | FIT-2 |  | P2.B2.23.20.410 | Harris |  | 2 | TA | TA | O |
| FRG.P2.L5.LC.1720 |  | HVAC Piping - Stick Build Copper Racks / L5 / Lab & Clinical - FRAGNET |  | 20d | 2025-08-11 A | 2025-09-09 A | FRG.P2.L5.LC.1730 | 100% |  | 2025-09-02 | 2025-09-29 |  |  | 80 | Harris Fragnet | P2-5 | FIT-2 |  | P2.B2.23.20.410 | Harris |  | 2 | TA | TA | O |
| P2.L5.LC.1230 |  | OH - Electrical - 208/120v Branch / L5 / Lab & Clinical |  | 10d | 2025-08-11 A | 2026-02-14 A | P2.L5.LC.1190, P2.L5.LC.1420 | 100% |  | 2025-08-01 | 2025-08-14 |  |  | 80 | ELEC | P2-5 | ELEC-2 |  | P2.B2.26.05.310 |  |  | 2 | TA | TA | O |
| P2.L5.LC.1210 |  | OH - Hang Duct - HP Mains / L5 / Lab & Clinical |  | 20d | 2025-09-02 A | 2025-09-26 A | P2.L5.N.1210, P2.L5.LC.1080 | 100% |  | 2025-10-01 | 2025-10-28 |  |  | 80 | HVAC | P2-5 | HVAC | FP | P2.B2.23.30.210 | Harris |  | 1 | TA | TA | O |
| FRG.P2.L5.LC.1710 |  | HVAC Piping - Hanging Copper Racks / L5 / Lab & Clinical - FRAGNET |  | 20d | 2025-09-10 A | 2025-10-02 A | FRG.P2.L5.LC.1720 | 100% |  | 2025-09-10 | 2025-10-07 |  |  | 80 | Harris Fragnet | P2-5 | FIT-2 |  | P2.B2.23.20.410 | Harris |  | 2 | TA | TA |  |
| P2.L5.LC.1260 |  | OH - DALT - HP Mains / L5 / Lab & Clinical |  | 10d | 2025-09-12 A | 2025-09-30 A | P2.L5.LC.1210 | 100% |  | 2025-10-29 | 2025-11-11 |  |  | 80 | TAB | P2-5 | TAB-1 | FP | P2.B2.23.30.310 | Harris |  | 2 | TA | TA |  |
| P2.L5.LC.1560 |  | OH - Plumbing Piping (Low) / L5 / Lab & Clinical |  | 20d | 2025-09-18 A | 2025-09-30 A | P2.L5.LC.1180 | 100% |  | 2025-10-01 | 2025-10-28 |  |  | 80 | PLMB | P2-5 | PLMB |  | P2.B2.22.14.210 | Harris |  | 1 | TA | TA | O |
| P2.L5.LC.1300 |  | OH - Hang Duct - LP Branch (High) / L5 / Lab & Clinical |  | 20d | 2025-09-29 A | 2025-10-20 A | P2.L5.LC.1210 | 100% |  | 2025-10-29 | 2025-11-25 |  |  | 80 | HVAC | P2-5 | HVAC |  | P2.B2.23.30.410 | Harris |  | 3 | TA | TA | O |
| P2.L5.LC.1420 |  | Framing - Balance of Framing & Door Frames / L5 / Lab & Clinical |  | 10d | 2025-09-29 A | 2025-10-24 A | P2.L5.LC.1150 | 100% |  | 2025-10-01 | 2025-10-14 |  |  | 80 | GYP | P2-5 | GYP-1 | FP | A1310 |  |  |  |  | TA |  |
| P2.L5.LC.1570 |  | OH - Hang Duct - LP Branch (Low) / L5 / Lab & Clinical |  | 20d | 2025-09-29 A | 2025-10-20 A | P2.L5.LC.1300 SS | 100% |  | 2025-10-27 | 2025-11-21 |  |  | 80 | HVAC | P2-5 | HVAC |  | P2.B2.23.30.410 | Harris |  | 3 | TA | TA | O |
| P2.L5.LC.1220 |  | OH - HVAC Piping / L5 / Lab & Clinical |  | 20d | 2025-10-03 A | 2025-11-14 A | P2.L5.LC.1170, P2.L5.LC.1080, FRG.P2.L5.LC.1710 | 100% |  | 2025-10-03 | 2025-10-30 |  |  | 80 | FIT | P2-5 | FIT-2 |  | P2.B2.23.20.410 | Harris |  | 2 | TA | TA |  |
| P2.L5.LC.1440 |  | In Wall - Electrical - Framing / L5 / Lab & Clinical |  | 10d | 2025-10-20 A | 2025-12-19 A | P2.L5.LC.1230, P2.L5.LC.1420 | 100% |  | 2025-10-13 | 2025-10-24 |  |  | 80 | ELEC | P2-5 | ELEC-2 |  | P2.B2.26.05.610 |  |  |  |  | TA | O |
| P2.L5.LC.1450 |  | In Wall - Backing/Blocking/Supports / L5 / Lab & Clinical |  | 10d | 2025-10-20 A | 2025-12-12 A | P2.L5.LC.1420 | 100% |  | 2025-10-13 | 2025-10-24 |  |  | 80 | R/I.IW | P2-5 | R/I.IW |  | P2.B2.09.21.510 |  |  |  |  | TA | O |
| P2.L5.LC.1430 |  | In Wall - Plumbing - Framing / L5 / Lab & Clinical |  | 10d | 2025-10-20 A | 2025-11-14 A | P2.L5.LC.1420, PCO.830.1160 | 100% |  | 2026-01-22 | 2026-02-05 |  |  | 80 | PLMB | P2-5 | PLMB | FP | P2.B2.22.05.410 | Harris |  |  |  | TA |  |
| P2.L5.LC.1240 |  | OH - Plumbing - Test / L5 / Lab & Clinical |  | 10d | 2025-10-27 A | 2025-11-10 A | P2.L5.LC.1560, P2.L5.LC.1420 | 100% |  | 2025-10-13 | 2025-10-24 |  |  | 80 | PLMB | P2-5 | PLMB |  | P2.B2.22.14.310 | Harris |  | 2 | TA | TA | O |
| P2.L5.LC.1270 |  | OH - HVAC Piping - Test / L5 / Lab & Clinical |  | 5d | 2025-10-31 A | 2025-11-05 A | P2.L5.LC.1220 | 100% |  | 2025-10-31 | 2025-11-06 |  |  | 80 | FIT | P2-5 | FIT-2 |  | P2.B2.23.20.510 | Harris |  | 3 | TA | TA | O |
| P2.L5.LC.1290 |  | OH - Insulate HP Duct / L5 / Lab & Clinical |  | 10d | 2025-11-03 A | 2025-11-14 A | P2.L5.LC.1260 | 100% |  | 2025-12-01 | 2025-12-12 |  |  | 80 | INSUL | P2-5 | INSUL-3 | FP | P2.B2.23.07.310 | Harris |  | 3 | TA | TA |  |
| P2.L5.LC.1280 |  | OH - Insulate Plumbing / L5 / Lab & Clinical |  | 10d | 2025-12-01 A | 2025-12-10 A | P2.L5.LC.1240 | 100% |  | 2026-01-09 | 2026-01-22 |  |  | 80 | INSUL | P2-5 | INSUL-3 |  | P2.B2.22.07.510 | Harris |  | 3 | TA | TA | O |
| P2.L5.LC.1390 |  | OH - Conduit - Low Volt - Telecom / L5 / Lab & Clinical |  | 10d | 2025-12-15 A | 2026-04-14 | P2.L5.LC.1420 |  | 10d | 2026-01-30 | 2026-02-12 | 26d | 0d | 80 | ELEC | P2-5 | ELEC-2 |  |  |  |  | 5 |  | JPC | O |
| P2.L5.LC.1340 |  | OH - Insulate HVAC Pipe / L5 / Lab & Clinical |  | 10d | 2025-12-29 A | 2026-02-28 A | P2.L5.LC.1270, P2.L5.LC.1290 | 100% |  | 2026-01-08 | 2026-01-21 |  |  | 80 | INSUL | P2-5 | INSUL-3 | FP | P2.B2.22.07.610 | Harris |  | 4 | TA | TA | O |
| P2.L5.LC.1380 |  | OH - Conduit - Low Volt - Fire Alarm / L5 / Lab & Clinical |  | 10d | 2026-01-14 A | 2026-02-21 A | P2.L5.LC.1420 | 100% |  | 2026-01-23 | 2026-02-05 |  |  | 80 | FA | P2-5 | FA-1 |  |  |  |  | 5 |  | TA | O |
| P2.L5.LC.1200 |  | Firestop - Thru Wall - Priority Walls / L5 / Lab & Clinical |  | 5d | 2026-01-19 A | 2026-02-28 A | P2.L5.LC.1150 | 100% |  | 2026-01-02 | 2026-01-08 |  |  | 80 | FIRESTO | P2-5 | FIRESTO | FP | P2.B2.07.84.110 |  | AT48 |  | TA | TA | O |
| P2.L5.LC.1460 |  | AHJ Inspections - Wall Close In / L5 / Lab & Clinical |  | 5d | 2026-02-10 A | 2026-02-28 A | P2.L5.LC.1440, P2.L5.LC.1450, P2.L5.LC.1430 | 100% |  | 2026-03-09 | 2026-03-13 |  |  | 40 | FM | P2-5 | FM | FP | P2.B2.01.43.110 |  |  |  |  | TA |  |
| P2.L5.LC.1310 |  | OH - Set & Connect Mech Equipment / L5 / Lab & Clinical |  | 10d | 2026-02-23 A | 2026-04-07 | P2.L5.LC.1260 | 50% | 5d | 2026-03-02 | 2026-03-13 | -1d | 0d | 80 | HVAC | P2-5 | HVAC |  | P2.B2.23.82.110 | Harris |  | 3 | TA | JPC | O |
| P2.L5.LC.1250 |  | Pull Wire - Electrical - 480/277v Distribution / L5 / Lab & Clinical |  | 10d | 2026-03-02 A | 2026-04-14 | P2.L5.LC.1190 |  | 10d | 2026-03-02 | 2026-03-13 | 36d | 25d | 80 | ELEC | P2-5 | ELEC-2 |  |  |  |  | To Trim Devices & Term Panel | TA | JPC | O |
| P2.L5.LC.1470 |  | Hang-Tape-Finish - Walls and Hard Lid Ceilings / L5 / Lab & Clinical |  | 10d | 2026-03-04 A | 2026-03-25 A | P2.SUM.175, BP6.132.3.100, P2.L5.LC.1460, P2.L5.LC.1280, PCO.830.1160 | 100% |  | 2026-03-09 | 2026-03-20 |  |  | 80 | GYP | P2-5 | GYP-1 | FP | P2.B2.09.21.710 |  |  |  |  | JPC |  |
| P2.L5.LC.1350 |  | OH - Insulate LP Duct / L5 / Lab & Clinical |  | 10d | 2026-03-09 A | 2026-04-14 | P2.L5.LC.1570, P2.L5.LC.1200 |  | 10d | 2026-03-02 | 2026-03-13 | 107d | 0d | 80 | INSUL | P2-5 | INSUL-3 |  | P2.B2.23.07.410 | Harris |  | 4 | TA | JPC | O |
| P2.L5.LC.1400 |  | OH - Conduit - Low Volt - Security / L5 / Lab & Clinical |  | 10d | 2026-04-01 | 2026-04-14 | P2.L5.LC.1340 |  |  |  |  | 26d | 0d | 80 | ELEC | P2-5 | ELEC-2 |  |  |  |  | 5 | TA | JPC | O |
| P2.L5.LC.1410 |  | OH - Conduit - Low Volt - Medical Services/Nurse Call (?) / L5 / Lab & Clinical |  | 10d | 2026-04-01 | 2026-04-14 | P2.L5.LC.1420 |  |  |  |  | 26d | 0d | 80 | ELEC | P2-5 | ELEC-2 |  |  |  |  | 5 |  | JPC | O |
| P2.L5.LC.1480 |  | Spray/Seal/Firestop - Head of Wall / L5 / Lab & Clinical |  | 10d | 2026-04-01 | 2026-04-14 | P2.L5.LC.1470 |  |  |  |  | 36d | 25d | 80 | FIRSAFE | P2-5 | FIRSAFE | FP | P2.B2.07.84.310 |  | AT47 | To Finishes - Paint |  | JPC |  |
| P2.L5.LC.1490 |  | Firestop - Thru Wall / L5 / Lab & Clinical |  | 10d | 2026-04-01 | 2026-04-14 | P2.L5.LC.1470 |  |  |  |  | 36d | 25d | 80 | FIRESTO | P2-5 | FIRESTO |  | P2.B2.07.84.210 |  | AT48 | To Finishes - Paint |  | JPC |  |
| P2.L5.LC.1510 |  | Pull Wire - Low Volt - Fire Alarm / L5 / Lab & Clinical |  | 10d | 2026-04-01 | 2026-04-14 | P2.L5.LC.1380 |  |  |  |  | 36d | 25d | 80 | FA | P2-5 | FA-1 |  |  |  |  | To Trim Finishes |  | JPC |  |
| P2.L5.LC.1320 |  | OH - Electrical - Equip Tie In / L5 / Lab & Clinical |  | 10d | 2026-04-08 | 2026-04-21 | P2.L5.LC.1310 |  |  |  |  | 11d | 0d | 80 | ELEC | P2-5 | ELEC-2 |  | P2.B2.26.05.410 |  |  | 4 | TA | JPC | O |
| P2.L5.LC.1370 |  | OH - Conduit - Low Volt - BAS/Controls / L5 / Lab & Clinical |  | 10d | 2026-04-08 | 2026-04-21 | P2.L5.LC.1310, P2.L5.LC.1340 |  |  |  |  | -1d | 0d | 80 | BAS | P2-5 | BAS-1 | FP |  | Harris |  | 5 | TA | JPC | O |
| P2.L5.LC.1520 |  | Pull Wire - Low Volt - Telecom / L5 / Lab & Clinical |  | 10d | 2026-04-15 | 2026-04-28 | P2.L5.LC.1390 |  |  |  |  | 26d | 15d | 80 | CIT | P2-5 | CIT |  |  |  |  | To Trim Finishes |  | JPC |  |
| P2.L5.LC.1530 |  | Pull Wire - Low Volt - Security / L5 / Lab & Clinical |  | 10d | 2026-04-15 | 2026-04-28 | P2.L5.LC.1400 |  |  |  |  | 26d | 15d | 80 | LOWVOLT | P2-5 | LOWVOLT-1 |  |  |  |  | To Trim Finishes |  | JPC |  |
| P2.L5.LC.1540 |  | Pull Wire - Low Volt - Medical Services/Nurse Call (?) / L5 / Lab & Clinical |  | 10d | 2026-04-15 | 2026-04-28 | P2.L5.LC.1410 |  |  |  |  | 26d | 15d | 80 | LOWVOLT | P2-5 | LOWVOLT-1 |  |  |  |  | To Trim Finishes |  | JPC |  |
| P2.L5.LC.1360 |  | Pull Wire - Electrical - 208/120v Branch & Equip / L5 / Lab & Clinical |  | 20d | 2026-04-22 | 2026-05-19 | P2.L5.LC.1320, P2.L5.LC.1230, P2.L5.LC.1440 |  |  |  |  | 11d | 0d | 80 | ELEC | P2-5 | ELEC-2 |  |  |  |  | To Trim Devices & Term Panel |  | JPC | O |
| P2.L5.LC.1500 |  | Pull Wire - Low Volt - BAS/Controls / L5 / Lab & Clinical |  | 10d | 2026-04-22 | 2026-05-05 | P2.L5.LC.1370 |  |  |  |  | -1d | 0d | 80 | BAS | P2-5 | BAS-1 |  |  | Harris |  | To Trim Finishes |  | JPC |  |
| P2.L5.LC.1330 |  | OH - HVAC Piping - Equip Tie In / L5 / Lab & Clinical |  | 15d | 2026-04-29 | 2026-05-19 | P2.L5.LC.1270, P2.L5.LC.1310, CX.B2.HYDR.1000 |  |  |  |  | 11d | 0d | 80 | FIT | P2-5 | FIT-2 |  | P2.B2.23.20.610 | Harris |  |  | TA | JPC |  |
| P2.L5.LC.1550 |  | Trades Inspect & Verify R/I Work Completed to Specs / L5 / Lab & Clinical |  | 5d | 2026-05-20 | 2026-05-27 | P2.L5.LC.1480, P2.L5.LC.1490, P2.L5.LC.1510, P2.L5.LC.1520, P2.L5.LC.1530, P2.L5.LC.1250, P2.L5.LC.1540, P2.L5.LC.1360, P2.L5.LC.1500, P2.L5.LC.1330 |  |  |  |  | 11d | 10d | 40 | T | P2-5 | T | FP |  |  |  |  |  | JPC |  |

Notes:
- P2.L5.LC.1220: NOTES: Per Harris Schedule 11/4/25. unactualized start to show new completion date.

| ID | WBS | Activity | Duration | Start | Finish | Predecessors | Complete | Planned start | Planned finish | Total float | Free float | Temp Orig Dur | Pick #2 | *NIH Resp Check* | Resp / SRLM | PHASE | RESP UPD | RESP / Trade | Z.RESP | Testing Type |
| --- | --- | --- | --- | --- | --- | --- | --- | --- | --- | --- | --- | --- | --- | --- | --- | --- | --- | --- | --- | --- |
|  | 13 | **FINISHES - Lab & Clinical Spaces (Below Interstitials) / Level 5** |  | 2026-03-10 | 2026-10-06 |  |  |  |  |  |  |  |  |  |  |  |  |  |  |  |
|  | 2 | **Staff and Open Bench Suites - Room Blocks 5-39.. / Level 5** |  | 2026-03-10 | 2026-08-13 |  |  |  |  |  |  |  |  |  |  |  |  |  |  |  |
| P2.L5.F.LC.1010 |  | R/I - Ceiling Assemblies & Supports - Med Equip / L5 / Staff, Open Bench | 5d | 2026-03-10 A | 2026-03-14 A | P2.L5.LC.1460 | 100% | 2026-06-04 | 2026-06-10 |  |  | 40 | FP | ! | ACT | P2-5 | JPC | ACT |  |  |
| P2.L5.F.LC.1020 |  | Framing - Hard Lid Ceilings / L5 / Staff, Open Bench | 5d | 2026-03-19 A | 2026-03-25 A | P2.L5.F.LC.1010, P2.L5.LC.1140 | 100% | 2026-06-11 | 2026-06-17 |  |  | 40 | FP | ! | GYP | P2-5 | JPC | GYP-1 |  |  |
| P2.L5.F.LC.1000 |  | Paint - Walls / L5 / Staff, Open Bench | 5d | 2026-04-01 | 2026-04-07 | P2.L5.S.1470, P2.L5.LC.1470 |  |  |  | 112d | 5d | 40 | FP |  | PAINT | P2-5 | JPC | PAINT-1 |  |  |
| P2.L5.F.LC.1030 |  | R/I - Lights & Devices - Hard Lids Ceilings / L5 / Staff, Open Bench | 10d | 2026-04-01 | 2026-04-14 | P2.L5.F.LC.1020 |  |  |  | 127d | 0d | 40 | FP | ! | ELEC | P2-5 | JPC | ELEC-2 |  |  |
| P2.L5.F.LC.1040 |  | R/I - Diffusers - Hard Lid Ceilings / L5 / Staff, Open Bench | 5d | 2026-04-01 | 2026-04-07 | P2.L5.F.LC.1020 |  |  |  | 132d | 5d | 40 |  | ! | HVAC | P2-5 | JPC | HVAC | Harris |  |
| P2.L5.F.LC.1050 |  | R/I - Sprinkler Heads - Hard Lid Ceilings / L5 / Staff, Open Bench | 5d | 2026-04-01 | 2026-04-07 | P2.L5.F.LC.1020 |  |  |  | 132d | 5d | 40 |  | ! | FP | P2-5 | JPC | FP-1 |  |  |
| P2.L5.F.LC.1060 |  | R/I - Fire Alarm - Hard Lid Ceilings / L5 / Staff, Open Bench | 5d | 2026-04-01 | 2026-04-07 | P2.L5.F.LC.1020 |  |  |  | 132d | 5d | 40 |  |  | FA | P2-5 | JPC | FA-1 |  |  |
| P2.L5.F.LC.1100 |  | Waterproof Ceramic Tile / L5 / Staff, Open Bench | 5d | 2026-04-01 | 2026-04-07 | P2.L5.F.LC.1020 |  |  |  | 172d | 0d | 40 | FP |  | TILE | P2-5 | JPC | TILE |  |  |
| P2.L5.F.LC.1110 |  | Ceramic Tile / L5 / Staff, Open Bench | 5d | 2026-04-08 | 2026-04-14 | P2.L5.F.LC.1100 |  |  |  | 172d | 36d | 40 | FP |  | TILE | P2-5 | JPC | TILE |  |  |
| P2.L5.F.LC.1070 |  | OH Ceiling Inspection & Signoff - Hard Lid Ceilings / L5 / Staff, Open Bench | 5d | 2026-04-15 | 2026-04-21 | P2.L5.F.LC.1040, P2.L5.F.LC.1050, P2.L5.F.LC.1030, P2.L5.F.LC.1060 |  |  |  | 127d | 0d | 40 | FP | ! | AHJ | P2-5 | JPC | AHJ |  |  |
| P2.L5.F.LC.1120 |  | T-Grid / L5 / Staff, Open Bench | 5d | 2026-04-15 | 2026-04-21 | P2.L5.LC.1350, P2.L5.F.LC.1000, P2.L5.F.LC.1020 |  |  |  | 107d | 0d | 40 | FP |  | ACT | P2-5 | JPC | ACT |  |  |
| P2.L5.F.LC.1080 |  | Hang-Tape-Finish _Hard Lid Ceilings / L5 / Staff, Open Bench | 5d | 2026-04-22 | 2026-04-28 | P2.L5.F.LC.1070 |  |  |  | 127d | 0d | 40 | FP | ! | GYP | P2-5 | JPC | GYP-1 |  |  |
| P2.L5.F.LC.1130 |  | Diffusers in T-Grid / L5 / Staff, Open Bench | 5d | 2026-04-22 | 2026-04-28 | P2.L5.F.LC.1120 |  |  |  | 112d | 5d | 40 | FP |  | HVAC | P2-5 | JPC | HVAC | Harris |  |
| P2.L5.F.LC.1140 |  | Lights & Devices / L5 / Staff, Open Bench | 5d | 2026-04-22 | 2026-04-28 | P2.L5.F.LC.1120 |  |  |  | 112d | 5d | 40 |  |  | ELEC | P2-5 | JPC | ELEC-2 |  |  |
| P2.L5.F.LC.1150 |  | Sprinkler Heads / L5 / Staff, Open Bench | 5d | 2026-04-22 | 2026-04-28 | P2.L5.F.LC.1120 |  |  |  | 112d | 5d | 40 |  |  | FP | P2-5 | JPC | FP-1 |  |  |
| P2.L5.F.LC.1160 |  | Trim Low Voltage / L5 / Staff, Open Bench | 5d | 2026-04-22 | 2026-04-28 | P2.L5.F.LC.1120 |  |  |  | 107d | 0d | 40 |  |  | LOWVOLT | P2-5 | JPC | LOWVOLT-1 |  |  |
| P2.L5.F.LC.1090 |  | Paint Ceilings / L5 / Staff, Open Bench | 5d | 2026-04-29 | 2026-05-05 | P2.L5.F.LC.1080 |  |  |  | 157d | 21d | 40 | FP |  | PAINT | P2-5 | JPC | PAINT-1 |  |  |
| P2.L5.F.LC.1170 |  | Trim Fire Alarm / L5 / Staff, Open Bench | 5d | 2026-04-29 | 2026-05-05 | P2.L5.F.LC.1120, P2.L5.F.LC.1160 |  |  |  | 107d | 0d | 40 |  |  | FA | P2-5 | JPC | FA-1 |  |  |
| P2.L5.F.LC.1180 |  | OH Ceiling Signoff - T-Grid / L5 / Staff, Open Bench | 10d | 2026-05-06 | 2026-05-19 | P2.L5.F.LC.1130, P2.L5.F.LC.1160, P2.L5.F.LC.1170, P2.L5.F.LC.1140, P2.L5.F.LC.1150 |  |  |  | 107d | 0d | 80 | FP |  | MEP | P2-5 | JPC | MEP | Harris |  |
| P2.L5.F.LC.1200 |  | Drop Ceiling Tile / L5 / Staff, Open Bench | 5d | 2026-05-20 | 2026-05-27 | P2.L5.F.LC.1180 |  |  |  | 107d | 0d | 40 |  |  | ACT | P2-5 | JPC | ACT |  |  |
| P2.L5.F.LC.4280 |  | Ceiling Service Panels / L5 / Staff, Open Bench | 5d | 2026-05-20 | 2026-05-27 | P2.L5.F.LC.1120, P2.L5.F.LC.1180 |  |  |  | 146d | 0d | 120 | FP |  | LABCASE | P2-5 | JPC | LABCASE |  |  |
| P2.L5.F.LC.1210 |  | Wall Protection / L5 / Staff, Open Bench | 5d | 2026-05-21 | 2026-05-28 | P2.L5.F.LC.1000, BP7.102.3.300 |  |  |  | 133d | 0d | 40 |  |  | WALLPRO | P2-5 | JPC | WALLPRO |  |  |
| P2.L5.F.LC.4270 |  | Casework (Before Flooring) / L5 / Staff, Open Bench | 5d | 2026-05-28 | 2026-06-03 | P2.L5.LC.1470, P2.L5.F.LC.1120, P2.L5.F.LC.1080, P2.L5.LC.1150, P2.L5.F.LC.1130 SS+5d, P2.L5.F.LC.1200 |  |  |  | 107d | 0d | 120 | FP |  | LABCASE | P2-5 | JPC | LABCASE |  |  |
| P2.L5.F.LC.1230 |  | Trim T-Stats / L5 / Staff, Open Bench | 5d | 2026-05-29 | 2026-06-04 | P2.L5.F.LC.1210 |  |  |  | 136d | 0d | 40 |  |  | BAS | P2-5 | JPC | BAS-1 | Harris |  |
| P2.L5.F.LC.1240 |  | Trim Electrical / L5 / Staff, Open Bench | 5d | 2026-05-29 | 2026-06-04 | P2.L5.F.LC.1230 SS |  |  |  | 136d | 0d | 40 |  |  | ELEC | P2-5 | JPC | ELEC-2 |  |  |
| P2.L5.F.LC.1250 |  | Trim Telephone/ Data / L5 / Staff, Open Bench | 5d | 2026-05-29 | 2026-06-04 | P2.L5.F.LC.1240 SS |  |  |  | 136d | 0d | 40 |  |  | LOWVOLT | P2-5 | JPC | LOWVOLT-1 |  |  |
| P2.L5.F.LC.1270 |  | Trim Med Gas / L5 / Staff, Open Bench | 5d | 2026-05-29 | 2026-06-04 | P2.L5.F.LC.1210 |  |  |  | 133d | 0d | 40 |  |  | MECH | P2-5 | JPC | MECH-2 | Harris |  |
| P2.L5.F.LC.4290 |  | Equipment / L5 / Staff, Open Bench | 10d | 2026-06-04 | 2026-06-17 | P2.L5.F.LC.4270 |  |  |  | 141d | 3d | 120 | FP |  | MEP | P2-5 | JPC | MEP-2 |  |  |
| P2.L5.F.LC.1280 |  | Floor Prep / L5 / Staff, Open Bench | 5d | 2026-06-05 | 2026-06-11 | P2.L5.F.LC.1270, P2.L5.F.LC.1200, P2.L5.F.LC.1230, P2.L5.F.LC.1240, P2.L5.F.LC.1250, P2.L5.F.LC.4270, P2.L5.F.LC.1110, P2.L5.F.LC.1090 |  |  |  | 136d | 0d | 40 | FP |  | FLOOR | P2-5 | JPC | FLOOR |  |  |
| P2.L5.F.LC.1290 |  | Flooring / L5 / Staff, Open Bench | 5d | 2026-06-12 | 2026-06-18 | P2.L5.F.LC.1280 |  |  |  | 136d | 0d | 40 | FP |  | FLOOR | P2-5 | JPC | FLOOR |  |  |
| P2.L5.F.LC.1260 |  | Doors & Hardware / L5 / Staff, Open Bench | 5d | 2026-06-19 | 2026-06-25 | P2.L5.F.LC.1290 |  |  |  | 140d | 2d | 40 |  |  | DFH | P2-5 | JPC | DFH |  | AT29 |
| P2.L5.F.LC.1300 |  | Building Specialities / L5 / Staff, Open Bench | 5d | 2026-06-19 | 2026-06-25 | P2.L5.F.LC.1290 |  |  |  | 145d | 14d | 40 | FP |  | SPECIAL | P2-5 | JPC | SPECIAL |  |  |
| P2.L5.F.LC.1310 |  | Interior Building Signage / L5 / Staff, Open Bench | 5d | 2026-06-19 | 2026-06-25 | P2.L5.F.LC.1290 |  |  |  | 145d | 14d | 40 |  |  | SIGN | P2-5 | JPC | SIGN |  |  |
| P2.L5.F.LC.1330 |  | Remaining Equipment Post Flooring / L5 / Staff, Open Bench | 2d | 2026-06-19 | 2026-06-22 | P2.L5.F.LC.1290 |  |  |  | 136d | 0d | 40 | FP |  | EQUIP | P2-5 | JPC | EQUIP |  |  |
| P2.L5.F.LC.1340 |  | Remaining MEP Hook-Ups / L5 / Staff, Open Bench | 5d | 2026-06-23 | 2026-06-29 | P2.L5.F.LC.1330, P2.L5.F.LC.4290 |  |  |  | 138d | 0d | 40 |  |  | MEP | P2-5 | JPC | MEP | Harris |  |
| P2.L5.F.LC.1350 |  | OFOI Furniture & Equipment / L5 / Staff, Open Bench | 5d | 2026-06-23 | 2026-06-29 | P2.L5.F.LC.1340 SS |  |  |  | 148d | 17d | 40 |  |  | FURN | P2-5 | JPC | FURN |  |  |
| P2.L5.F.LC.1360 |  | Rough Clean / L5 / Staff, Open Bench | 5d | 2026-06-30 | 2026-07-07 | P2.L5.F.LC.1340, P2.L5.F.LC.1260, P2.L5.F.LC.4280 |  |  |  | 138d | 0d | 40 |  |  | FCLEAN | P2-5 | JPC | FCLEAN |  |  |
| P2.L5.F.LC.1370 |  | Prepare Punchlist / L5 / Staff, Open Bench | 5d | 2026-07-08 | 2026-07-14 | P2.L5.F.LC.1340 SS, P2.L5.F.LC.1360 |  |  |  | 138d | 7d | 40 |  |  | QC | P2-5 | JPC | QC |  |  |
| P2.L5.F.LC.1220 |  | Plumbing Fixtures & Drinking Fountains / L5 / Staff, Open Bench | 5d | 2026-07-10 | 2026-07-16 | P2.L5.F.LC.4270, PCO.830.1140 |  |  |  | 131d | 0d | 40 | FP |  | PLMB | P2-5 | JPC | PLMB | Harris |  |
| P2.L5.F.LC.1320 |  | Work Completion List - Finishes / L5 / Staff, Open Bench | 5d | 2026-07-17 | 2026-07-23 | P2.L5.F.LC.1310, P2.L5.F.LC.1300, P2.L5.F.LC.1330, P2.L5.F.LC.1220 |  |  |  | 131d | 0d | 40 | FP |  | FINISH | P2-5 | JPC | FINISH |  |  |
| P2.L5.F.LC.1380 |  | Correct Punchlist / L5 / Staff, Open Bench | 10d | 2026-07-24 | 2026-08-06 | P2.L5.F.LC.1350, P2.L5.F.LC.1370, P2.L5.F.LC.1320 |  |  |  | 131d | 0d | 80 |  |  | FINISH | P2-5 | JPC | FINISH |  |  |
| P2.L5.F.LC.1390 |  | Final Clean / L5 / Staff, Open Bench | 5d | 2026-08-07 | 2026-08-13 | P2.L5.F.LC.1380 |  |  |  | 131d | 143d | 40 |  |  | QC | P2-5 | JPC | QC |  |  |

| ID | WBS | Activity | Duration | Start | Finish | Predecessors | Total float | Free float | Temp Orig Dur | Resp / SRLM | PHASE | RESP UPD | RESP / Trade | *NIH Resp Check* | Z.RESP | Testing Type |
| --- | --- | --- | --- | --- | --- | --- | --- | --- | --- | --- | --- | --- | --- | --- | --- | --- |
|  | 3 | **Chem / Hema / Microbio Open Lab Suites - Room Blocks 5-28.. & 5-29.. / Level 5** |  | 2026-04-01 | 2026-10-06 |  |  |  |  |  |  |  |  |  |  |  |
| P2.L5.F.LC.2000 |  | Paint - Walls / L5 / Chem, Hema, Micro | 5d | 2026-04-01 | 2026-04-07 | P2.L5.LC.1470 | 122d | 0d | 40 | PAINT | P2-5 | JPC | PAINT-1 |  |  |  |
| P2.L5.F.LC.4150 |  | Snorkel at Walls - Install / L5 / Chem, Hema, Micro | 5d | 2026-04-01 | 2026-04-07 | P2.L5.LC.1470 | 133d | 0d | 120 | LABCASE | P2-5 | JPC | LABCASE |  |  |  |
| P2.L5.F.LC.2010 |  | R/I - Ceiling Assemblies & Supports - Med Equip / L5 / Chem, Hema, Micro | 5d | 2026-04-08 | 2026-04-14 | P2.L5.F.LC.2000 | 151d | 0d | 40 | ACT | P2-5 | JPC | ACT | ! |  |  |
| P2.L5.F.LC.4160 |  | Snorkel at Wall MEP Connection / L5 / Chem, Hema, Micro | 5d | 2026-04-08 | 2026-04-14 | P2.L5.F.LC.4150 | 184d | 77d | 120 | LABCASE | P2-5 | JPC | LABCASE |  |  |  |
| P2.L5.F.LC.2020 |  | Framing - Hard Lid Ceilings / L5 / Chem, Hema, Micro | 5d | 2026-04-15 | 2026-04-21 | P2.L5.F.LC.2010 | 151d | 0d | 40 | GYP | P2-5 | JPC | GYP-1 | ! |  |  |
| P2.L5.F.LC.2120 |  | T-Grid / L5 / Chem, Hema, Micro | 5d | 2026-04-15 | 2026-04-21 | P2.L5.LC.1350, P2.L5.F.LC.2000 | 117d | 0d | 40 | ACT | P2-5 | JPC | ACT |  |  |  |
| P2.L5.F.LC.2030 |  | R/I - Lights & Devices - Hard Lids Ceilings / L5 / Chem, Hema, Micro | 10d | 2026-04-22 | 2026-05-05 | P2.L5.F.LC.2020 | 151d | 0d | 40 | ELEC | P2-5 | JPC | ELEC-2 | ! |  |  |
| P2.L5.F.LC.2040 |  | R/I - Diffusers - Hard Lid Ceilings / L5 / Chem, Hema, Micro | 5d | 2026-04-22 | 2026-04-28 | P2.L5.F.LC.2020 | 156d | 5d | 40 | HVAC | P2-5 | JPC | HVAC | ! | Harris |  |
| P2.L5.F.LC.2050 |  | R/I - Sprinkler Heads - Hard Lid Ceilings / L5 / Chem, Hema, Micro | 5d | 2026-04-22 | 2026-04-28 | P2.L5.F.LC.2020 | 156d | 5d | 40 | FP | P2-5 | JPC | FP-1 | ! |  |  |
| P2.L5.F.LC.2060 |  | R/I - Fire Alarm - Hard Lid Ceilings / L5 / Chem, Hema, Micro | 5d | 2026-04-22 | 2026-04-28 | P2.L5.F.LC.2020 | 156d | 5d | 40 | FA | P2-5 | JPC | FA-1 |  |  |  |
| P2.L5.F.LC.2130 |  | Diffusers in T-Grid / L5 / Chem, Hema, Micro | 5d | 2026-04-22 | 2026-04-28 | P2.L5.F.LC.2120 | 117d | 0d | 40 | HVAC | P2-5 | JPC | HVAC |  | Harris |  |
| P2.L5.F.LC.2140 |  | Lights & Devices / L5 / Chem, Hema, Micro | 5d | 2026-04-22 | 2026-04-28 | P2.L5.F.LC.2120 | 117d | 0d | 40 | ELEC | P2-5 | JPC | ELEC-2 |  |  |  |
| P2.L5.F.LC.2150 |  | Sprinkler Heads / L5 / Chem, Hema, Micro | 5d | 2026-04-22 | 2026-04-28 | P2.L5.F.LC.2120 | 117d | 0d | 40 | FP | P2-5 | JPC | FP-1 |  |  |  |
| P2.L5.F.LC.2160 |  | Trim Low Voltage / L5 / Chem, Hema, Micro | 5d | 2026-04-22 | 2026-04-28 | P2.L5.F.LC.2120 | 117d | 0d | 40 | LOWVOLT | P2-5 | JPC | LOWVOLT-1 |  |  |  |
| P2.L5.F.LC.2170 |  | Trim Fire Alarm / L5 / Chem, Hema, Micro | 5d | 2026-04-22 | 2026-04-28 | P2.L5.F.LC.2120 | 117d | 0d | 40 | FA | P2-5 | JPC | FA-1 |  |  |  |
| P2.L5.F.LC.4220 |  | Snorkel at Ceilings - Install / L5 / Chem, Hema, Micro | 5d | 2026-04-22 | 2026-04-28 | P2.L5.LC.4170, P2.L5.F.LC.2120 | 118d | 0d | 120 | LABCASE | P2-5 | JPC | LABCASE |  |  |  |
| P2.L5.F.LC.2180 |  | OH Ceiling Signoff / L5 / Chem, Hema, Micro | 10d | 2026-04-29 | 2026-05-12 | P2.L5.F.LC.2160, P2.L5.F.LC.2170, P2.L5.F.LC.2150, P2.L5.F.LC.2130, P2.L5.F.LC.2140 | 117d | 0d | 80 | MEP | P2-5 | JPC | MEP |  | Harris |  |
| P2.L5.F.LC.4230 |  | Snorkel at Ceiling - MEP Connection / L5 / Chem, Hema, Micro | 5d | 2026-04-29 | 2026-05-05 | P2.L5.F.LC.4220 | 118d | 0d | 120 | LABCASE | P2-5 | JPC | LABCASE |  |  |  |
| P2.L5.F.LC.2070 |  | OH Ceiling Inspection & Signoff - Hard Lid Ceilings / L5 / Chem, Hema, Micro | 5d | 2026-05-06 | 2026-05-12 | P2.L5.F.LC.2040, P2.L5.F.LC.2050, P2.L5.F.LC.2060, P2.L5.F.LC.2030 | 151d | 0d | 40 | AHJ | P2-5 | JPC | AHJ | ! |  |  |
| P2.L5.F.LC.2080 |  | Hang-Tape-Finish _Hard Lid Ceilings / L5 / Chem, Hema, Micro | 5d | 2026-05-13 | 2026-05-19 | P2.L5.F.LC.2070 | 151d | 27d | 40 | GYP | P2-5 | JPC | GYP-1 | ! |  |  |
| P2.L5.F.LC.2200 |  | Drop Ceiling Tile / L5 / Chem, Hema, Micro | 5d | 2026-05-13 | 2026-05-19 | P2.L5.F.LC.2180, P2.L5.F.LC.4230 | 117d | 10d | 40 | ACT | P2-5 | JPC | ACT |  |  |  |
| P2.L5.F.LC.4260 |  | Ceiling Service Panel / L5 / Chem, Hema, Micro | 5d | 2026-05-28 | 2026-06-03 | P2.L5.F.LC.2180, P2.L5.F.LC.4280 | 146d | 37d | 120 | LABCASE | P2-5 | JPC | LABCASE |  |  |  |
| P2.L5.F.LC.4250 |  | Casework (Before Flooring) / L5 / Chem, Hema, Micro | 17d | 2026-06-04 | 2026-06-26 | P2.L5.LC.1470, BP6.123.3.100, P2.L5.F.LC.4270, P2.L5.F.LC.1120, P2.L5.F.LC.1080, P2.L5.F.LC.2120, P2.L5.F.LC.2200 | 107d | 0d | 120 | LABCASE | P2-5 | JPC | LABCASE |  |  |  |
| P2.L5.F.LC.2400 |  | Fumehood Equipment Install / L5 / Chem, Hema, Micro | 2d | 2026-06-25 | 2026-06-26 | P2.L5.F.LC.4250 FF | 130d | 0d | 120 | LABCASE | P2-5 | JPC | LABCASE |  |  |  |
| P2.L5.F.LC.2090 |  | Paint Ceilings / L5 / Chem, Hema, Micro | 5d | 2026-06-29 | 2026-07-06 | P2.L5.F.LC.2080, P2.L5.F.LC.4250 | 124d | 0d | 40 | PAINT | P2-5 | JPC | PAINT-1 |  |  |  |
| P2.L5.F.LC.2210 |  | Wall Protection / L5 / Chem, Hema, Micro | 5d | 2026-06-29 | 2026-07-06 | BP7.102.3.300, P2.L5.F.LC.4250 | 107d | 0d | 40 | WALLPRO | P2-5 | JPC | WALLPRO |  |  |  |
| P2.L5.F.LC.2410 |  | Fumehood Equipment MEP Connection / L5 / Chem, Hema, Micro | 2d | 2026-06-29 | 2026-06-30 | P2.L5.F.LC.2400 | 130d | 63d | 120 | LABCASE | P2-5 | JPC | LABCASE |  |  |  |
| P2.L5.F.LC.4060 |  | Floor Prep - Epoxy Floors / L5 / Autoclave, PAPR, & BSL3 | 3d | 2026-06-29 | 2026-07-01 | P2.L5.F.LC.4250, P2.L5.F.LC.2180 | 107d | 0d | 40 | EPOXYF | P2-5 | JPC | EPOXYF |  |  |  |
| P2.L5.F.LC.4070 |  | Flooring - Epoxy Floors / L5 / Autoclave, PAPR, & BSL3 | 2d | 2026-07-02 | 2026-07-06 | P2.L5.F.LC.4060 | 107d | 8d | 40 | EPOXYF | P2-5 | JPC | EPOXYF |  |  |  |
| P2.L5.F.LC.2100 |  | Waterproof Ceramic Tile / L5 / Chem, Hema, Micro | 5d | 2026-07-07 | 2026-07-13 | P2.L5.F.LC.2090 | 124d | 0d | 40 | TILE | P2-5 | JPC | TILE |  |  |  |
| P2.L5.F.LC.2230 |  | Trim T-Stats / L5 / Chem, Hema, Micro | 5d | 2026-07-07 | 2026-07-13 | P2.L5.F.LC.2210 | 114d | 0d | 40 | BAS | P2-5 | JPC | BAS-1 |  | Harris |  |
| P2.L5.F.LC.2240 |  | Trim Electrical / L5 / Chem, Hema, Micro | 5d | 2026-07-07 | 2026-07-13 | P2.L5.F.LC.2230 SS | 114d | 0d | 40 | ELEC | P2-5 | JPC | ELEC-2 |  |  |  |
| P2.L5.F.LC.2250 |  | Trim Telephone/ Data / L5 / Chem, Hema, Micro | 5d | 2026-07-07 | 2026-07-13 | P2.L5.F.LC.2240 SS | 114d | 20d | 40 | LOWVOLT | P2-5 | JPC | LOWVOLT-1 |  |  |  |
| P2.L5.F.LC.2270 |  | Trim Med Gas / L5 / Chem, Hema, Micro | 5d | 2026-07-07 | 2026-07-13 | P2.L5.F.LC.2210 | 107d | 20d | 40 | MECH | P2-5 | JPC | MECH-2 |  | Harris |  |
| P2.L5.F.LC.2220 |  | Plumbing Fixtures & Drinking Fountains / L5 / Chem, Hema, Micro | 5d | 2026-07-10 | 2026-07-16 | PCO.830.1140 | 99d | 0d | 40 | PLMB | P2-5 | JPC | PLMB |  | Harris |  |
| P2.L5.F.LC.4300 |  | Cleanroom - Hang - Finish Walls and Cielings / L5 / Chem, Hema, Micro & Immunology | 15d | 2026-07-10 | 2026-07-30 | BP6.092.3.100, P2.L5.N.1470 | 59d | 0d | 40 | CLEAN-1 | P2-5 | JPC | CLEAN-1 | ! |  |  |
| P2.L5.F.LC.2110 |  | Ceramic Tile / L5 / Chem, Hema, Micro | 5d | 2026-07-14 | 2026-07-20 | P2.L5.F.LC.2100 | 124d | 15d | 40 | TILE | P2-5 | JPC | TILE |  |  |  |
| P2.L5.F.LC.2190 |  | Casework (After Flooring) / L5 / Chem, Hema, Micro | 7d | 2026-07-17 | 2026-07-27 | P2.L5.F.LC.4070, P2.L5.F.LC.2220, P2.PT.1180, P2.L5.F.LC.2200 | 99d | 0d | 120 | LABCASE | P2-5 | JPC | LABCASE |  |  |  |
| P2.L5.F.LC.2260 |  | Doors & Hardware / L5 / Chem, Hema, Micro | 5d | 2026-07-28 | 2026-08-03 | P2.L5.F.LC.2190 | 99d | 5d | 40 | DFH | P2-5 | JPC | DFH |  |  | AT29 |
| P2.L5.F.LC.2330 |  | Remaining Equipment Post Flooring / L5 / Chem, Hema, Micro | 5d | 2026-07-28 | 2026-08-03 | P2.L5.F.LC.2190, P2.L5.F.LC.4260 | 109d | 0d | 40 | EQUIP | P2-5 | JPC | EQUIP |  |  |  |
| P2.L5.F.LC.4310 |  | Cleanroom - Install Doors and Hardware / L5 / Chem, Hema, Micro & Immunology | 5d | 2026-07-31 | 2026-08-06 | P2.L5.F.LC.4300, BP5.081.3.420 | 94d | 0d | 40 | CLEAN-1 | P2-5 | JPC | CLEAN-1 | ! |  |  |
| P2.L5.F.LC.2340 |  | Remaining MEP Hook-Ups / L5 / Chem, Hema, Micro | 5d | 2026-08-04 | 2026-08-10 | P2.L5.F.LC.2330, P2.L5.F.LC.4160, P2.L5.F.LC.4230 | 109d | 0d | 40 | MEP | P2-5 | JPC | MEP |  | Harris |  |
| P2.L5.F.LC.2350 |  | OFOI Furniture & Equipment / L5 / Chem, Hema, Micro | 5d | 2026-08-04 | 2026-08-10 | P2.L5.F.LC.2340 SS | 119d | 25d | 40 | FURN | P2-5 | JPC | FURN |  |  |  |
| P2.L5.F.LC.4320 |  | Cleanroom - Install Windows / L5 / Chem, Hema, Micro & Immunology | 2d | 2026-08-07 | 2026-08-10 | P2.L5.F.LC.4310 | 94d | 0d | 40 | CLEAN-1 | P2-5 | JPC | CLEAN-1 | ! |  |  |
| P2.L5.F.LC.2280 |  | Floor Prep / L5 / Chem, Hema, Micro | 5d | 2026-08-11 | 2026-08-17 | P2.L5.F.LC.2200, P2.L5.F.LC.2260, P2.L5.F.LC.2240, P2.L5.F.LC.2250, P2.L5.F.LC.2220, P2.L5.F.LC.2230, P2.L5.F.LC.2270, P2.L5.F.LC.4320 | 94d | 0d | 40 | FLOOR | P2-5 | JPC | FLOOR |  |  |  |
| P2.L5.F.LC.2360 |  | Rough Clean / L5 / Chem, Hema, Micro | 5d | 2026-08-11 | 2026-08-17 | P2.L5.F.LC.2340, P2.L5.F.LC.2110 | 109d | 15d | 40 | FCLEAN | P2-5 | JPC | FCLEAN |  |  |  |
| P2.L5.F.LC.2290 |  | Flooring / L5 / Chem, Hema, Micro | 5d | 2026-08-18 | 2026-08-24 | P2.L5.F.LC.2280 | 94d | 0d | 40 | FLOOR | P2-5 | JPC | FLOOR |  |  |  |
| P2.L5.F.LC.2300 |  | Building Specialities / L5 / Chem, Hema, Micro | 5d | 2026-08-25 | 2026-08-31 | P2.L5.F.LC.2290 | 94d | 0d | 40 | SPECIAL | P2-5 | JPC | SPECIAL |  |  |  |
| P2.L5.F.LC.2310 |  | Interior Building Signage / L5 / Chem, Hema, Micro | 5d | 2026-08-25 | 2026-08-31 | P2.L5.F.LC.2290 | 94d | 0d | 40 | SIGN | P2-5 | JPC | SIGN |  |  |  |
| P2.L5.F.LC.2320 |  | Work Completion List - Finishes / L5 / Chem, Hema, Micro | 5d | 2026-09-01 | 2026-09-08 | P2.L5.F.LC.2310, P2.L5.F.LC.2300, P2.L5.F.LC.4160, P2.L5.F.LC.4230 | 94d | 0d | 40 | FINISH | P2-5 | JPC | FINISH |  |  |  |
| P2.L5.F.LC.2370 |  | Prepare Punchlist / L5 / Chem, Hema, Micro | 5d | 2026-09-09 | 2026-09-15 | P2.L5.F.LC.2340 SS, P2.L5.F.LC.2360, P2.L5.F.LC.2320 | 94d | 0d | 40 | QC | P2-5 | JPC | QC |  |  |  |
| P2.L5.F.LC.2380 |  | Correct Punchlist / L5 / Chem, Hema, Micro | 10d | 2026-09-16 | 2026-09-29 | P2.L5.F.LC.2370, P2.L5.F.LC.2350 | 94d | 0d | 80 | FINISH | P2-5 | JPC | FINISH |  |  |  |
| P2.L5.F.LC.2390 |  | Final Clean / L5 / Chem, Hema, Micro | 5d | 2026-09-30 | 2026-10-06 | P2.L5.F.LC.2380 | 94d | 106d | 40 | QC | P2-5 | JPC | QC |  |  |  |

| ID | WBS | Activity | Duration | Start | Finish | Predecessors | Complete | Planned start | Planned finish | Total float | Free float | Temp Orig Dur | *NIH Resp Check* | Resp / SRLM | PHASE | RESP UPD | RESP / Trade | Z.RESP | Testing Type |
| --- | --- | --- | --- | --- | --- | --- | --- | --- | --- | --- | --- | --- | --- | --- | --- | --- | --- | --- | --- |
|  | 4 | **Immunology / Mass Spec/HPCL / Mycology Lab Suites - Room Blocks 5-28.. & 5-29.. / Level 5** |  | 2026-03-16 | 2026-08-27 |  |  |  |  |  |  |  |  |  |  |  |  |  |  |
| P2.L5.F.LC.3010 |  | R/I - Ceiling Assemblies & Supports - Med Equip / L5 / Mass, Myc, Immuno | 5d | 2026-03-16 A | 2026-03-20 A | P2.L5.LC.1380 | 100% | 2026-04-22 | 2026-04-28 |  |  | 40 | ! | ACT | P2-5 | JPC | ACT |  |  |
| P2.L5.F.LC.3000 |  | Paint - Walls / L5 / Mass, Myc, Immuno | 5d | 2026-03-26 A | 2026-03-31 A | P2.L5.LC.1470, P2.L5.F.LC.3010 | 100% | 2026-04-08 | 2026-04-14 |  |  | 40 |  | PAINT | P2-5 | JPC | PAINT-1 |  |  |
| P2.L5.F.LC.3020 |  | Framing - Hard Lid Ceilings / L5 / Mass, Myc, Immuno | 5d | 2026-04-01 | 2026-04-07 | P2.L5.F.LC.3000 |  |  |  | 161d | 0d | 40 | ! | GYP | P2-5 | JPC | GYP-1 |  |  |
| P2.L5.F.LC.3030 |  | R/I - Lights & Devices - Hard Lids Ceilings / L5 / Mass, Myc, Immuno | 10d | 2026-04-08 | 2026-04-21 | P2.L5.F.LC.3020 |  |  |  | 161d | 0d | 40 | ! | ELEC | P2-5 | JPC | ELEC-2 |  |  |
| P2.L5.F.LC.3040 |  | R/I - Diffusers - Hard Lid Ceilings / L5 / Mass, Myc, Immuno | 5d | 2026-04-08 | 2026-04-14 | P2.L5.F.LC.3020 |  |  |  | 166d | 5d | 40 | ! | HVAC | P2-5 | JPC | HVAC | Harris |  |
| P2.L5.F.LC.3050 |  | R/I - Sprinkler Heads - Hard Lid Ceilings / L5 / Mass, Myc, Immuno | 5d | 2026-04-08 | 2026-04-14 | P2.L5.F.LC.3020 |  |  |  | 166d | 5d | 40 | ! | FP | P2-5 | JPC | FP-1 |  |  |
| P2.L5.F.LC.3060 |  | R/I - Fire Alarm - Hard Lid Ceilings / L5 / Mass, Myc, Immuno | 5d | 2026-04-08 | 2026-04-14 | P2.L5.F.LC.3020 |  |  |  | 166d | 5d | 40 |  | FA | P2-5 | JPC | FA-1 |  |  |
| P2.L5.F.LC.3120 |  | T-Grid / L5 / Mass, Myc, Immuno | 5d | 2026-04-15 | 2026-04-21 | P2.L5.LC.1350, P2.L5.F.LC.3000 |  |  |  | 116d | 0d | 40 |  | ACT | P2-5 | JPC | ACT |  |  |
| P2.L5.F.LC.3070 |  | OH Ceiling Inspection & Signoff - Hard Lid Ceilings / L5 / Mass, Myc, Immuno | 5d | 2026-04-22 | 2026-04-28 | P2.L5.F.LC.3050, P2.L5.F.LC.3060, P2.L5.F.LC.3030, P2.L5.F.LC.3040 |  |  |  | 161d | 0d | 40 | ! | AHJ | P2-5 | JPC | AHJ |  |  |
| P2.L5.F.LC.3130 |  | Diffusers in T-Grid / L5 / Mass, Myc, Immuno | 5d | 2026-04-22 | 2026-04-28 | P2.L5.F.LC.3120 |  |  |  | 118d | 0d | 40 |  | HVAC | P2-5 | JPC | HVAC | Harris |  |
| P2.L5.F.LC.3140 |  | Lights & Devices / L5 / Mass, Myc, Immuno | 5d | 2026-04-22 | 2026-04-28 | P2.L5.F.LC.3120 |  |  |  | 118d | 0d | 40 |  | ELEC | P2-5 | JPC | ELEC-2 |  |  |
| P2.L5.F.LC.3150 |  | Sprinkler Heads / L5 / Mass, Myc, Immuno | 5d | 2026-04-22 | 2026-04-28 | P2.L5.F.LC.3120 |  |  |  | 118d | 0d | 40 |  | FP | P2-5 | JPC | FP-1 |  |  |
| P2.L5.F.LC.3160 |  | Trim Low Voltage / L5 / Mass, Myc, Immuno | 5d | 2026-04-22 | 2026-04-28 | P2.L5.F.LC.3120 |  |  |  | 118d | 0d | 40 |  | LOWVOLT | P2-5 | JPC | LOWVOLT-1 |  |  |
| P2.L5.F.LC.3170 |  | Trim Fire Alarm / L5 / Mass, Myc, Immuno | 5d | 2026-04-22 | 2026-04-28 | P2.L5.F.LC.3120 |  |  |  | 118d | 0d | 40 |  | FA | P2-5 | JPC | FA-1 |  |  |
| P2.L5.F.LC.4190 |  | Ceiling Service Panels / L5 / Mass, Myc, Immuno | 5d | 2026-04-22 | 2026-04-28 | P2.L5.F.LC.3120 |  |  |  | 116d | 10d | 120 |  | LABCASE | P2-5 | JPC | LABCASE |  |  |
| P2.L5.F.LC.3080 |  | Hang-Tape-Finish _Hard Lid Ceilings / L5 / Mass, Myc, Immuno | 5d | 2026-04-29 | 2026-05-05 | P2.L5.F.LC.3070 |  |  |  | 161d | 26d | 40 | ! | GYP | P2-5 | JPC | GYP-1 |  |  |
| P2.L5.F.LC.3180 |  | OH Ceiling Signoff - T-Grid / L5 / Mass, Myc, Immuno | 10d | 2026-04-29 | 2026-05-12 | P2.L5.F.LC.3130, P2.L5.F.LC.3140, P2.L5.F.LC.3150, P2.L5.F.LC.3160, P2.L5.F.LC.3170 |  |  |  | 118d | 0d | 80 |  | MEP | P2-5 | JPC | MEP | Harris |  |
| P2.L5.F.LC.4100 |  | Snorkel at Ceilings - Install / L5 / Mass, Myc, Immuno | 5d | 2026-04-29 | 2026-05-05 | P2.L5.LC.4170, P2.L5.F.LC.3120, P2.L5.F.LC.4220, P2.L5.F.LC.4150 |  |  |  | 118d | 0d | 120 |  | LABCASE | P2-5 | JPC | LABCASE |  |  |
| P2.L5.F.LC.4130 |  | Snorkel at Ceiling - MEP Connection / L5 / Mass, Myc, Immuno | 5d | 2026-05-06 | 2026-05-12 | P2.L5.F.LC.4100, P2.L5.F.LC.4230 |  |  |  | 118d | 0d | 120 |  | LABCASE | P2-5 | JPC | LABCASE |  |  |
| P2.L5.F.LC.3200 |  | Drop Ceiling Tile / L5 / Mass, Myc, Immuno | 5d | 2026-05-13 | 2026-05-19 | P2.L5.F.LC.4130, P2.L5.F.LC.4190, P2.L5.F.LC.3180 |  |  |  | 118d | 0d | 40 |  | ACT | P2-5 | JPC | ACT |  |  |
| P2.L5.F.LC.4180 |  | Casework (Before Flooring) / L5 / Mass, Myc, Immuno | 16d | 2026-05-20 | 2026-06-11 | P2.L5.LC.1470, BP6.123.3.100, P2.L5.F.LC.3200 |  |  |  | 118d | 0d | 120 |  | LABCASE | P2-5 | JPC | LABCASE |  |  |
| P2.L5.F.LC.4240 |  | Equipment (Before Flooring) / L5 / Mass, Myc, Immuno | 1d | 2026-05-28 | 2026-05-28 | P2.L5.LC.1470, P2.L5.F.LC.1200 |  |  |  | 141d | 20d | 120 |  | LABCASE | P2-5 | JPC | LABCASE |  |  |
| P2.L5.F.LC.4080 |  | Fumehood Equipment Install / L5 / Mass, Myc, Immuno | 1d | 2026-06-11 | 2026-06-11 | P2.L5.F.LC.4180 FF |  |  |  | 130d | 0d | 120 |  | LABCASE | P2-5 | JPC | LABCASE |  |  |
| P2.L5.F.LC.3090 |  | Paint Ceilings / L5 / Mass, Myc, Immuno | 5d | 2026-06-12 | 2026-06-18 | P2.L5.F.LC.3080, P2.L5.F.LC.4180 |  |  |  | 135d | 0d | 40 |  | PAINT | P2-5 | JPC | PAINT-1 |  |  |
| P2.L5.F.LC.3210 |  | Wall Protection / L5 / Mass, Myc, Immuno | 5d | 2026-06-12 | 2026-06-18 | P2.L5.F.LC.3000, BP7.102.3.300, P2.L5.F.LC.4180 |  |  |  | 118d | 0d | 40 |  | WALLPRO | P2-5 | JPC | WALLPRO |  |  |
| P2.L5.F.LC.4090 |  | Fumehood Equipment MEP Connection / L5 / Mass, Myc, Immuno | 1d | 2026-06-12 | 2026-06-12 | P2.L5.F.LC.4080 |  |  |  | 130d | 9d | 120 |  | LABCASE | P2-5 | JPC | LABCASE |  |  |
| P2.L5.F.LC.3100 |  | Waterproof Ceramic Tile / L5 / Mass, Myc, Immuno | 5d | 2026-06-19 | 2026-06-25 | P2.L5.F.LC.3090 |  |  |  | 135d | 0d | 40 |  | TILE | P2-5 | JPC | TILE |  |  |
| P2.L5.F.LC.3230 |  | Trim T-Stats / L5 / Mass, Myc, Immuno | 5d | 2026-06-19 | 2026-06-25 | P2.L5.F.LC.3210 |  |  |  | 121d | 0d | 40 |  | BAS | P2-5 | JPC | BAS-1 | Harris |  |
| P2.L5.F.LC.3240 |  | Trim Electrical / L5 / Mass, Myc, Immuno | 5d | 2026-06-19 | 2026-06-25 | P2.L5.F.LC.3230 SS |  |  |  | 121d | 0d | 40 |  | ELEC | P2-5 | JPC | ELEC-2 |  |  |
| P2.L5.F.LC.3250 |  | Trim Telephone/ Data / L5 / Mass, Myc, Immuno | 5d | 2026-06-19 | 2026-06-25 | P2.L5.F.LC.3240 SS |  |  |  | 121d | 0d | 40 |  | LOWVOLT | P2-5 | JPC | LOWVOLT-1 |  |  |
| P2.L5.F.LC.3270 |  | Trim Med Gas / L5 / Mass, Myc, Immuno | 5d | 2026-06-19 | 2026-06-25 | P2.L5.F.LC.3210 |  |  |  | 118d | 0d | 40 |  | MECH | P2-5 | JPC | MECH-2 | Harris |  |
| P2.L5.F.LC.3110 |  | Ceramic Tile / L5 / Mass, Myc, Immuno | 5d | 2026-06-26 | 2026-07-02 | P2.L5.F.LC.3100 |  |  |  | 135d | 12d | 40 |  | TILE | P2-5 | JPC | TILE |  |  |
| P2.L5.F.LC.3280 |  | Floor Prep / L5 / Mass, Myc, Immuno | 5d | 2026-06-26 | 2026-07-02 | P2.L5.F.LC.4240, P2.L5.F.LC.4180, P2.L5.F.LC.3270, P2.L5.F.LC.3200, P2.L5.F.LC.3230, P2.L5.F.LC.3240, P2.L5.F.LC.3250, P2.L5.F.LC.4090 |  |  |  | 121d | 0d | 40 |  | FLOOR | P2-5 | JPC | FLOOR |  |  |
| P2.L5.F.LC.3290 |  | Flooring / L5 / Mass, Myc, Immuno | 5d | 2026-07-06 | 2026-07-10 | P2.L5.F.LC.3280 |  |  |  | 121d | 0d | 40 |  | FLOOR | P2-5 | JPC | FLOOR |  |  |
| P2.L5.F.LC.3220 |  | Plumbing Fixtures & Drinking Fountains / L5 / Mass, Myc, Immuno | 5d | 2026-07-10 | 2026-07-16 | P2.L5.F.LC.4180, PCO.830.1140 |  |  |  | 126d | 5d | 40 |  | PLMB | P2-5 | JPC | PLMB | Harris |  |
| P2.L5.F.LC.3190 |  | Casework (After Flooring) / L5 / Mass, Myc, Immuno | 4d | 2026-07-13 | 2026-07-16 | P2.L5.F.LC.3290, P2.L5.F.LC.4190 |  |  |  | 121d | 0d | 120 |  | LABCASE | P2-5 | JPC | LABCASE |  |  |
| P2.L5.F.LC.3300 |  | Building Specialities / L5 / Mass, Myc, Immuno | 5d | 2026-07-13 | 2026-07-17 | P2.L5.F.LC.3290 |  |  |  | 125d | 4d | 40 |  | SPECIAL | P2-5 | JPC | SPECIAL |  |  |
| P2.L5.F.LC.3310 |  | Interior Building Signage / L5 / Mass, Myc, Immuno | 5d | 2026-07-13 | 2026-07-17 | P2.L5.F.LC.3290 |  |  |  | 125d | 4d | 40 |  | SIGN | P2-5 | JPC | SIGN |  |  |
| P2.L5.F.LC.3330 |  | Remaining Equipment Post Flooring / L5 / Mass, Myc, Immuno | 2d | 2026-07-13 | 2026-07-14 | P2.L5.F.LC.1330, P2.L5.F.LC.3290 |  |  |  | 123d | 0d | 40 |  | EQUIP | P2-5 | JPC | EQUIP |  |  |
| P2.L5.F.LC.3340 |  | Remaining MEP Hook-Ups / L5 / Mass, Myc, Immuno | 5d | 2026-07-15 | 2026-07-21 | P2.L5.F.LC.4090, P2.L5.F.LC.4130, P2.L5.F.LC.3330 |  |  |  | 123d | 0d | 40 |  | MEP | P2-5 | JPC | MEP | Harris |  |
| P2.L5.F.LC.3260 |  | Doors & Hardware / L5 / Mass, Myc, Immuno | 5d | 2026-07-17 | 2026-07-23 | P2.L5.F.LC.3190 |  |  |  | 121d | 0d | 40 |  | DFH | P2-5 | JPC | DFH |  | AT29 |
| P2.L5.F.LC.3360 |  | Rough Clean / L5 / Mass, Myc, Immuno | 5d | 2026-07-22 | 2026-07-28 | P2.L5.F.LC.3340, P2.L5.F.LC.3110 |  |  |  | 123d | 0d | 40 |  | FCLEAN | P2-5 | JPC | FCLEAN |  |  |
| P2.L5.F.LC.3320 |  | Work Completion List - Finishes / L5 / Mass, Myc, Immuno | 5d | 2026-07-24 | 2026-07-30 | P2.L5.F.LC.4130, P2.L5.F.LC.3310, P2.L5.F.LC.3300, P2.L5.F.LC.3220, P2.L5.F.LC.3260 |  |  |  | 121d | 0d | 40 |  | FINISH | P2-5 | JPC | FINISH |  |  |
| P2.L5.F.LC.3350 |  | OFOI Furniture & Equipment / L5 / Mass, Myc, Immuno | 5d | 2026-07-29 | 2026-08-04 | P2.L5.F.LC.3340 SS, P2.L5.F.LC.3360 |  |  |  | 123d | 2d | 40 |  | FURN | P2-5 | JPC | FURN |  |  |
| P2.L5.F.LC.3370 |  | Prepare Punchlist / L5 / Mass, Myc, Immuno | 5d | 2026-07-31 | 2026-08-06 | P2.L5.F.LC.3340 SS, P2.L5.F.LC.3360, P2.L5.F.LC.3320 |  |  |  | 121d | 0d | 40 |  | QC | P2-5 | JPC | QC |  |  |
| P2.L5.F.LC.3380 |  | Correct Punchlist / L5 / Mass, Myc, Immuno | 10d | 2026-08-07 | 2026-08-20 | P2.L5.F.LC.3350, P2.L5.F.LC.3370 |  |  |  | 121d | 0d | 80 |  | FINISH | P2-5 | JPC | FINISH |  |  |
| P2.L5.F.LC.3390 |  | Final Clean / L5 / Mass, Myc, Immuno | 5d | 2026-08-21 | 2026-08-27 | P2.L5.F.LC.3380 |  |  |  | 121d | 133d | 40 |  | QC | P2-5 | JPC | QC |  |  |

| ID | WBS | Activity | Type | Duration | Start | Finish | Predecessors | Complete | Planned start | Planned finish | Total float | Free float | Temp Orig Dur | **NEAR CRITICAL** | Resp / SRLM | PHASE | RESP UPD | RESP / Trade | *NIH Resp Check* | 744 | Z.RESP | Act ID Temp | Update Status | Testing Type | Pick |
| --- | --- | --- | --- | --- | --- | --- | --- | --- | --- | --- | --- | --- | --- | --- | --- | --- | --- | --- | --- | --- | --- | --- | --- | --- | --- |
|  | 1 | **Cold Rooms - 5-2931 & 5-2851** |  |  | 2026-04-01 | 2026-05-19 |  |  |  |  |  |  |  |  |  |  |  |  |  |  |  |  |  |  |  |
| P2.L5.F.LC.4000 |  | Cold Room Walls, Ceilings & Floors Build-Out / L5 / 5-2931 & 5-2851 |  | 10d | 2026-04-01 | 2026-04-14 | BP6.132.3.100, P2.L5.N.1470 FF |  |  |  | 59d | 0d | 40 | 3 | COLD | P2-5 | ND | COLD |  |  |  |  |  |  |  |
| P2.L5.F.LC.4010 |  | Cold Room Set-Equipment / L5 / 5-2931 & 5-2851 |  | 5d | 2026-04-15 | 2026-04-21 | P2.L5.F.LC.4000 |  |  |  | 59d | 0d | 40 | 3 | COLD | P2-5 | ND | COLD | ! |  |  |  |  |  |  |
| P2.L5.F.LC.4020 |  | Braze Lines, Pressure Test, Insulate / L5 / 5-2931 & 5-2851 |  | 5d | 2026-04-22 | 2026-04-28 | P2.L5.F.LC.4010 |  |  |  | 59d | 0d | 40 | 3 | COLD | P2-5 | ND | COLD | ! |  |  |  |  |  |  |
| P2.L5.F.LC.4030 |  | Final Mechanical/Plumbing Tie-In / L5 / 5-2931 & 5-2851 |  | 5d | 2026-04-29 | 2026-05-05 | P2.L5.F.LC.4020 |  |  |  | 59d | 0d | 40 | 3 | COLD | P2-5 | ND | COLD | ! |  |  |  |  |  |  |
| P2.L5.F.LC.4040 |  | Controls, Lights, LV, and Final Power / L5 / 5-2931 & 5-2851 |  | 5d | 2026-05-06 | 2026-05-12 | P2.L5.F.LC.4030, CX.B2.SWGR.1010, CX.B2.MVEE.1010 |  |  |  | 59d | 0d | 40 | 3 | COLD | P2-5 | ND | COLD | ! |  |  |  |  |  |  |
| P2.L5.F.LC.4050 |  | Start-up / L5 / 5-2931 & 5-2851 |  | 5d | 2026-05-13 | 2026-05-19 | P2.L5.F.LC.4040 |  |  |  | 59d | 45d | 40 | 3 | COLD | P2-5 | ND | COLD | ! |  |  |  |  |  |  |
|  | 1 | **MECHANICAL TOWERS / LEVEL 5** |  |  | 2025-04-15 | 2026-06-02 |  |  |  |  |  |  |  |  |  |  |  |  |  |  |  |  |  |  |  |
|  | 4 | **South Mechanical Tower / Rough In & Finish / Level 5** |  |  | 2025-06-02 | 2026-06-02 |  |  |  |  |  |  |  |  |  |  |  |  |  |  |  |  |  |  |  |
| P2.L5.SMT.1070 |  | Set & Connect - Mech Equipment / L5 - S. Mech Tower |  | 10d | 2025-06-02 A | 2025-06-02 A | P2.5.03.610, P2.L4.SMT.1070 | 100% | 2025-07-30 | 2025-08-12 |  |  | 80 |  | HVAC | P2-5 | TS | HVAC |  | TS | Harris |  |  |  |  |
| P2.L5.SMT.1000 |  | Insulation - Exterior Wall Assembly / L5 - S. Mech Tower |  | 5d | 2025-07-02 A | 2025-07-09 A | P2.FAC.2.Z1.150 | 100% | 2025-08-01 | 2025-08-07 |  |  | 40 |  | INSUL | P2-5 | TS | INSUL-1 |  | TS |  |  |  |  |  |
| P2.L5.SMT.1020 |  | In Wall - Electrical - CMU / L5 - S. Mech Tower |  | 10d | 2025-07-24 A | 2025-08-01 A | P2.L5.SMT.1010 SS | 100% | 2025-08-22 | 2025-09-05 |  |  | 80 |  | ELEC | P2-5 | TS | ELEC-2 |  | TS |  | P2.B2.26.05.510 |  |  |  |
| P2.L5.SMT.1030 |  | In Wall - Mech/Plumbing - CMU / L5 - S. Mech Tower |  | 10d | 2025-07-24 A | 2025-08-01 A | P2.L5.SMT.1010 SS | 100% | 2025-08-22 | 2025-09-05 |  |  | 80 |  | PLMB | P2-5 | TS | PLMB |  | TS | Harris | P2.B2.22.05.310 |  |  |  |
| P2.L5.SMT.1105 |  | HVAC Duct Connections to Shaft Riser / L5 - S. Mech Tower |  | 20d | 2025-09-02 A | 2025-09-26 A | P2.L5.SMT.1070 | 100% | 2025-10-01 | 2025-10-28 |  |  | 40 |  | HVAC | P2-5 | TS | HVAC | ! | TS | Harris |  | O |  |  |
| P2.L5.SMT.1010 |  | CMU - Lay Block / L5 - S. Mech Tower |  | 10d | 2025-09-04 A | 2025-09-10 A | P2.L5.SMT.1000, P2.L4.SMT.1010 | 100% | 2025-10-15 | 2025-10-28 |  |  | 80 |  | CMU | P2-5 | TS | CMU |  | TS |  | P2.B2.04.20.210 | O | AT3 |  |
| P2.L5.SMT.1050 |  | CMU - Point & Patch / L5 - S. Mech Tower |  | 10d | 2025-09-10 A | 2025-09-16 A | P2.L5.SMT.1030, P2.L5.SMT.1020, P2.L5.SMT.1040 | 100% | 2025-11-12 | 2025-11-25 |  |  | 80 |  | CMU | P2-5 | TS | CMU |  | TS |  | P2.B2.04.20.310 |  |  |  |
| P2.L5.SMT.1100 |  | HVAC Piping Connections to Shaft Riser / L5 - S. Mech Tower |  | 20d | 2025-09-11 A | 2025-09-26 A | P2.L5.SMT.1070 | 100% | 2025-10-01 | 2025-10-28 |  |  | 40 |  | HVAC | P2-5 | TS | HVAC | ! | TS | Harris |  | O |  |  |
| P2.L5.SMT.1040 |  | Paint - CMU Block Fill / L5 - S. Mech Tower |  | 10d | 2025-09-22 A | 2025-09-26 A | P2.L5.SMT.1010 | 100% | 2025-10-29 | 2025-11-11 |  |  | 80 |  | PAINT | P2-5 | TS | PAINT-1 |  | TS |  | P2.B2.09.97.110 | O |  |  |
| P2.L5.SMT.1130 |  | Test/Inspect Duct & Piping / L5 - S. Mech Tower |  | 15d | 2025-09-26 A | 2025-09-30 A | P2.L5.SMT.1100, P2.L5.SMT.1105 | 100% | 2025-10-29 | 2025-11-18 |  |  | 40 |  | MECH | P2-5 | TS | MECH-2 | ! | TS | Harris |  | O |  |  |
| P2.L5.SMT.1060 |  | Paint Prime & 1st Coat - CMU / L5 - S. Mech Tower |  | 10d | 2025-10-01 A | 2025-10-14 A | P2.L5.SMT.1050 SS | 100% |  |  |  |  | 80 |  | PAINT | P2-5 | TS | PAINT-1 |  | TS |  | P2.B2.09.97.210 |  |  |  |
| FRG.P2.L5.SMT.1040 |  | AHU Piping Install / L5 - S. Mech Tower - FRAGNET |  | 15d | 2025-10-13 A | 2025-11-26 A | FRG.P2.L4.SMT.1030 | 100% | 2025-10-13 | 2025-10-31 |  |  | 80 |  | Harris Fragnet | P2-5 | TS | FIT-2 |  | TA | Harris | P2.B2.23.20.410 |  |  | 2 |
| P2.L5.SMT.1080 |  | Set & Connect - Elect Panels and Equipment / L5 - S. Mech Tower |  | 5d | 2025-12-01 A | 2025-12-05 A | P2.L5.SMT.1060 | 100% | 2026-01-02 | 2026-01-08 |  |  | 40 |  | ELEC | P2-5 | TS | ELEC-2 |  | TS |  |  | O |  |  |
| P2.L5.SMT.1150 |  | Insulate HVAC / Plumbing Pipe / L5 - S. Mech Tower |  | 15d | 2025-12-01 A | 2025-12-15 A | P2.L5.SMT.1110, P2.L5.SMT.1130 | 100% | 2026-03-27 | 2026-04-16 |  |  | 40 |  | INSUL | P2-5 | TS | INSUL-3 | ! | TS | Harris |  |  |  |  |
| P2.L5.SMT.1120 |  | BAS - Equip Tie In / L5 - S. Mech Tower |  | 5d | 2025-12-15 A | 2025-12-19 A | P2.L5.SMT.1070, P2.L5.SMT.1060 | 100% | 2026-01-02 | 2026-01-08 |  |  | 40 |  | BAS | P2-5 | TS | BAS-1 |  | TS | Harris |  | O |  |  |
| P2.L5.SMT.1090 |  | Panelboards, Interconnect Wiring, and Remaining Room Buildout of All Elec/FA Systems / L5 - S. Mech Tower |  | 10d | 2026-03-02 A | 2026-03-13 A | P2.L5.SMT.1080, BP1.262.3.200, BP1.262.3.100 | 100% |  |  |  |  | 80 |  | ELEC | P2-5 | TS | ELEC-2 |  | TS |  |  |  |  |  |
| P2.L5.SMT.1110 |  | HVAC Piping - Equip Tie In / L5 - S. Mech Tower |  | 20d | 2026-03-02 A | 2026-03-30 A | P2.L5.SMT.1070, FRG.P2.L5.SMT.1040 | 100% | 2026-03-30 | 2026-04-24 |  |  | 80 |  | FIT | P2-5 | TS | FIT-2 |  | TS | Harris | P2.B2.23.20.610 |  |  |  |
| P2.L5.SMT.1140 |  | Pull Wire - In From Distribution Panels / Out to Branch Circuits / L5 - S. Mech Tower |  | 5d | 2026-03-16 A | 2026-03-20 A | P2.L5.SMT.1090 | 100% |  |  |  |  | 40 |  | ELEC | P2-5 | TS | ELEC-2 |  |  |  |  |  |  |  |
| P2.L5.SMT.1160 |  | Electrical Tie in to Equipment / L5 - S. Mech Tower |  | 5d | 2026-04-01 | 2026-04-07 | P2.L5.SMT.1140, P2.L5.SMT.1070 |  |  |  | 19d | 11d | 40 |  | ELEC | P2-5 | TS | ELEC-2 |  |  |  |  |  |  |  |
| P2.L5.SMT.1170 |  | Test & Terminate / L5 - S. Mech Tower |  | 5d | 2026-04-01 | 2026-04-07 | P2.L5.SMT.1140 |  |  |  | 8d | 0d | 40 |  | ELEC | P2-5 | TS | ELEC-2 |  |  |  |  |  |  |  |
| P2.L5.SMT.1180 |  | Paint - Finish Coat / L5 - S. Mech Tower |  | 2d | 2026-04-08 | 2026-04-09 | P2.L5.SMT.1170 |  |  |  | 8d | 0d | 16 |  | PAINT | P2-5 | TS | PAINT-1 |  |  |  |  |  |  |  |
| P2.L5.SMT.1190 |  | Trim All MEPF Finishes / L5 - S. Mech Tower |  | 2d | 2026-04-10 | 2026-04-13 | P2.L5.SMT.1180 |  |  |  | 8d | 0d | 16 |  | MEP | P2-5 | TS | MEP-2 |  |  | Harris |  |  |  |  |
| P2.L5.SMT.1210 |  | Doors & Hardware / L5 - S. Mech Tower |  | 2d | 2026-04-14 | 2026-04-15 | P2.L5.SMT.1190 |  |  |  | 8d | 0d | 16 |  | DFH | P2-5 | TS | DFH |  |  |  |  |  | AT29 |  |
| P2.L5.SMT.1220 |  | Trades Inspect & Verify R/I Work Completed to Specs / L5 - S. Mech Tower |  | 5d | 2026-04-16 | 2026-04-22 | P2.L5.SMT.1120, P2.L5.SMT.1150, P2.L5.SMT.1210 |  |  |  | 8d | 0d | 40 |  | T | P2-5 | TS | T |  |  |  |  |  |  |  |
| P2.L5.SMT.1240 |  | Energize Elec Panels - Lock Doors and Limit Access / L5 - S. Mech Tower |  | 5d | 2026-04-16 | 2026-04-22 | P2.L5.SMT.1220 SS, CX.B2.SWGR.1010, CX.B2.MVEE.1010 |  |  |  | 8d | 0d | 40 |  | ELEC | P2-5 | TS | ELEC-2 |  |  |  |  |  |  |  |
| P2.L5.SMT.1230 |  | HVAC System Ready for Start Up / L5 - S. Mech Tower | milestone | 0d | 2026-04-22 | 2026-04-22 | P2.L5.SMT.1240, P2.L5.SMT.1160 FF |  |  |  | 8d | 9d | 0 |  | MECH | P2-5 | TS | MECH-2 |  |  | Harris |  |  |  |  |
| P2.L5.SMT.1200 |  | Flooring Prep - Epoxy Floors / L5 - S. Mech Tower |  | 3d | 2026-05-27 | 2026-05-29 | P2.L5.SMT.1080, P2.L4.SMT.1200 |  |  |  | 1d | 0d | 16 |  | EPOXYF | P2-5 | TS | EPOXYF |  | TS |  |  |  |  |  |
| P2.L5.SMT.1250 |  | Flooring - Epoxy Floors / L5 - S. Mech Tower |  | 2d | 2026-06-01 | 2026-06-02 | P2.L5.SMT.1200 |  |  |  | 1d | 0d | 16 |  | EPOXYF | P2-5 | TS | EPOXYF |  | TS |  |  |  |  |  |

| ID | WBS | Activity | Type | Duration | Start | Finish | Predecessors | Complete | Remaining | Planned start | Planned finish | Total float | Free float | Temp Orig Dur | Resp / SRLM | PHASE | Z.RESP | RESP / Trade | *NIH Resp Check* | 744 | RESP UPD | Pick | Update Status | Act ID Temp | Testing Type |
| --- | --- | --- | --- | --- | --- | --- | --- | --- | --- | --- | --- | --- | --- | --- | --- | --- | --- | --- | --- | --- | --- | --- | --- | --- | --- |
|  | 8 | **East Mechanical Tower / Rough In & Finish / Level 5** |  |  | 2025-04-15 | 2026-05-13 |  |  |  |  |  |  |  |  |  |  |  |  |  |  |  |  |  |  |  |
| P2.L5.EMT.1070 |  | Set & Connect - Mech Equipment / L5 - E. Mech Tower |  | 10d | 2025-04-15 A | 2025-04-28 A | P2.5.03.630, P2.L4.EMT.1080 | 100% |  | 2025-05-15 | 2025-05-29 |  |  | 80 | HVAC | P2-5 | Harris | HVAC |  |  |  |  |  |  |  |
| P2.L5.EMT.1250 |  | Quench Vent / L5 - E. Mech Tower (From L4 Interstitial (2)) |  | 20d | 2025-04-29 A | 2025-06-03 A | P2.L5.EMT.1070 | 100% |  | 2025-05-30 | 2025-06-26 |  |  | 40 | HVAC | P2-5 | Harris | HVAC | ! | SM | SM |  |  |  |  |
| P2.L5.EMT.1100 |  | HVAC Piping Connections to Shaft Riser / L5 - E. Mech Tower |  | 10d | 2025-06-02 A | 2025-06-13 A | P2.L5.EMT.1070 | 100% |  | 2025-07-01 | 2025-07-15 |  |  | 40 | HVAC | P2-5 | Harris | HVAC | ! | SM | SM |  |  |  |  |
| P2.L2.INT.N.2180 |  | Quench Vent / L5 - E. Mech Tower (From 1-2855) |  | 12d | 2025-06-16 A | 2025-09-30 A | P2.L5.EMT.1250 | 100% |  | 2025-07-03 | 2025-07-21 |  |  | 80 | FIT | P2-5 | Harris | FIT-2 |  | SM | SM | 2 | O | P2.B2.23.20.410 |  |
| P2.L5.EMT.1000 |  | Insulation - Exterior Wall Assembly / L5 - E. Mech Tower |  | 5d | 2025-08-29 A | 2025-09-10 A | P2.FAC.2.Z3.150 | 100% |  | 2025-08-29 | 2025-09-05 |  |  | 40 | INSUL | P2-5 |  | INSUL-1 |  | SM | SM |  | O |  |  |
| P2.L5.EMT.1105 |  | HVAC Duct Connections to Shaft Riser / L5 - E. Mech Tower |  | 5d | 2025-09-02 A | 2025-09-26 A | P2.L5.EMT.1070 | 100% |  | 2025-10-01 | 2025-10-07 |  |  | 40 | HVAC | P2-5 | Harris | HVAC | ! | SM | SM |  | O |  |  |
| P2.L2.INT.N.2190 |  | Quench Vent / L5 - E. Mech Tower (From 1-2835) |  | 12d | 2025-09-08 A | 2025-09-30 A | P2.L2.INT.N.2180 | 100% |  | 2025-10-15 | 2025-10-30 |  |  | 80 | FIT | P2-5 | Harris | FIT-2 |  | SM | SM | 2 | O | P2.B2.23.20.410 |  |
| P2.L5.EMT.1130 |  | Test/Inspect Duct & Piping / L5 - E. Mech Tower |  | 5d | 2025-09-26 A | 2025-09-30 A | P2.L5.EMT.1105, P2.L5.EMT.1100 | 100% |  | 2025-10-08 | 2025-10-14 |  |  | 40 | MECH | P2-5 | Harris | MECH-2 | ! | SM | SM |  | O |  |  |
| P2.L2.INT.N.2200 |  | Quench Vent / L5 - E. Mech Tower (From 1-2815) |  | 12d | 2025-10-01 A | 2025-10-16 A | P2.L2.INT.N.2190 | 100% |  |  |  |  |  | 80 | FIT | P2-5 | Harris | FIT-2 |  | SM | SM | 2 |  | P2.B2.23.20.410 |  |
| P2.L5.EMT.1010 |  | CMU - Lay Block / L5 - E. Mech Tower |  | 10d | 2025-10-15 A | 2025-10-22 A | P2.L3.EMT.1010, P2.L5.EMT.1000, P2.L4.EMT.1020 | 100% |  | 2025-10-15 | 2025-10-28 |  |  | 80 | CMU | P2-5 |  | CMU |  | SM | SM |  |  | P2.B2.04.20.210 | AT3 |
| P2.L2.INT.N.2210 |  | Quench Vent / L5 - E. Mech Tower (From 1-2865) |  | 12d | 2025-10-17 A | 2025-10-31 A | P2.L2.INT.N.2200 | 100% |  | 2025-10-17 | 2025-11-03 |  |  | 80 | FIT | P2-5 | Harris | FIT-2 |  | SM | SM | 2 |  | P2.B2.23.20.410 |  |
| P2.L5.EMT.1050 |  | CMU - Point & Patch / L5 - E. Mech Tower |  | 10d | 2025-10-20 A | 2025-10-30 A | P2.L5.EMT.1040, P2.L5.EMT.1010 | 100% |  | 2025-12-01 | 2025-12-12 |  |  | 80 | CMU | P2-5 |  | CMU |  | SM | SM |  | O | P2.B2.04.20.310 |  |
| P2.L5.EMT.1040 |  | Paint - CMU Block Fill / L5 - E. Mech Tower |  | 10d | 2025-10-22 A | 2025-10-22 A | P2.L5.EMT.1010 | 100% |  | 2025-10-29 | 2025-11-11 |  |  | 80 | PAINT | P2-5 |  | PAINT-1 |  | SM | SM |  |  | P2.B2.09.97.110 |  |
| P2.L5.EMT.1060 |  | Paint Prime & 1st Coat - CMU / L5 - E. Mech Tower |  | 10d | 2025-10-27 A | 2025-10-30 A | P2.L5.EMT.1050 SS | 100% |  | 2025-11-12 | 2025-11-25 |  |  | 80 | PAINT | P2-5 |  | PAINT-1 |  | SM | SM |  |  | P2.B2.09.97.210 |  |
| P2.L2.INT.N.2220 |  | Quench Vent / L5 - E. Mech Tower (From 1-2845) |  | 12d | 2025-10-31 A | 2025-11-14 A | P2.L2.INT.N.2210 | 100% |  | 2025-11-04 | 2025-11-19 |  |  | 80 | FIT | P2-5 | Harris | FIT-2 |  | SM | SM | 2 |  | P2.B2.23.20.410 |  |
| P2.L2.INT.N.2230 |  | Quench Vent / L5 - E. Mech Tower (From 1-2825) |  | 12d | 2025-11-01 A | 2025-11-14 A | P2.L2.INT.N.2220 | 100% |  | 2025-12-22 | 2026-01-08 |  |  | 80 | FIT | P2-5 | Harris | FIT-2 |  | SM | SM | 2 |  | P2.B2.23.20.410 |  |
| P2.L2.INT.N.2240 |  | Quench Vent / L5 - E. Mech Tower (From 1-2805) |  | 12d | 2025-11-01 A | 2025-11-14 A | P2.L2.INT.N.2230 | 100% |  | 2026-01-09 | 2026-01-26 |  |  | 80 | FIT | P2-5 | Harris | FIT-2 |  | SM | SM | 2 |  | P2.B2.23.20.410 |  |
| P2.L5.EMT.1080 |  | Set & Connect - Elect Panels and Equipment / L5 - E. Mech Tower |  | 5d | 2025-11-03 A | 2025-11-07 A | P2.L5.EMT.1060 | 100% |  | 2025-12-01 | 2025-12-05 |  |  | 40 | ELEC | P2-5 |  | ELEC-2 |  | SM | SM |  |  |  |  |
| P2.L5.EMT.1120 |  | BAS - Equip Tie In / L5 - E. Mech Tower |  | 5d | 2025-11-03 A | 2025-11-07 A | P2.L5.EMT.1070, P2.L5.EMT.1060 | 100% |  | 2025-12-01 | 2025-12-05 |  |  | 40 | BAS | P2-5 | Harris | BAS-1 |  | SM | SM |  |  |  |  |
| P2.L2.INT.N.2250 |  | Quench Vent / L5 - E. Mech Tower (From L1 Future) |  | 12d | 2025-12-01 A | 2025-12-12 A | P2.L2.INT.N.2260 | 100% |  | 2026-01-30 | 2026-02-16 |  |  | 80 | FIT | P2-5 | Harris | FIT-2 |  |  | SM | 2 | O | P2.B2.23.20.410 |  |
| P2.L2.INT.N.2260 |  | Quench Vent / L5 - E. Mech Tower (From B2 (2)) |  | 20d | 2025-12-01 A | 2025-12-15 A | P2.L2.INT.N.2240 | 100% |  | 2026-01-02 | 2026-01-29 |  |  | 80 | FIT | P2-5 | Harris | FIT-2 |  | SM | SM | 2 | O | P2.B2.23.20.410 |  |
| P2.L5.EMT.1110 |  | HVAC Piping - Equip Tie In / L5 - E. Mech Tower |  | 20d | 2025-12-01 A | 2025-12-15 A | P2.L5.EMT.1070 | 100% |  | 2026-02-27 | 2026-03-26 |  |  | 80 | FIT | P2-5 | Harris | FIT-2 |  | SM | SM |  |  | P2.B2.23.20.610 |  |
| P2.L5.EMT.1230 |  | HVAC System Ready for Start Up / L5 - E. Mech Tower | milestone | 0d | 2025-12-01 A | 2025-12-01 A | P2.L5.EMT.1110 FF | 100% |  |  |  |  |  | 0 | MECH | P2-5 | Harris | MECH-2 |  |  | SM |  |  |  |  |
| P2.L5.EMT.1090 |  | Panelboards, Interconnect Wiring, and Remaining Room Buildout of All Elec/FA Systems / L5 - E. Mech Tower |  | 10d | 2026-03-09 A | 2026-03-27 A | P2.L5.EMT.1080, BP1.262.3.200, BP1.262.3.100 | 100% |  | 2026-03-27 | 2026-04-09 |  |  | 80 | ELEC | P2-5 |  | ELEC-2 |  | SM | SM |  | O |  |  |
| P2.L5.EMT.1140 |  | Pull Wire - In From Distribution Panels / Out to Branch Circuits / L5 - E. Mech Tower |  | 5d | 2026-03-19 A | 2026-04-14 | P2.L5.EMT.1090 |  | 10d | 2026-04-10 | 2026-04-16 | 73d | 0d | 40 | ELEC | P2-5 |  | ELEC-2 |  |  | SM |  |  |  |  |
| P2.L5.EMT.1150 |  | Insulate HVAC / Plumbing Pipe / L5 - E. Mech Tower |  | 15d | 2026-04-01 | 2026-04-21 | P2.L5.EMT.1110, P2.L5.EMT.1130 |  |  |  |  | 79d | 6d | 40 | INSUL | P2-5 | Harris | INSUL-3 | ! | SM | SM |  |  |  |  |
| P2.L5.EMT.1200 |  | Flooring Prep - Epoxy Floors / L5 - E. Mech Tower |  | 3d | 2026-04-03 | 2026-04-07 | P2.L5.EMT.1080, P2.L4.EMT.1260 |  |  |  |  | 36d | 0d | 16 | EPOXYF | P2-5 |  | EPOXYF |  | SM | SM |  | O |  |  |
| P2.L5.EMT.1260 |  | Flooring - Epoxy Floors / L5 - E. Mech Tower |  | 2d | 2026-04-08 | 2026-04-09 | P2.L5.EMT.1200 |  |  |  |  | 36d | 0d | 16 | EPOXYF | P2-5 |  | EPOXYF |  | SM | SM |  | O |  |  |
| P2.L5.EMT.1160 |  | Electrical Tie in to Equipment / L5 - E. Mech Tower |  | 5d | 2026-04-15 | 2026-04-21 | P2.L5.EMT.1140, P2.L5.EMT.1070 |  |  |  |  | 75d | 2d | 40 | ELEC | P2-5 |  | ELEC-2 |  |  | SM |  |  |  |  |
| P2.L5.EMT.1170 |  | Test & Terminate / L5 - E. Mech Tower |  | 5d | 2026-04-15 | 2026-04-21 | P2.L5.EMT.1140 |  |  |  |  | 73d | 0d | 40 | ELEC | P2-5 |  | ELEC-2 |  |  | SM |  |  |  |  |
| P2.L5.EMT.1180 |  | Paint - Finish Coat / L5 - E. Mech Tower |  | 2d | 2026-04-22 | 2026-04-23 | P2.L5.EMT.1170 |  |  |  |  | 73d | 0d | 16 | PAINT | P2-5 |  | PAINT-1 |  |  | SM |  |  |  |  |
| P2.L5.EMT.1190 |  | Trim All MEPF Finishes / L5 - E. Mech Tower |  | 2d | 2026-04-24 | 2026-04-27 | P2.L5.EMT.1180, P2.L5.EMT.1160 |  |  |  |  | 73d | 0d | 16 | MEP | P2-5 | Harris | MEP-2 |  |  | SM |  |  |  |  |
| P2.L5.EMT.1210 |  | Doors & Hardware / L5 - E. Mech Tower |  | 2d | 2026-04-28 | 2026-04-29 | P2.L5.EMT.1190 |  |  |  |  | 73d | 0d | 16 | DFH | P2-5 |  | DFH |  |  | SM |  |  |  | AT29 |
| P2.L5.EMT.1220 |  | Trades Inspect & Verify R/I Work Completed to Specs / L5 - E. Mech Tower |  | 5d | 2026-04-30 | 2026-05-06 | P2.L5.EMT.1210, P2.L5.EMT.1120, P2.L5.EMT.1150 |  |  |  |  | 73d | 0d | 40 | T | P2-5 |  | T |  |  | SM |  |  |  |  |
| P2.L5.EMT.1240 |  | Energize Elec Panels - Lock Doors and Limit Access / L5 - E. Mech Tower |  | 5d | 2026-05-07 | 2026-05-13 | P2.L5.EMT.1220, CX.B2.SWGR.1010, CX.B2.MVEE.1010 |  |  |  |  | 73d | 0d | 40 | ELEC | P2-5 |  | ELEC-2 |  |  | SM |  |  |  |  |

| ID | WBS | Activity | Type | Duration | Start | Finish | Predecessors | Complete | Remaining | Planned start | Planned finish | Total float | Free float | Temp Orig Dur | Act ID Temp | Resp / SRLM | PHASE | Z.RESP | RESP / Trade | Testing Type | Pick | 744 | RESP UPD | Update Status | NOTES | **NEAR CRITICAL** |
| --- | --- | --- | --- | --- | --- | --- | --- | --- | --- | --- | --- | --- | --- | --- | --- | --- | --- | --- | --- | --- | --- | --- | --- | --- | --- | --- |
|  | L6 | **L6 / BUILDOUT** |  |  | 2015-11-03 | 2026-12-17 |  |  |  |  |  |  |  |  |  |  |  |  |  |  |  |  |  |  |  |  |
|  | L6 | **CORE & SUPPORT SPACES / LEVEL 6** |  |  | 2025-03-07 | 2026-12-17 |  |  |  |  |  |  |  |  |  |  |  |  |  |  |  |  |  |  |  |  |
|  | 2 | **ROUGH IN - Core & Support Spaces / Level 6** |  |  | 2025-03-07 | 2026-06-19 |  |  |  |  |  |  |  |  |  |  |  |  |  |  |  |  |  |  |  |  |
|  | Z112 | **South / Level 6** |  |  | 2025-03-07 | 2026-06-03 |  |  |  |  |  |  |  |  |  |  |  |  |  |  |  |  |  |  |  |  |
| P2.L6.S.1000 |  | Layout - All Trades / L6 / South |  | 5d | 2025-03-07 A | 2025-03-31 A | P2.7.03.610 | 100% |  | 2025-03-07 | 2025-03-13 |  |  | 40 | P2.B2.01.010 | R/I.OH | P2-5 | Harris | R/I.OH |  |  |  |  |  |  |  |
| P2.L6.S.1020 |  | OH - Structural Supports (All Trades) / L6 / South |  | 5d | 2025-04-14 A | 2025-04-18 A | P2.L6.S.1000 | 100% |  | 2025-05-01 | 2025-05-07 |  |  | 80 | P2.B2.05.45.110 | R/I.OH | P2-5 | Harris | R/I.OH | AT24 |  |  |  |  |  |  |
| P2.L6.S.1030 |  | OH - MEPF - Hangers & Supports / L6 / South |  | 10d | 2025-04-14 A | 2025-05-07 A | P2.L6.S.1000, P2.BIM.L6.40.140 | 100% |  | 2025-05-01 | 2025-05-14 |  |  | 80 | P2.B2.20.05.410 | MEP | P2-5 | Harris | MEP-2 |  |  |  |  |  |  |  |
| P2.L6.S.1010 |  | Framing - Top Track / L6 / South |  | 10d | 2025-04-23 A | 2025-05-15 A | P2.L6.S.1000 | 100% |  | 2025-05-01 | 2025-05-14 |  |  | 80 | P2.B2.09.21.110 | GYP | P2-5 |  | GYP-1 |  |  |  |  |  |  |  |
| P2.L6.S.1090 |  | Framing - Priority Walls & Door Frames / L6 / South |  | 10d | 2025-05-09 A | 2025-05-28 A | P2.L6.S.1010 FF+2d | 100% |  | 2025-06-02 | 2025-06-13 |  |  | 80 | P2.B2.09.21.310 | GYP | P2-5 |  | GYP-1 |  |  |  |  |  |  |  |
| P2.L6.S.1140 |  | Hang/Tape/Finish - Priority Walls / L6 / South |  | 10d | 2025-05-12 A | 2025-05-27 A | P2.L6.S.1020, P2.L6.S.1130 | 100% |  | 2025-06-23 | 2025-07-07 |  |  | 80 | P2.B2.09.21.210 | GYP | P2-5 |  | GYP-1 |  |  |  |  |  |  |  |
| P2.L6.S.1130 |  | Framing - Priority Walls - AHJ Inspections / L6 / South |  | 5d | 2025-05-14 A | 2025-05-21 A | P2.L6.S.1090 | 100% |  | 2025-06-16 | 2025-06-20 |  |  | 80 | P2.B2.01.43.010 | FM | P2-5 |  | FM |  |  |  |  |  |  |  |
| P2.L6.S.1170 |  | OH - Fire Suppression / L6 / South |  | 10d | 2025-05-19 A | 2025-05-29 A | P2.L6.S.1030 | 100% |  | 2025-06-09 | 2025-06-20 |  |  | 80 | P2.B2.21.13.210 | FP | P2-5 |  | FP-1 |  | 1 |  |  |  |  |  |
| P2.L6.S.1160 |  | Spray/Seal/Firestop - Head of Wall - Priority Walls / L6 / South |  | 5d | 2025-05-21 A | 2025-05-28 A | P2.L6.S.1140 FF | 100% |  | 2025-06-30 | 2025-07-07 |  |  | 80 | P2.B2.07.84.410 | FIRESTO | P2-5 |  | FIRESTO | AT47 |  |  |  |  |  |  |
| P2.L6.S.1150 |  | Paint Prime & 1st Coat - Priority Walls / L6 / South |  | 10d | 2025-06-02 A | 2025-06-13 A | P2.L6.S.1160 | 100% |  | 2025-07-01 | 2025-07-15 |  |  | 80 | P2.B2.09.91.110 | PAINT | P2-5 |  | PAINT-1 |  |  | TA | TA |  |  |  |
| P2.L6.S.1230 |  | OH - Electrical - 208/120v Branch / L6 / South |  | 10d | 2025-06-11 A | 2025-09-03 A | P2.L6.S.1190 | 100% |  | 2025-07-30 | 2025-08-12 |  |  | 80 | P2.B2.26.05.310 | ELEC | P2-5 |  | ELEC-2 |  | 2 | TA | TA | O |  |  |
| P2.L6.S.1220 |  | OH - HVAC Piping (High) / L6 / South |  | 20d | 2025-06-16 A | 2025-07-15 A | P2.L6.S.1170, P2.L6.S.1030 | 100% |  | 2025-07-01 | 2025-07-29 |  |  | 80 | P2.B2.23.20.410 | FIT | P2-5 | Harris | FIT-2 |  | 2 | TA | TA |  |  |  |
| P2.L6.S.1190 |  | OH - Electrical - 480/277v Distribution / L6 / South |  | 10d | 2025-06-23 A | 2025-07-11 A | P2.L6.S.1030, P2.L6.S.1150 | 100% |  | 2025-07-16 | 2025-07-29 |  |  | 80 | P2.B2.26.05.210 | ELEC | P2-5 |  | ELEC-2 |  | 1 | TA | TA |  |  |  |
| P2.L6.S.1180 |  | OH - Plumbing Piping (High) / L6 / South |  | 20d | 2025-07-07 A | 2025-09-08 A | P2.L6.S.1030, P2.L6.S.1150, P2.L5.S.1180 | 100% |  | 2025-08-01 | 2025-08-28 |  |  | 80 | P2.B2.22.14.210 | PLMB | P2-5 | Harris | PLMB |  | 1 | TA | TA | O |  |  |
| P2.L6.S.1210 |  | OH - Hang Duct - HP Mains / L6 / South |  | 10d | 2025-07-21 A | 2025-09-12 A | P2.L6.S.1170, P2.L6.S.1030, P2.L5.S.1210 | 100% |  | 2025-08-22 | 2025-09-05 |  |  | 80 | P2.B2.23.30.210 | HVAC | P2-5 | Harris | HVAC |  | 1 | TA | TA | O |  |  |
| FRG.P2.L6.S.1670 |  | HVAC Piping Delivery / L6 / South - FRAGNET | milestone | 0d | 2025-08-08 A | 2025-08-08 A | P2.L6.S.1030 FF | 100% |  |  |  |  |  | 80 | P2.B2.23.20.410 | Harris Fragnet | P2-5 | Harris | FIT-2 |  | 2 | TA | TA | O | Confirm with Harris delivery 8/8 |  |
| FRG.P2.L6.S.1680 |  | HVAC Piping - Staging & Layout / L6 / South - FRAGNET |  | 15d | 2025-08-11 A | 2025-08-29 A | FRG.P2.L6.S.1670 | 100% |  | 2025-09-02 | 2025-09-22 |  |  | 80 | P2.B2.23.20.410 | Harris Fragnet | P2-5 | Harris | FIT-2 |  | 2 | TA | TA | O |  |  |
| FRG.P2.L6.S.1690 |  | HVAC Piping - Hanging Copper Racks / L6 / South - FRAGNET |  | 20d | 2025-09-02 A | 2025-09-29 A | FRG.P2.L6.S.1680 | 100% |  | 2025-10-01 | 2025-10-28 |  |  | 80 | P2.B2.23.20.410 | Harris Fragnet | P2-5 | Harris | FIT-2 |  | 2 | TA | TA | O |  |  |
| P2.L6.S.1570 |  | OH - Plumbing Piping (Low) / L6 / South |  | 20d | 2025-09-05 A | 2025-09-18 A | P2.L6.S.1180 | 100% |  | 2025-10-01 | 2025-10-28 |  |  | 80 | P2.B2.22.14.210 | PLMB | P2-5 | Harris | PLMB |  | 1 | TA | TA | O |  |  |
| FRG.P2.L6.S.1700 |  | HVAC Piping - Stick Build Copper Racks / L6 / South - FRAGNET |  | 6d | 2025-09-18 A | 2025-09-25 A | FRG.P2.L6.S.1690 | 100% |  | 2025-10-29 | 2025-11-05 |  |  | 80 | P2.B2.23.20.410 | Harris Fragnet | P2-5 | Harris | FIT-2 |  | 2 | TA | TA | O |  |  |
| P2.L6.S.1260 |  | OH - DALT - HP Mains / L6 / South |  | 10d | 2025-09-29 A | 2025-11-07 A | P2.L6.S.1210 | 100% |  | 2025-10-01 | 2025-10-14 |  |  | 80 | P2.B2.23.30.310 | TAB | P2-5 | Harris | TAB-1 |  | 2 | TA | TA |  |  |  |
| P2.L6.S.1420 |  | Framing - Balance of Framing & Door Frames / L6 / South |  | 10d | 2025-10-13 A | 2025-10-27 A | P2.L5.S.1420 | 100% |  | 2025-10-13 | 2025-10-24 |  |  | 80 | A1310 | GYP | P2-5 |  | GYP-1 |  |  | TA | TA |  |  |  |
| P2.L6.S.1300 |  | OH - Hang Duct - LP Branch / L6 / South |  | 20d | 2025-10-20 A | 2026-02-21 A | P2.L6.S.1260 | 100% |  | 2025-10-15 | 2025-11-11 |  |  | 80 | P2.B2.23.30.410 | HVAC | P2-5 | Harris | HVAC |  | 3 | TA | TA | O |  |  |
| P2.L6.S.1290 |  | OH - Insulate HP Duct / L6 / South |  | 10d | 2025-11-10 A | 2025-11-21 A | P2.L6.S.1260 | 100% |  | 2025-12-08 | 2025-12-19 |  |  | 80 | P2.B2.23.07.310 | INSUL | P2-5 | Harris | INSUL-3 |  | 3 | TA | TA |  |  |  |
| P2.L6.S.1240 |  | OH - Plumbing - Test / L6 / South |  | 10d | 2025-12-01 A | 2025-12-12 A | P2.L6.S.1570 | 100% |  | 2026-01-02 | 2026-01-15 |  |  | 80 | P2.B2.22.14.310 | PLMB | P2-5 | Harris | PLMB |  | 2 | TA | TA | O |  |  |
| P2.L6.S.1270 |  | OH - HVAC Piping - Test / L6 / South |  | 15d | 2025-12-01 A | 2025-12-15 A | P2.L6.S.1560 | 100% |  | 2026-01-30 | 2026-02-19 |  |  | 80 | P2.B2.23.20.510 | FIT | P2-5 | Harris | FIT-2 |  | 3 | TA | TA | O |  |  |
| P2.L6.S.1430 |  | In Wall - Plumbing - Framing / L6 / South |  | 10d | 2025-12-01 A | 2025-12-12 A | P2.L6.S.1420 | 100% |  | 2026-01-02 | 2026-01-15 |  |  | 80 | P2.B2.22.05.410 | PLMB | P2-5 | Harris | PLMB |  |  |  | TA | O |  |  |
| P2.L6.S.1440 |  | In Wall - Electrical - Framing / L6 / South |  | 10d | 2025-12-01 A | 2025-12-12 A | P2.L6.S.1420, P2.L6.S.1230 | 100% |  | 2026-01-02 | 2026-01-15 |  |  | 80 | P2.B2.26.05.610 | ELEC | P2-5 |  | ELEC-2 |  |  |  | TA | O |  |  |
| P2.L6.S.1450 |  | In Wall - Backing/Blocking/Supports / L6 / South |  | 10d | 2025-12-01 A | 2025-12-12 A | P2.L6.S.1420 | 100% |  | 2026-01-02 | 2026-01-15 |  |  | 80 | P2.B2.09.21.510 | R/I.IW | P2-5 |  | R/I.IW |  |  |  | TA | O |  |  |
| P2.L6.S.1560 |  | OH - HVAC Piping (Low) / L6 / South |  | 20d | 2025-12-01 A | 2025-12-15 A | P2.L6.S.1220, FRG.P2.L6.S.1700 | 100% |  | 2026-01-02 | 2026-01-29 |  |  | 80 | P2.B2.23.20.410 | FIT | P2-5 | Harris | FIT-2 |  | 2 | TA | TA | O | Per Harris Schedule 11/4/25 |  |
| P2.L6.S.1280 |  | OH - Insulate Plumbing / L6 / South |  | 10d | 2025-12-15 A | 2025-12-26 A | P2.L6.S.1240 | 100% |  | 2026-01-16 | 2026-01-29 |  |  | 80 | P2.B2.22.07.510 | INSUL | P2-5 | Harris | INSUL-3 |  | 3 | TA | TA | O |  |  |
| P2.L6.S.1390 |  | OH - Conduit - Low Volt - Telecom / L6 / South |  | 10d | 2025-12-15 A | 2026-04-07 | P2.L6.S.1340 | 50% | 5d | 2026-02-13 | 2026-02-26 | 31d | 0d | 80 |  | ELEC | P2-5 |  | ELEC-2 |  | 5 | TA | JPC |  |  |  |
| P2.L6.S.1340 |  | OH - Insulate HVAC Pipe / L6 / South |  | 10d | 2026-01-19 A | 2026-03-13 A | P2.L6.S.1290, P2.L6.S.1270 | 100% |  | 2026-01-02 | 2026-01-15 |  |  | 80 | P2.B2.22.07.610 | INSUL | P2-5 | Harris | INSUL-3 |  | 4 | TA | JPC |  |  |  |
| P2.L6.S.1200 |  | Firestop - Thru Wall - Priority Walls / L6 / South |  | 5d | 2026-01-21 A | 2026-02-28 A | P2.L6.S.1150 | 100% |  | 2026-01-02 | 2026-01-08 |  |  | 80 | P2.B2.07.84.110 | FIRESTO | P2-5 |  | FIRESTO | AT48 |  | TA | TA | O |  |  |
| P2.L6.S.1480 |  | Spray/Seal/Firestop - Head of Wall / L6 / South |  | 10d | 2026-02-03 A | 2026-02-28 A | P2.L6.S.1420 | 100% |  | 2026-03-19 | 2026-04-01 |  |  | 80 | P2.B2.07.84.310 | FIRSAFE | P2-5 |  | FIRSAFE | AT47 | To Finishes - Paint |  | TA |  |  |  |
| P2.L6.S.1460 |  | AHJ Inspections - Wall Close In / L6 / South |  | 5d | 2026-02-23 A | 2026-02-27 A | P2.L6.S.1440, P2.L6.S.1450, P2.L6.S.1430 | 100% |  | 2026-03-02 | 2026-03-06 |  |  | 40 | P2.B2.01.43.110 | FM | P2-5 |  | FM |  |  |  | TA | O |  |  |
| P2.L6.S.1380 |  | OH - Conduit - Low Volt - Fire Alarm / L6 / South |  | 10d | 2026-03-02 A | 2026-03-13 A | P2.L6.S.1340 | 100% |  | 2026-04-01 | 2026-04-14 |  |  | 80 |  | FA | P2-5 |  | FA-1 |  | 5 | TA | JPC |  |  |  |
| P2.L6.S.1250 |  | Pull Wire - Electrical - 480/277v Distribution / L6 / South |  | 10d | 2026-03-09 A | 2026-04-14 | P2.L6.S.1190, P2.6.HE.5966.1050, P2.6.HE.5959.1050 |  | 10d | 2026-03-02 | 2026-03-13 | 36d | 30d | 80 |  | ELEC | P2-5 |  | ELEC-2 |  | To Trim Devices & Term Panel | TA | JPC | O |  |  |
| P2.L6.S.1470 |  | Hang-Tape-Finish - Walls / L6 / South |  | 13d | 2026-03-20 A | 2026-04-07 | P2.L6.S.1460, P2.SUM.175, P2.L5.S.1470, P2.L5.N.1470 | 62% | 5d | 2026-03-02 | 2026-03-18 | -5d | 0d | 80 | P2.B2.09.21.710 | GYP | P2-5 |  | GYP-1 |  |  |  | JPC | O |  | 1 |
| P2.L6.S.1490 |  | Firestop - Thru Wall / L6 / South |  | 10d | 2026-03-20 A | 2026-04-14 | P2.L6.S.1470 SS, P2.L6.S.1280 |  | 10d | 2026-03-19 | 2026-04-01 | 36d | 30d | 80 | P2.B2.07.84.210 | FIRESTO | P2-5 |  | FIRESTO | AT48 | To Finishes - Paint |  | JPC |  |  |  |
| P2.L6.S.1310 |  | OH - Set & Connect Mech Equipment / L6 / South |  | 10d | 2026-04-01 | 2026-04-14 | P2.L6.S.1260 |  |  |  |  | 6d | 0d | 80 | P2.B2.23.82.110 | HVAC | P2-5 | Harris | HVAC |  | 3 | TA | JPC | O |  |  |
| P2.L6.S.1350 |  | OH - Insulate LP Duct / L6 / South |  | 15d | 2026-04-01 | 2026-04-21 | P2.L6.S.1300, P2.L6.S.1200 |  |  |  |  | 31d | 25d | 80 | P2.B2.23.07.410 | INSUL | P2-5 | Harris | INSUL-3 |  | 4 | TA | JPC | O |  |  |
| P2.L6.S.1400 |  | OH - Conduit - Low Volt - Security / L6 / South |  | 10d | 2026-04-01 | 2026-04-14 | P2.L6.S.1340 |  |  |  |  | 26d | 0d | 80 |  | ELEC | P2-5 |  | ELEC-2 |  | 5 | TA | JPC |  |  |  |
| P2.L6.S.1410 |  | OH - Conduit - Low Volt - Medical Services/Nurse Call (?) / L6 / South |  | 10d | 2026-04-01 | 2026-04-14 | P2.L6.S.1340 |  |  |  |  | 26d | 0d | 80 |  | ELEC | P2-5 |  | ELEC-2 |  | 5 | TA | JPC |  |  |  |
| P2.L6.S.1510 |  | Pull Wire - Low Volt - Fire Alarm / L6 / South |  | 10d | 2026-04-01 | 2026-04-14 | P2.L6.S.1380 |  |  |  |  | 36d | 30d | 80 |  | FA | P2-5 |  | FA-1 |  | To Trim Finishes |  | JPC |  |  |  |
| P2.L6.S.1520 |  | Pull Wire - Low Volt - Telecom / L6 / South |  | 10d | 2026-04-08 | 2026-04-21 | P2.L6.S.1390 |  |  |  |  | 31d | 25d | 80 |  | CIT | P2-5 |  | CIT |  | To Trim Finishes |  | JPC |  |  |  |
| P2.L6.S.1320 |  | OH - Electrical - Equip Tie In / L6 / South |  | 10d | 2026-04-15 | 2026-04-28 | P2.L6.S.1310 |  |  |  |  | 6d | 0d | 80 | P2.B2.26.05.410 | ELEC | P2-5 |  | ELEC-2 |  | 4 | TA | JPC | O |  |  |
| P2.L6.S.1370 |  | OH - Conduit - Low Volt - BAS/Controls / L6 / South |  | 10d | 2026-04-15 | 2026-04-28 | P2.L6.S.1310, P2.L6.S.1340 |  |  |  |  | 16d | 0d | 80 |  | BAS | P2-5 | Harris | BAS-1 |  | 5 | TA | JPC |  |  |  |
| P2.L6.S.1530 |  | Pull Wire - Low Volt - Security / L6 / South |  | 10d | 2026-04-15 | 2026-04-28 | P2.L6.S.1400 |  |  |  |  | 26d | 20d | 80 |  | LOWVOLT | P2-5 |  | LOWVOLT-1 |  | To Trim Finishes |  | JPC |  |  |  |
| P2.L6.S.1540 |  | Pull Wire - Low Volt - Medical Services/Nurse Call (?) / L6 / South |  | 10d | 2026-04-15 | 2026-04-28 | P2.L6.S.1410 |  |  |  |  | 26d | 20d | 80 |  | LOWVOLT | P2-5 |  | LOWVOLT-1 |  | To Trim Finishes |  | JPC |  |  |  |
| P2.L6.S.1330 |  | OH - HVAC Piping - Equip Tie In / L6 / South |  | 15d | 2026-04-29 | 2026-05-19 | P2.L6.S.1310, P2.L6.S.1270, CX.B2.HYDR.1000 |  |  |  |  | 11d | 5d | 80 | P2.B2.23.20.610 | FIT | P2-5 | Harris | FIT-2 |  |  | TA | JPC |  |  |  |
| P2.L6.S.1360 |  | Pull Wire - Electrical - 208/120v Branch & Equip / L6 / South |  | 20d | 2026-04-29 | 2026-05-27 | P2.L6.S.1440, P2.L6.S.1230, P2.L6.S.1320 |  |  |  |  | 6d | 0d | 80 |  | ELEC | P2-5 |  | ELEC-2 |  | To Trim Devices & Term Panel |  | JPC | O |  |  |
| P2.L6.S.1500 |  | Pull Wire - Low Volt - BAS/Controls / L6 / South |  | 10d | 2026-04-29 | 2026-05-12 | P2.L6.S.1370 |  |  |  |  | 16d | 0d | 80 |  | BAS | P2-5 | Harris | BAS-1 |  | To Trim Finishes |  | JPC |  |  |  |
| P2.L6.S.1550 |  | Trades Inspect & Verify R/I Work Completed to Specs / L6 / South |  | 5d | 2026-05-28 | 2026-06-03 | P2.L6.S.1490, P2.L6.S.1480, P2.L6.S.1250, P2.L6.S.1540, P2.L6.S.1360, P2.L6.S.1500, P2.L6.S.1510, P2.L6.S.1520, P2.L6.S.1530, P2.L6.S.1330, P2.L6.S.1350 |  |  |  |  | 6d | 5d | 40 |  | T | P2-5 |  | T |  |  |  | JPC |  |  |  |

| ID | WBS | Activity | Type | Duration | Start | Finish | Predecessors | Complete | Remaining | Planned start | Planned finish | Total float | Free float | Temp Orig Dur | Act ID Temp | Resp / SRLM | PHASE | RESP / Trade | Testing Type | Z.RESP | Pick | 744 | RESP UPD | Update Status | NOTES |
| --- | --- | --- | --- | --- | --- | --- | --- | --- | --- | --- | --- | --- | --- | --- | --- | --- | --- | --- | --- | --- | --- | --- | --- | --- | --- |
|  | Z1121 | **North / Level 6** |  |  | 2025-04-21 | 2026-06-10 |  |  |  |  |  |  |  |  |  |  |  |  |  |  |  |  |  |  |  |
| P2.L6.N.1010 |  | Framing - Top Track / L6 / North |  | 10d | 2025-04-21 A | 2025-04-30 A | P2.L6.N.1000 SS | 100% |  | 2025-05-01 | 2025-05-14 |  |  | 80 | P2.B2.09.21.110 | GYP | P2-5 | GYP-1 |  |  |  |  |  |  |  |
| P2.L6.N.1020 |  | OH - Structural Supports (All Trades) / L6 / North |  | 5d | 2025-04-21 A | 2025-04-30 A | P2.L6.N.1000 | 100% |  | 2025-05-08 | 2025-05-14 |  |  | 80 | P2.B2.05.45.110 | R/I.OH | P2-5 | R/I.OH | AT24 | Harris |  |  |  |  |  |
| P2.L6.N.1030 |  | OH - MEPF - Hangers & Supports / L6 / North |  | 10d | 2025-04-21 A | 2025-05-09 A | P2.L6.N.1000, P2.BIM.L6.40.140 | 100% |  | 2025-05-08 | 2025-05-21 |  |  | 80 | P2.B2.20.05.410 | MEP | P2-5 | MEP-2 |  | Harris |  |  |  |  |  |
| P2.L6.N.1000 |  | Layout - All Trades / L6 / North |  | 5d | 2025-04-23 A | 2025-04-30 A | P2.6.03.630, P2.7.03.630 | 100% |  | 2025-05-01 | 2025-05-07 |  |  | 40 | P2.B2.01.010 | R/I.OH | P2-5 | R/I.OH |  | Harris |  |  |  |  |  |
| P2.L6.N.1170 |  | OH - Fire Suppression / L6 / North |  | 10d | 2025-05-12 A | 2025-05-30 A | P2.L6.N.1030 | 100% |  | 2025-06-09 | 2025-06-20 |  |  | 80 | P2.B2.21.13.210 | FP | P2-5 | FP-1 |  |  | 1 |  |  |  |  |
| P2.L6.N.1090 |  | Framing - Priority Walls & Door Frames / L6 / North |  | 10d | 2025-05-19 A | 2025-05-30 A | P2.L6.N.1010 | 100% |  | 2025-06-02 | 2025-06-13 |  |  | 80 | P2.B2.09.21.310 | GYP | P2-5 | GYP-1 |  |  |  |  |  |  |  |
| P2.L6.N.1130 |  | Framing - Priority Walls - AHJ Inspections / L6 / North |  | 3d | 2025-06-09 A | 2025-06-30 A | P2.L6.N.1090 | 100% |  | 2025-07-01 | 2025-07-03 |  |  | 80 | P2.B2.01.43.010 | FM | P2-5 | FM |  |  |  | ND | ND |  |  |
| P2.L6.N.1160 |  | Spray/Seal/Firestop - Head of Wall - Priority Walls / L6 / North |  | 5d | 2025-06-09 A | 2025-06-19 A | P2.L6.N.1140 FF | 100% |  | 2025-07-07 | 2025-07-11 |  |  | 80 | P2.B2.07.84.410 | FIRESTO | P2-5 | FIRESTO | AT47 |  |  | ND | ND |  |  |
| P2.L6.N.1180 |  | OH - Plumbing Piping (High) / L6 / North |  | 20d | 2025-06-16 A | 2025-09-03 A | P2.L6.N.1030, P2.L5.N.1180 | 100% |  | 2025-07-01 | 2025-07-29 |  |  | 80 | P2.B2.22.14.210 | PLMB | P2-5 | PLMB |  | Harris | 1 | TA | TA | O |  |
| P2.L6.N.1150 |  | Paint Prime & 1st Coat - Priority Walls / L6 / North |  | 4d | 2025-06-19 A | 2025-06-26 A | P2.L6.N.1160 SS | 100% |  | 2025-07-08 | 2025-07-11 |  |  | 80 | P2.B2.09.91.110 | PAINT | P2-5 | PAINT-1 |  |  |  | TA | TA |  |  |
| P2.L6.N.1140 |  | Hang/Tape/Finish - Priority Walls / L6 / North |  | 5d | 2025-06-25 A | 2025-07-17 A | P2.L6.N.1130, P2.L6.N.1020 | 100% |  | 2025-07-07 | 2025-07-11 |  |  | 80 | P2.B2.09.21.210 | GYP | P2-5 | GYP-1 |  |  |  | ND | ND |  |  |
| P2.L6.N.1190 |  | OH - Electrical - 480/277v Distribution / L6 / North |  | 10d | 2025-07-05 A | 2025-08-07 A | P2.L6.N.1150, P2.L6.N.1030 | 100% |  | 2025-08-07 | 2025-08-20 |  |  | 80 | P2.B2.26.05.210 | ELEC | P2-5 | ELEC-2 |  |  | 1 | TA | TA |  |  |
| FRG.P2.L6.N.1700 |  | HVAC Piping Delivery / L6 / North - FRAGNET | milestone | 0d | 2025-08-08 A | 2025-08-08 A | P2.L6.N.1030 FF | 100% |  |  |  |  |  | 80 | P2.B2.23.20.410 | Harris Fragnet | P2-5 | FIT-2 |  | Harris | 2 | TA | TA | O | Confirm with Harris delivery 8/8 |
| FRG.P2.L6.N.1730 |  | HVAC Piping - Staging & Layout / L6 / North - FRAGNET |  | 15d | 2025-08-11 A | 2025-09-29 A | FRG.P2.L6.N.1700 | 100% |  | 2025-09-02 | 2025-09-22 |  |  | 80 | P2.B2.23.20.410 | Harris Fragnet | P2-5 | FIT-2 |  | Harris | 2 | TA | TA | O |  |
| FRG.P2.L6.N.1720 |  | HVAC Piping - Hanging Copper Racks / L6 / North - FRAGNET |  | 6d | 2025-09-02 A | 2025-09-09 A | FRG.P2.L6.N.1700, FRG.P2.L6.N.1730 | 100% |  | 2025-10-01 | 2025-10-08 |  |  | 80 | P2.B2.23.20.410 | Harris Fragnet | P2-5 | FIT-2 |  | Harris | 2 | TA | TA | O |  |
| P2.L6.N.1560 |  | OH - Plumbing Piping (Low) / L6 / North |  | 20d | 2025-09-11 A | 2025-09-22 A | P2.L6.N.1180 | 100% |  | 2025-10-01 | 2025-10-28 |  |  | 80 | P2.B2.22.14.210 | PLMB | P2-5 | PLMB |  | Harris | 1 | TA | TA | O |  |
| P2.L6.N.1210 |  | OH - Hang Duct - HP Mains / L6 / North |  | 15d | 2025-09-15 A | 2025-10-31 A | P2.L6.N.1030 | 100% |  | 2025-10-01 | 2025-10-21 |  |  | 80 | P2.B2.23.30.210 | HVAC | P2-5 | HVAC |  | Harris | 1 | TA | TA |  |  |
| P2.L6.N.1220 |  | OH - HVAC Piping (High) / L6 / North |  | 20d | 2025-09-15 A | 2025-11-14 A | P2.L6.N.1030, P2.L6.N.1170, FRG.P2.L6.N.1720 | 100% |  | 2025-10-09 | 2025-11-05 |  |  | 80 | P2.B2.23.20.410 | FIT | P2-5 | FIT-2 |  | Harris | 2 | TA | TA |  |  |
| P2.L6.N.1420 |  | Framing - Balance of Framing & Door Frames / L6 / North |  | 10d | 2025-10-13 A | 2025-10-27 A | P2.L5.S.1420 | 100% |  | 2025-11-03 | 2025-11-14 |  |  | 80 | A1310 | GYP | P2-5 | GYP-1 |  |  |  | TA | TA |  |  |
| P2.L6.N.1260 |  | OH - DALT - HP Mains / L6 / North |  | 10d | 2025-10-30 A | 2025-10-31 A | P2.L6.N.1210 | 100% |  | 2025-10-22 | 2025-11-04 |  |  | 80 | P2.B2.23.30.310 | TAB | P2-5 | TAB-1 |  | Harris | 2 | TA | TA |  |  |
| P2.L6.N.1300 |  | OH - Hang Duct - LP Branch / L6 / North |  | 15d | 2025-10-31 A | 2026-04-14 | P2.L6.N.1260 | 33% | 10d | 2025-11-05 | 2025-11-25 | 28d | 0d | 80 | P2.B2.23.30.410 | HVAC | P2-5 | HVAC |  | Harris | 3 | TA | JPC | O |  |
| P2.L6.N.1570 |  | OH - HVAC Piping (Low) / L6 / North |  | 20d | 2025-10-31 A | 2025-11-20 A | P2.L6.N.1220 | 100% |  | 2025-10-15 | 2025-11-11 |  |  | 80 | P2.B2.23.20.410 | FIT | P2-5 | FIT-2 |  | Harris | 2 | TA | TA | O | Per Harris Schedule 11/4/25 |
| P2.L6.N.1290 |  | OH - Insulate HP Duct / L6 / North |  | 10d | 2025-11-24 A | 2026-04-01 | P2.L6.N.1260 | 100% | 0d | 2025-12-01 | 2025-12-12 | 86d | 35d | 80 | P2.B2.23.07.310 | INSUL | P2-5 | INSUL-3 |  | Harris | 3 | TA | JPC | O |  |
| P2.L6.N.1240 |  | OH - Plumbing - Test / L6 / North |  | 10d | 2025-12-01 A | 2025-12-12 A | P2.L6.N.1560 | 100% |  | 2026-01-02 | 2026-01-15 |  |  | 80 | P2.B2.22.14.310 | PLMB | P2-5 | PLMB |  | Harris | 2 | TA | TA | O |  |
| P2.L6.N.1270 |  | OH - HVAC Piping - Test / L6 / North |  | 15d | 2025-12-01 A | 2025-12-15 A | P2.L6.N.1570 | 100% |  | 2026-01-16 | 2026-02-05 |  |  | 80 | P2.B2.23.20.510 | FIT | P2-5 | FIT-2 |  | Harris | 3 | TA | TA | O |  |
| P2.L6.N.1280 |  | OH - Insulate Plumbing / L6 / North |  | 10d | 2025-12-15 A | 2025-12-26 A | P2.L6.N.1240 | 100% |  | 2026-01-16 | 2026-01-29 |  |  | 80 | P2.B2.22.07.510 | INSUL | P2-5 | INSUL-3 |  | Harris | 3 | TA | TA | O |  |
| P2.L6.N.1380 |  | OH - Conduit - Low Volt - Fire Alarm / L6 / North |  | 10d | 2025-12-15 A | 2026-02-13 A | P2.L6.N.1420 | 100% |  | 2026-02-06 | 2026-02-19 |  |  | 80 |  | FA | P2-5 | FA-1 |  |  | 5 | TA | TA |  |  |
| P2.L6.N.1390 |  | OH - Conduit - Low Volt - Telecom / L6 / North |  | 10d | 2025-12-15 A | 2026-02-18 A | P2.L6.N.1420 | 100% |  | 2026-02-06 | 2026-02-19 |  |  | 80 |  | ELEC | P2-5 | ELEC-2 |  |  | 5 | TA | TA |  |  |
| P2.L6.N.1450 |  | In Wall - Backing/Blocking/Supports / L6 / North |  | 10d | 2026-01-12 A | 2026-01-23 A | P2.L6.N.1420 | 100% |  | 2026-01-02 | 2026-01-15 |  |  | 80 | P2.B2.09.21.510 | R/I.IW | P2-5 | R/I.IW |  |  |  | TA | TA | O |  |
| P2.L6.N.1340 |  | OH - Insulate HVAC Pipe / L6 / North |  | 10d | 2026-01-19 A | 2026-03-16 A | P2.L6.N.1270 | 100% |  | 2026-01-14 | 2026-01-27 |  |  | 80 | P2.B2.22.07.610 | INSUL | P2-5 | INSUL-3 |  | Harris | 4 | TA | JPC |  |  |
| P2.L6.N.1200 |  | Firestop - Thru Wall - Priority Walls / L6 / North |  | 5d | 2026-01-20 A | 2026-03-18 A | P2.L6.N.1150 | 100% |  | 2026-01-02 | 2026-01-08 |  |  | 80 | P2.B2.07.84.110 | FIRESTO | P2-5 | FIRESTO | AT48 |  |  | TA | JPC | O |  |
| P2.L6.N.1430 |  | In Wall - Plumbing - Framing / L6 / North |  | 10d | 2026-02-05 A | 2026-02-18 A | P2.L6.N.1420, PCO.830.1160 | 100% |  | 2026-04-07 | 2026-04-20 |  |  | 80 | P2.B2.22.05.410 | PLMB | P2-5 | PLMB |  | Harris |  | TA | TA |  |  |
| P2.L6.N.1440 |  | In Wall - Electrical - Framing / L6 / North |  | 10d | 2026-02-09 A | 2026-02-20 A | P2.L6.N.1230, P2.L6.N.1420 | 100% |  | 2026-04-13 | 2026-04-24 |  |  | 80 | P2.B2.26.05.610 | ELEC | P2-5 | ELEC-2 |  |  |  | TA | TA | O |  |
| P2.L6.N.1230 |  | OH - Electrical - 208/120v Branch / L6 / North |  | 10d | 2026-02-16 A | 2026-02-27 A | P2.L6.N.1190 | 100% |  | 2026-03-30 | 2026-04-10 |  |  | 80 | P2.B2.26.05.310 | ELEC | P2-5 | ELEC-2 |  |  | 2 | TA | TA | O |  |
| P2.L6.N.1460 |  | AHJ Inspections - Wall Close In / L6 / North |  | 5d | 2026-02-23 A | 2026-02-27 A | P2.L6.N.1440, P2.L6.N.1450, P2.L6.N.1430 | 100% |  | 2026-04-27 | 2026-05-01 |  |  | 40 | P2.B2.01.43.110 | FM | P2-5 | FM |  |  |  | TA | TA |  |  |
| P2.L6.N.1470 |  | Hang-Tape-Finish - Walls / L6 / North |  | 10d | 2026-03-20 A | 2026-04-14 | P2.L6.N.1460, P2.SUM.175, P2.L5.N.1470, P2.L5.S.1470 |  | 10d | 2026-03-09 | 2026-03-20 | 28d | 0d | 80 | P2.B2.09.21.710 | GYP | P2-5 | GYP-1 |  |  |  |  | JPC |  |  |
| P2.L6.N.1370 |  | OH - Conduit - Low Volt - BAS/Controls / L6 / North |  | 10d | 2026-03-25 A | 2026-04-14 | P2.L6.N.1340 |  | 10d | 2026-04-22 | 2026-05-05 | 31d | 0d | 80 |  | BAS | P2-5 | BAS-1 |  | Harris | 5 | TA | JPC |  |  |
| P2.L6.N.1250 |  | Pull Wire - Electrical - 480/277v Distribution / L6 / North |  | 10d | 2026-04-01 | 2026-04-14 | P2.L6.N.1190, P2.6.HE.2947.1050, P2.6.HE.2803.1050 |  |  |  |  | 132d | 35d | 80 |  | ELEC | P2-5 | ELEC-2 |  |  | To Trim Devices & Term Panel | TA | JPC | O |  |
| P2.L6.N.1310 |  | OH - Set & Connect Mech Equipment / L6 / North |  | 15d | 2026-04-01 | 2026-04-21 | P2.L6.N.1260 |  |  |  |  | 97d | 0d | 80 | P2.B2.23.82.110 | HVAC | P2-5 | HVAC |  | Harris | 3 | TA | JPC | O |  |
| P2.L6.N.1400 |  | OH - Conduit - Low Volt - Security / L6 / North |  | 10d | 2026-04-01 | 2026-04-14 | P2.L6.N.1340 |  |  |  |  | 122d | 0d | 80 |  | ELEC | P2-5 | ELEC-2 |  |  | 5 | TA | JPC |  |  |
| P2.L6.N.1410 |  | OH - Conduit - Low Volt - Medical Services/Nurse Call (?) / L6 / North |  | 10d | 2026-04-01 | 2026-04-14 | P2.L6.N.1420 |  |  |  |  | 122d | 0d | 80 |  | ELEC | P2-5 | ELEC-2 |  |  | 5 | TA | JPC |  |  |
| P2.L6.N.1510 |  | Pull Wire - Low Volt - Fire Alarm / L6 / North |  | 10d | 2026-04-01 | 2026-04-14 | P2.L6.N.1380 |  |  |  |  | 132d | 35d | 80 |  | FA | P2-5 | FA-1 |  |  | To Trim Finishes |  | JPC |  |  |
| P2.L6.N.1520 |  | Pull Wire - Low Volt - Telecom / L6 / North |  | 10d | 2026-04-01 | 2026-04-14 | P2.L6.N.1390 |  |  |  |  | 132d | 35d | 80 |  | CIT | P2-5 | CIT |  |  | To Trim Finishes |  | JPC |  |  |
| P2.L6.N.1350 |  | OH - Insulate LP Duct / L6 / North |  | 10d | 2026-04-15 | 2026-04-28 | P2.L6.N.1300, P2.L6.N.1200 |  |  |  |  | 28d | 0d | 80 | P2.B2.23.07.410 | INSUL | P2-5 | INSUL-3 |  | Harris | 4 | TA | JPC | O |  |
| P2.L6.N.1480 |  | Spray/Seal/Firestop - Head of Wall / L6 / North |  | 10d | 2026-04-15 | 2026-04-28 | P2.L6.N.1470 |  |  |  |  | 122d | 25d | 80 | P2.B2.07.84.310 | FIRSAFE | P2-5 | FIRSAFE | AT47 |  | To Finishes - Paint |  | JPC |  |  |
| P2.L6.N.1490 |  | Firestop - Thru Wall / L6 / North |  | 10d | 2026-04-15 | 2026-04-28 | P2.L6.N.1470, P2.L6.N.1280 |  |  |  |  | 122d | 25d | 80 | P2.B2.07.84.210 | FIRESTO | P2-5 | FIRESTO | AT48 |  | To Finishes - Paint |  | JPC |  |  |
| P2.L6.N.1500 |  | Pull Wire - Low Volt - BAS/Controls / L6 / North |  | 10d | 2026-04-15 | 2026-04-28 | P2.L6.N.1370 |  |  |  |  | 31d | 10d | 80 |  | BAS | P2-5 | BAS-1 |  | Harris | To Trim Finishes |  | JPC |  |  |
| P2.L6.N.1530 |  | Pull Wire - Low Volt - Security / L6 / North |  | 10d | 2026-04-15 | 2026-04-28 | P2.L6.N.1400 |  |  |  |  | 122d | 25d | 80 |  | LOWVOLT | P2-5 | LOWVOLT-1 |  |  | To Trim Finishes |  | JPC |  |  |
| P2.L6.N.1540 |  | Pull Wire - Low Volt - Medical Services/Nurse Call (?) / L6 / North |  | 10d | 2026-04-15 | 2026-04-28 | P2.L6.N.1410 |  |  |  |  | 122d | 25d | 80 |  | LOWVOLT | P2-5 | LOWVOLT-1 |  |  | To Trim Finishes |  | JPC |  |  |
| P2.L6.N.1320 |  | OH - Electrical - Equip Tie In / L6 / North |  | 10d | 2026-04-22 | 2026-05-05 | P2.L6.N.1310 |  |  |  |  | 97d | 0d | 80 | P2.B2.26.05.410 | ELEC | P2-5 | ELEC-2 |  |  | 4 | TA | JPC | O |  |
| P2.L6.N.1330 |  | OH - HVAC Piping - Equip Tie In / L6 / North |  | 15d | 2026-04-29 | 2026-05-19 | P2.L6.N.1310, P2.L6.N.1270, CX.B2.HYDR.1000 |  |  |  |  | 107d | 10d | 80 | P2.B2.23.20.610 | FIT | P2-5 | FIT-2 |  | Harris |  | TA | JPC |  |  |
| P2.L6.N.1360 |  | Pull Wire - Electrical - 208/120v Branch & Equip / L6 / North |  | 20d | 2026-05-06 | 2026-06-03 | P2.L6.N.1320, P2.L6.N.1230, P2.L6.N.1440 |  |  |  |  | 97d | 0d | 80 |  | ELEC | P2-5 | ELEC-2 |  |  | To Trim Devices & Term Panel | TA | JPC |  |  |
| P2.L6.N.1550 |  | Trades Inspect & Verify R/I Work Completed to Specs / L6 / North |  | 5d | 2026-06-04 | 2026-06-10 | P2.L6.N.1480, P2.L6.N.1490, P2.L6.N.1510, P2.L6.N.1520, P2.L6.N.1530, P2.L6.N.1250, P2.L6.N.1540, P2.L6.N.1360, P2.L6.N.1500, P2.L6.N.1330 |  |  |  |  | 97d | 35d | 40 |  | T | P2-5 | T |  |  |  |  | JPC |  |  |

| ID | WBS | Activity | Type | Duration | Start | Finish | Predecessors | Complete | Planned start | Planned finish | Total float | Free float | Temp Orig Dur | Resp / SRLM | PHASE | RESP / Trade | 744 | RESP UPD | Update Status | Testing Type | Z.RESP |
| --- | --- | --- | --- | --- | --- | --- | --- | --- | --- | --- | --- | --- | --- | --- | --- | --- | --- | --- | --- | --- | --- |
|  | 1 | **House Electrical Rooms / Level 6** |  |  | 2025-05-26 | 2026-04-07 |  |  |  |  |  |  |  |  |  |  |  |  |  |  |  |
|  | 9 | **House Electrical Room 6-5966** |  |  | 2025-05-26 | 2026-04-07 |  |  |  |  |  |  |  |  |  |  |  |  |  |  |  |
| P2.6.HE.5966.1000 |  | Framing and Blocking / L6 / South / 5966 |  | 3d | 2025-05-26 A | 2025-05-30 A | P2.L6.S.1090 | 100% | 2025-06-16 | 2025-06-18 |  |  | 24 | GYP | P2-5 | GYP-1 |  |  |  |  |  |
| P2.6.HE.5966.1010 |  | In Wall Rough In / L6 / South / 5966 |  | 2d | 2025-06-09 A | 2025-06-16 A | P2.6.HE.5966.1000 | 100% | 2025-07-01 | 2025-07-02 |  |  | 16 | R/I.IW | P2-5 | R/I.IW | ND | ND |  |  |  |
| P2.6.HE.5966.1020 |  | Inspections - Wall Close In / L6 / South / 5966 |  | 2d | 2025-06-11 A | 2025-06-18 A | P2.6.HE.5966.1010 | 100% | 2025-07-03 | 2025-07-07 |  |  | 16 | AHJ | P2-5 | AHJ | ND | ND |  |  |  |
| P2.6.HE.5966.1030 |  | Hang-Tape-Finish / L6 / South / 5966 |  | 5d | 2025-06-23 A | 2025-06-30 A | P2.6.HE.5966.1020, P2.LR.L7.170 | 100% | 2025-09-09 | 2025-09-15 |  |  | 40 | GYP | P2-5 | GYP-1 | ND | ND |  |  |  |
| P2.6.HE.5966.1040 |  | Paint Prime & 1st Coat / L6 / South / 5966 |  | 2d | 2025-07-28 A | 2025-07-29 A | P2.6.HE.5966.1030 | 100% | 2025-08-28 | 2025-08-29 |  |  | 16 | PAINT | P2-5 | PAINT-1 | ND | ND |  |  |  |
| P2.6.HE.5966.1050 |  | Cans/Troughs/Backboxes/XFMRs / L6 / South / 5966 |  | 5d | 2025-07-29 A | 2025-08-27 A | P2.6.HE.5966.1040 | 100% | 2025-09-02 | 2025-09-08 |  |  | 40 | ELEC | P2-5 | ELEC-2 | ND | ND |  |  |  |
| P2.6.HE.5966.1060 |  | Risers and OH Conduit Connections / L6 / South / 5966 |  | 5d | 2025-08-26 A | 2025-09-09 A | P2.6.HE.5966.1050 | 100% | 2025-10-02 | 2025-10-08 |  |  | 40 | ELEC | P2-5 | ELEC-2 | ND | ND | O |  |  |
| P2.6.HE.5966.1070 |  | Pull Wire - In From Distribution Panels / Out to Branch Circuits / L6 / South / 5966 |  | 5d | 2025-11-10 A | 2025-11-14 A | P2.6.HE.5966.1060, P2.L6.INT.S.1190, P2.6.HE.5966.1080 | 100% | 2025-12-08 | 2025-12-12 |  |  | 40 | ELEC | P2-5 | ELEC-2 | ND | ND |  |  |  |
| P2.6.HE.5966.1080 |  | Panelboards, Interconnect Wiring, and Remaining Room Buildout of All Systems / L6 / South / 5966 |  | 10d | 2025-12-01 A | 2025-12-12 A | P2.6.HE.5966.1060, BP1.262.3.100, BP1.262.3.210 | 100% | 2026-01-02 | 2026-01-15 |  |  | 80 | ELEC | P2-5 | ELEC-2 | ND | ND | O |  |  |
| P2.6.HE.5966.1100 |  | Paint - Finish Coat / L6 / South / 5966 |  | 2d | 2025-12-15 A | 2025-12-17 A | P2.6.HE.5966.1040 | 100% | 2026-03-06 | 2026-03-09 |  |  | 16 | PAINT | P2-5 | PAINT-1 | ND | ND | O |  |  |
| P2.6.HE.5966.1130 |  | Doors & Hardware / L6 / South / 5966 |  | 2d | 2025-12-18 A | 2025-12-24 A | P2.6.HE.5966.1100 | 100% | 2026-03-16 | 2026-03-17 |  |  | 16 | DFH | P2-5 | DFH | ND | ND | O | AT29 |  |
| P2.6.HE.5966.1120 |  | Flooring / L6 / South / 5966 |  | 2d | 2026-03-09 A | 2026-03-12 A | P2.6.HE.5966.1130 | 100% | 2026-05-06 | 2026-05-07 |  |  | 16 | FLOOR | P2-5 | FLOOR | ND | ND | O |  |  |
| P2.6.HE.5966.1090 |  | Test & Terminate / L6 / South / 5966 |  | 5d | 2026-04-01 | 2026-04-07 | P2.6.HE.5966.1080, P2.6.HE.5966.1070, P2.6.HE.5966.1120 |  |  |  | 46d | 0d | 40 | ELEC | P2-5 | ELEC-2 | ND | ND | O |  |  |
| P2.6.HE.5966.1110 |  | Trim All MEPF Finishes / L6 / South / 5966 |  | 2d | 2026-04-01 | 2026-04-02 | P2.6.HE.5966.1100 |  |  |  | 49d | 3d | 16 | MEP | P2-5 | MEP-2 | ND | ND | O |  | Harris |
| P2.6.HE.5966.1140 |  | Panels Ready to Energize - Lock Doors and Limit Access / L6 / South / 5966 | milestone | 0d | 2026-04-07 | 2026-04-07 | P2.6.HE.5966.1090, P2.6.HE.5966.1130 FF, P2.6.HE.5966.1110 FF |  |  |  | 46d | 25d | 0 | ELEC | P2-5 | ELEC-2 | ND | ND |  |  |  |
|  | 8 | **House Electrical Room 6-2947** |  |  | 2025-06-02 | 2026-04-07 |  |  |  |  |  |  |  |  |  |  |  |  |  |  |  |
| P2.6.HE.2947.1000 |  | Framing and Blocking / L6 / North / 2947 |  | 3d | 2025-06-02 A | 2025-06-09 A | P2.L6.N.1090 | 100% | 2025-07-01 | 2025-07-03 |  |  | 24 | GYP | P2-5 | GYP-1 | ND | ND |  |  |  |
| P2.6.HE.2947.1010 |  | In Wall Rough In / L6 / North / 2947 |  | 2d | 2025-06-09 A | 2025-06-16 A | P2.6.HE.2947.1000 | 100% | 2025-07-07 | 2025-07-08 |  |  | 16 | R/I.IW | P2-5 | R/I.IW | ND | ND |  |  |  |
| P2.6.HE.2947.1020 |  | Inspections - Wall Close In / L6 / North / 2947 |  | 2d | 2025-06-11 A | 2025-06-18 A | P2.6.HE.2947.1010 | 100% | 2025-07-09 | 2025-07-10 |  |  | 16 | AHJ | P2-5 | AHJ | ND | ND |  |  |  |
| P2.6.HE.2947.1030 |  | Hang-Tape-Finish / L6 / North / 2947 |  | 5d | 2025-06-23 A | 2025-06-30 A | P2.6.HE.2947.1020, P2.MR.W.160 | 100% | 2025-07-11 | 2025-07-17 |  |  | 40 | GYP | P2-5 | GYP-1 | ND | ND |  |  |  |
| P2.6.HE.2947.1040 |  | Paint Prime & 1st Coat / L6 / North / 2947 |  | 2d | 2025-07-01 A | 2025-07-03 A | P2.6.HE.2947.1030 | 100% | 2025-08-01 | 2025-08-04 |  |  | 16 | PAINT | P2-5 | PAINT-1 | ND | ND |  |  |  |
| P2.6.HE.2947.1050 |  | Cans/Troughs/Backboxes/XFMRs / L6 / North / 2947 |  | 5d | 2025-07-05 A | 2025-07-09 A | P2.6.HE.2947.1040 | 100% | 2025-08-05 | 2025-08-11 |  |  | 40 | ELEC | P2-5 | ELEC-2 | ND | ND |  |  |  |
| P2.6.HE.2947.1060 |  | Risers and OH Conduit Connections / L6 / North / 2947 |  | 5d | 2025-07-08 A | 2025-07-10 A | P2.6.HE.2947.1050 | 100% | 2025-08-12 | 2025-08-18 |  |  | 40 | ELEC | P2-5 | ELEC-2 | ND | ND |  |  |  |
| P2.6.HE.2947.1070 |  | Pull Wire - In From Distribution Panels / Out to Branch Circuits / L6 / North / 2947 |  | 5d | 2025-11-03 A | 2025-11-07 A | P2.6.HE.2947.1060, P2.L6.INT.N.1190, P2.6.HE.2947.1080, P2.L6.N.1230 | 100% | 2025-12-01 | 2025-12-05 |  |  | 40 | ELEC | P2-5 | ELEC-2 | ND | ND |  |  |  |
| P2.6.HE.2947.1080 |  | Panelboards, Interconnect Wiring, and Remaining Room Buildout of All Systems / L6 / North / 2947 |  | 10d | 2025-12-01 A | 2025-12-12 A | BP1.262.3.100, BP1.262.3.210, P2.6.HE.2947.1060 | 100% | 2026-01-02 | 2026-01-15 |  |  | 80 | ELEC | P2-5 | ELEC-2 | ND | ND | O |  |  |
| P2.6.HE.2947.1100 |  | Paint - Finish Coat / L6 / North / 2947 |  | 2d | 2025-12-15 A | 2025-12-17 A | P2.6.HE.2947.1040 | 100% | 2026-02-27 | 2026-03-02 |  |  | 16 | PAINT | P2-5 | PAINT-1 | ND | ND | O |  |  |
| P2.6.HE.2947.1130 |  | Doors & Hardware / L6 / North / 2947 |  | 2d | 2025-12-18 A | 2025-12-24 A | P2.6.HE.2947.1120 | 100% | 2026-03-09 | 2026-03-10 |  |  | 16 | DFH | P2-5 | DFH | ND | ND | O | AT29 |  |
| P2.6.HE.2947.1120 |  | Flooring / L6 / North / 2947 |  | 2d | 2026-03-09 A | 2026-03-12 A | P2.6.HE.2947.1100 | 100% | 2026-03-11 | 2026-03-12 |  |  | 16 | FLOOR | P2-5 | FLOOR | ND | ND | O |  |  |
| P2.6.HE.2947.1090 |  | Test & Terminate / L6 / North / 2947 |  | 5d | 2026-04-01 | 2026-04-07 | P2.6.HE.2947.1080, P2.6.HE.2947.1070 |  |  |  | 46d | 0d | 40 | ELEC | P2-5 | ELEC-2 | ND | ND | O |  |  |
| P2.6.HE.2947.1110 |  | Trim All MEPF Finishes / L6 / North / 2947 |  | 2d | 2026-04-01 | 2026-04-02 | P2.6.HE.2947.1100 |  |  |  | 49d | 3d | 16 | MEP | P2-5 | MEP-2 | ND | ND | O |  | Harris |
| P2.6.HE.2947.1140 |  | Panels Ready to Energize - Lock Doors and Limit Access / L6 / North / 2947 | milestone | 0d | 2026-04-07 | 2026-04-07 | P2.6.HE.2947.1090, P2.6.HE.2947.1130 FF, P2.6.HE.2947.1110 FF |  |  |  | 46d | 4d | 0 | ELEC | P2-5 | ELEC-2 | ND | ND |  |  |  |

| ID | WBS | Activity | Type | Duration | Start | Finish | Predecessors | Complete | Planned start | Planned finish | Total float | Free float | Temp Orig Dur | Resp / SRLM | 744 | PHASE | RESP UPD | RESP / Trade | Update Status | Testing Type | Z.RESP |
| --- | --- | --- | --- | --- | --- | --- | --- | --- | --- | --- | --- | --- | --- | --- | --- | --- | --- | --- | --- | --- | --- |
|  | 7 | **House Electrical Room 6-2803** |  |  | 2025-06-02 | 2026-04-07 |  |  |  |  |  |  |  |  |  |  |  |  |  |  |  |
| P2.6.HE.2803.1000 |  | Framing and Blocking / L6 / North / 2803 |  | 3d | 2025-06-02 A | 2025-06-09 A | P2.L6.N.1090 | 100% | 2025-07-01 | 2025-07-03 |  |  | 24 | GYP | ND | P2-5 | ND | GYP-1 |  |  |  |
| P2.6.HE.2803.1010 |  | In Wall Rough In / L6 / North / 2803 |  | 2d | 2025-06-06 A | 2025-06-16 A | P2.6.HE.2803.1000 | 100% | 2025-07-07 | 2025-07-08 |  |  | 16 | R/I.IW | ND | P2-5 | ND | R/I.IW |  |  |  |
| P2.6.HE.2803.1020 |  | Inspections - Wall Close In / L6 / North / 2803 |  | 2d | 2025-06-11 A | 2025-06-18 A | P2.6.HE.2803.1010 | 100% | 2025-07-09 | 2025-07-10 |  |  | 16 | AHJ | ND | P2-5 | ND | AHJ |  |  |  |
| P2.6.HE.2803.1030 |  | Hang-Tape-Finish / L6 / North / 2803 |  | 5d | 2025-07-07 A | 2025-07-10 A | P2.6.HE.2803.1020, P2.FAC.2.Z1.190, P2.MR.2-8.140 | 100% | 2025-08-12 | 2025-08-18 |  |  | 40 | GYP | ND | P2-5 | ND | GYP-1 |  |  |  |
| P2.6.HE.2803.1040 |  | Paint Prime & 1st Coat / L6 / North / 2803 |  | 2d | 2025-07-28 A | 2025-07-30 A | P2.6.HE.2803.1030 | 100% | 2025-08-19 | 2025-08-20 |  |  | 16 | PAINT | ND | P2-5 | ND | PAINT-1 |  |  |  |
| P2.6.HE.2803.1050 |  | Cans/Troughs/Backboxes/XFMRs / L6 / North / 2803 |  | 5d | 2025-08-27 A | 2025-09-03 A | P2.6.HE.2803.1040 | 100% | 2025-09-04 | 2025-09-10 |  |  | 40 | ELEC | ND | P2-5 | ND | ELEC-2 | O |  |  |
| P2.6.HE.2803.1060 |  | Risers and OH Conduit Connections / L6 / North / 2803 |  | 5d | 2025-09-08 A | 2025-09-17 A | P2.6.HE.2803.1050 | 100% | 2025-10-07 | 2025-10-13 |  |  | 40 | ELEC | ND | P2-5 | ND | ELEC-2 | O |  |  |
| P2.6.HE.2803.1070 |  | Pull Wire - In From Distribution Panels / Out to Branch Circuits / L6 / North / 2803 |  | 5d | 2025-11-05 A | 2025-11-11 A | P2.6.HE.2803.1060, P2.L6.INT.N.1190, P2.L6.N.1230 | 100% | 2025-12-03 | 2025-12-09 |  |  | 40 | ELEC | ND | P2-5 | ND | ELEC-2 |  |  |  |
| P2.6.HE.2803.1080 |  | Panelboards, Interconnect Wiring, and Remaining Room Buildout of All Systems / L6 / North / 2803 |  | 10d | 2025-12-01 A | 2025-12-12 A | BP1.262.3.100, BP1.262.3.210, P2.6.HE.2803.1060 | 100% | 2026-01-02 | 2026-01-15 |  |  | 80 | ELEC | ND | P2-5 | ND | ELEC-2 | O |  |  |
| P2.6.HE.2803.1100 |  | Paint - Finish Coat / L6 / North / 2803 |  | 2d | 2025-12-15 A | 2025-12-17 A | P2.6.HE.2803.1040 | 100% | 2026-02-27 | 2026-03-02 |  |  | 16 | PAINT | ND | P2-5 | ND | PAINT-1 | O |  |  |
| P2.6.HE.2803.1130 |  | Doors & Hardware / L6 / North / 2803 |  | 2d | 2025-12-18 A | 2025-12-24 A | P2.6.HE.2803.1120 | 100% | 2026-03-09 | 2026-03-10 |  |  | 16 | DFH | ND | P2-5 | ND | DFH | O | AT29 |  |
| P2.6.HE.2803.1120 |  | Flooring / L6 / North / 2803 |  | 2d | 2026-03-09 A | 2026-03-12 A | P2.6.HE.2803.1100 | 100% | 2026-03-11 | 2026-03-12 |  |  | 16 | FLOOR | ND | P2-5 | ND | FLOOR | O |  |  |
| P2.6.HE.2803.1090 |  | Test & Terminate / L6 / North / 2803 |  | 5d | 2026-04-01 | 2026-04-07 | P2.6.HE.2803.1070, P2.6.HE.2803.1080 |  |  |  | 46d | 0d | 40 | ELEC | ND | P2-5 | ND | ELEC-2 | O |  |  |
| P2.6.HE.2803.1110 |  | Trim All MEPF Finishes / L6 / North / 2803 |  | 2d | 2026-04-01 | 2026-04-02 | P2.6.HE.2803.1100 |  |  |  | 49d | 3d | 16 | MEP | ND | P2-5 | ND | MEP-2 | O |  | Harris |
| P2.6.HE.2803.1140 |  | Panels Ready to Energize - Lock Doors and Limit Access / L6 / North / 2803 | milestone | 0d | 2026-04-07 | 2026-04-07 | P2.6.HE.2803.1090, P2.6.HE.2803.1130 FF, P2.6.HE.2803.1110 FF |  |  |  | 46d | 4d | 0 | ELEC | ND | P2-5 | ND | ELEC-2 |  |  |  |
|  | 6 | **House Electrical Room 6-5959** |  |  | 2025-05-26 | 2026-04-07 |  |  |  |  |  |  |  |  |  |  |  |  |  |  |  |
| P2.6.HE.5959.1000 |  | Framing and Blocking / L6 / South / 5959 |  | 3d | 2025-05-26 A | 2025-05-30 A | P2.L6.S.1090 | 100% | 2025-06-16 | 2025-06-18 |  |  | 24 | GYP |  | P2-5 |  | GYP-1 |  |  |  |
| P2.6.HE.5959.1010 |  | In Wall Rough In / L6 / South / 5959 |  | 2d | 2025-06-09 A | 2025-06-16 A | P2.6.HE.5959.1000 | 100% | 2025-07-01 | 2025-07-02 |  |  | 16 | R/I.IW | ND | P2-5 | ND | R/I.IW |  |  |  |
| P2.6.HE.5959.1020 |  | Inspections - Wall Close In / L6 / South / 5959 |  | 2d | 2025-06-11 A | 2025-06-18 A | P2.6.HE.5959.1010 | 100% | 2025-07-03 | 2025-07-07 |  |  | 16 | AHJ | ND | P2-5 | ND | AHJ |  |  |  |
| P2.6.HE.5959.1030 |  | Hang-Tape-Finish / L6 / South / 5959 |  | 5d | 2025-06-19 A | 2025-06-30 A | P2.6.HE.5959.1020, P2.FAC.2.Z1.180, P2.L11.5-9.140 | 100% | 2025-09-11 | 2025-09-17 |  |  | 40 | GYP | ND | P2-5 | ND | GYP-1 |  |  |  |
| P2.6.HE.5959.1040 |  | Paint Prime & 1st Coat / L6 / South / 5959 |  | 2d | 2025-07-28 A | 2025-07-30 A | P2.6.HE.5959.1030 | 100% | 2025-08-15 | 2025-08-18 |  |  | 16 | PAINT | ND | P2-5 | ND | PAINT-1 |  |  |  |
| P2.6.HE.5959.1050 |  | Cans/Troughs/Backboxes/XFMRs / L6 / South / 5959 |  | 5d | 2025-08-25 A | 2025-08-27 A | P2.6.HE.5959.1040 | 100% | 2025-09-04 | 2025-09-10 |  |  | 40 | ELEC | ND | P2-5 | ND | ELEC-2 |  |  |  |
| P2.6.HE.5959.1060 |  | Risers and OH Conduit Connections / L6 / South / 5959 |  | 5d | 2025-08-27 A | 2025-09-11 A | P2.6.HE.5959.1050 | 100% | 2025-09-11 | 2025-09-17 |  |  | 40 | ELEC | ND | P2-5 | ND | ELEC-2 | O |  |  |
| P2.6.HE.5959.1070 |  | Pull Wire - In From Distribution Panels / Out to Branch Circuits / L6 / South / 5959 |  | 5d | 2025-11-03 A | 2025-11-07 A | P2.6.HE.5959.1060, P2.L6.INT.S.1190 | 100% | 2025-12-01 | 2025-12-05 |  |  | 40 | ELEC | ND | P2-5 | ND | ELEC-2 |  |  |  |
| P2.6.HE.5959.1080 |  | Panelboards, Interconnect Wiring, and Remaining Room Buildout of All Systems / L6 / South / 5959 |  | 10d | 2025-12-01 A | 2025-12-12 A | BP1.262.3.100, BP1.262.3.210, P2.6.HE.5959.1060 | 100% | 2026-01-02 | 2026-01-15 |  |  | 80 | ELEC | ND | P2-5 | ND | ELEC-2 | O |  |  |
| P2.6.HE.5959.1100 |  | Paint - Finish Coat / L6 / South / 5959 |  | 2d | 2025-12-15 A | 2025-12-17 A | P2.6.HE.5959.1040 | 100% | 2026-03-06 | 2026-03-09 |  |  | 16 | PAINT | ND | P2-5 | ND | PAINT-1 | O |  |  |
| P2.6.HE.5959.1130 |  | Doors & Hardware / L6 / South / 5959 |  | 2d | 2025-12-18 A | 2025-12-24 A | P2.6.HE.5959.1120 | 100% | 2026-03-16 | 2026-03-17 |  |  | 16 | DFH | ND | P2-5 | ND | DFH | O | AT29 |  |
| P2.6.HE.5959.1120 |  | Flooring / L6 / South / 5959 |  | 2d | 2026-03-09 A | 2026-03-12 A | P2.6.HE.5959.1100 | 100% | 2026-05-06 | 2026-05-07 |  |  | 16 | FLOOR | ND | P2-5 | ND | FLOOR | O |  |  |
| P2.6.HE.5959.1090 |  | Test & Terminate / L6 / South / 5959 |  | 5d | 2026-04-01 | 2026-04-07 | P2.6.HE.5959.1070, P2.6.HE.5959.1080 |  |  |  | 46d | 0d | 40 | ELEC | ND | P2-5 | ND | ELEC-2 | O |  |  |
| P2.6.HE.5959.1110 |  | Trim All MEPF Finishes / L6 / South / 5959 |  | 2d | 2026-04-01 | 2026-04-02 | P2.6.HE.5959.1100 |  |  |  | 49d | 3d | 16 | MEP | ND | P2-5 | ND | MEP-2 | O |  | Harris |
| P2.6.HE.5959.1140 |  | Panels Ready to Energize - Lock Doors and Limit Access / L6 / South / 5959 | milestone | 0d | 2026-04-07 | 2026-04-07 | P2.6.HE.5959.1090, P2.6.HE.5959.1130 FF, P2.6.HE.5959.1110 FF |  |  |  | 46d | 4d | 0 | ELEC | ND | P2-5 | ND | ELEC-2 |  |  |  |

| ID | WBS | Activity | Type | Duration | Start | Finish | Predecessors | Complete | Planned start | Planned finish | Total float | Free float | Temp Orig Dur | Resp / SRLM | 744 | PHASE | Z.RESP | RESP UPD | RESP / Trade | Update Status | Testing Type |
| --- | --- | --- | --- | --- | --- | --- | --- | --- | --- | --- | --- | --- | --- | --- | --- | --- | --- | --- | --- | --- | --- |
|  | 2 | **L6 / IT Closets** |  |  | 2025-08-11 | 2026-06-19 |  |  |  |  |  |  |  |  |  |  |  |  |  |  |  |
|  | 1 | **IT Closet 6-2818** |  |  | 2025-08-11 | 2026-06-19 |  |  |  |  |  |  |  |  |  |  |  |  |  |  |  |
| P2.6.IT.2818.130 |  | HVAC Equipment / L6 / North / 2818 |  | 5d | 2025-08-11 A | 2025-09-18 A | P2.6.IT.2818.110 | 100% | 2025-11-12 | 2025-11-18 |  |  | 40 | HVAC | ND | P2-5 | Harris | ND | HVAC |  |  |
| P2.6.IT.2818.100 |  | Hang Plywood Backboards / L6 / North / 2818 |  | 2d | 2025-09-16 A | 2025-09-17 A | P2.L6.N.1140 | 100% | 2025-10-01 | 2025-10-02 |  |  | 16 | CRAFT | ND | P2-5 |  | ND | CRAFT | O |  |
| P2.6.IT.2818.110 |  | Paint Prime & 1st Coat / L6 / North / 2818 |  | 2d | 2025-09-29 A | 2025-09-30 A | P2.6.IT.2818.100 | 100% | 2025-10-03 | 2025-10-06 |  |  | 16 | PAINT | ND | P2-5 |  | ND | PAINT-1 | O |  |
| P2.6.IT.2818.150 |  | Flooring / L6 / North / 2818 |  | 5d | 2025-11-17 A | 2025-11-21 A | P2.6.IT.2818.140 | 100% | 2026-02-24 | 2026-03-02 |  |  | 40 | FLOOR | ND | P2-5 |  | ND | FLOOR | O |  |
| P2.6.IT.2818.120 |  | Electrical Panels / Conduit Connections / Wire Terminations / L6 / North / 2818 |  | 5d | 2025-12-08 A | 2025-12-11 A | P2.6.IT.2818.110, P2.6.HE.2803.1070 FF | 100% | 2026-02-13 | 2026-02-19 |  |  | 40 | ELEC | ND | P2-5 |  | ND | ELEC-2 | O |  |
| P2.6.IT.2818.230 |  | Doors & Hardware / L6 / North / 2818 |  | 2d | 2025-12-18 A | 2025-12-24 A | P2.6.IT.2818.150 | 100% | 2026-04-28 | 2026-04-29 |  |  | 16 | DFH |  | P2-5 |  |  | DFH |  | AT29 |
| P2.6.IT.2818.180 |  | Grounding and Bonding / L6 / North / 2818 |  | 2d | 2026-03-02 A | 2026-03-04 A | P2.6.IT.2818.150 | 100% | 2026-03-04 | 2026-03-05 |  |  | 16 | ELEC | ND | P2-5 |  | ND | ELEC-2 | O |  |
| P2.6.IT.2818.140 |  | Trim all MEPF / L6 / North / 2818 |  | 2d | 2026-03-16 A | 2026-03-27 A | P2.6.IT.2818.130, P2.6.IT.2818.120 | 100% | 2026-03-02 | 2026-03-03 |  |  | 16 | MEP | ND | P2-5 | Harris | ND | MEP-2 | O |  |
| P2.6.IT.2818.170 |  | OH Cable Tray / L6 / North / 2818 |  | 5d | 2026-04-08 | 2026-04-14 | P2.L6.N.1390, P2.L6.S.1390, P2.L6.INT.S.1340, P2.L6.INT.N.1340 |  |  |  | 77d | 0d | 40 | ELEC | ND | P2-5 |  | ND | ELEC-2 |  |  |
| P2.6.IT.2818.240 |  | Energize Elec Panels Serving Comms Racks / L6 / North / 2818 |  | 3d | 2026-04-14 | 2026-04-16 | P2.6.HE.2803.1140, P2.6.IT.2818.230, CX.B2.SWGR.1010, CX.B2.MVEE.1010 |  |  |  | 122d | 45d | 24 | ELEC |  | P2-5 |  | ND | ELEC-2 |  |  |
| P2.6.IT.2818.260 |  | Room Ready - CIT / L6 / North / 2818 |  | 5d | 2026-04-15 | 2026-04-21 | P2.6.IT.2818.150, P2.6.IT.2818.170, P2.6.IT.2818.180 |  |  |  | 77d | 0d | 40 | CIT |  | P2-5 |  | ND | CIT |  |  |
| P2.6.IT.2818.160 |  | Equipment Racks and Ladders / L6 / North / 2818 |  | 5d | 2026-04-22 | 2026-04-28 | P2.6.IT.2818.150, P2.6.IT.2818.260 |  |  |  | 77d | 0d | 40 | CIT |  | P2-5 |  | ND | CIT |  |  |
| P2.6.IT.2818.190 |  | Pull Wire - Backbone Cabling Into Racks / L6 / North / 2818 |  | 5d | 2026-04-29 | 2026-05-05 | P2.6.IT.2818.160, P2.6.IT.2818.260 |  |  |  | 92d | 15d | 40 | CIT |  | P2-5 |  | ND | CIT |  |  |
| P2.6.IT.2818.200 |  | Pull Wire - Horizontal Cabling Out to Termination Points / L6 / North / 2818 |  | 20d | 2026-04-29 | 2026-05-27 | P2.6.IT.2818.160, P2.6.IT.2818.260 |  |  |  | 77d | 0d | 40 | CIT |  | P2-5 |  | ND | CIT |  |  |
| P2.6.IT.2818.210 |  | Paint - Finish Coat / L6 / North / 2818 |  | 2d | 2026-05-28 | 2026-05-29 | P2.6.IT.2818.190, P2.6.IT.2818.200 |  |  |  | 77d | 0d | 16 | PAINT |  | P2-5 |  | ND | PAINT-1 |  |  |
| P2.6.IT.2818.220 |  | Terminations and Punch Downs - All Cabling / L6 / North / 2818 |  | 15d | 2026-06-01 | 2026-06-19 | P2.6.IT.2818.210, P2.6.IT.2818.160, P2.6.IT.2818.260 |  |  |  | 77d | 0d | 40 | CIT |  | P2-5 |  | ND | CIT |  |  |
| P2.6.IT.2818.250 |  | Comms Racks In Service / L6 / North / 2818 | milestone | 0d | 2026-06-19 | 2026-06-19 | P2.6.IT.2818.240, P2.6.IT.2818.220 |  |  |  | 77d | 33d | 0 | CIT |  | P2-5 |  | ND | CIT |  |  |
|  | 2 | **IT Closet 6-2865** |  |  | 2025-08-11 | 2026-05-29 |  |  |  |  |  |  |  |  |  |  |  |  |  |  |  |
| P2.6.IT.2865.130 |  | HVAC Equipment / L6 / South / 2865 |  | 5d | 2025-08-11 A | 2025-09-18 A | P2.6.IT.2865.110 | 100% | 2025-11-12 | 2025-11-18 |  |  | 40 | HVAC | ND | P2-5 | Harris | ND | HVAC |  |  |
| P2.6.IT.2865.100 |  | Hang Plywood Backboards / L6 / South / 2865 |  | 2d | 2025-09-24 A | 2025-09-29 A | P2.L6.S.1140 | 100% | 2025-10-01 | 2025-10-02 |  |  | 16 | CRAFT | ND | P2-5 |  | ND | CRAFT | O |  |
| P2.6.IT.2865.110 |  | Paint Prime & 1st Coat / L6 / South / 2865 |  | 2d | 2025-09-29 A | 2025-09-30 A | P2.6.IT.2865.100 | 100% | 2025-10-03 | 2025-10-06 |  |  | 16 | PAINT | ND | P2-5 |  | ND | PAINT-1 | O |  |
| P2.6.IT.2865.120 |  | Electrical Panels / Conduit Connections / Wire Terminations / L6 / South / 2865 |  | 5d | 2025-10-24 A | 2025-10-31 A | P2.6.IT.2865.110, P2.6.HE.2947.1070 FF | 100% | 2025-10-01 | 2025-10-07 |  |  | 40 | ELEC | ND | P2-5 |  | ND | ELEC-2 |  |  |
| P2.6.IT.2865.150 |  | Flooring / L6 / South / 2865 |  | 5d | 2025-11-17 A | 2025-11-21 A | P2.6.IT.2865.140 | 100% | 2026-02-24 | 2026-03-02 |  |  | 40 | FLOOR | ND | P2-5 |  | ND | FLOOR | O |  |
| P2.6.IT.2865.230 |  | Doors & Hardware / L6 / South / 2865 |  | 2d | 2025-12-18 A | 2025-12-24 A | P2.6.IT.2865.150 | 100% | 2026-04-07 | 2026-04-08 |  |  | 16 | DFH |  | P2-5 |  | ND | DFH |  | AT29 |
| P2.6.IT.2865.180 |  | Grounding and Bonding / L6 / South / 2865 |  | 2d | 2026-03-02 A | 2026-03-04 A | P2.6.IT.2865.150 | 100% | 2026-03-04 | 2026-03-05 |  |  | 16 | ELEC | ND | P2-5 |  | ND | ELEC-2 | O |  |
| P2.6.IT.2865.140 |  | Trim all MEPF / L6 / South / 2865 |  | 2d | 2026-03-16 A | 2026-03-27 A | P2.6.IT.2865.120, P2.6.IT.2865.130 | 100% | 2026-03-02 | 2026-03-03 |  |  | 16 | MEP | ND | P2-5 | Harris | ND | MEP-2 | O |  |
| P2.6.IT.2865.170 |  | OH Cable Tray / L6 / South / 2865 |  | 5d | 2026-04-08 | 2026-04-14 | P2.L6.S.1390, P2.L6.N.1390, P2.L6.INT.S.1340, P2.L6.INT.N.1340 |  |  |  | 92d | 0d | 40 | ELEC | ND | P2-5 |  | ND | ELEC-2 |  |  |
| P2.6.IT.2865.240 |  | Energize Elec Panels Serving Comms Racks / L6 / South / 2865 |  | 3d | 2026-04-14 | 2026-04-16 | P2.6.HE.2803.1140, P2.6.HE.2947.1140, P2.6.IT.2865.230, CX.B2.SWGR.1010, CX.B2.MVEE.1010 |  |  |  | 122d | 30d | 24 | ELEC |  | P2-5 |  | ND | ELEC-2 |  |  |
| P2.6.IT.2865.260 |  | Room Ready - CIT / L6 / South / 2865 |  | 5d | 2026-04-15 | 2026-04-21 | P2.6.IT.2865.150, P2.6.IT.2865.170, P2.6.IT.2865.180 |  |  |  | 92d | 0d | 40 | CIT |  | P2-5 |  | ND | CIT |  |  |
| P2.6.IT.2865.160 |  | Equipment Racks and Ladders / L6 / South / 2865 |  | 5d | 2026-04-22 | 2026-04-28 | P2.6.IT.2865.150, P2.6.IT.2865.260 |  |  |  | 92d | 0d | 40 | CIT |  | P2-5 |  | ND | CIT |  |  |
| P2.6.IT.2865.190 |  | Pull Wire - Backbone Cabling Into Racks / L6 / South / 2865 |  | 5d | 2026-04-29 | 2026-05-05 | P2.6.IT.2865.160, P2.6.IT.2865.260 |  |  |  | 92d | 0d | 40 | CIT |  | P2-5 |  | ND | CIT |  |  |
| P2.6.IT.2865.200 |  | Pull Wire - Horizontal Cabling Out to Termination Points / L6 / South / 2865 |  | 5d | 2026-04-29 | 2026-05-05 | P2.6.IT.2865.160, P2.6.IT.2865.260 |  |  |  | 92d | 0d | 40 | CIT |  | P2-5 |  | ND | CIT |  |  |
| P2.6.IT.2865.210 |  | Paint - Finish Coat / L6 / South / 2865 |  | 2d | 2026-05-06 | 2026-05-07 | P2.6.IT.2865.190, P2.6.IT.2865.200 |  |  |  | 92d | 0d | 16 | PAINT |  | P2-5 |  | ND | PAINT-1 |  |  |
| P2.6.IT.2865.220 |  | Terminations and Punch Downs - All Cabling / L6 / South / 2865 |  | 15d | 2026-05-08 | 2026-05-29 | P2.6.IT.2865.210, P2.6.IT.2865.160, P2.6.IT.2865.260 |  |  |  | 92d | 0d | 40 | CIT |  | P2-5 |  | ND | CIT |  |  |
| P2.6.IT.2865.250 |  | Comms Racks In Service / L6 / South / 2865 | milestone | 0d | 2026-05-29 | 2026-05-29 | P2.6.IT.2865.240, P2.6.IT.2865.220 |  |  |  | 92d | 48d | 0 | CIT |  | P2-5 |  | ND | CIT |  |  |

| ID | WBS | Activity | Type | Duration | Start | Finish | Predecessors | Complete | Planned start | Planned finish | Total float | Free float | Temp Orig Dur | Resp / SRLM | 744 | PHASE | Z.RESP | RESP UPD | RESP / Trade | Update Status | Testing Type | Pick | *NIH Resp Check* |
| --- | --- | --- | --- | --- | --- | --- | --- | --- | --- | --- | --- | --- | --- | --- | --- | --- | --- | --- | --- | --- | --- | --- | --- |
|  | 3 | **IT Closet 6-3929** |  |  | 2025-08-11 | 2026-05-29 |  |  |  |  |  |  |  |  |  |  |  |  |  |  |  |  |  |
| P2.6.IT.3929.130 |  | HVAC Equipment / L6 / South / 3929 |  | 5d | 2025-08-11 A | 2025-09-18 A | P2.6.IT.3929.110 | 100% | 2025-11-12 | 2025-11-18 |  |  | 40 | HVAC | ND | P2-5 | Harris | ND | HVAC |  |  |  |  |
| P2.6.IT.3929.100 |  | Hang Plywood Backboards / L6 / South / 3929 |  | 2d | 2025-09-16 A | 2025-09-17 A | P2.L6.S.1140 | 100% | 2025-10-01 | 2025-10-02 |  |  | 16 | CRAFT | ND | P2-5 |  | ND | CRAFT | O |  |  |  |
| P2.6.IT.3929.110 |  | Paint Prime & 1st Coat / L6 / South / 3929 |  | 2d | 2025-09-29 A | 2025-09-30 A | P2.6.IT.3929.100 | 100% | 2025-10-03 | 2025-10-06 |  |  | 16 | PAINT | ND | P2-5 |  | ND | PAINT-1 | O |  |  |  |
| P2.6.IT.3929.120 |  | Electrical Panels / Conduit Connections / Wire Terminations / L6 / South / 3929 |  | 5d | 2025-10-24 A | 2025-10-31 A | P2.6.IT.3929.110, P2.6.HE.5959.1070 FF | 100% | 2025-10-03 | 2025-10-09 |  |  | 40 | ELEC | ND | P2-5 |  | ND | ELEC-2 |  |  |  |  |
| P2.6.IT.3929.150 |  | Flooring / L6 / South / 3929 |  | 5d | 2025-11-17 A | 2025-11-21 A | P2.6.IT.3929.140 | 100% | 2026-03-03 | 2026-03-09 |  |  | 40 | FLOOR | ND | P2-5 |  | ND | FLOOR | O |  |  |  |
| P2.6.IT.3929.230 |  | Doors & Hardware / L6 / South / 3929 |  | 2d | 2025-12-18 A | 2025-12-24 A | P2.6.IT.3929.150 | 100% | 2026-04-07 | 2026-04-08 |  |  | 16 | DFH |  | P2-5 |  | ND | DFH |  | AT29 |  |  |
| P2.6.IT.3929.140 |  | Trim all MEPF / L6 / South / 3929 |  | 2d | 2026-03-02 A | 2026-03-04 A | P2.6.IT.3929.130, P2.6.IT.3929.120 | 100% | 2026-04-27 | 2026-04-28 |  |  | 16 | MEP | ND | P2-5 | Harris | ND | MEP-2 | O |  |  |  |
| P2.6.IT.3929.180 |  | Grounding and Bonding / L6 / South / 3929 |  | 2d | 2026-04-01 | 2026-04-02 | P2.6.IT.3929.150 |  |  |  | 100d | 8d | 16 | ELEC | ND | P2-5 |  | ND | ELEC-2 | O |  |  |  |
| P2.6.IT.3929.170 |  | OH Cable Tray / L6 / South / 3929 |  | 5d | 2026-04-08 | 2026-04-14 | P2.L6.S.1390, P2.L6.N.1390, P2.L6.INT.S.1340, P2.L6.INT.N.1340 |  |  |  | 92d | 0d | 40 | ELEC | ND | P2-5 |  | ND | ELEC-2 |  |  |  |  |
| P2.6.IT.3929.240 |  | Energize Elec Panels Serving Comms Racks / L6 / South / 3929 |  | 3d | 2026-04-14 | 2026-04-16 | P2.6.HE.5959.1140, P2.6.IT.3929.230, CX.B2.SWGR.1010, CX.B2.MVEE.1010 |  |  |  | 122d | 30d | 24 | ELEC |  | P2-5 |  | ND | ELEC-2 |  |  |  |  |
| P2.6.IT.3929.260 |  | Room Ready - CIT / L6 / South / 3929 |  | 5d | 2026-04-15 | 2026-04-21 | P2.6.IT.3929.150, P2.6.IT.3929.170, P2.6.IT.3929.180 |  |  |  | 92d | 0d | 40 | CIT |  | P2-5 |  | ND | CIT |  |  |  |  |
| P2.6.IT.3929.160 |  | Equipment Racks and Ladders / L6 / South / 3929 |  | 5d | 2026-04-22 | 2026-04-28 | P2.6.IT.3929.150, P2.6.IT.3929.260 |  |  |  | 92d | 0d | 40 | CIT |  | P2-5 |  | ND | CIT |  |  |  |  |
| P2.6.IT.3929.190 |  | Pull Wire - Backbone Cabling Into Racks / L6 / South / 3929 |  | 5d | 2026-04-29 | 2026-05-05 | P2.6.IT.3929.160, P2.6.IT.3929.260 |  |  |  | 92d | 0d | 40 | CIT |  | P2-5 |  | ND | CIT |  |  |  |  |
| P2.6.IT.3929.200 |  | Pull Wire - Horizontal Cabling Out to Termination Points / L6 / South / 3929 |  | 5d | 2026-04-29 | 2026-05-05 | P2.6.IT.3929.160, P2.6.IT.3929.260 |  |  |  | 92d | 0d | 40 | CIT |  | P2-5 |  | ND | CIT |  |  |  |  |
| P2.6.IT.3929.210 |  | Paint - Finish Coat / L6 / South / 3929 |  | 2d | 2026-05-06 | 2026-05-07 | P2.6.IT.3929.190, P2.6.IT.3929.200 |  |  |  | 92d | 0d | 16 | PAINT |  | P2-5 |  | ND | PAINT-1 |  |  |  |  |
| P2.6.IT.3929.220 |  | Terminations and Punch Downs - All Cabling / L6 / South / 3929 |  | 15d | 2026-05-08 | 2026-05-29 | P2.6.IT.3929.210, P2.6.IT.3929.160, P2.6.IT.3929.260 |  |  |  | 92d | 0d | 40 | CIT |  | P2-5 |  | ND | CIT |  |  |  |  |
| P2.6.IT.3929.250 |  | Comms Racks In Service / L6 / South / 3929 | milestone | 0d | 2026-05-29 | 2026-05-29 | P2.6.IT.3929.240, P2.6.IT.3929.220 |  |  |  | 92d | 48d | 0 | CIT |  | P2-5 |  | ND | CIT |  |  |  |  |
|  | 4 | **FINISHES - CORE & SUPPORT SPACES / Level 6** |  |  | 2025-06-16 | 2026-12-17 |  |  |  |  |  |  |  |  |  |  |  |  |  |  |  |  |  |
|  | 7KSF11 | **Chem Chief - MD Chief - Pre/Post Amp - Research - Z1/Z2 / Level 6** |  |  | 2026-04-08 | 2026-12-17 |  |  |  |  |  |  |  |  |  |  |  |  |  |  |  |  |  |
|  | 1 | **Finishes** |  |  | 2026-04-08 | 2026-12-17 |  |  |  |  |  |  |  |  |  |  |  |  |  |  |  |  |  |
| P2.L6.F.CS.1000 |  | Paint Prime & 1st Coat Walls / L6 / Chem, MD Chief Z1,Z2 |  | 5d | 2026-04-08 | 2026-04-14 | P2.L6.S.1470 |  |  |  | 28d | 0d | 40 | PAINT |  | P2-5 |  | JPC | PAINT-1 |  |  | From R/I Work Completion |  |
| P2.L6.F.CS.1020 |  | R/I - Ceiling Assemblies & Supports - All Trades (A/V, Oper Part, Glass Part, etc.) / L6 / Chem, MD Chief Z1,Z2 |  | 5d | 2026-04-15 | 2026-04-21 | P2.L6.F.CS.1000 |  |  |  | 59d | 15d | 40 | ACT |  | P2-5 |  | JPC | ACT |  |  |  | ! |
| P2.L6.F.CS.1010 |  | T-Grid / L6 / Chem, MD Chief Z1,Z2 |  | 5d | 2026-05-13 | 2026-05-19 | P2.L6.F.CS.1020, P2.L5.CL.1020, P2.L6.S.1500 |  |  |  | 44d | 0d | 40 | ACT |  | P2-5 |  | JPC | ACT |  |  |  |  |
| P2.L6.F.CS.1050 |  | Sprinkler Heads in T-Grid / L6 / Chem, MD Chief Z1,Z2 |  | 5d | 2026-05-20 | 2026-05-27 | P2.L6.F.CS.1010 |  |  |  | 44d | 0d | 40 | FP |  | P2-5 |  | JPC | FP-1 |  |  |  |  |
| P2.L6.F.CS.1030 |  | Diffusers in T-Grid / L6 / Chem, MD Chief Z1,Z2 |  | 5d | 2026-05-28 | 2026-06-03 | P2.L6.F.CS.1010, P2.L6.F.CS.1050 |  |  |  | 44d | 0d | 40 | HVAC |  | P2-5 | Harris | JPC | HVAC |  |  |  |  |
| P2.L6.F.CS.1040 |  | Lights & Elec Devices in T-Grid / L6 / Chem, MD Chief Z1,Z2 |  | 10d | 2026-06-04 | 2026-06-17 | P2.L6.F.CS.1010, P2.L6.F.CS.1030 |  |  |  | 44d | 0d | 40 | ELEC |  | P2-5 |  | JPC | ELEC-2 |  |  |  |  |
| P2.L6.F.CS.1070 |  | Fire Alarm in T-Grid / L6 / Chem, MD Chief Z1,Z2 |  | 5d | 2026-06-18 | 2026-06-24 | P2.L6.F.CS.1010, P2.L6.F.CS.1040 |  |  |  | 44d | 0d | 40 | FA |  | P2-5 |  | JPC | FA-1 |  |  |  |  |
| P2.L6.F.CS.1060 |  | Low Voltage in T-Grid / L6 / Chem, MD Chief Z1,Z2 |  | 5d | 2026-06-25 | 2026-07-01 | P2.L6.F.CS.1070, P2.L6.F.CS.1010 |  |  |  | 44d | 0d | 40 | LOWVOLT |  | P2-5 |  | JPC | LOWVOLT-1 |  |  |  |  |
| P2.L6.F.CS.1080 |  | OH Ceiling Signoff / L6 / Chem, MD Chief Z1,Z2 |  | 5d | 2026-07-02 | 2026-07-09 | P2.L6.F.CS.1060, P2.L6.F.CS.1070, P2.L6.F.CS.1030, P2.L6.F.CS.1040, P2.L6.F.CS.1050 |  |  |  | 44d | 0d | 40 | MEP |  | P2-5 | Harris | JPC | MEP |  |  |  |  |
| P2.L6.F.CS.2320 |  | Ceiling Service Panel / L6 / Chem, MD Chief Z1,Z2 |  | 5d | 2026-07-02 | 2026-07-09 | P2.L6.F.CS.1060, P2.L6.F.CS.1010 |  |  |  | 44d | 0d | 120 | LABCASE |  | P2-5 |  | JPC | LABCASE |  |  |  |  |
| P2.L6.F.CS.1110 |  | Drop Ceiling Tile / L6 / Chem, MD Chief Z1,Z2 |  | 5d | 2026-07-10 | 2026-07-16 | P2.L6.F.CS.2320, P2.L6.F.CS.1080 |  |  |  | 44d | 0d | 40 | ACT |  | P2-5 |  | JPC | ACT |  |  |  |  |
| P2.L6.F.CS.2300 |  | Casework (Before Flooring) / L6 / Chem, MD Chief Z1,Z2 |  | 11d | 2026-07-17 | 2026-07-31 | P2.L6.F.CS.1080, BP6.123.3.100, P2.L6.F.CS.1000, P2.L6.F.CS.1110 |  |  |  | 44d | 0d | 120 | LABCASE |  | P2-5 |  | JPC | LABCASE |  |  |  |  |
| P2.L6.F.CS.1300 |  | Fumehood Equipment Install / L6 / Chem, MD Chief Z1,Z2 |  | 1d | 2026-07-31 | 2026-07-31 | P2.L6.F.CS.2300 FF |  |  |  | 137d | 0d | 120 | LABCASE |  | P2-5 |  | JPC | LABCASE |  |  |  |  |
| P2.L6.F.CS.1090 |  | Millwork / L6 / Chem, MD Chief Z1,Z2 |  | 5d | 2026-08-03 | 2026-08-07 | P2.L6.F.CS.2300, P2.L6.F.CS.1080 |  |  |  | 44d | 0d | 40 | MILL |  | P2-5 |  | JPC | MILL |  |  |  |  |
| P2.L6.F.CS.1100 |  | Plumbing Fixtures / L6 / Chem, MD Chief Z1,Z2 |  | 5d | 2026-08-03 | 2026-08-07 | P2.L6.F.CS.1090 FF, P2.L6.F.CS.1080, PCO.830.1140 |  |  |  | 100d | 56d | 40 | PLMB |  | P2-5 | Harris | JPC | PLMB |  |  |  |  |
| P2.L6.F.CS.1310 |  | Fumehood Equipment MEP Connection / L6 / Chem, MD Chief Z1,Z2 |  | 1d | 2026-08-03 | 2026-08-03 | P2.L6.F.CS.1300 |  |  |  | 137d | 66d | 120 | LABCASE |  | P2-5 |  | JPC | LABCASE |  |  |  |  |
| P2.L6.F.CS.1120 |  | Floor Prep / L6 / Chem, MD Chief Z1,Z2 |  | 5d | 2026-08-10 | 2026-08-14 | P2.L6.F.CS.2300, P2.L6.F.CS.1110, P2.L6.F.CS.1090 |  |  |  | 44d | 0d | 40 | FLOOR |  | P2-5 |  | JPC | FLOOR |  |  |  |  |
| P2.L6.F.CS.1130 |  | Floor Finishes / L6 / Chem, MD Chief Z1,Z2 |  | 5d | 2026-08-17 | 2026-08-21 | P2.L6.F.CS.1120 |  |  |  | 44d | 0d | 40 | FLOOR |  | P2-5 |  | JPC | FLOOR |  |  |  |  |
| P2.L6.F.CS.2330 |  | Remaining Equipment Post Flooring / L6 / Chem, MD Chief Z1,Z2 |  | 1d | 2026-08-24 | 2026-08-24 | P2.L6.F.CS.1130 |  |  |  | 44d | 0d | 120 | LABCASE |  | P2-5 |  | JPC | LABCASE |  |  |  |  |
| P2.L6.F.CS.2340 |  | Interior Glazing / L6 / Chem, MD Chief Z1,Z2 |  | 5d | 2026-08-24 | 2026-08-28 | P2.L6.F.CS.1130, BP7.088.3.100 |  |  |  | 45d | 1d | 40 | GLASS |  | P2-5 |  | JPC | GLASS |  |  |  | TBD |
| P2.L6.F.CS.1140 |  | Doors & Hardware / L6 / Chem, MD Chief Z1,Z2 |  | 5d | 2026-08-25 | 2026-08-31 | P2.L6.F.CS.2330, P2.L6.F.CS.1130 |  |  |  | 44d | 0d | 40 | DFH |  | P2-5 |  | JPC | DFH |  | AT29 |  |  |
| P2.L6.F.CS.1150 |  | Paint - Finish Coat / L6 / Chem, MD Chief Z1,Z2 |  | 5d | 2026-09-01 | 2026-09-08 | P2.L6.F.CS.1140, P2.L6.F.CS.1130, P2.L6.F.CS.2340, P2.L6.F.CS.2300 |  |  |  | 44d | 0d | 40 | PAINT |  | P2-5 |  | JPC | PAINT-1 |  |  |  |  |
| P2.L6.F.CS.1200 |  | Floor Base / L6 / Chem, MD Chief Z1,Z2 |  | 5d | 2026-09-09 | 2026-09-15 | P2.L6.F.CS.1150 |  |  |  | 44d | 0d | 40 | FLOOR |  | P2-5 |  | JPC | FLOOR |  |  |  |  |
| P2.L6.F.CS.1180 |  | Building Specialities / L6 / Chem, MD Chief Z1,Z2 |  | 5d | 2026-09-16 | 2026-09-22 | P2.L6.F.CS.1150, P2.L6.F.CS.1200 |  |  |  | 44d | 0d | 40 | SPECIAL |  | P2-5 |  | JPC | SPECIAL |  |  |  |  |
| P2.L6.F.CS.1210 |  | Demountable Partitions / L6 / Chem, MD Chief Z1,Z2 |  | 5d | 2026-09-16 | 2026-09-22 | P2.L6.F.CS.1200 |  |  |  | 54d | 10d | 40 | DPART |  | P2-5 |  | JPC | DPART |  |  |  | TBD |
| P2.L6.F.CS.1330 |  | Wall Protection / L6 / Corr & Lobbies |  | 5d | 2026-09-16 | 2026-09-22 | P2.L6.F.CS.1200, BP7.102.3.300 |  |  |  | 69d | 25d | 40 | WALLPRO |  | P2-5 |  | JPC | WALLPRO |  |  |  |  |
| P2.L6.F.CS.1170 |  | Trim T-Stats / L6 / Chem, MD Chief Z1,Z2 |  | 5d | 2026-09-23 | 2026-09-29 | P2.L6.F.CS.1150, P2.L6.F.CS.1180 |  |  |  | 44d | 0d | 40 | BAS |  | P2-5 | Harris | JPC | BAS-1 |  |  |  |  |
| P2.L6.F.CS.1160 |  | Set AV/IT Devices and Configure / L6 / Chem, MD Chief Z1,Z2 |  | 5d | 2026-09-30 | 2026-10-06 | P2.L6.F.CS.1150, P2.L6.F.CS.1170 |  |  |  | 44d | 0d | 40 | LOWVOLT |  | P2-5 |  | JPC | LOWVOLT-1 |  |  |  |  |
| P2.L6.F.CS.1220 |  | Trim Electrical / L6 / Chem, MD Chief Z1,Z2 |  | 5d | 2026-10-07 | 2026-10-13 | P2.L6.F.CS.1160, P2.L6.F.CS.1210, P2.L6.F.CS.1170 SS |  |  |  | 44d | 0d | 40 | ELEC |  | P2-5 |  | JPC | ELEC-2 |  |  |  |  |
| P2.L6.F.CS.1230 |  | Trim Telephone/ Data / L6 / Chem, MD Chief Z1,Z2 |  | 5d | 2026-10-14 | 2026-10-20 | P2.L6.F.CS.1220, P2.L6.F.CS.1220 SS |  |  |  | 44d | 0d | 40 | LOWVOLT |  | P2-5 |  | JPC | LOWVOLT-1 |  |  |  |  |
| P2.L6.F.CS.1190 |  | Interior Building Signage / L6 / Chem, MD Chief Z1,Z2 |  | 5d | 2026-10-21 | 2026-10-27 | P2.L6.F.CS.1150, P2.L6.F.CS.1230 |  |  |  | 44d | 0d | 40 | SIGN |  | P2-5 |  | JPC | SIGN |  |  |  |  |
| P2.L6.F.CS.1240 |  | Work Completion List - Finishes / L6 / Chem, MD Chief Z1,Z2 |  | 5d | 2026-10-28 | 2026-11-03 | P2.L6.F.CS.1160, P2.L6.F.CS.2330, P2.L6.F.CS.1190, P2.L6.F.CS.1140, P2.L6.F.CS.1180, P2.L6.F.CS.1100, P2.L6.F.CS.1230, P2.L6.F.CS.1330 |  |  |  | 44d | 0d | 40 | FINISH |  | P2-5 |  | JPC | FINISH |  |  |  |  |
| P2.L6.F.CS.1250 |  | Rough Clean / L6 / Chem, MD Chief Z1,Z2 |  | 5d | 2026-11-04 | 2026-11-10 | P2.L6.F.CS.1240 |  |  |  | 44d | 0d | 40 | FCLEAN |  | P2-5 |  | JPC | FCLEAN |  |  |  |  |
| P2.L6.F.CS.1260 |  | FF&E / L6 / Chem, MD Chief Z1,Z2 |  | 5d | 2026-11-11 | 2026-11-17 | P2.L6.F.CS.1250 |  |  |  | 44d | 0d | 40 | FURN |  | P2-5 |  | JPC | FURN |  |  |  |  |
| P2.L6.F.CS.1270 |  | Prepare Punchlist / L6 / Chem, MD Chief Z1,Z2 |  | 5d | 2026-11-18 | 2026-11-24 | P2.L6.F.CS.1260 |  |  |  | 44d | 0d | 40 | QC |  | P2-5 |  | JPC | QC |  |  |  |  |
| P2.L6.F.CS.1280 |  | Correct Punchlist / L6 / Chem, MD Chief Z1,Z2 |  | 10d | 2026-11-25 | 2026-12-10 | P2.L6.F.CS.1270 |  |  |  | 44d | 0d | 80 | FINISH |  | P2-5 |  | JPC | FINISH |  |  |  |  |
| P2.L6.F.CS.1290 |  | Final Clean / L6 / Chem, MD Chief Z1,Z2 |  | 5d | 2026-12-11 | 2026-12-17 | P2.L6.F.CS.1280 |  |  |  | 44d | 56d | 40 | QC |  | P2-5 |  | JPC | QC |  |  | To QC |  |

| ID | WBS | Activity | Duration | Start | Finish | Predecessors | Total float | Free float | Pick | Temp Orig Dur | Resp / SRLM | PHASE | RESP UPD | RESP / Trade | *NIH Resp Check* | Z.RESP | Testing Type |
| --- | --- | --- | --- | --- | --- | --- | --- | --- | --- | --- | --- | --- | --- | --- | --- | --- | --- |
|  | 2 | **Closeout** |  |  |  |  |  |  |  |  |  |  |  |  |  |  |  |
|  | 7KSF1 | **L6 - Z2/Z3 - Chief Neuro / Offices - Z2/Z3 / Level 6** |  | 2026-04-15 | 2026-12-08 |  |  |  |  |  |  |  |  |  |  |  |  |
|  | 1 | **Finishes** |  | 2026-04-15 | 2026-12-08 |  |  |  |  |  |  |  |  |  |  |  |  |
| P2.L6.F.CS.2000 |  | Paint Prime & 1st Coat Walls / L6 / Neuro Chief Ofc Z2,Z3 | 5d | 2026-04-15 | 2026-04-21 | P2.L6.F.CS.1000, P2.L6.N.1470 | 28d | 0d | From R/I Work Completion | 40 | PAINT | P2-5 | JPC | PAINT-1 |  |  |  |
| P2.L6.F.CS.2020 |  | R/I - Ceiling Assemblies & Supports - All Trades (A/V, Oper Part, Glass Part, etc.) / L6 / Neuro Chief Ofc Z2,Z3 | 5d | 2026-04-22 | 2026-04-28 | P2.L6.F.CS.2000 | 66d | 15d |  | 40 | ACT | P2-5 | JPC | ACT | ! |  |  |
| P2.L6.F.CS.2010 |  | T-Grid / L6 / Neuro Chief Ofc Z2,Z3 | 5d | 2026-05-20 | 2026-05-27 | P2.L6.F.CS.2020, P2.L6.N.1290, P2.L6.F.CS.1010 | 51d | 0d |  | 40 | ACT | P2-5 | JPC | ACT |  |  |  |
| P2.L6.F.CS.2030 |  | Diffusers in T-Grid / L6 / Neuro Chief Ofc Z2,Z3 | 5d | 2026-05-28 | 2026-06-03 | P2.L6.F.CS.2010 | 51d | 0d |  | 40 | HVAC | P2-5 | JPC | HVAC |  | Harris |  |
| P2.L6.F.CS.2050 |  | Sprinkler Heads in T-Grid / L6 / Neuro Chief Ofc Z2,Z3 | 5d | 2026-05-28 | 2026-06-03 | P2.L6.F.CS.2010 | 71d | 20d |  | 40 | FP | P2-5 | JPC | FP-1 |  |  |  |
| P2.L6.F.CS.2040 |  | Lights & Elec Devices in T-Grid / L6 / Neuro Chief Ofc Z2,Z3 | 10d | 2026-06-04 | 2026-06-17 | P2.L6.F.CS.2030, P2.L6.F.CS.2010 | 51d | 0d |  | 40 | ELEC | P2-5 | JPC | ELEC-2 |  |  |  |
| P2.L6.F.CS.2070 |  | Fire Alarm in T-Grid / L6 / Neuro Chief Ofc Z2,Z3 | 5d | 2026-06-18 | 2026-06-24 | P2.L6.F.CS.2010, P2.L6.F.CS.2040 | 51d | 0d |  | 40 | FA | P2-5 | JPC | FA-1 |  |  |  |
| P2.L6.F.CS.2060 |  | Low Voltage in T-Grid / L6 / Neuro Chief Ofc Z2,Z3 | 5d | 2026-06-25 | 2026-07-01 | P2.L6.F.CS.2070, P2.L6.F.CS.2010 | 51d | 0d |  | 40 | LOWVOLT | P2-5 | JPC | LOWVOLT-1 |  |  |  |
| P2.L6.F.CS.2080 |  | OH Ceiling Signoff / L6 / Neuro Chief Ofc Z2,Z3 | 5d | 2026-07-02 | 2026-07-09 | P2.L6.F.CS.2060, P2.L6.F.CS.2070, P2.L6.F.CS.2030, P2.L6.F.CS.2040, P2.L6.F.CS.2050 | 51d | 0d |  | 40 | MEP | P2-5 | JPC | MEP |  | Harris |  |
| P2.L6.F.CS.2110 |  | Drop Ceiling Tile / L6 / Neuro Chief Ofc Z2,Z3 | 5d | 2026-07-10 | 2026-07-16 | P2.L6.F.CS.2080 | 51d | 0d |  | 40 | ACT | P2-5 | JPC | ACT |  |  |  |
| P2.L6.F.CS.2090 |  | Millwork / L6 / Neuro Chief Ofc Z2,Z3 | 5d | 2026-07-17 | 2026-07-23 | P2.L6.F.CS.2080, P2.L6.F.CS.2110 | 51d | 0d |  | 40 | MILL | P2-5 | JPC | MILL |  |  |  |
| P2.L6.F.CS.2100 |  | Plumbing Fixtures / L6 / Neuro Chief Ofc Z2,Z3 | 5d | 2026-07-24 | 2026-07-30 | P2.L6.F.CS.2090 FF, P2.L6.F.CS.2080, P2.L6.F.CS.2090, PCO.830.1140 | 51d | 0d |  | 40 | PLMB | P2-5 | JPC | PLMB |  | Harris |  |
| P2.L6.F.CS.2120 |  | Floor Prep / L6 / Neuro Chief Ofc Z2,Z3 | 5d | 2026-07-31 | 2026-08-06 | P2.L6.F.CS.2110, P2.L6.F.CS.2090, P2.L6.F.CS.2100 | 51d | 0d |  | 40 | FLOOR | P2-5 | JPC | FLOOR |  |  |  |
| P2.L6.F.CS.2130 |  | Floor Finishes / L6 / Neuro Chief Ofc Z2,Z3 | 5d | 2026-08-07 | 2026-08-13 | P2.L6.F.CS.2120 | 51d | 0d |  | 40 | FLOOR | P2-5 | JPC | FLOOR |  |  |  |
| P2.L6.F.CS.2140 |  | Doors & Hardware / L6 / Neuro Chief Ofc Z2,Z3 | 5d | 2026-08-14 | 2026-08-20 | P2.L6.F.CS.2130 | 51d | 0d |  | 40 | DFH | P2-5 | JPC | DFH |  |  | AT29 |
| P2.L6.F.CS.2350 |  | Interior Glazing / L6 / Neuro Chief Ofc Z2,Z3 | 2d | 2026-08-14 | 2026-08-17 | P2.L6.F.CS.2130 | 54d | 3d |  | 40 | GLASS | P2-5 | JPC | GLASS | TBD |  |  |
| P2.L6.F.CS.2150 |  | Paint - Finish Coat / L6 / Neuro Chief Ofc Z2,Z3 | 5d | 2026-08-21 | 2026-08-27 | P2.L6.F.CS.2140, P2.L6.F.CS.2130, P2.L6.F.CS.2350 | 51d | 0d |  | 40 | PAINT | P2-5 | JPC | PAINT-1 |  |  |  |
| P2.L6.F.CS.2200 |  | Floor Base / L6 / Neuro Chief Ofc Z2,Z3 | 5d | 2026-08-28 | 2026-09-03 | P2.L6.F.CS.2150 | 51d | 0d |  | 40 | FLOOR | P2-5 | JPC | FLOOR |  |  |  |
| P2.L6.F.CS.2170 |  | Trim T-Stats / L6 / Neuro Chief Ofc Z2,Z3 | 5d | 2026-09-04 | 2026-09-11 | P2.L6.F.CS.2150, P2.L6.F.CS.2200 | 51d | 0d |  | 40 | BAS | P2-5 | JPC | BAS-1 |  | Harris |  |
| P2.L6.F.CS.2210 |  | Demountable Partitions / L6 / Neuro Chief Ofc Z2,Z3 | 5d | 2026-09-04 | 2026-09-11 | P2.L6.F.CS.2200 | 56d | 5d |  | 40 | DPART | P2-5 | JPC | DPART | TBD |  |  |
| P2.L6.F.CS.2160 |  | Set AV/IT Devices and Configure / L6 / Neuro Chief Ofc Z2,Z3 | 5d | 2026-09-14 | 2026-09-18 | P2.L6.F.CS.2150, P2.L6.F.CS.2170 | 51d | 0d |  | 40 | LOWVOLT | P2-5 | JPC | LOWVOLT-1 |  |  |  |
| P2.L6.F.CS.2220 |  | Trim Electrical / L6 / Neuro Chief Ofc Z2,Z3 | 5d | 2026-09-21 | 2026-09-25 | P2.L6.F.CS.2160, P2.L6.F.CS.2210, P2.L6.F.CS.2170 SS | 51d | 0d |  | 40 | ELEC | P2-5 | JPC | ELEC-2 |  |  |  |
| P2.L6.F.CS.2230 |  | Trim Telephone/ Data / L6 / Neuro Chief Ofc Z2,Z3 | 5d | 2026-09-28 | 2026-10-02 | P2.L6.F.CS.2220 | 51d | 0d |  | 40 | LOWVOLT | P2-5 | JPC | LOWVOLT-1 |  |  |  |
| P2.L6.F.CS.2180 |  | Building Specialities / L6 / Neuro Chief Ofc Z2,Z3 | 5d | 2026-10-05 | 2026-10-09 | P2.L6.F.CS.2150, P2.L6.F.CS.2230, P2.L6.F.CS.2160 | 51d | 0d |  | 40 | SPECIAL | P2-5 | JPC | SPECIAL |  |  |  |
| P2.L6.F.CS.2190 |  | Interior Building Signage / L6 / Neuro Chief Ofc Z2,Z3 | 5d | 2026-10-12 | 2026-10-16 | P2.L6.F.CS.2150, P2.L6.F.CS.2180 | 51d | 0d |  | 40 | SIGN | P2-5 | JPC | SIGN |  |  |  |
| P2.L6.F.CS.2240 |  | Work Completion List - Finishes / L6 / Neuro Chief Ofc Z2,Z3 | 5d | 2026-10-19 | 2026-10-23 | P2.L6.F.CS.2190, P2.L6.F.CS.2140, P2.L6.F.CS.2180, P2.L6.F.CS.2100, P2.L6.F.CS.2230, P2.L6.F.CS.2160 | 51d | 0d |  | 40 | FINISH | P2-5 | JPC | FINISH |  |  |  |
| P2.L6.F.CS.2250 |  | Rough Clean / L6 / Neuro Chief Ofc Z2,Z3 | 5d | 2026-10-26 | 2026-10-30 | P2.L6.F.CS.2240 | 51d | 0d |  | 40 | FCLEAN | P2-5 | JPC | FCLEAN |  |  |  |
| P2.L6.F.CS.2260 |  | FF&E / L6 / Neuro Chief Ofc Z2,Z3 | 5d | 2026-11-02 | 2026-11-06 | P2.L6.F.CS.2250 | 51d | 0d |  | 40 | FURN | P2-5 | JPC | FURN |  |  |  |
| P2.L6.F.CS.2270 |  | Prepare Punchlist / L6 / Neuro Chief Ofc Z2,Z3 | 5d | 2026-11-09 | 2026-11-13 | P2.L6.F.CS.2260 | 51d | 0d |  | 40 | QC | P2-5 | JPC | QC |  |  |  |
| P2.L6.F.CS.2280 |  | Correct Punchlist / L6 / Neuro Chief Ofc Z2,Z3 | 10d | 2026-11-16 | 2026-12-01 | P2.L6.F.CS.2270 | 51d | 0d |  | 80 | FINISH | P2-5 | JPC | FINISH |  |  |  |
| P2.L6.F.CS.2290 |  | Final Clean / L6 / Neuro Chief Ofc Z2,Z3 | 5d | 2026-12-02 | 2026-12-08 | P2.L6.F.CS.2280 | 51d | 63d | To QC | 40 | QC | P2-5 | JPC | QC |  |  |  |

| ID | WBS | Activity | Duration | Start | Finish | Predecessors | Complete | Planned start | Planned finish | Total float | Free float | Pick | Temp Orig Dur | *NIH Resp Check* | Resp / SRLM | 744 | PHASE | Z.RESP | RESP UPD | RESP / Trade | Update Status | Testing Type |
| --- | --- | --- | --- | --- | --- | --- | --- | --- | --- | --- | --- | --- | --- | --- | --- | --- | --- | --- | --- | --- | --- | --- |
|  | 2 | **Closeout** |  |  |  |  |  |  |  |  |  |  |  |  |  |  |  |  |  |  |  |  |
|  | 5 | **Bathrooms - Break Rooms - Locker Rooms / Level 6** |  | 2025-06-16 | 2026-11-10 |  |  |  |  |  |  |  |  |  |  |  |  |  |  |  |  |  |
|  | 4 | **Bathrooms 6-3952 / 6-3954** |  | 2025-06-16 | 2026-11-10 |  |  |  |  |  |  |  |  |  |  |  |  |  |  |  |  |  |
| P2.L6.BR.1000 |  | Plumbing - Set Pipe Carriers / L6 / South / Restrooms 395X | 5d | 2025-06-16 A | 2025-06-20 A | P2.L5.BR.2000 | 100% | 2025-10-22 | 2025-10-28 |  |  | ? | 40 | ! | PLMB | TA | P2-5 | Harris | TA | PLMB |  |  |
| P2.L6.BR.1030 |  | Plumbing - Test Pipe @ Chase Walls / L6 / South / Restrooms 395X | 5d | 2025-12-01 A | 2025-12-05 A | P2.L6.BR.1000 | 100% | 2026-01-23 | 2026-01-29 |  |  |  | 40 |  | PLMB | TA | P2-5 | Harris | TA | PLMB | O |  |
| P2.L6.BR.1080 |  | In Wall - Insulate Plumbing / L6 / South / Restrooms 395X | 5d | 2025-12-01 A | 2025-12-05 A | P2.L6.BR.1030 | 100% | 2026-02-13 | 2026-02-19 |  |  |  | 40 |  | INSUL |  | P2-5 | Harris | TA | INSUL-3 |  |  |
| P2.L6.BR.1020 |  | Frame - Chase Walls and Hard Lid Ceilings / L6 / South / Restrooms 395X | 5d | 2026-01-05 A | 2026-01-09 A | P2.L6.BR.1000 | 100% | 2026-01-09 | 2026-01-15 |  |  |  | 40 | ! | GYP |  | P2-5 |  | TA | GYP-1 | O |  |
| P2.L6.BR.1010 |  | Countertop Support Framing / L6 / South / Restrooms 395X | 5d | 2026-04-01 | 2026-04-07 | P2.L6.S.1420 |  |  |  | 80d | 10d | ? | 40 | T.MISCMTL | MISCMTL |  | P2-5 |  | JPC | MISCMTL | O |  |
| P2.L6.BR.1040 |  | R/I - Electrical _ Hard Lids / L6 / South / Restrooms 395X | 5d | 2026-04-01 | 2026-04-07 | P2.L6.BR.1080, P2.L6.BR.1020 |  |  |  | 70d | 0d |  | 40 | ! | ELEC |  | P2-5 |  | JPC | ELEC-3 |  |  |
| P2.L6.BR.1050 |  | Trim Sprinkler Drops _ Hard Lids / L6 / South / Restrooms 395X | 5d | 2026-04-01 | 2026-04-07 | P2.L6.BR.1020 |  |  |  | 70d | 0d |  | 40 | ! | FP |  | P2-5 |  | JPC | FP-1 | O |  |
| P2.L6.BR.1060 |  | Duct Drops _ Hard Lids / L6 / South / Restrooms 395X | 5d | 2026-04-08 | 2026-04-14 | P2.L6.BR.1020, P2.L6.BR.1050 |  |  |  | 70d | 0d |  | 40 | T.R/I.IW.MECH.HVAC.SM | HVAC |  | P2-5 | Harris | JPC | HVAC |  |  |
| P2.L6.BR.1070 |  | R/I - Fire Alarm _ Hard Lids / L6 / South / Restrooms 395X | 5d | 2026-04-08 | 2026-04-14 | P2.L6.BR.1020, P2.L6.BR.1040 |  |  |  | 70d | 0d |  | 40 | ! | ELEC |  | P2-5 |  | JPC | ELEC-3 |  |  |
| P2.L6.BR.1090 |  | Inspection - Close In - Chase Walls and Hard Lid Ceilings / L6 / South / Restrooms 395X | 5d | 2026-04-15 | 2026-04-21 | P2.L6.BR.1080, P2.L6.BR.1070, P2.L6.BR.1060, P2.L6.BR.1040, P2.L6.BR.1050 |  |  |  | 70d | 0d |  | 40 | ! | AHJ |  | P2-5 |  | JPC | AHJ |  |  |
| P2.L6.BR.1100 |  | Hang-Tape-Finish _ Hard Lid Ceilings / L6 / South / Restrooms 395X | 5d | 2026-04-22 | 2026-04-28 | P2.L6.BR.1090, P2.SUM.175, P2.L6.BR.1010 |  |  |  | 70d | 0d |  | 40 | ! | GYP |  | P2-5 |  | JPC | GYP-1 |  |  |
| P2.L6.BR.1110 |  | Paint Prime & 1st Coat _ Walls & Hard Lid Ceilings / L6 / South / Restrooms 395X | 5d | 2026-04-29 | 2026-05-05 | P2.L6.BR.1100 |  |  |  | 70d | 0d |  | 40 | ! | PAINT |  | P2-5 |  | JPC | PAINT-1 |  |  |
| P2.L6.BR.1140 |  | Ceiling Grid / L6 / South / Restrooms 395X | 5d | 2026-05-06 | 2026-05-12 | P2.L6.BR.1110 |  |  |  | 70d | 0d |  | 40 | ! | ACT |  | P2-5 |  | JPC | ACT |  |  |
| P2.L6.BR.1170 |  | Trim Sprinkler Drops _ Ceiling Tiles / L6 / South / Restrooms 395X | 5d | 2026-05-13 | 2026-05-19 | P2.L6.BR.1140 |  |  |  | 70d | 0d |  | 40 | ! | FP |  | P2-5 |  | JPC | FP-1 |  |  |
| P2.L6.BR.1160 |  | Trim - HVAC G/R/D's / L6 / South / Restrooms 395X | 5d | 2026-05-20 | 2026-05-27 | BP1.233.3.410, P2.L6.BR.1170, P2.L6.BR.1140 |  |  |  | 70d | 0d |  | 40 | ! | HVAC |  | P2-5 | Harris | JPC | HVAC |  |  |
| P2.L6.BR.1130 |  | Pull Wire - Electrical / L6 / South / Restrooms 395X | 5d | 2026-05-28 | 2026-06-03 | P2.L6.BR.1140, P2.L6.BR.1160, P2.L6.BR.1110 |  |  |  | 70d | 0d |  | 40 | ! | ELEC |  | P2-5 |  | JPC | ELEC-2 |  |  |
| P2.L6.BR.1120 |  | Pull Wire - Fire Alarm / L6 / South / Restrooms 395X | 5d | 2026-06-04 | 2026-06-10 | P2.L6.BR.1140, P2.L6.BR.1130, P2.L6.BR.1110 |  |  |  | 101d | 92d |  | 40 | ! | ELEC |  | P2-5 |  | JPC | ELEC-2 |  |  |
| P2.L6.BR.1150 |  | Lights - Set & Terminate / L6 / South / Restrooms 395X | 5d | 2026-06-04 | 2026-06-10 | P2.L6.BR.1140, P2.L6.BR.1130 |  |  |  | 70d | 0d |  | 40 | ! | ELEC |  | P2-5 |  | JPC | ELEC-2 |  |  |
| P2.L6.BR.1180 |  | Inspection - Ceiling Close In - ACT Ceilings / L6 / South / Restrooms 395X | 5d | 2026-06-11 | 2026-06-17 | P2.L6.BR.1170, P2.L6.BR.1150, P2.L6.BR.1160 |  |  |  | 70d | 0d |  | 40 |  | AHJ |  | P2-5 |  | JPC | AHJ |  |  |
| P2.L6.BR.1190 |  | Ceiling Tiles / L6 / South / Restrooms 395X | 5d | 2026-06-18 | 2026-06-24 | P2.L6.BR.1180 |  |  |  | 70d | 0d |  | 40 | ! | ACT |  | P2-5 |  | JPC | ACT |  |  |
| P2.L6.BR.1200 |  | Wall Tile / L6 / South / Restrooms 395X | 5d | 2026-06-25 | 2026-07-01 | P2.L6.BR.1190 |  |  |  | 70d | 52d |  | 40 | ! | TILE |  | P2-5 |  | JPC | TILE |  |  |
| P2.L6.BR.2200 |  | Flooring Prep - Epoxy Floors / L6 / South / Restrooms 395X | 1d | 2026-09-16 | 2026-09-16 | P2.L6.BR.1200, P2.L5.BR.2310 |  |  |  | 18d | 0d |  | 40 | ! | EPOXYF |  | P2-5 |  | JPC | EPOXYF |  |  |
| P2.L6.BR.2210 |  | Flooring - Epoxy Floors / L6 / South / Restrooms 395X | 4d | 2026-09-17 | 2026-09-22 | P2.L6.BR.2200 |  |  |  | 69d | 0d |  | 40 | ! | EPOXYF |  | P2-5 |  | JPC | EPOXYF |  |  |
| P2.L6.BR.1210 |  | Paint - Finish Coat / L6 / South / Restrooms 395X | 5d | 2026-09-23 | 2026-09-29 | P2.L6.BR.2210 |  |  |  | 69d | 0d |  | 40 | ! | PAINT |  | P2-5 |  | JPC | PAINT-1 |  |  |
| P2.L6.BR.1220 |  | Countertops / L6 / South / Restrooms 395X | 5d | 2026-09-30 | 2026-10-06 | P2.L6.BR.1210 |  |  |  | 69d | 0d |  | 40 | ! | MILL |  | P2-5 |  | JPC | MILL |  |  |
| P2.L6.BR.1260 |  | Lockers & Benches / L6 / South / Restrooms 395X | 5d | 2026-10-07 | 2026-10-13 | P2.L6.BR.1210, P2.L6.BR.1220 |  |  |  | 69d | 0d |  | 40 | ! | SPECIAL |  | P2-5 |  | JPC | SPECIAL |  |  |
| P2.L6.BR.1270 |  | Plumbing Fixtures / Sinks / Showers / L6 / South / Restrooms 395X | 5d | 2026-10-07 | 2026-10-13 | P2.L6.BR.1220 |  |  |  | 79d | 0d |  | 40 | ! | PLMB |  | P2-5 | Harris | JPC | PLMB |  |  |
| P2.L6.BR.1240 |  | Trim - Electrical Devices / L6 / South / Restrooms 395X | 5d | 2026-10-14 | 2026-10-20 | P2.L6.BR.1260, P2.L6.BR.1210 |  |  |  | 69d | 0d |  | 40 | ! | ELEC |  | P2-5 |  | JPC | ELEC-2 |  |  |
| P2.L6.BR.1280 |  | Toilet Partitions / L6 / South / Restrooms 395X | 5d | 2026-10-14 | 2026-10-20 | P2.L6.BR.1270 |  |  |  | 79d | 10d |  | 40 | ! | SPECIAL |  | P2-5 |  | JPC | SPECIAL |  |  |
| P2.L6.BR.1290 |  | Bathroom Accessories / L6 / South / Restrooms 395X | 5d | 2026-10-14 | 2026-10-20 | P2.L6.BR.1270 |  |  |  | 79d | 10d |  | 40 | ! | SPECIAL |  | P2-5 |  | JPC | SPECIAL |  |  |
| P2.L6.BR.1230 |  | Trim - Fire Alarm Devices / L6 / South / Restrooms 395X | 5d | 2026-10-21 | 2026-10-27 | P2.L6.BR.1240, P2.L6.BR.1210, P2.L6.BR.1120 |  |  |  | 69d | 0d |  | 40 | ! | FA |  | P2-5 |  | JPC | FA-1 |  |  |
| P2.L6.BR.1250 |  | Doors & Hardware / L6 / South / Restrooms 395X | 5d | 2026-10-28 | 2026-11-03 | P2.L6.BR.1210, P2.L6.BR.1230 |  |  |  | 69d | 0d |  | 40 | ! | DFH |  | P2-5 |  | JPC | DFH |  | AT29 |
| P2.L6.BR.1300 |  | Work Completion List - Finishes / L6 / South / Restrooms 395X | 5d | 2026-11-04 | 2026-11-10 | P2.L6.BR.1290, P2.L6.BR.1260, P2.L6.BR.1230, P2.L6.BR.1240, P2.L6.BR.1250, P2.L6.BR.1280 |  |  |  | 69d | 81d | To Punch | 40 |  | AHJ |  | P2-5 |  | JPC | AHJ |  |  |

| ID | WBS | Activity | Duration | Start | Finish | Predecessors | Complete | Remaining | Planned start | Planned finish | Total float | Free float | Pick | Temp Orig Dur | *NIH Resp Check* | Resp / SRLM | 744 | PHASE | Z.RESP | RESP UPD | RESP / Trade | Update Status | Testing Type |
| --- | --- | --- | --- | --- | --- | --- | --- | --- | --- | --- | --- | --- | --- | --- | --- | --- | --- | --- | --- | --- | --- | --- | --- |
|  | 1 | **Toilets 6-2937 / 6-2939** |  | 2025-06-16 | 2026-10-06 |  |  |  |  |  |  |  |  |  |  |  |  |  |  |  |  |  |  |
| P2.L6.BR.2000 |  | Plumbing - Set Pipe Carriers / L6 / North / Restrooms 293X | 3d | 2025-06-16 A | 2025-06-20 A | P2.L6.BR.1000 | 100% |  | 2025-11-12 | 2025-11-14 |  |  | ? | 24 | ! | PLMB | TA | P2-5 | Harris | TA | PLMB |  |  |
| P2.L6.BR.2020 |  | Plumbing - Test Pipe / L6 / North / Restrooms 293X | 2d | 2025-12-01 A | 2025-12-02 A | P2.L6.BR.2000 | 100% |  | 2026-01-23 | 2026-01-26 |  |  |  | 16 |  | PLMB | TA | P2-5 | Harris | TA | PLMB | O |  |
| P2.L6.BR.2010 |  | Framing & Blocking - Walls and Hard Lid Ceilings / L6 / North / Restrooms 293X | 2d | 2026-01-05 A | 2026-04-01 | P2.L6.BR.2000 | 50% | 1d | 2026-01-02 | 2026-01-05 | 95d | 0d |  | 16 | ! | GYP | TA | P2-5 |  | JPC | GYP-1 | O |  |
| P2.L6.BR.2040 |  | Trim Sprinkler Drops _ Hard Lids / L6 / North / Restrooms 293X | 2d | 2026-04-02 | 2026-04-03 | P2.L6.BR.2010 |  |  |  |  | 95d | 0d |  | 16 | ! | FP | TA | P2-5 |  | JPC | FP-1 | O |  |
| P2.L6.BR.2050 |  | Duct Drops _ Hard Lids / L6 / North / Restrooms 293X | 2d | 2026-04-06 | 2026-04-07 | P2.L6.BR.2010, P2.L6.BR.2040 |  |  |  |  | 95d | 0d |  | 16 | T.R/I.IW.MECH.HVAC.SM | HVAC | TA | P2-5 | Harris | JPC | HVAC | O |  |
| P2.L6.BR.2070 |  | In Wall - Insulate Plumbing / L6 / North / Restrooms 293X | 2d | 2026-04-08 | 2026-04-09 | P2.L6.BR.2020, P2.L6.BR.2050 |  |  |  |  | 95d | 0d |  | 16 |  | INSUL | TA | P2-5 | Harris | JPC | INSUL-3 | O |  |
| P2.L6.BR.2030 |  | R/I - Electrical _ Hard Lids / L6 / North / Restrooms 293X | 5d | 2026-04-10 | 2026-04-16 | P2.L6.BR.2070, P2.L6.BR.2010 |  |  |  |  | 95d | 0d |  | 16 | ! | ELEC | TA | P2-5 |  | JPC | ELEC-3 |  |  |
| P2.L6.BR.2060 |  | R/I - Fire Alarm _ Hard Lids / L6 / North / Restrooms 293X | 5d | 2026-04-17 | 2026-04-23 | P2.L6.BR.2010, P2.L6.BR.2030 |  |  |  |  | 95d | 0d |  | 16 | ! | ELEC |  | P2-5 |  | JPC | ELEC-3 |  |  |
| P2.L6.BR.2080 |  | Inspection - Close In - Walls and Hard Lid Ceilings / L6 / North / Restrooms 293X | 3d | 2026-04-24 | 2026-04-28 | P2.L6.BR.2070, P2.L6.BR.2060, P2.L6.BR.2040, P2.L6.BR.2050, P2.L6.BR.2030 |  |  |  |  | 95d | 0d |  | 24 | ! | AHJ |  | P2-5 |  | JPC | AHJ |  |  |
| P2.L6.BR.2090 |  | Hang-Tape-Finish _ Walls / L6 / North / Restrooms 293X | 5d | 2026-04-29 | 2026-05-05 | P2.L6.BR.2080, P2.SUM.175 |  |  |  |  | 95d | 0d |  | 40 | ! | GYP |  | P2-5 |  | JPC | GYP-1 |  |  |
| P2.L6.BR.2100 |  | Paint Prime & Final Coat _ Walls & Hard Lid Ceilings / L6 / North / Restrooms 293X | 2d | 2026-05-06 | 2026-05-07 | P2.L6.BR.2090 |  |  |  |  | 95d | 0d |  | 16 | ! | PAINT |  | P2-5 |  | JPC | PAINT-1 |  |  |
| P2.L6.BR.2140 |  | Trim - HVAC G/R/D's / L6 / North / Restrooms 293X | 2d | 2026-05-08 | 2026-05-11 | BP1.233.3.410, P2.L6.BR.2100 |  |  |  |  | 95d | 0d |  | 16 | ! | HVAC |  | P2-5 | Harris | JPC | HVAC |  |  |
| P2.L6.BR.2120 |  | Pull Wire & Trim Devices - Electrical / L6 / North / Restrooms 293X | 2d | 2026-05-12 | 2026-05-13 | P2.L6.BR.2140, P2.L6.BR.2100 |  |  |  |  | 95d | 0d |  | 16 | ! | ELEC |  | P2-5 |  | JPC | ELEC-2 |  |  |
| P2.L6.BR.2130 |  | Lights - Set & Terminate / L6 / North / Restrooms 293X | 2d | 2026-05-12 | 2026-05-13 | P2.L6.BR.2120 SS |  |  |  |  | 100d | 5d |  | 16 | ! | ELEC |  | P2-5 |  | JPC | ELEC-2 |  |  |
| P2.L6.BR.2110 |  | Pull Wire & Trim Devices - Fire Alarm / L6 / North / Restrooms 293X | 5d | 2026-05-14 | 2026-05-20 | P2.L6.BR.2120, P2.L6.BR.2100 |  |  |  |  | 95d | 0d |  | 16 | ! | ELEC |  | P2-5 |  | JPC | ELEC-2 |  |  |
| P2.L6.BR.2150 |  | Wall Tile / L6 / North / Restrooms 293X | 5d | 2026-05-21 | 2026-05-28 | P2.L6.BR.2140, P2.L6.BR.2130, P2.L6.BR.2110 |  |  |  |  | 95d | 77d |  | 40 | ! | TILE |  | P2-5 |  | JPC | TILE |  |  |
| P2.L6.BR.2220 |  | Flooring Prep - Epoxy Floors / L6 / North / Restrooms 293X | 1d | 2026-09-17 | 2026-09-17 | P2.L6.BR.2200, P2.L6.BR.2150 |  |  |  |  | 18d | 0d |  | 40 | ! | EPOXYF |  | P2-5 |  | JPC | EPOXYF |  |  |
| P2.L6.BR.2230 |  | Flooring - Epoxy Floors / L6 / North / Restrooms 293X | 2d | 2026-09-18 | 2026-09-21 | P2.L6.BR.2220 |  |  |  |  | 94d | 0d |  | 40 | ! | EPOXYF |  | P2-5 |  | JPC | EPOXYF |  |  |
| P2.L6.BR.2160 |  | Doors & Hardware / L6 / North / Restrooms 293X | 2d | 2026-09-22 | 2026-09-23 | P2.L6.BR.2230, P2.L6.BR.2150 |  |  |  |  | 94d | 0d |  | 16 | ! | DFH |  | P2-5 |  | JPC | DFH |  | AT29 |
| P2.L6.BR.2170 |  | Plumbing Fixtures / Sinks / Showers / L6 / North / Restrooms 293X | 2d | 2026-09-24 | 2026-09-25 | P2.L6.BR.2230, P2.L6.BR.2150, P2.L6.BR.2160 |  |  |  |  | 94d | 0d |  | 16 | ! | PLMB |  | P2-5 | Harris | JPC | PLMB |  |  |
| P2.L6.BR.2180 |  | Bathroom Accessories / L6 / North / Restrooms 293X | 2d | 2026-09-28 | 2026-09-29 | P2.L6.BR.2170 |  |  |  |  | 94d | 0d |  | 16 | ! | SPECIAL |  | P2-5 |  | JPC | SPECIAL |  |  |
| P2.L6.BR.2190 |  | Work Completion List - Finishes / L6 / North / Restrooms 293X | 5d | 2026-09-30 | 2026-10-06 | P2.L6.BR.2160, P2.L6.BR.2180, P2.L6.BR.2110 |  |  |  |  | 94d | 106d | To Punch | 40 |  | AHJ |  | P2-5 |  | JPC | AHJ |  |  |
|  | 1 | **Corridors & Lobbies / Level 6** |  | 2026-04-22 | 2026-10-13 |  |  |  |  |  |  |  |  |  |  |  |  |  |  |  |  |  |  |
| P2.L6.CL.1000 |  | Paint Prime & 1st Coat Walls / L6 / Corr & Lobbies | 5d | 2026-04-22 | 2026-04-28 | P2.L6.F.CS.2000 |  |  |  |  | 28d | 0d |  | 40 |  | PAINT |  | P2-5 |  | JPC | PAINT-1 |  |  |
| P2.L6.CL.1010 |  | Framing - Hard Lid Ceilings / L6 / Corr & Lobbies | 10d | 2026-04-29 | 2026-05-12 | P2.L6.CL.1000, P2.L6.N.1350 |  |  |  |  | 28d | 0d |  | 80 |  | GYP |  | P2-5 |  | JPC | GYP-1 |  |  |
| P2.L6.CL.1020 |  | T-Grid / L6 / Corr & Lobbies | 10d | 2026-04-29 | 2026-05-12 | P2.L6.CL.1000 |  |  |  |  | 28d | 0d |  | 80 |  | ACT |  | P2-5 |  | JPC | ACT |  |  |
| P2.L6.CL.1040 |  | R/I - Trim Sprinkler Heads- All Ceilings / L6 / Corr & Lobbies | 5d | 2026-05-08 | 2026-05-14 | P2.L6.CL.1020 FF+2d, P2.L6.CL.1010 FF+2d |  |  |  |  | 28d | 0d |  | 40 |  | FP |  | P2-5 |  | JPC | FP-1 |  |  |
| P2.L6.CL.1070 |  | Trim - Sprinkler Heads @ T-Grid / L6 / Corr & Lobbies | 5d | 2026-05-08 | 2026-05-14 | P2.L6.CL.1020 FF+2d |  |  |  |  | 104d | 40d |  | 40 |  | FP |  | P2-5 |  | JPC | FP-1 |  |  |
| P2.L6.CL.1050 |  | R/I - HVAC- All Ceilings / L6 / Corr & Lobbies | 5d | 2026-05-15 | 2026-05-21 | P2.L6.CL.1020 FF+2d, P2.L6.CL.1010 FF+2d, P2.L6.CL.1040 |  |  |  |  | 28d | 0d |  | 40 |  | HVAC |  | P2-5 | Harris | JPC | HVAC |  |  |
| P2.L6.CL.1030 |  | R/I - Electrical - All Ceilings / L6 / Corr & Lobbies | 15d | 2026-05-22 | 2026-06-12 | P2.L6.CL.1020 FF+2d, P2.L6.CL.1010 FF+2d, P2.L6.CL.1050 |  |  |  |  | 28d | 0d |  | 40 |  | ELEC |  | P2-5 |  | JPC | ELEC-2 |  |  |
| P2.L6.CL.1060 |  | R/I - All Remaining Low Voltage - All Ceilings / L6 / Corr & Lobbies | 5d | 2026-06-15 | 2026-06-19 | P2.L6.CL.1020 FF+2d, P2.L6.CL.1010 FF+2d, P2.L6.CL.1030 |  |  |  |  | 28d | 0d |  | 40 |  | LOWVOLT |  | P2-5 |  | JPC | LOWVOLT-1 |  |  |
| P2.L6.CL.1100 |  | Pull Wire - Electrical / L6 / Corr & Lobbies | 10d | 2026-06-15 | 2026-06-26 | P2.L6.CL.1030 |  |  |  |  | 58d | 0d |  | 40 |  | ELEC |  | P2-5 |  | JPC | ELEC-2 |  |  |
| P2.L6.CL.1080 |  | R/I - Fire Alarm/Life Safety - All Ceilings / L6 / Corr & Lobbies | 5d | 2026-06-22 | 2026-06-26 | P2.L6.CL.1010 FF+2d, P2.L6.CL.1060 |  |  |  |  | 28d | 0d |  | 40 |  | FA |  | P2-5 |  | JPC | FA-1 |  |  |
| P2.L6.CL.1090 |  | Inspections - Close In- All Ceilings / L6 / Corr & Lobbies | 5d | 2026-06-29 | 2026-07-06 | P2.L6.CL.1050, P2.L6.CL.1060, P2.L6.CL.1030, P2.L6.CL.1040, P2.L6.CL.1080 |  |  |  |  | 28d | 0d |  | 40 |  | AHJ |  | P2-5 |  | JPC | AHJ |  |  |
| P2.L6.CL.1110 |  | Pull Wire - Fire Alarm / L6 / Corr & Lobbies | 5d | 2026-06-29 | 2026-07-06 | P2.L6.CL.1100, P2.L6.CL.1080 |  |  |  |  | 63d | 0d |  | 40 |  | FA |  | P2-5 |  | JPC | FA-1 |  |  |
| P2.L6.CL.1120 |  | Pull Wire - All Remianing Low Voltage Systems / L6 / Corr & Lobbies | 5d | 2026-07-07 | 2026-07-13 | P2.L6.CL.1110, P2.L6.CL.1060 |  |  |  |  | 64d | 0d |  | 40 |  | LOWVOLT |  | P2-5 |  | JPC | LOWVOLT-1 |  |  |
| P2.L6.CL.1130 |  | Hang/Tape/Finish- Hard Lid Ceilings / L6 / Corr & Lobbies | 10d | 2026-07-07 | 2026-07-20 | P2.L6.CL.1090 |  |  |  |  | 28d | 0d |  | 80 |  | GYP |  | P2-5 |  | JPC | GYP-1 |  |  |
| P2.L6.CL.1140 |  | Drop Ceiling Tiles @ T-Grid / L6 / Corr & Lobbies | 5d | 2026-07-14 | 2026-07-20 | P2.L6.CL.1100, P2.L6.CL.1110, P2.L6.CL.1120, P2.L6.CL.1070 |  |  |  |  | 64d | 0d |  | 40 |  | ACT |  | P2-5 |  | JPC | ACT |  |  |
| P2.L6.CL.1190 |  | Paint - Hard Lid Ceilings / L6 / Corr & Lobbies | 5d | 2026-07-21 | 2026-07-27 | P2.L6.CL.1130 |  |  |  |  | 28d | 0d |  | 40 |  | PAINT |  | P2-5 |  | JPC | PAINT-1 |  |  |
| P2.L6.CL.1210 |  | Final Paint / L6 / Corr & Lobbies | 5d | 2026-07-21 | 2026-07-27 | P2.L6.CL.1140, BP7.097.3.100 |  |  |  |  | 64d | 0d |  | 40 |  | PAINT |  | P2-5 |  | JPC | PAINT-1 |  |  |
| P2.L6.CL.1180 |  | Ceiling Mounted - HVAC GRD's / L6 / Corr & Lobbies | 15d | 2026-07-28 | 2026-08-17 | P2.L6.CL.1190, P2.L6.CL.1020 |  |  |  |  | 28d | 0d |  | 120 |  | HVAC |  | P2-5 | Harris | JPC | HVAC |  |  |
| P2.L6.CL.1220 |  | Floor Base / L6 / Corr & Lobbies | 5d | 2026-07-28 | 2026-08-03 | P2.L6.CL.1210 |  |  |  |  | 120d | 0d |  | 40 |  | FLOOR |  | P2-5 |  | JPC | FLOOR |  |  |
| P2.L6.CL.1240 |  | Trim - Fire Alarm - Wall Mounted Devices / L6 / Corr & Lobbies | 5d | 2026-07-28 | 2026-08-03 | P2.L6.CL.1210 |  |  |  |  | 64d | 0d |  | 40 |  | FA |  | P2-5 |  | JPC | FA-1 |  |  |
| P2.L6.CL.1250 |  | Trim - HVAC - Wall Mounted Devices / L6 / Corr & Lobbies | 5d | 2026-07-28 | 2026-08-03 | P2.L6.CL.1210 |  |  |  |  | 120d | 0d |  | 40 |  | BAS |  | P2-5 | Harris | JPC | BAS-1 |  |  |
| P2.L6.CL.1230 |  | Trim - All Electrical - Wall Mounted Devices / L6 / Corr & Lobbies | 5d | 2026-08-04 | 2026-08-10 | P2.L6.CL.1250, P2.L6.CL.1210 |  |  |  |  | 120d | 5d |  | 40 |  | ELEC |  | P2-5 |  | JPC | ELEC-2 |  |  |
| P2.L6.CL.1260 |  | Trim - All Remining Low Voltage Systems - Wall Mounted Devices / L6 / Corr & Lobbies | 5d | 2026-08-04 | 2026-08-10 | P2.L6.CL.1240, P2.L6.CL.1210 |  |  |  |  | 115d | 0d |  | 40 |  | LOWVOLT |  | P2-5 |  | JPC | LOWVOLT-1 |  |  |
| P2.L6.CL.1340 |  | Wall Protection / L6 / Corr & Lobbies | 5d | 2026-08-04 | 2026-08-10 | BP7.102.3.300, P2.L6.CL.1220 |  |  |  |  | 120d | 5d |  | 40 |  | WALLPRO |  | P2-5 |  | JPC | WALLPRO |  |  |
| P2.L6.CL.1150 |  | Ceiling Mounted - Electrical Devices and Lights / L6 / Corr & Lobbies | 20d | 2026-08-11 | 2026-09-08 | P2.L6.CL.1100, P2.L6.CL.1190, P2.L6.CL.1180 SS+10d |  |  |  |  | 28d | 0d |  | 120 |  | ELEC |  | P2-5 |  | JPC | ELEC-2 |  |  |
| P2.L6.CL.1270 |  | Building Signage / L6 / Corr & Lobbies | 5d | 2026-08-11 | 2026-08-17 | P2.L6.CL.1260, P2.L6.CL.1210 |  |  |  |  | 115d | 0d |  | 40 |  | SIGN |  | P2-5 |  | JPC | SIGN |  |  |
| P2.L6.CL.1280 |  | Work Completion List / L6 / Corr & Lobbies | 5d | 2026-08-18 | 2026-08-24 | P2.L6.CL.1270, P2.L6.CL.1230, P2.L6.CL.1240, P2.L6.CL.1250, P2.L6.CL.1260, P2.L6.CL.1220, P2.L6.CL.1340 |  |  |  |  | 115d | 0d |  | 40 |  | T |  | P2-5 |  | JPC | T |  |  |
| P2.L6.CL.1160 |  | Ceiling Mounted - Fire Alarm/Life Saftey Devices / L6 / Corr & Lobbies | 15d | 2026-08-25 | 2026-09-15 | P2.L6.CL.1110, P2.L6.CL.1190, P2.L6.CL.1020, P2.L6.CL.1150 SS+10d |  |  |  |  | 28d | 0d |  | 120 |  | FA |  | P2-5 |  | JPC | FA-1 |  |  |
| P2.L6.CL.1290 |  | Rough Clean / L6 / Corr & Lobbies | 2d | 2026-08-25 | 2026-08-26 | P2.L6.CL.1280 |  |  |  |  | 115d | 0d |  | 16 |  | FCLEAN |  | P2-5 |  | JPC | FCLEAN |  |  |
| P2.L6.CL.1300 |  | Punchlist / L6 / Corr & Lobbies | 5d | 2026-08-27 | 2026-09-02 | P2.L6.CL.1290 |  |  |  |  | 115d | 0d |  | 40 |  | AHJ |  | P2-5 |  | JPC | AHJ |  |  |
| P2.L6.CL.1310 |  | Final Clean / L6 / Corr & Lobbies | 2d | 2026-09-03 | 2026-09-04 | P2.L6.CL.1300 |  |  |  |  | 115d | 127d |  | 16 |  | FCLEAN |  | P2-5 |  | JPC | FCLEAN |  |  |
| P2.L6.CL.1170 |  | Ceiling Mounted - All Low Voltage Devices / L6 / Corr & Lobbies | 15d | 2026-09-09 | 2026-09-29 | P2.L6.CL.1190, P2.L6.CL.1120, P2.L6.CL.1160 SS+10d |  |  |  |  | 28d | 0d |  | 120 |  | LOWVOLT |  | P2-5 |  | JPC | LOWVOLT-1 |  |  |
| P2.L6.CL.1320 |  | Prep Flooring / L6 / Corr & Lobbies | 2d | 2026-09-30 | 2026-10-01 | P2.L6.CL.1170, P2.L6.CL.1180, P2.L6.CL.1160, P2.L6.CL.1150, P2.L6.CL.1140 SS+2d, P2.L5.CL.1200 |  |  |  |  | 28d | 0d |  | 80 |  | FLOOR |  | P2-5 |  | JPC | FLOOR |  |  |
| P2.L6.CL.1200 |  | Flooring / L6 / Corr & Lobbies | 8d | 2026-10-02 | 2026-10-13 | P2.L6.CL.1320 |  |  |  |  | 28d | 40d |  | 80 |  | FLOOR |  | P2-5 |  | JPC | FLOOR |  |  |

| ID | WBS | Activity | Type | Duration | Start | Finish | Predecessors | Complete | Remaining | Planned start | Planned finish | Total float | Free float | Temp Orig Dur | Act ID Temp | Resp / SRLM | PHASE | Z.RESP | RESP / Trade | Testing Type | 744 | RESP UPD | Pick | Update Status | *NIH Resp Check* |
| --- | --- | --- | --- | --- | --- | --- | --- | --- | --- | --- | --- | --- | --- | --- | --- | --- | --- | --- | --- | --- | --- | --- | --- | --- | --- |
|  | INT | **INTERSTITIAL / LEVEL 6** |  |  | 2025-04-30 | 2026-08-03 |  |  |  |  |  |  |  |  |  |  |  |  |  |  |  |  |  |  |  |
|  | 2 | **South Interstitials 6-3905 & 6-2855** |  |  | 2025-05-12 | 2026-08-03 |  |  |  |  |  |  |  |  |  |  |  |  |  |  |  |  |  |  |  |
|  | Z1 | **Rough In - South Interstitials 6-3905 & 6-2855** |  |  | 2025-05-12 | 2026-06-05 |  |  |  |  |  |  |  |  |  |  |  |  |  |  |  |  |  |  |  |
| P2.L6.INT.S.1000 |  | Layout - All Trades / L6 / South Int |  | 5d | 2025-05-12 A | 2025-05-16 A | P2.6.I.03.310 | 100% |  | 2025-06-02 | 2025-06-06 |  |  | 40 | P2.B2.01.010 | R/I.OH | P2-5 | Harris | R/I.OH |  |  |  |  |  |  |
| P2.L6.INT.S.1020 |  | OH - Structural Supports (All Trades) / L6 / South Int |  | 5d | 2025-05-16 A | 2025-05-17 A | P2.L6.INT.S.1000 | 100% |  | 2025-06-09 | 2025-06-13 |  |  | 80 | P2.B2.05.45.110 | R/I.OH | P2-5 | Harris | R/I.OH | AT24 |  |  |  |  |  |
| P2.L6.INT.S.1040 |  | Fireproof Interstitial Steel / L6 / South Int |  | 5d | 2025-05-20 A | 2025-05-22 A | P2.L6.INT.S.1010, P2.L6.INT.S.1020, P2.L6.INT.S.1030 | 100% |  | 2025-06-23 | 2025-06-27 |  |  | 40 | P2.1.09.81.140X10 | SPRAY | P2-5 |  | SPRAY | AT49 |  |  |  |  |  |
| P2.L6.INT.S.1010 |  | Framing - Top Track / L6 / South Int |  | 5d | 2025-05-26 A | 2025-05-30 A | P2.L6.N.1010, P2.L6.INT.S.1000 | 100% |  | 2025-06-09 | 2025-06-13 |  |  | 80 | P2.B2.09.21.110 | GYP | P2-5 |  | GYP-1 |  |  |  |  |  |  |
| P2.L6.INT.S.1030 |  | OH - MEPF - Hangers & Supports / L6 / South Int |  | 10d | 2025-05-26 A | 2025-05-30 A | P2.L6.INT.S.1000, P2.BIM.L6.40.140 | 100% |  | 2025-06-09 | 2025-06-20 |  |  | 80 | P2.B2.20.05.410 | MEP | P2-5 | Harris | MEP-2 |  |  |  |  |  |  |
| P2.L6.INT.S.1070 |  | Framing - Perimeter Studs and Door Frames / L6 / South Int |  | 10d | 2025-05-30 A | 2025-06-30 A | P2.L6.INT.S.1040 | 100% |  | 2025-06-30 | 2025-07-14 |  |  | 80 | A1310 | GYP | P2-5 |  | GYP-1 |  | SM | SM |  |  |  |
| P2.L6.INT.S.1170 |  | Set & Connect - Mech Equipment / L6 / South Int |  | 10d | 2025-05-30 A | 2025-06-13 A | P2.L6.INT.S.1040 | 100% |  | 2025-06-30 | 2025-07-14 |  |  | 80 |  | HVAC | P2-5 | Harris | HVAC |  | SM | SM |  |  |  |
| P2.L6.INT.S.1130 |  | OH - Fire Suppression / L6 / South Int |  | 10d | 2025-06-02 A | 2025-06-13 A | P2.L6.INT.S.1100 FF+2d, P2.L6.INT.S.1040 | 100% |  | 2025-08-01 | 2025-08-14 |  |  | 80 | P2.B2.21.13.210 | FP | P2-5 |  | FP-1 |  | SM | SM | 1 |  |  |
| P2.L6.INT.S.1160 |  | OH - Electrical - 480/277v Distribution / L6 / South Int |  | 20d | 2025-06-18 A | 2025-09-12 A | P2.L6.INT.S.1120 FF+2d, P2.L6.INT.S.1100 FF+2d, P2.L6.INT.S.1040 | 100% |  | 2025-07-18 | 2025-08-14 |  |  | 80 | P2.B2.26.05.210 | ELEC | P2-5 |  | ELEC-2 |  | SM | SM | 1 | O |  |
| P2.L6.INT.S.1100 |  | Spray/Seal/Firestop - Head of Wall / L6 / South Int |  | 5d | 2025-06-24 A | 2025-06-30 A | P2.L6.INT.S.1070 | 100% |  | 2025-08-06 | 2025-08-12 |  |  | 40 | P2.B2.07.84.310 | FIRSAFE | P2-5 |  | FIRSAFE | AT47 | SM | SM | To Finishes - Paint |  |  |
| P2.L6.INT.S.1060 |  | In Wall - Backing/Blocking/Supports / L6 / South Int |  | 10d | 2025-07-01 A | 2025-07-15 A | P2.L6.INT.S.1070 SS | 100% |  | 2025-08-01 | 2025-08-14 |  |  | 80 | P2.B2.09.21.510 | R/I.IW | P2-5 |  | R/I.IW |  | SM | SM |  |  |  |
| P2.L6.INT.S.1150 |  | OH - Plumbing Piping / L6 / South Int |  | 20d | 2025-07-18 A | 2025-09-05 A | P2.L6.INT.S.1120 FF+2d, P2.L6.INT.S.1100 FF+2d, P2.L6.INT.S.1040 | 100% |  | 2025-08-19 | 2025-09-16 |  |  | 80 | P2.B2.22.14.210 | PLMB | P2-5 | Harris | PLMB |  | SM | SM | 1 | O |  |
| P2.L6.INT.S.1140 |  | OH - Hang Duct - HP Mains / L6 / South Int |  | 10d | 2025-07-24 A | 2025-09-12 A | P2.L6.INT.S.1040 | 100% |  | 2025-08-01 | 2025-08-14 |  |  | 80 | P2.B2.23.30.210 | HVAC | P2-5 | Harris | HVAC |  | SM | SM | 1 | O |  |
| P2.L6.INT.S.1050 |  | In Wall - Electrical - Framing / L6 / South Int |  | 10d | 2025-07-30 A | 2025-09-17 A | P2.L6.INT.S.1070 SS | 100% |  | 2025-08-01 | 2025-08-14 |  |  | 80 | P2.B2.26.05.610 | ELEC | P2-5 |  | ELEC-2 |  | SM | SM |  | O |  |
| P2.L6.INT.S.1180 |  | OH - HVAC Piping (High) / L6 / South Int |  | 20d | 2025-08-01 A | 2025-09-22 A | P2.L6.S.1220, P2.L6.INT.S.1130, P2.L6.INT.S.1040, FRG.P2.L6.INT.S.1750 | 100% |  | 2025-08-29 | 2025-09-26 |  |  | 80 | P2.B2.23.20.410 | FIT | P2-5 | Harris | FIT-2 |  | SM | SM | 2 | O |  |
| FRG.P2.L6.INT.S.1740 |  | HVAC Piping Delivery / L6 / South Int - FRAGNET | milestone | 0d | 2025-08-01 A | 2025-08-01 A | P2.L6.INT.S.1030 FF | 100% |  |  |  |  |  | 80 | P2.B2.23.20.410 | Harris Fragnet | P2-5 | Harris | FIT-2 |  | TA | TA | 2 | O |  |
| FRG.P2.L6.INT.S.1750 |  | HVAC Piping - Staging & Layout / L6 / South Int - FRAGNET |  | 18d | 2025-08-04 A | 2025-08-29 A | FRG.P2.L6.INT.S.1740 | 100% |  | 2025-09-30 | 2025-10-23 |  |  | 80 | P2.B2.23.20.410 | Harris Fragnet | P2-5 | Harris | FIT-2 |  | TA | TA | 2 | O |  |
| P2.L6.INT.S.1220 |  | OH - Plumbing - Test / L6 / South Int |  | 15d | 2025-09-09 A | 2025-09-18 A | P2.L6.INT.S.1150 | 100% |  | 2025-10-17 | 2025-11-06 |  |  | 80 | P2.B2.22.14.310 | PLMB | P2-5 | Harris | PLMB |  | SM | SM | 2 |  |  |
| P2.L6.INT.S.1190 |  | OH - Electrical - 208/120v Branch / L6 / South Int |  | 10d | 2025-09-15 A | 2025-10-23 A | P2.L6.INT.S.1160, P2.L6.INT.S.1310 | 100% |  | 2025-11-05 | 2025-11-18 |  |  | 80 | P2.B2.26.05.310 | ELEC | P2-5 |  | ELEC-2 |  | SM | SM | 2 |  |  |
| P2.L6.INT.S.1080 |  | AHJ Inspections - Wall Close In / L6 / South Int |  | 5d | 2025-09-18 A | 2025-09-19 A | P2.L6.INT.S.1060 FF, P2.L6.INT.S.1070, P2.L6.INT.S.1050 | 100% |  | 2025-10-06 | 2025-10-10 |  |  | 40 | P2.B2.01.43.110 | FM | P2-5 |  | FM |  | SM | SM |  | O |  |
| P2.L6.INT.S.1090 |  | Hang-Tape-Finish / L6 / South Int |  | 10d | 2025-09-22 A | 2025-10-15 A | P2.L6.INT.S.1080 | 100% |  | 2025-10-13 | 2025-10-24 |  |  | 80 | P2.B2.09.21.710 | GYP | P2-5 |  | GYP-1 |  | SM | SM |  |  |  |
| P2.L6.INT.S.1330 |  | OH - Conduit - Low Volt - Fire Alarm / L6 / South Int |  | 10d | 2025-09-22 A | 2025-09-30 A | P2.L6.INT.S.1310 | 100% |  | 2025-11-18 | 2025-12-03 |  |  | 80 |  | FA | P2-5 |  | FA-1 |  | SM | SM | 5 |  |  |
| P2.L6.INT.S.1120 |  | Paint Prime & 1st Coat / L6 / South Int |  | 5d | 2025-10-16 A | 2025-10-20 A | P2.L6.INT.S.1100 SS, P2.L6.INT.S.1090 | 100% |  | 2025-10-08 | 2025-10-14 |  |  | 40 |  | PAINT | P2-5 |  | PAINT-1 |  | SM | SM |  |  |  |
| P2.L6.INT.S.1175 |  | Set & Connect - Elect Panels and Equipment / L6 / South Int |  | 5d | 2025-10-27 A | 2025-10-30 A | P2.L6.INT.S.1120, P2.L6.INT.S.1100 | 100% |  | 2025-10-15 | 2025-10-21 |  |  | 40 |  | ELEC | P2-5 |  | ELEC-2 |  | SM | SM |  |  |  |
| P2.L6.INT.S.2090 |  | OH - HVAC Piping (Low) / L6 / South Int |  | 20d | 2025-10-31 A | 2025-12-01 A | P2.L6.INT.S.1180 | 100% |  | 2025-10-01 | 2025-10-28 |  |  | 80 | P2.B2.23.20.410 | FIT | P2-5 | Harris | FIT-2 |  | SM | SM | 2 | O |  |
| P2.L6.INT.S.1200 |  | OH - Electrical - Equip Tie In / L6 / South Int |  | 10d | 2025-11-03 A | 2025-11-30 A | P2.L6.INT.S.1160, P2.L6.INT.S.1170, P2.L6.INT.S.1175 | 100% |  | 2025-12-01 | 2025-12-12 |  |  | 80 | P2.B2.26.05.410 | ELEC | P2-5 |  | ELEC-2 |  | SM | SM | 4 |  |  |
| P2.L6.INT.S.1240 |  | OH - Hang Duct - LP Branch / L6 / South Int |  | 10d | 2025-11-17 A | 2026-03-27 A | P2.L6.INT.S.1210 | 100% |  | 2025-12-15 | 2025-12-29 |  |  | 80 | P2.B2.23.30.410 | HVAC | P2-5 | Harris | HVAC |  | SM | SM | 3 | O |  |
| P2.L6.INT.S.1230 |  | OH - Insulate HP Duct / L6 / South Int |  | 10d | 2025-11-25 A | 2025-12-29 A | P2.L6.INT.S.1210 | 100% |  | 2026-01-16 | 2026-01-29 |  |  | 80 | P2.B2.23.07.310 | INSUL | P2-5 | Harris | INSUL-3 |  | SM | SM | 3 | O |  |
| P2.L6.INT.S.1210 |  | OH - DALT - HP Mains / L6 / South Int |  | 10d | 2025-12-01 A | 2025-12-12 A | P2.L6.INT.S.1140 | 100% |  | 2026-01-02 | 2026-01-15 |  |  | 80 | P2.B2.23.30.310 | TAB | P2-5 | Harris | TAB-1 |  | SM | SM | 2 | O |  |
| P2.L6.INT.S.1250 |  | OH - HVAC Piping - Test / L6 / South Int |  | 10d | 2025-12-01 A | 2025-12-16 A | P2.L6.INT.S.2090 | 100% |  | 2026-01-02 | 2026-01-15 |  |  | 80 | P2.B2.23.20.510 | FIT | P2-5 | Harris | FIT-2 |  | SM | SM | 3 | O |  |
| P2.L6.INT.S.1340 |  | OH - Conduit - Low Volt - Telecom / L6 / South Int |  | 10d | 2025-12-24 A | 2026-03-02 A | P2.L6.INT.S.1310 | 100% |  | 2026-01-14 | 2026-01-27 |  |  | 80 |  | ELEC | P2-5 |  | ELEC-2 |  | SM | SM | 5 | O |  |
| P2.L6.INT.S.1260 |  | OH - Insulate Plumbing / L6 / South Int |  | 10d | 2026-01-05 A | 2026-01-30 A | P2.L6.INT.S.1220 | 100% |  | 2026-01-02 | 2026-01-15 |  |  | 80 | P2.B2.22.07.510 | INSUL | P2-5 | Harris | INSUL-3 |  | SM | SM | 3 | O |  |
| P2.L6.INT.S.1300 |  | OH - Insulate HVAC Pipe / L6 / South Int |  | 10d | 2026-01-05 A | 2026-01-30 A | P2.L6.INT.S.1230, P2.L6.INT.S.1250 | 100% |  | 2026-01-02 | 2026-01-15 |  |  | 80 | P2.B2.22.07.610 | INSUL | P2-5 | Harris | INSUL-3 |  | SM | SM | 4 | O |  |
| P2.L6.INT.S.1320 |  | OH - Conduit - Low Volt - BAS/Controls / L6 / South Int |  | 10d | 2026-01-05 A | 2026-01-30 A | P2.L6.INT.S.1300 | 100% |  | 2026-01-16 | 2026-01-29 |  |  | 80 |  | BAS | P2-5 | Harris | BAS-1 |  | SM | SM | 5 |  |  |
| P2.L6.INT.S.1310 |  | OH - Insulate LP Duct / L6 / South Int |  | 10d | 2026-01-06 A | 2026-01-30 A | P2.L6.INT.S.1240 | 100% |  | 2026-01-06 | 2026-01-19 |  |  | 80 | P2.B2.23.07.410 | INSUL | P2-5 | Harris | INSUL-3 |  | SM | SM | 4 | O |  |
| P2.L6.INT.S.1270 |  | Pull Wire - Electrical - 208/120v Branch & Equip / L6 / South Int |  | 20d | 2026-02-19 A | 2026-04-21 | P2.L6.INT.S.1200, P2.L6.INT.S.1190, P2.L6.INT.S.1050 | 25% | 15d | 2026-03-04 | 2026-03-31 | 34d | 30d | 80 |  | ELEC | P2-5 |  | ELEC-2 |  | SM | SM | To Trim Devices & Term Panel | O |  |
| P2.L6.INT.S.1280 |  | Pull Wire - Electrical - 480/277v Distribution / L6 / South Int |  | 10d | 2026-02-26 A | 2026-04-21 | P2.L6.INT.S.1200 |  | 15d | 2026-03-02 | 2026-03-13 | 34d | 30d | 80 |  | ELEC | P2-5 |  | ELEC-2 |  | SM | SM | To Trim Devices & Term Panel | O |  |
| P2.L6.INT.S.1350 |  | OH - Conduit - Low Volt - Security / L6 / South Int |  | 10d | 2026-04-01 | 2026-04-14 | P2.L6.INT.S.1300 |  |  |  |  | 29d | 0d | 80 |  | ELEC | P2-5 |  | ELEC-2 |  | SM | SM | 5 |  |  |
| P2.L6.INT.S.1370 |  | Pull Wire - Low Volt - Fire Alarm / L6 / South Int |  | 10d | 2026-04-01 | 2026-04-14 | P2.L6.INT.S.1330, P2.L6.INT.S.1090 |  |  |  |  | 39d | 35d | 80 |  | FA | P2-5 |  | FA-1 |  | SM | SM | To Trim Finishes |  |  |
| P2.L6.INT.S.1380 |  | Pull Wire - Low Volt - Telecom / L6 / South Int |  | 10d | 2026-04-01 | 2026-04-14 | P2.L6.INT.S.1340, P2.L6.INT.S.1090 |  |  |  |  | 39d | 35d | 80 |  | CIT | P2-5 |  | CIT |  | SM | SM | To Trim Finishes |  |  |
| P2.L6.INT.S.1110 |  | Firestop - Thru Wall / L6 / South Int |  | 5d | 2026-04-15 | 2026-04-21 | P2.L6.INT.S.1140, P2.L6.INT.S.1150, P2.L6.INT.S.1160, P2.L6.INT.S.1180, P2.L6.INT.S.1130, P2.L6.INT.S.1340, P2.L6.INT.S.1350, P2.L6.INT.S.1320, P2.L6.INT.S.1330, P2.L6.INT.S.1120 SS |  |  |  |  | 34d | 30d | 40 | P2.B2.07.84.210 | FIRESTO | P2-5 |  | FIRESTO | AT48 |  | SM | To Finishes - Paint |  |  |
| P2.L6.INT.S.1390 |  | Pull Wire - Low Volt - Security / L6 / South Int |  | 10d | 2026-04-15 | 2026-04-28 | P2.L6.INT.S.1350 |  |  |  |  | 29d | 25d | 80 |  | LOWVOLT | P2-5 |  | LOWVOLT-1 |  |  | SM | To Trim Finishes |  |  |
| P2.L6.INT.S.1290 |  | OH - HVAC Piping - Equip Tie In / L6 / South Int |  | 15d | 2026-04-29 | 2026-05-19 | P2.L6.INT.S.1170, P2.L6.INT.S.1250 FF+3d, CX.B2.HYDR.1000 |  |  |  |  | 4d | 0d | 80 | P2.B2.23.20.610 | FIT | P2-5 | Harris | FIT-2 |  | SM | SM |  |  |  |
| P2.L6.INT.S.1360 |  | Pull Wire - Low Volt - BAS/Controls / L6 / South Int |  | 10d | 2026-05-20 | 2026-06-03 | P2.L6.INT.S.1320, P2.L6.INT.S.1290 |  |  |  |  | 4d | 0d | 80 |  | BAS | P2-5 | Harris | BAS-1 |  |  | SM | To Trim Finishes |  |  |
| P2.L6.INT.S.1400 |  | Trades Inspect & Verify R/I Work Completed to Specs / L6 / South Int |  | 2d | 2026-06-04 | 2026-06-05 | P2.L6.INT.S.1380, P2.L6.INT.S.1390, P2.L6.INT.S.1280, P2.L6.INT.S.1270, P2.L6.INT.S.1360, P2.L6.INT.S.1370, P2.L6.INT.S.1260, P2.L6.INT.S.1110 |  |  |  |  | 4d | 0d | 16 |  | T | P2-5 |  | T |  |  | SM | To Finishes |  | ! |

Notes:
- P2.L6.INT.S.1100: NOTES: OOS ties to H/T/F Drywall updated . it was pushing the HVAC piping (high)
- P2.L6.INT.S.1180: NOTES: Need to figure out why its pushing out so far
- FRG.P2.L6.INT.S.1740: NOTES: Per Harris schedule
- P2.L6.INT.S.2090: NOTES: Removed tie to L6 South (low). 10/16/25 per harris schedule

| ID | WBS | Activity | Type | Duration | Start | Finish | Predecessors | Complete | Remaining | Planned start | Planned finish | Total float | Free float | Temp Orig Dur | Resp / SRLM | 744 | PHASE | RESP UPD | RESP / Trade | *NIH Resp Check* | Testing Type | Z.RESP | Pick | Act ID Temp | Update Status | NOTES |
| --- | --- | --- | --- | --- | --- | --- | --- | --- | --- | --- | --- | --- | --- | --- | --- | --- | --- | --- | --- | --- | --- | --- | --- | --- | --- | --- |
|  | 2 | **Finishes - South Interstitial 6-2855 (12,408 sf)** |  |  | 2026-03-05 | 2026-08-03 |  |  |  |  |  |  |  |  |  |  |  |  |  |  |  |  |  |  |  |  |
| P2.L6.INT.S.2000 |  | Flooring Prep - Epoxy Floors / L6 / South Int |  | 7d | 2026-03-05 A | 2026-03-23 A | P2.L6.INT.S.1090 | 100% |  | 2026-05-06 | 2026-05-14 |  |  | 80 | EPOXYF | SM | P2-5 | SM | EPOXYF |  |  |  |  |  |  |  |
| P2.L6.INT.S.2100 |  | Flooring - Epoxy Floors / L6 / South Int |  | 3d | 2026-03-05 A | 2026-03-23 A | P2.L6.INT.S.2000 | 100% |  | 2026-05-15 | 2026-05-19 |  |  | 80 | EPOXYF | SM | P2-5 | SM | EPOXYF |  |  |  |  |  |  |  |
| P2.L6.INT.S.2010 |  | Paint - Finish Coat / L6 / South Int |  | 5d | 2026-06-08 | 2026-06-12 | P2.L6.INT.S.1400, P2.L6.INT.S.2100 |  |  |  |  | 139d | 0d | 40 | PAINT |  | P2-5 | SM | PAINT-1 | ! |  |  |  |  |  |  |
| P2.L6.INT.S.2020 |  | Doors & Hardware / L6 / South Int |  | 5d | 2026-06-15 | 2026-06-19 | P2.L6.INT.S.2010 |  |  |  |  | 139d | 0d | 40 | DFH |  | P2-5 | SM | DFH |  | AT29 |  |  |  |  |  |
| P2.L6.INT.S.2040 |  | Building Signage / L6 / South Int |  | 5d | 2026-06-15 | 2026-06-19 | P2.L6.INT.S.2010 |  |  |  |  | 144d | 5d | 40 | SIGN |  | P2-5 | SM | SIGN |  |  |  |  |  |  |  |
| P2.L6.INT.S.2030 |  | Trim All MEP Finishes / L6 / South Int |  | 5d | 2026-06-22 | 2026-06-26 | P2.L6.INT.S.2020, P2.L6.INT.S.2010 |  |  |  |  | 139d | 0d | 40 | MEP |  | P2-5 | SM | MEP-2 |  |  | Harris |  |  |  |  |
| P2.L6.INT.S.2050 |  | Rough Clean / L6 / South Int |  | 5d | 2026-06-29 | 2026-07-06 | P2.L6.INT.S.2040, P2.L6.INT.S.2030 |  |  |  |  | 139d | 0d | 40 | FCLEAN |  | P2-5 | SM | FCLEAN |  |  |  |  |  |  |  |
| P2.L6.INT.S.2060 |  | Prepare Punchlist / L6 / South Int |  | 5d | 2026-07-07 | 2026-07-13 | P2.L6.INT.S.2050 |  |  |  |  | 139d | 0d | 40 | QC |  | P2-5 | SM | QC |  |  |  |  |  |  |  |
| P2.L6.INT.S.2070 |  | Correct Punchlist / L6 / South Int |  | 10d | 2026-07-14 | 2026-07-27 | P2.L6.INT.S.2060 FF, P2.L6.INT.S.2060 |  |  |  |  | 139d | 0d | 80 | FINISH |  | P2-5 | SM | FINISH |  |  |  |  |  |  |  |
| P2.L6.INT.S.2080 |  | Final Clean / L6 / South Int |  | 5d | 2026-07-28 | 2026-08-03 | P2.L6.INT.S.2070 FF, P2.L6.INT.S.2070 |  |  |  |  | 139d | 151d | 40 | FCLEAN |  | P2-5 | SM | FCLEAN |  |  |  | To QC |  |  |  |
|  | 1 | **North Interstitial 6-2835** |  |  | 2025-04-30 | 2026-08-03 |  |  |  |  |  |  |  |  |  |  |  |  |  |  |  |  |  |  |  |  |
|  | Z11 | **Rough In - North Interstitial 6-2835** |  |  | 2025-04-30 | 2026-06-05 |  |  |  |  |  |  |  |  |  |  |  |  |  |  |  |  |  |  |  |  |
| P2.L6.INT.N.1000 |  | Layout - All Trades / L6 / North Int |  | 5d | 2025-04-30 A | 2025-05-20 A | P2.6.I.03.320 | 100% |  | 2025-06-02 | 2025-06-06 |  |  | 40 | R/I.OH |  | P2-5 |  | R/I.OH |  |  | Harris |  | P2.B2.01.010 |  |  |
| P2.L6.INT.N.1130 |  | OH - Fire Suppression / L6 / North Int |  | 10d | 2025-05-14 A | 2025-06-11 A | P2.L6.INT.N.1040 | 100% |  | 2025-06-30 | 2025-07-14 |  |  | 80 | FP | SM | P2-5 | SM | FP-1 |  |  |  | 1 | P2.B2.21.13.210 |  |  |
| P2.L6.INT.N.1020 |  | OH - Structural Supports (All Trades) / L6 / North Int |  | 5d | 2025-05-20 A | 2025-05-21 A | P2.L6.INT.N.1000 | 100% |  | 2025-06-09 | 2025-06-13 |  |  | 80 | R/I.OH |  | P2-5 |  | R/I.OH |  | AT24 | Harris |  | P2.B2.05.45.110 |  |  |
| P2.L6.INT.N.1040 |  | Fireproof Interstitial Steel / L6 / North Int |  | 5d | 2025-05-22 A | 2025-05-28 A | P2.L6.INT.N.1010, P2.L6.INT.N.1020, P2.L6.INT.N.1030 | 100% |  | 2025-06-23 | 2025-06-27 |  |  | 40 | SPRAY |  | P2-5 |  | SPRAY |  | AT49 |  |  | P2.1.09.81.140X10 |  |  |
| P2.L6.INT.N.1010 |  | Framing - Top Track / L6 / North Int |  | 5d | 2025-05-26 A | 2025-05-30 A | P2.L6.INT.S.1010, P2.L6.INT.N.1000 | 100% |  | 2025-06-16 | 2025-06-20 |  |  | 80 | GYP |  | P2-5 |  | GYP-1 |  |  |  |  | P2.B2.09.21.110 |  |  |
| P2.L6.INT.N.1030 |  | OH - MEPF - Hangers & Supports / L6 / North Int |  | 10d | 2025-05-26 A | 2025-05-30 A | P2.L6.INT.N.1000 | 100% |  | 2025-06-09 | 2025-06-20 |  |  | 80 | MEP |  | P2-5 |  | MEP-2 |  |  | Harris |  | P2.B2.20.05.410 |  |  |
| P2.L6.INT.N.1170 |  | Set & Connect - Mech Equipment / L6 / North Int |  | 20d | 2025-05-30 A | 2025-06-27 A | P2.L6.INT.N.1040, BP1.230.3.100 FF | 100% |  | 2025-06-30 | 2025-07-28 |  |  | 80 | HVAC | SM | P2-5 | SM | HVAC |  |  | Harris |  |  |  |  |
| P2.L6.INT.N.1160 |  | OH - Electrical - 480/277v Distribution / L6 / North Int |  | 20d | 2025-06-30 A | 2025-09-19 A | P2.L6.INT.N.1040 | 100% |  | 2025-07-01 | 2025-07-29 |  |  | 80 | ELEC | SM | P2-5 | SM | ELEC-2 |  |  |  | 1 | P2.B2.26.05.210 | O |  |
| P2.L6.INT.N.1070 |  | Framing - Perimeter Studs and Door Frames / L6 / North Int |  | 10d | 2025-07-28 A | 2025-08-05 A | P2.L6.INT.N.1040 | 100% |  | 2025-08-01 | 2025-08-14 |  |  | 80 | GYP | SM | P2-5 | SM | GYP-1 |  |  |  |  | A1310 |  |  |
| P2.L6.INT.N.1050 |  | In Wall - Electrical - Framing / L6 / North Int |  | 10d | 2025-07-30 A | 2025-09-19 A | P2.L6.INT.N.1070 SS | 100% |  | 2025-08-01 | 2025-08-14 |  |  | 80 | ELEC | SM | P2-5 | SM | ELEC-2 |  |  |  |  | P2.B2.26.05.610 | O |  |
| P2.L6.INT.N.1190 |  | OH - Electrical - 208/120v Branch / L6 / North Int |  | 10d | 2025-07-30 A | 2025-11-30 A | P2.L6.INT.N.1050, P2.L6.INT.N.1160 | 100% |  | 2025-08-27 | 2025-09-10 |  |  | 80 | ELEC | SM | P2-5 | SM | ELEC-2 |  |  |  | 2 | P2.B2.26.05.310 |  |  |
| FRG.P2.L6.INT.N.1720 |  | HVAC Piping Delivery / L6 / North Int - FRAGNET | milestone | 0d | 2025-08-01 A | 2025-08-01 A | P2.L6.INT.N.1030 FF | 100% |  |  |  |  |  | 80 | Harris Fragnet | TA | P2-5 | TA | FIT-2 |  |  | Harris | 2 | P2.B2.23.20.410 | O | Per Harris schedule |
| FRG.P2.L6.INT.N.1730 |  | HVAC Piping - Staging & Layout / L6 / North Int - FRAGNET |  | 18d | 2025-08-04 A | 2025-08-29 A | FRG.P2.L6.INT.N.1720 | 100% |  | 2025-09-30 | 2025-10-23 |  |  | 80 | Harris Fragnet | TA | P2-5 | TA | FIT-2 |  |  | Harris | 2 | P2.B2.23.20.410 | O |  |
| P2.L6.INT.N.1150 |  | OH - Plumbing Piping / L6 / North Int |  | 15d | 2025-08-04 A | 2025-09-25 A | P2.L6.INT.N.1100 FF+2d, P2.L6.N.1180, P2.L6.INT.N.1120 FF+2d, P2.L6.INT.N.1040 | 100% |  | 2025-10-01 | 2025-10-21 |  |  | 80 | PLMB | SM | P2-5 | SM | PLMB |  |  | Harris | 1 | P2.B2.22.14.210 | O |  |
| P2.L6.INT.N.1140 |  | OH - Hang Duct - HP Mains / L6 / North Int |  | 20d | 2025-09-05 A | 2025-11-06 A | P2.L6.INT.N.1100 FF+2d, P2.L6.INT.S.1140, P2.L6.INT.N.1120 FF+2d, P2.L6.INT.N.1040 | 100% |  | 2025-10-08 | 2025-11-04 |  |  | 80 | HVAC | SM | P2-5 | SM | HVAC |  |  | Harris | 1 | P2.B2.23.30.210 | O |  |
| P2.L6.INT.N.1180 |  | OH - HVAC Piping (High) / L6 / North Int |  | 20d | 2025-09-05 A | 2025-11-28 A | P2.L6.INT.N.1040, P2.L6.INT.N.1130 SS+5d, FRG.P2.L6.INT.N.1730 | 100% |  | 2025-09-30 | 2025-10-27 |  |  | 80 | FIT | SM | P2-5 | SM | FIT-2 |  |  | Harris | 2 | P2.B2.23.20.410 |  | Broke tie to L6 North (High). Per Harris schedule 10/16 |
| P2.L6.INT.N.1060 |  | In Wall - Backing/Blocking/Supports / L6 / North Int |  | 10d | 2025-09-12 A | 2025-09-12 A | P2.L6.INT.N.1070 SS | 100% |  | 2025-10-01 | 2025-10-14 |  |  | 80 | R/I.IW | SM | P2-5 | SM | R/I.IW |  |  |  |  | P2.B2.09.21.510 | O |  |
| P2.L6.INT.N.1330 |  | OH - Conduit - Low Volt - Fire Alarm / L6 / North Int |  | 10d | 2025-09-12 A | 2025-09-30 A | P2.L6.INT.N.1310 | 100% |  | 2025-12-19 | 2026-01-05 |  |  | 80 | FA | SM | P2-5 | SM | FA-1 |  |  |  | 5 |  |  |  |
| P2.L6.INT.N.1080 |  | AHJ Inspections - Wall Close In / L6 / North Int |  | 5d | 2025-09-18 A | 2025-09-19 A | P2.L6.INT.N.1050 FF, P2.L6.INT.N.1060 FF, P2.L6.INT.N.1070, P2.L6.INT.N.1190 FF | 100% |  | 2025-10-13 | 2025-10-17 |  |  | 40 | FM | SM | P2-5 | SM | FM |  |  |  |  | P2.B2.01.43.110 | O |  |
| P2.L6.INT.N.1090 |  | Hang-Tape-Finish / L6 / North Int |  | 10d | 2025-09-24 A | 2025-10-15 A | P2.L6.INT.N.1080 | 100% |  | 2025-10-20 | 2025-10-31 |  |  | 80 | GYP | SM | P2-5 | SM | GYP-1 |  |  |  |  | P2.B2.09.21.710 |  |  |
| P2.L6.INT.N.1100 |  | Spray/Seal/Firestop - Head of Wall / L6 / North Int |  | 5d | 2025-10-08 A | 2025-10-14 A | P2.L6.INT.N.1090 SS+5d | 100% |  |  |  |  |  | 40 | FIRSAFE | SM | P2-5 | SM | FIRSAFE |  | AT47 |  | To Finishes - Paint | P2.B2.07.84.310 |  |  |
| P2.L6.INT.N.1120 |  | Paint Prime & 1st Coat / L6 / North Int |  | 5d | 2025-10-16 A | 2025-10-20 A | P2.L6.INT.N.1100 SS | 100% |  | 2025-10-08 | 2025-10-14 |  |  | 40 | PAINT | SM | P2-5 | SM | PAINT-1 |  |  |  |  |  |  |  |
| P2.L6.INT.N.1175 |  | Set & Connect - Elect Panels and Equipment / L6 / North Int |  | 5d | 2025-10-27 A | 2025-10-30 A | P2.L6.INT.N.1100, P2.L6.INT.N.1120 | 100% |  | 2025-10-15 | 2025-10-21 |  |  | 40 | ELEC | SM | P2-5 | SM | ELEC-2 |  |  |  |  |  |  |  |
| P2.L6.INT.N.1210 |  | OH - DALT - HP Mains / L6 / North Int |  | 10d | 2025-11-05 A | 2025-12-31 A | P2.L6.INT.N.1140 | 100% |  | 2026-01-09 | 2026-01-22 |  |  | 80 | TAB | SM | P2-5 | SM | TAB-1 |  |  | Harris | 2 | P2.B2.23.30.310 | O |  |
| P2.L6.INT.N.1200 |  | OH - Electrical - Equip Tie In / L6 / North Int |  | 10d | 2025-11-10 A | 2025-11-30 A | P2.L6.INT.N.1160, P2.L6.INT.N.1170, P2.L6.INT.N.1175 | 100% |  | 2025-12-08 | 2025-12-19 |  |  | 80 | ELEC | SM | P2-5 | SM | ELEC-2 |  |  |  | 4 | P2.B2.26.05.410 |  |  |
| P2.L6.INT.N.2090 |  | OH - HVAC Piping (Low) / L6 / North Int |  | 20d | 2025-11-10 A | 2025-12-31 A | P2.L6.INT.N.1180 | 100% |  | 2025-12-08 | 2026-01-06 |  |  | 80 | FIT | SM | P2-5 | SM | FIT-2 |  |  | Harris | 2 | P2.B2.23.20.410 | O | removed tie to L6 North (Low). Per harris schedule 10/16 |
| P2.L6.INT.N.1240 |  | OH - Hang Duct - LP Branch / L6 / North Int |  | 10d | 2025-11-13 A | 2026-04-02 | P2.L6.INT.N.1210 | 80% | 2d | 2026-01-23 | 2026-02-05 | 22d | 18d | 80 | HVAC | SM | P2-5 | SM | HVAC |  |  | Harris | 3 | P2.B2.23.30.410 | O |  |
| P2.L6.INT.N.1230 |  | OH - Insulate HP Duct / L6 / North Int |  | 10d | 2025-11-25 A | 2026-01-22 A | P2.L6.INT.N.1210 | 100% |  | 2026-01-23 | 2026-02-05 |  |  | 80 | INSUL | SM | P2-5 | SM | INSUL-3 |  |  | Harris | 3 | P2.B2.23.07.310 | O |  |
| P2.L6.INT.N.1220 |  | OH - Plumbing - Test / L6 / North Int |  | 15d | 2025-12-01 A | 2025-12-15 A | P2.L6.INT.N.1150 | 100% |  | 2026-01-02 | 2026-01-22 |  |  | 80 | PLMB | SM | P2-5 | SM | PLMB |  |  | Harris | 2 | P2.B2.22.14.310 | O |  |
| P2.L6.INT.N.1250 |  | OH - HVAC Piping - Test / L6 / North Int |  | 10d | 2025-12-29 A | 2026-01-02 A | P2.L6.INT.N.2090 FF+5d | 100% |  | 2026-01-09 | 2026-01-22 |  |  | 80 | FIT | SM | P2-5 | SM | FIT-2 |  |  | Harris | 3 | P2.B2.23.20.510 | O |  |
| P2.L6.INT.N.1340 |  | OH - Conduit - Low Volt - Telecom / L6 / North Int |  | 10d | 2026-01-01 A | 2026-01-30 A | P2.L6.INT.N.1310 | 100% |  | 2026-03-04 | 2026-03-17 |  |  | 80 | ELEC | SM | P2-5 | SM | ELEC-2 |  |  |  | 5 |  |  |  |
| P2.L6.INT.N.1260 |  | OH - Insulate Plumbing / L6 / North Int |  | 10d | 2026-01-05 A | 2026-01-30 A | P2.L6.INT.N.1220 | 100% |  | 2026-01-02 | 2026-01-15 |  |  | 80 | INSUL | SM | P2-5 | SM | INSUL-3 |  |  | Harris | 3 | P2.B2.22.07.510 | O |  |
| P2.L6.INT.N.1300 |  | OH - Insulate HVAC Pipe / L6 / North Int |  | 10d | 2026-01-05 A | 2026-01-30 A | P2.L6.INT.N.1230, P2.L6.INT.N.1250 | 100% |  | 2026-01-16 | 2026-01-29 |  |  | 80 | INSUL | SM | P2-5 | SM | INSUL-3 |  |  | Harris | 4 | P2.B2.22.07.610 |  |  |
| P2.L6.INT.N.1310 |  | OH - Insulate LP Duct / L6 / North Int |  | 10d | 2026-01-05 A | 2026-01-30 A | P2.L6.INT.N.1140 | 100% |  | 2026-01-16 | 2026-01-29 |  |  | 80 | INSUL | SM | P2-5 | SM | INSUL-3 |  |  | Harris | 4 | P2.B2.23.07.410 |  |  |
| P2.L6.INT.N.1320 |  | OH - Conduit - Low Volt - BAS/Controls / L6 / North Int |  | 10d | 2026-01-05 A | 2026-03-02 A | P2.L6.INT.N.1300 | 100% |  | 2026-01-30 | 2026-02-12 |  |  | 80 | BAS | SM | P2-5 | SM | BAS-1 |  |  | Harris | 5 |  |  |  |
| P2.L6.INT.N.1280 |  | Pull Wire - Electrical - 480/277v Distribution / L6 / North Int |  | 10d | 2026-02-20 A | 2026-04-14 | P2.L6.INT.N.1200 |  | 10d | 2026-03-02 | 2026-03-13 | 39d | 35d | 80 | ELEC | SM | P2-5 | SM | ELEC-2 |  |  |  | To Trim Devices & Term Panel |  | O |  |
| P2.L6.INT.N.1270 |  | Pull Wire - Electrical - 208/120v Branch & Equip / L6 / North Int |  | 20d | 2026-03-04 A | 2026-04-28 | P2.L6.INT.N.1190, P2.L6.INT.N.1200 |  | 20d | 2026-03-02 | 2026-03-27 | 29d | 25d | 80 | ELEC | SM | P2-5 | SM | ELEC-2 |  |  |  | To Trim Devices & Term Panel |  | O |  |
| P2.L6.INT.N.1350 |  | OH - Conduit - Low Volt - Security / L6 / North Int |  | 10d | 2026-04-01 | 2026-04-14 | P2.L6.INT.N.1300 |  |  |  |  | 29d | 0d | 80 | ELEC | SM | P2-5 | SM | ELEC-2 |  |  |  | 5 |  |  |  |
| P2.L6.INT.N.1370 |  | Pull Wire - Low Volt - Fire Alarm / L6 / North Int |  | 10d | 2026-04-01 | 2026-04-14 | P2.L6.INT.N.1330 |  |  |  |  | 39d | 35d | 80 | FA | SM | P2-5 | SM | FA-1 |  |  |  | To Trim Finishes |  |  |  |
| P2.L6.INT.N.1380 |  | Pull Wire - Low Volt - Telecom / L6 / North Int |  | 10d | 2026-04-01 | 2026-04-14 | P2.L6.INT.N.1340 |  |  |  |  | 39d | 35d | 80 | CIT | SM | P2-5 | SM | CIT |  |  |  | To Trim Finishes |  |  |  |
| P2.L6.INT.N.1110 |  | Firestop - Thru Wall / L6 / North Int |  | 5d | 2026-04-15 | 2026-04-21 | P2.L6.INT.N.1180, P2.L6.INT.N.1130, P2.L6.INT.N.1140, P2.L6.INT.N.1150, P2.L6.INT.N.1160, P2.L6.INT.N.2090, P2.L6.INT.N.1330, P2.L6.INT.N.1340, P2.L6.INT.N.1350, P2.L6.INT.N.1320, P2.L6.INT.N.1120 SS |  |  |  |  | 34d | 30d | 40 | FIRESTO | SM | P2-5 | SM | FIRESTO |  | AT48 |  | To Finishes - Paint | P2.B2.07.84.210 |  |  |
| P2.L6.INT.N.1390 |  | Pull Wire - Low Volt - Security / L6 / North Int |  | 10d | 2026-04-15 | 2026-04-28 | P2.L6.INT.N.1350 |  |  |  |  | 29d | 25d | 80 | LOWVOLT | SM | P2-5 | SM | LOWVOLT-1 |  |  |  | To Trim Finishes |  |  |  |
| P2.L6.INT.N.1290 |  | OH - HVAC Piping - Equip Tie In / L6 / North Int |  | 15d | 2026-04-29 | 2026-05-19 | P2.L6.INT.N.1170, P2.L6.INT.N.1250, CX.B2.HYDR.1000, P2.L6.INT.N.1240 |  |  |  |  | 4d | 0d | 80 | FIT | SM | P2-5 | SM | FIT-2 |  |  | Harris |  | P2.B2.23.20.610 |  |  |
| P2.L6.INT.N.1360 |  | Pull Wire - Low Volt - BAS/Controls / L6 / North Int |  | 10d | 2026-05-20 | 2026-06-03 | P2.L6.INT.N.1290, P2.L6.INT.N.1320 |  |  |  |  | 4d | 0d | 80 | BAS | SM | P2-5 | SM | BAS-1 |  |  | Harris | To Trim Finishes |  |  |  |
| P2.L6.INT.N.1400 |  | Trades Inspect & Verify R/I Work Completed to Specs / L6 / North Int |  | 2d | 2026-06-04 | 2026-06-05 | P2.L6.INT.N.1110, P2.L6.INT.N.1370, P2.L6.INT.N.1380, P2.L6.INT.N.1390, P2.L6.INT.N.1280, P2.L6.INT.N.1260, P2.L6.INT.N.1270, P2.L6.INT.N.1360 |  |  |  |  | 4d | 0d | 16 | T | SM | P2-5 | SM | T | ! |  |  | To Finishes |  |  |  |

| ID | WBS | Activity | Type | Duration | Start | Finish | Predecessors | Complete | Planned start | Planned finish | Total float | Free float | Temp Orig Dur | Resp / SRLM | 744 | PHASE | RESP UPD | RESP / Trade | *NIH Resp Check* | Testing Type | Z.RESP | Pick | Act ID Temp | Update Status | **NEAR CRITICAL** |
| --- | --- | --- | --- | --- | --- | --- | --- | --- | --- | --- | --- | --- | --- | --- | --- | --- | --- | --- | --- | --- | --- | --- | --- | --- | --- |
|  | 1 | **Finishes - North Interstitial 6-2835 (6,848 sf)** |  |  | 2026-03-16 | 2026-08-03 |  |  |  |  |  |  |  |  |  |  |  |  |  |  |  |  |  |  |  |
| P2.L6.INT.N.2000 |  | Flooring Prep - Epoxy Floors / L6 / North Int |  | 7d | 2026-03-16 A | 2026-03-20 A | P2.L6.INT.N.1175 | 100% | 2026-05-06 | 2026-05-14 |  |  | 80 | EPOXYF | SM | P2-5 | SM | EPOXYF |  |  |  |  |  |  |  |
| P2.L6.INT.N.2100 |  | Flooring - Epoxy Floors / L6 / North Int |  | 3d | 2026-03-17 A | 2026-03-20 A | P2.L6.INT.N.2000 | 100% | 2026-05-27 | 2026-05-29 |  |  | 80 | EPOXYF | SM | P2-5 | SM | EPOXYF |  |  |  |  |  |  |  |
| P2.L6.INT.N.2010 |  | Paint - Finish Coat / L6 / North Int |  | 5d | 2026-06-08 | 2026-06-12 | P2.L6.INT.N.1400, P2.L6.INT.N.2100 |  |  |  | 139d | 0d | 40 | PAINT |  | P2-5 | SM | PAINT-1 | ! |  |  |  |  |  |  |
| P2.L6.INT.N.2020 |  | Doors & Hardware / L6 / North Int |  | 5d | 2026-06-15 | 2026-06-19 | P2.L6.INT.N.2010 |  |  |  | 139d | 0d | 40 | DFH |  | P2-5 | SM | DFH |  | AT29 |  |  |  |  |  |
| P2.L6.INT.N.2040 |  | Building Signage / L6 / North Int |  | 5d | 2026-06-15 | 2026-06-19 | P2.L6.INT.N.2010 |  |  |  | 144d | 5d | 40 | SIGN |  | P2-5 | SM | SIGN |  |  |  |  |  |  |  |
| P2.L6.INT.N.2030 |  | Trim All MEP Finishes / L6 / North Int |  | 5d | 2026-06-22 | 2026-06-26 | P2.L6.INT.N.2020, P2.L6.INT.N.2010 |  |  |  | 139d | 0d | 40 | MEP |  | P2-5 | SM | MEP-2 |  |  | Harris |  |  |  |  |
| P2.L6.INT.N.2050 |  | Rough Clean / L6 / North Int |  | 5d | 2026-06-29 | 2026-07-06 | P2.L6.INT.N.2040, P2.L6.INT.N.2030 |  |  |  | 139d | 0d | 40 | FCLEAN |  | P2-5 | SM | FCLEAN |  |  |  |  |  |  |  |
| P2.L6.INT.N.2060 |  | Prepare Punchlist / L6 / North Int |  | 5d | 2026-07-07 | 2026-07-13 | P2.L6.INT.N.2050 |  |  |  | 139d | 0d | 40 | QC |  | P2-5 | SM | QC |  |  |  |  |  |  |  |
| P2.L6.INT.N.2070 |  | Correct Punchlist / L6 / North Int |  | 10d | 2026-07-14 | 2026-07-27 | P2.L6.INT.N.2060 FF, P2.L6.INT.N.2060 |  |  |  | 139d | 0d | 80 | FINISH |  | P2-5 | SM | FINISH |  |  |  |  |  |  |  |
| P2.L6.INT.N.2080 |  | Final Clean / L6 / North Int |  | 5d | 2026-07-28 | 2026-08-03 | P2.L6.INT.N.2070 FF, P2.L6.INT.N.2070 |  |  |  | 139d | 151d | 40 | FCLEAN |  | P2-5 | SM | FCLEAN |  |  |  | To QC |  |  |  |
|  | 1 | **MECHANICAL TOWERS / LEVEL 6** |  |  | 2015-11-03 | 2026-07-30 |  |  |  |  |  |  |  |  |  |  |  |  |  |  |  |  |  |  |  |
|  | 4 | **South Mechanical Tower / Rough In & Finish / Level 6** |  |  | 2015-11-03 | 2026-07-30 |  |  |  |  |  |  |  |  |  |  |  |  |  |  |  |  |  |  |  |
| P2.L6.SMT.1080 |  | Set & Connect - Elect Panels and Equipment / L6 - S. Mech Tower |  | 5d | 2015-11-03 A | 2025-11-07 A | P2.L6.SMT.1060 | 100% | 2025-12-01 | 2025-12-05 |  |  | 40 | ELEC | TS | P2-5 | TS | ELEC-2 |  |  |  |  |  |  |  |
| P2.L6.SMT.1070 |  | Set & Connect - Mech Equipment / L6 - S. Mech Tower |  | 10d | 2025-06-01 A | 2025-06-01 A | P2.L5.SMT.1070, P2.6.03.610 | 100% | 2025-08-13 | 2025-08-26 |  |  | 80 | HVAC | TS | P2-5 | TS | HVAC |  |  | Harris |  |  |  |  |
| P2.L6.SMT.1000 |  | Insulation - Exterior Wall Assembly / L6 - S. Mech Tower |  | 5d | 2025-07-02 A | 2025-07-09 A | P2.FAC.2.Z1.150 | 100% | 2025-08-01 | 2025-08-07 |  |  | 40 | INSUL | TS | P2-5 | TS | INSUL-1 |  |  |  |  |  |  |  |
| P2.L6.SMT.1020 |  | In Wall - Electrical - CMU / L6 - S. Mech Tower |  | 10d | 2025-08-01 A | 2025-08-15 A | P2.L6.SMT.1010 SS | 100% | 2025-08-29 | 2025-09-12 |  |  | 80 | ELEC | TS | P2-5 | TS | ELEC-2 |  |  |  |  | P2.B2.26.05.510 |  |  |
| P2.L6.SMT.1030 |  | In Wall - Mech/Plumbing - CMU / L6 - S. Mech Tower |  | 10d | 2025-08-01 A | 2025-08-15 A | P2.L6.SMT.1010 SS | 100% | 2025-08-29 | 2025-09-12 |  |  | 80 | PLMB | TS | P2-5 | TS | PLMB |  |  | Harris |  | P2.B2.22.05.310 |  |  |
| P2.L6.SMT.1100 |  | HVAC Piping Connections to Shaft Riser (Chilled Water) / L6 - S. Mech Tower |  | 20d | 2025-09-02 A | 2025-09-26 A | P2.L6.SMT.1070 | 100% | 2025-10-01 | 2025-10-28 |  |  | 40 | HVAC | TS | P2-5 | TS | HVAC | ! |  | Harris |  |  | O |  |
| P2.L6.SMT.1105 |  | HVAC Duct Connections to Shaft Riser / L6 - S. Mech Tower |  | 20d | 2025-09-02 A | 2025-09-26 A | P2.L6.SMT.1070 | 100% | 2025-10-01 | 2025-10-28 |  |  | 40 | HVAC | TS | P2-5 | TS | HVAC | ! |  | Harris |  |  | O |  |
| P2.L6.SMT.1250 |  | HVAC Piping Connections to Shaft Riser (Reheat) / L6 - S. Mech Tower |  | 20d | 2025-09-02 A | 2025-09-26 A | P2.L6.SMT.1100 | 100% | 2025-10-29 | 2025-11-25 |  |  | 40 | HVAC | TS | P2-5 | TS | HVAC | ! |  | Harris |  |  | O |  |
| P2.L6.SMT.1010 |  | CMU - Lay Block / L6 - S. Mech Tower |  | 10d | 2025-09-05 A | 2025-09-10 A | P2.L3.SMT.1010, P2.L6.SMT.1000 | 100% | 2025-10-06 | 2025-10-17 |  |  | 80 | CMU | TS | P2-5 | TS | CMU |  | AT3 |  |  | P2.B2.04.20.210 | O |  |
| P2.L6.SMT.1130 |  | Test/Inspect Duct & Piping / L6 - S. Mech Tower |  | 5d | 2025-09-26 A | 2025-09-30 A | P2.L6.SMT.1105, P2.L6.SMT.1250 | 100% | 2025-11-26 | 2025-12-04 |  |  | 40 | MECH | TS | P2-5 | TS | MECH-2 | ! |  | Harris |  |  |  |  |
| P2.L6.SMT.1040 |  | Paint - CMU Block Fill / L6 - S. Mech Tower |  | 10d | 2025-10-06 A | 2025-10-17 A | P2.L6.SMT.1010 | 100% |  |  |  |  | 80 | PAINT | TS | P2-5 | TS | PAINT-1 |  |  |  |  | P2.B2.09.97.110 |  |  |
| P2.L6.SMT.1050 |  | CMU - Point & Patch / L6 - S. Mech Tower |  | 10d | 2025-10-20 A | 2025-10-22 A | P2.L6.SMT.1030, P2.L6.SMT.1020, P2.L6.SMT.1040 | 100% | 2025-10-20 | 2025-10-31 |  |  | 80 | CMU | TS | P2-5 | TS | CMU |  |  |  |  | P2.B2.04.20.310 |  |  |
| P2.L6.SMT.1060 |  | Paint Prime & 1st Coat - CMU / L6 - S. Mech Tower |  | 10d | 2025-10-20 A | 2025-10-31 A | P2.L6.SMT.1050 SS | 100% |  |  |  |  | 80 | PAINT | TS | P2-5 | TS | PAINT-1 |  |  |  |  | P2.B2.09.97.210 |  |  |
| P2.L6.SMT.1120 |  | BAS - Equip Tie In / L6 - S. Mech Tower |  | 5d | 2025-12-01 A | 2025-12-05 A | P2.L6.SMT.1070, P2.L6.SMT.1060 | 100% | 2026-01-02 | 2026-01-08 |  |  | 40 | BAS | TS | P2-5 | TS | BAS-1 |  |  | Harris |  |  | O |  |
| FRG.P2.L6.SMT.1040 |  | AHU Piping Install / L6 - S. Mech Tower - FRAGNET |  | 20d | 2026-01-02 A | 2026-02-13 A | FRG.P2.L5.SMT.1040 | 100% | 2026-01-02 | 2026-01-29 |  |  | 80 | Harris Fragnet | TA | P2-5 | TS | FIT-2 |  |  | Harris | 2 | P2.B2.23.20.410 | O | 8.1 |
| P2.L6.SMT.1110 |  | HVAC Piping - Equip Tie In (Chilled Water) / L6 - S. Mech Tower |  | 20d | 2026-03-02 A | 2026-03-30 A | P2.L6.SMT.1070, FRG.P2.L6.SMT.1040 | 100% | 2026-03-30 | 2026-04-24 |  |  | 80 | FIT | TS | P2-5 | TS | FIT-2 |  |  | Harris |  | P2.B2.23.20.610 |  |  |
| P2.L6.SMT.1260 |  | HVAC Piping - Equip Tie In (Reheat) / L6 - S. Mech Tower |  | 20d | 2026-04-29 | 2026-05-27 | P2.L6.SMT.1110, CX.B2.HYDR.1000, FRG.P2.L6.SMT.1040 |  |  |  | 49d | 0d | 80 | FIT | TS | P2-5 | TS | FIT-2 |  |  | Harris |  | P2.B2.23.20.610 |  |  |
| P2.L6.SMT.1150 |  | Insulate HVAC / Plumbing Pipe / L6 - S. Mech Tower |  | 5d | 2026-05-28 | 2026-06-03 | P2.L6.SMT.1260, P2.L6.SMT.1130 |  |  |  | 49d | 30d | 40 | INSUL | TS | P2-5 | TS | INSUL-3 | ! |  | Harris |  |  |  |  |
| P2.L6.SMT.1200 |  | Flooring Prep - Epoxy Floors / L6 - S. Mech Tower |  | 3d | 2026-06-03 | 2026-06-05 | P2.L5.SMT.1250, P2.L6.SMT.1080 |  |  |  | 1d | 0d | 16 | EPOXYF | TS | P2-5 | TS | EPOXYF |  |  |  |  |  |  |  |
| P2.L6.SMT.1270 |  | Flooring - Epoxy Floors / L6 - S. Mech Tower |  | 2d | 2026-06-08 | 2026-06-09 | P2.L6.SMT.1200 |  |  |  | 1d | 0d | 16 | EPOXYF | TS | P2-5 | TS | EPOXYF |  |  |  |  |  |  |  |
| P2.L6.SMT.1090 |  | Panelboards, Interconnect Wiring, and Remaining Room Buildout of All Elec/FA Systems / L6 - S. Mech Tower |  | 10d | 2026-06-10 | 2026-06-23 | BP1.262.3.100, BP1.262.3.200, P2.L6.SMT.1270, P2.L6.SMT.1080 |  |  |  | 19d | 0d | 80 | ELEC |  | P2-5 | TS | ELEC-2 |  |  |  |  |  |  |  |
| P2.L6.SMT.1140 |  | Pull Wire - In From Distribution Panels / Out to Branch Circuits / L6 - S. Mech Tower |  | 5d | 2026-06-24 | 2026-06-30 | P2.L6.SMT.1090 |  |  |  | 19d | 0d | 40 | ELEC |  | P2-5 | TS | ELEC-2 |  |  |  |  |  |  |  |
| P2.L6.SMT.1160 |  | Electrical Tie in to Equipment / L6 - S. Mech Tower |  | 5d | 2026-07-01 | 2026-07-08 | P2.L6.SMT.1140, P2.L6.SMT.1070 |  |  |  | 35d | 16d | 40 | ELEC |  | P2-5 | TS | ELEC-2 |  |  |  |  |  |  |  |
| P2.L6.SMT.1170 |  | Test & Terminate / L6 - S. Mech Tower |  | 5d | 2026-07-01 | 2026-07-08 | P2.L6.SMT.1140 |  |  |  | 19d | 0d | 40 | ELEC |  | P2-5 | TS | ELEC-2 |  |  |  |  |  |  |  |
| P2.L6.SMT.1180 |  | Paint - Finish Coat / L6 - S. Mech Tower |  | 2d | 2026-07-09 | 2026-07-10 | P2.L6.SMT.1170 |  |  |  | 19d | 0d | 16 | PAINT |  | P2-5 | TS | PAINT-1 |  |  |  |  |  |  |  |
| P2.L6.SMT.1190 |  | Trim All MEPF Finishes / L6 - S. Mech Tower |  | 2d | 2026-07-13 | 2026-07-14 | P2.L6.SMT.1180 |  |  |  | 19d | 0d | 16 | MEP |  | P2-5 | TS | MEP-2 |  |  | Harris |  |  |  |  |
| P2.L6.SMT.1210 |  | Doors & Hardware / L6 - S. Mech Tower |  | 2d | 2026-07-15 | 2026-07-16 | P2.L6.SMT.1190 |  |  |  | 19d | 0d | 16 | DFH |  | P2-5 | TS | DFH |  | AT29 |  |  |  |  |  |
| P2.L6.SMT.1220 |  | Trades Inspect & Verify R/I Work Completed to Specs / L6 - S. Mech Tower |  | 5d | 2026-07-17 | 2026-07-23 | P2.L6.SMT.1210, P2.L6.SMT.1120, P2.L6.SMT.1150 |  |  |  | 19d | 0d | 40 | T |  | P2-5 | TS | T |  |  |  |  |  |  |  |
| P2.L6.SMT.1240 |  | Energize Elec Panels - Lock Doors and Limit Access / L6 - S. Mech Tower |  | 5d | 2026-07-24 | 2026-07-30 | P2.L6.SMT.1220, CX.B2.SWGR.1010, CX.B2.MVEE.1010 |  |  |  | 19d | 0d | 40 | ELEC |  | P2-5 | TS | ELEC-2 |  |  |  |  |  |  |  |
| P2.L6.SMT.1230 |  | HVAC System Ready for Start Up / L6 - S. Mech Tower | milestone | 0d | 2026-07-30 | 2026-07-30 | P2.L6.SMT.1160 FF, P2.L6.SMT.1240 |  |  |  | 19d | 0d | 0 | MECH |  | P2-5 | TS | MECH-2 |  |  | Harris |  |  |  |  |

| ID | WBS | Activity | Type | Duration | Start | Finish | Predecessors | Complete | Remaining | Planned start | Planned finish | Total float | Free float | Temp Orig Dur | Resp / SRLM | PHASE | Z.RESP | RESP / Trade | Act ID Temp | 744 | RESP UPD | Update Status | Testing Type | Pick | *NIH Resp Check* |
| --- | --- | --- | --- | --- | --- | --- | --- | --- | --- | --- | --- | --- | --- | --- | --- | --- | --- | --- | --- | --- | --- | --- | --- | --- | --- |
|  | 8 | **East Mechanical Tower / Rough In & Finish / Level 6** |  |  | 2025-04-10 | 2026-06-24 |  |  |  |  |  |  |  |  |  |  |  |  |  |  |  |  |  |  |  |
| P2.L6.EMT.1070 |  | Set & Connect - Mech Equipment / L6 - E. Mech Tower |  | 10d | 2025-04-10 A | 2025-04-11 A | P2.L5.EMT.1070, P2.6.03.630 | 100% |  | 2025-05-30 | 2025-06-12 |  |  | 80 | HVAC | P2-5 | Harris | HVAC |  |  |  |  |  |  |  |
| P2.L6.EMT.1030 |  | In Wall - Mech/Plumbing - CMU / L6 - E. Mech Tower |  | 10d | 2025-08-11 A | 2025-09-18 A | P2.L6.EMT.1010 SS | 100% |  | 2025-10-15 | 2025-10-28 |  |  | 80 | PLMB | P2-5 | Harris | PLMB | P2.B2.22.05.310 | SM | SM |  |  |  |  |
| P2.L6.EMT.1000 |  | Insulation - Exterior Wall Assembly / L6 - E. Mech Tower |  | 5d | 2025-09-11 A | 2025-09-15 A | P2.FAC.2.Z3.150 | 100% |  | 2025-10-01 | 2025-10-07 |  |  | 40 | INSUL | P2-5 |  | INSUL-1 |  | SM | SM | O |  |  |  |
| P2.L6.EMT.1010 |  | CMU - Lay Block / L6 - E. Mech Tower |  | 10d | 2025-10-16 A | 2025-10-23 A | P2.L4.EMT.1020, P2.L6.EMT.1000 | 100% |  | 2025-10-15 | 2025-10-28 |  |  | 80 | CMU | P2-5 |  | CMU | P2.B2.04.20.210 | SM | SM |  | AT3 |  |  |
| P2.L6.EMT.1020 |  | In Wall - Electrical - CMU / L6 - E. Mech Tower |  | 10d | 2025-10-16 A | 2025-10-23 A | P2.L6.EMT.1010 SS | 100% |  | 2025-10-15 | 2025-10-28 |  |  | 80 | ELEC | P2-5 |  | ELEC-2 | P2.B2.26.05.510 | SM | SM |  |  |  |  |
| P2.L6.EMT.1040 |  | Paint - CMU Block Fill / L6 - E. Mech Tower |  | 10d | 2025-10-29 A | 2025-11-04 A | P2.L6.EMT.1010 | 100% |  | 2025-10-29 | 2025-11-11 |  |  | 80 | PAINT | P2-5 |  | PAINT-1 | P2.B2.09.97.110 | SM | SM |  |  |  |  |
| P2.L6.EMT.1050 |  | CMU - Point & Patch / L6 - E. Mech Tower |  | 10d | 2025-11-05 A | 2025-11-18 A | P2.L6.EMT.1040, P2.L6.EMT.1030, P2.L6.EMT.1020 | 100% |  | 2025-12-03 | 2025-12-16 |  |  | 80 | CMU | P2-5 |  | CMU | P2.B2.04.20.310 | SM | SM |  |  |  |  |
| P2.L6.EMT.1060 |  | Paint Prime & 1st Coat - CMU / L6 - E. Mech Tower |  | 10d | 2025-11-10 A | 2025-11-15 A | P2.L6.EMT.1050 SS | 100% |  | 2025-12-03 | 2025-12-16 |  |  | 80 | PAINT | P2-5 |  | PAINT-1 | P2.B2.09.97.210 | SM | SM |  |  |  |  |
| P2.L6.EMT.1080 |  | Set & Connect - Elect Panels and Equipment / L6 - E. Mech Tower |  | 5d | 2025-11-24 A | 2025-11-26 A | P2.L6.EMT.1060 | 100% |  | 2025-12-17 | 2025-12-23 |  |  | 40 | ELEC | P2-5 |  | ELEC-2 |  | SM | SM |  |  |  |  |
| P2.L6.EMT.1120 |  | BAS - Equip Tie In / L6 - E. Mech Tower |  | 5d | 2025-11-24 A | 2025-11-26 A | P2.L6.EMT.1070, P2.L6.EMT.1060 | 100% |  | 2025-12-17 | 2025-12-23 |  |  | 40 | BAS | P2-5 | Harris | BAS-1 |  | SM | SM |  |  |  |  |
| P2.L6.EMT.1090 |  | Panelboards, Interconnect Wiring, and Remaining Room Buildout of All Elec/FA Systems / L6 - E. Mech Tower |  | 10d | 2026-03-16 A | 2026-04-06 | BP1.262.3.200, BP1.262.3.100, P2.L6.EMT.1080 | 60% | 4d | 2026-04-03 | 2026-04-16 | 38d | 0d | 80 | ELEC | P2-5 |  | ELEC-2 |  |  | SM |  |  |  |  |
| P2.L6.EMT.1140 |  | Pull Wire - In From Distribution Panels / Out to Branch Circuits / L6 - E. Mech Tower |  | 5d | 2026-03-16 A | 2026-04-10 | P2.L6.EMT.1090 | 20% | 4d | 2026-04-17 | 2026-04-23 | 38d | 0d | 40 | ELEC | P2-5 |  | ELEC-2 |  |  | SM |  |  |  |  |
| FRG.P2.L6.EMT.1040 |  | AHU Piping Install / L6 - E. Mech Tower - FRAGNET |  | 20d | 2026-03-23 A | 2026-04-28 | FRG.P2.L4.EMT.1020 |  | 20d | 2026-03-09 | 2026-04-03 | 79d | 35d | 80 | Harris Fragnet | P2-5 | Harris | FIT-2 | P2.B2.23.20.410 | TA | SM |  |  | 2 |  |
| P2.L6.EMT.1100 |  | HVAC Piping Connections to Shaft Riser / L6 - E. Mech Tower |  | 20d | 2026-03-23 A | 2026-04-28 | P2.L6.EMT.1070 |  | 20d | 2026-03-02 | 2026-03-27 | 49d | 0d | 40 | HVAC | P2-5 | Harris | HVAC |  | SM | SM | O |  |  | ! |
| P2.L6.EMT.1110 |  | HVAC Piping - Equip Tie In / L6 - E. Mech Tower |  | 20d | 2026-03-23 A | 2026-05-27 | P2.L6.EMT.1070, CX.B2.HYDR.1000 |  | 20d | 2026-03-30 | 2026-04-24 | 44d | 0d | 80 | FIT | P2-5 | Harris | FIT-2 | P2.B2.23.20.610 | SM | SM |  |  |  |  |
| P2.L6.EMT.1250 |  | HVAC Duct Connections to Shaft Riser / L6 - E. Mech Tower |  | 5d | 2026-03-23 A | 2026-04-14 | P2.L6.EMT.1070 |  | 10d | 2026-03-02 | 2026-03-06 | 59d | 10d | 40 | HVAC | P2-5 | Harris | HVAC |  | SM | SM | O |  |  | ! |
| P2.L6.EMT.1200 |  | Flooring Prep - Epoxy Floors / L6 - E. Mech Tower |  | 3d | 2026-04-10 | 2026-04-14 | P2.L5.EMT.1260, P2.L6.EMT.1080 |  |  |  |  | 36d | 0d | 16 | EPOXYF | P2-5 |  | EPOXYF |  | SM | SM | O |  |  |  |
| P2.L6.EMT.1160 |  | Electrical Tie in to Equipment / L6 - E. Mech Tower |  | 5d | 2026-04-13 | 2026-04-17 | P2.L6.EMT.1140, P2.L6.EMT.1070 |  |  |  |  | 38d | 0d | 40 | ELEC | P2-5 |  | ELEC-2 |  |  | SM |  |  |  |  |
| P2.L6.EMT.1170 |  | Test & Terminate / L6 - E. Mech Tower |  | 5d | 2026-04-13 | 2026-04-17 | P2.L6.EMT.1140 |  |  |  |  | 80d | 0d | 40 | ELEC | P2-5 |  | ELEC-2 |  |  | SM |  |  |  |  |
| P2.L6.EMT.1260 |  | Flooring - Epoxy Floors / L6 - E. Mech Tower |  | 2d | 2026-04-15 | 2026-04-16 | P2.L6.EMT.1200 |  |  |  |  | 36d | 0d | 16 | EPOXYF | P2-5 |  | EPOXYF |  |  | SM |  |  |  |  |
| P2.L6.EMT.1230 |  | HVAC System Ready for Start Up / L6 - E. Mech Tower | milestone | 0d | 2026-04-17 | 2026-04-17 | P2.L6.EMT.1160 FF |  |  |  |  | 38d | 17d | 0 | MECH | P2-5 | Harris | MECH-2 |  |  | SM |  |  |  |  |
| P2.L6.EMT.1180 |  | Paint - Finish Coat / L6 - E. Mech Tower |  | 2d | 2026-04-20 | 2026-04-21 | P2.L6.EMT.1170 |  |  |  |  | 80d | 0d | 16 | PAINT | P2-5 |  | PAINT-1 |  |  | SM |  |  |  |  |
| P2.L6.EMT.1190 |  | Trim All MEPF Finishes / L6 - E. Mech Tower |  | 2d | 2026-04-22 | 2026-04-23 | P2.L6.EMT.1180 |  |  |  |  | 80d | 0d | 16 | MEP | P2-5 | Harris | MEP-2 |  |  | SM |  |  |  |  |
| P2.L6.EMT.1210 |  | Doors & Hardware / L6 - E. Mech Tower |  | 2d | 2026-04-24 | 2026-04-27 | P2.L6.EMT.1190 |  |  |  |  | 80d | 36d | 16 | DFH | P2-5 |  | DFH |  |  | SM |  | AT29 |  |  |
| P2.L6.EMT.1130 |  | Test/Inspect Duct & Piping / L6 - E. Mech Tower |  | 15d | 2026-04-29 | 2026-05-19 | P2.L6.EMT.1100, P2.L6.EMT.1250 |  |  |  |  | 49d | 5d | 40 | MECH | P2-5 | Harris | MECH-2 |  | SM | SM | O |  |  | ! |
| P2.L6.EMT.1150 |  | Insulate HVAC / Plumbing Pipe / L6 - E. Mech Tower |  | 15d | 2026-05-28 | 2026-06-17 | P2.L6.EMT.1130, P2.L6.EMT.1110 |  |  |  |  | 44d | 0d | 40 | INSUL | P2-5 | Harris | INSUL-3 |  | SM | SM |  |  |  | ! |
| P2.L6.EMT.1220 |  | Trades Inspect & Verify R/I Work Completed to Specs / L6 - E. Mech Tower |  | 5d | 2026-06-18 | 2026-06-24 | P2.L6.EMT.1210, P2.L6.EMT.1120, P2.L6.EMT.1150, FRG.P2.L6.EMT.1040 |  |  |  |  | 44d | 0d | 40 | T | P2-5 |  | T |  |  | SM |  |  |  |  |
| P2.L6.EMT.1240 |  | Energize Elec Panels - Lock Doors and Limit Access / L6 - E. Mech Tower |  | 5d | 2026-06-18 | 2026-06-24 | P2.L6.EMT.1220 SS, CX.B2.SWGR.1010, CX.B2.MVEE.1010, FRG.P2.L6.EMT.1040 |  |  |  |  | 44d | 0d | 40 | ELEC | P2-5 |  | ELEC-2 |  |  | SM |  |  |  |  |

| ID | WBS | Activity | Type | Duration | Start | Finish | Predecessors | Complete | Remaining | Planned start | Planned finish | Total float | Free float | Temp Orig Dur | Act ID Temp | Resp / SRLM | 744 | PHASE | Z.RESP | RESP UPD | RESP / Trade | Testing Type | Pick | Update Status | NOTES | **NEAR CRITICAL** |
| --- | --- | --- | --- | --- | --- | --- | --- | --- | --- | --- | --- | --- | --- | --- | --- | --- | --- | --- | --- | --- | --- | --- | --- | --- | --- | --- |
|  | L7 | **L7 / BUILDOUT** |  |  | 2025-05-10 | 2026-12-24 |  |  |  |  |  |  |  |  |  |  |  |  |  |  |  |  |  |  |  |  |
|  | L7 | **CORE & SUPPORT SPACES / LEVEL 7** |  |  | 2025-05-27 | 2026-12-24 |  |  |  |  |  |  |  |  |  |  |  |  |  |  |  |  |  |  |  |  |
|  | 3 | **ROUGH IN - Core & Support Spaces / Level 7** |  |  | 2025-05-27 | 2026-06-17 |  |  |  |  |  |  |  |  |  |  |  |  |  |  |  |  |  |  |  |  |
|  | Z112 | **South / Level 7** |  |  | 2025-06-09 | 2026-06-08 |  |  |  |  |  |  |  |  |  |  |  |  |  |  |  |  |  |  |  |  |
| P2.L7.S.1000 |  | Layout - All Trades / L7 / South |  | 5d | 2025-06-09 A | 2025-06-13 A | P2.7.03.610 | 100% |  | 2025-07-01 | 2025-07-08 |  |  | 40 | P2.B2.01.010 | R/I.OH | TA | P2-5 | Harris | TA | R/I.OH |  |  |  |  |  |
| P2.L7.S.1020 |  | OH - Structural Supports (All Trades) / L7 / South |  | 5d | 2025-06-09 A | 2025-06-13 A | P2.L7.S.1000 | 100% |  | 2025-07-09 | 2025-07-15 |  |  | 80 | P2.B2.05.45.110 | R/I.OH | TA | P2-5 | Harris | TA | R/I.OH | AT24 |  |  |  |  |
| P2.L7.S.1030 |  | OH - MEPF - Hangers & Supports / L7 / South |  | 10d | 2025-06-09 A | 2025-06-13 A | P2.L7.S.1000, P2.BIM.L7.40.140 | 100% |  | 2025-07-09 | 2025-07-22 |  |  | 80 | P2.B2.20.05.410 | MEP | TA | P2-5 | Harris | TA | MEP-2 |  |  |  |  |  |
| P2.L7.S.1010 |  | Framing - Top Track / L7 / South |  | 10d | 2025-06-16 A | 2025-06-30 A | P2.L7.S.1000 FF+1d, P2.L6.S.1010 FF+2d | 100% |  | 2025-07-01 | 2025-07-15 |  |  | 80 | P2.B2.09.21.110 | GYP | TA | P2-5 |  | TA | GYP-1 |  |  |  |  |  |
| P2.L7.S.1090 |  | Framing - Priority Walls & Door Frames / L7 / South |  | 10d | 2025-06-16 A | 2025-06-30 A | P2.L6.S.1090, P2.L7.S.1010 | 100% |  | 2025-07-16 | 2025-07-29 |  |  | 80 | P2.B2.09.21.310 | GYP | ND | P2-5 |  | ND | GYP-1 |  |  |  |  |  |
| P2.L7.S.1170 |  | OH - Fire Suppression / L7 / South |  | 10d | 2025-06-16 A | 2025-06-30 A | P2.L7.S.1030 | 100% |  | 2025-07-23 | 2025-08-05 |  |  | 80 | P2.B2.21.13.210 | FP | TA | P2-5 |  | TA | FP-1 |  | 1 |  |  |  |
| P2.L7.S.1130 |  | Framing - Priority Walls - AHJ Inspections / L7 / South |  | 5d | 2025-06-23 A | 2025-07-18 A | P2.L7.S.1090 | 100% |  | 2025-07-30 | 2025-08-05 |  |  | 80 | P2.B2.01.43.010 | FM | ND | P2-5 |  | ND | FM |  |  |  |  |  |
| P2.L7.S.1160 |  | Spray/Seal/Firestop - Head of Wall - Priority Walls / L7 / South |  | 5d | 2025-06-23 A | 2025-06-30 A | P2.L7.S.1140 FF | 100% |  | 2025-08-14 | 2025-08-20 |  |  | 80 | P2.B2.07.84.410 | FIRESTO | ND | P2-5 |  | ND | FIRESTO | AT47 |  |  |  |  |
| P2.L7.S.1140 |  | Hang/Tape/Finish - Priority Walls / L7 / South |  | 10d | 2025-07-16 A | 2025-08-11 A | P2.L7.S.1020, P2.L7.S.1130 | 100% |  | 2025-08-07 | 2025-08-20 |  |  | 80 | P2.B2.09.21.210 | GYP | ND | P2-5 |  | ND | GYP-1 |  |  |  |  |  |
| P2.L7.S.1150 |  | Paint Prime & 1st Coat - Priority Walls / L7 / South |  | 10d | 2025-07-18 A | 2025-07-30 A | P2.L7.S.1160 SS | 100% |  | 2025-08-14 | 2025-08-27 |  |  | 80 | P2.B2.09.91.110 | PAINT | TA | P2-5 |  | TA | PAINT-1 |  |  |  |  |  |
| P2.L7.S.1180 |  | OH - Plumbing Piping / L7 / South |  | 20d | 2025-08-11 A | 2025-09-11 A | P2.L6.S.1570, P2.L7.S.1030, P2.L7.S.1150 | 100% |  | 2025-10-01 | 2025-10-28 |  |  | 80 | P2.B2.22.14.210 | PLMB | TA | P2-5 | Harris | TA | PLMB |  | 1 |  |  |  |
| P2.L7.S.1190 |  | OH - Electrical - 480/277v Distribution / L7 / South |  | 10d | 2025-08-20 A | 2025-09-12 A | P2.L7.S.1030, P2.L7.S.1150 | 100% |  | 2025-09-05 | 2025-09-18 |  |  | 80 | P2.B2.26.05.210 | ELEC | TA | P2-5 |  | TA | ELEC-2 |  | 1 | O |  |  |
| FRG.P2.L7.S.1720 |  | HVAC Piping - Steel Racks Delivery / L7 / South - FRAGNET | milestone | 0d | 2025-08-29 A | 2025-08-29 A | P2.L7.S.1030 FF | 100% |  |  |  |  |  | 80 | P2.B2.23.20.410 | Harris Fragnet | TA | P2-5 | Harris | TA | FIT-2 |  | 2 | O | Per Harris schedule |  |
| FRG.P2.L7.S.1640 |  | HVAC Piping - Copper Racks Delivery / L7 / South - FRAGNET | milestone | 0d | 2025-08-29 A | 2025-08-29 A | P2.L7.S.1030 FF | 100% |  |  |  |  |  | 80 | P2.B2.23.20.410 | Harris Fragnet | TA | P2-5 | Harris | TA | FIT-2 |  | 2 | O | Confirm with Harris delivery 8/29 |  |
| FRG.P2.L7.S.1650 |  | HVAC Piping - Copper Racks Staging & Layout / L7 / South - FRAGNET |  | 5d | 2025-09-02 A | 2025-09-08 A | FRG.P2.L7.S.1640 | 100% |  | 2025-10-01 | 2025-10-07 |  |  | 80 | P2.B2.23.20.410 | Harris Fragnet | TA | P2-5 | Harris | TA | FIT-2 |  | 2 | O |  |  |
| FRG.P2.L7.S.1730 |  | HVAC Piping - Steel Racks / L7 / South - FRAGNET |  | 20d | 2025-09-02 A | 2025-09-30 A | FRG.P2.L7.S.1720 | 100% |  | 2025-10-01 | 2025-10-28 |  |  | 80 | P2.B2.23.20.410 | Harris Fragnet | TA | P2-5 | Harris | TA | FIT-2 |  | 2 | O |  |  |
| P2.L7.S.1230 |  | OH - Electrical - 208/120v Branch / L7 / South |  | 10d | 2025-09-08 A | 2026-02-28 A | P2.L7.S.1190 | 100% |  | 2025-10-08 | 2025-10-21 |  |  | 80 | P2.B2.26.05.310 | ELEC | TA | P2-5 |  | TA | ELEC-2 |  | 2 | O |  |  |
| FRG.P2.L7.S.1660 |  | HVAC Piping - Hanging Copper Racks / L7 / South - FRAGNET |  | 20d | 2025-09-09 A | 2025-10-06 A | FRG.P2.L7.S.1650 | 100% |  | 2025-10-08 | 2025-11-04 |  |  | 80 | P2.B2.23.20.410 | Harris Fragnet | TA | P2-5 | Harris | TA | FIT-2 |  | 2 |  |  |  |
| FRG.P2.L7.S.1740 |  | HVAC Piping - Hanging Steel Racks / L7 / South - FRAGNET |  | 20d | 2025-10-01 A | 2025-10-27 A | FRG.P2.L7.S.1730, P2.L6.INT.S.2090, P2.L6.INT.S.1180, P2.L6.INT.N.1180 | 100% |  | 2025-10-29 | 2025-11-25 |  |  | 80 | P2.B2.23.20.410 | Harris Fragnet | TA | P2-5 | Harris | TA | FIT-2 |  | 2 |  |  |  |
| P2.L7.S.1210 |  | OH - Hang Duct - HP Mains / L7 / South |  | 20d | 2025-10-01 A | 2025-10-27 A | P2.L7.S.1170, P2.L7.S.1030, P2.L6.S.1210 FF+5d | 100% |  | 2025-10-01 | 2025-10-28 |  |  | 80 | P2.B2.23.30.210 | HVAC | TA | P2-5 | Harris | TA | HVAC |  | 1 |  |  |  |
| P2.L7.S.1220 |  | OH - HVAC Piping (High) / L7 / South |  | 20d | 2025-10-07 A | 2025-10-27 A | P2.L7.S.1170, P2.L7.S.1030, FRG.P2.L7.S.1660 | 100% |  | 2025-10-07 | 2025-11-03 |  |  | 80 | P2.B2.23.20.410 | FIT | TA | P2-5 | Harris | TA | FIT-2 |  | 2 |  |  |  |
| P2.L7.S.1420 |  | Framing - Balance of Framing & Door Frames / L7 / South |  | 10d | 2025-10-20 A | 2025-10-31 A | P2.L8.S.1420, P2.L8.N.1420 | 100% |  | 2025-10-13 | 2025-10-24 |  |  | 80 | A1310 | GYP |  | P2-5 |  | TA | GYP-1 |  |  |  |  |  |
| P2.L7.S.1260 |  | OH - DALT - HP Mains / L7 / South |  | 10d | 2025-10-31 A | 2025-11-10 A | P2.L7.S.1210 | 100% |  | 2025-10-29 | 2025-11-11 |  |  | 80 | P2.B2.23.30.310 | TAB | TA | P2-5 | Harris | TA | TAB-1 |  | 2 | O |  |  |
| P2.L7.S.1300 |  | OH - Hang Duct - LP Branch / L7 / South |  | 15d | 2025-11-10 A | 2025-11-25 A | P2.L7.S.1260 SS | 100% |  | 2025-12-01 | 2025-12-19 |  |  | 80 | P2.B2.23.30.410 | HVAC | TA | P2-5 | Harris | TA | HVAC |  | 3 | O |  |  |
| P2.L7.S.1560 |  | OH - HVAC Piping (Low) / L7 / South |  | 20d | 2025-11-10 A | 2025-12-12 A | P2.L7.S.1220 | 100% |  | 2025-12-01 | 2025-12-29 |  |  | 80 | P2.B2.23.20.410 | FIT | TA | P2-5 | Harris | TA | FIT-2 |  | 2 | O | Per Harris Schedule 12/3/25. |  |
| P2.L7.S.1430 |  | In Wall - Plumbing - Framing / L7 / South |  | 10d | 2025-11-14 A | 2025-11-28 A | P2.L7.S.1420 | 100% |  | 2025-12-01 | 2025-12-12 |  |  | 80 | P2.B2.22.05.410 | PLMB |  | P2-5 | Harris | TA | PLMB |  |  |  |  |  |
| P2.L7.S.1440 |  | In Wall - Electrical - Framing / L7 / South |  | 10d | 2025-11-14 A | 2025-12-26 A | P2.L7.S.1420, P2.L7.S.1230 | 100% |  | 2025-12-12 | 2025-12-26 |  |  | 80 | P2.B2.26.05.610 | ELEC |  | P2-5 |  | TA | ELEC-2 |  |  | O |  |  |
| P2.L7.S.1240 |  | OH - Plumbing - Test / L7 / South |  | 10d | 2025-12-01 A | 2025-12-12 A | P2.L7.S.1180 | 100% |  | 2026-01-02 | 2026-01-15 |  |  | 80 | P2.B2.22.14.310 | PLMB | TA | P2-5 | Harris | TA | PLMB |  | 2 | O |  |  |
| P2.L7.S.1450 |  | In Wall - Backing/Blocking/Supports / L7 / South |  | 10d | 2025-12-01 A | 2025-12-19 A | P2.L7.S.1420 | 100% |  | 2026-01-02 | 2026-01-15 |  |  | 80 | P2.B2.09.21.510 | R/I.IW |  | P2-5 |  | TA | R/I.IW |  |  | O |  |  |
| P2.L7.S.1390 |  | OH - Conduit - Low Volt - Telecom / L7 / South |  | 10d | 2025-12-15 A | 2026-05-01 | P2.L7.S.1350 |  | 10d | 2026-02-06 | 2026-02-19 | 13d | 0d | 80 |  | ELEC | TA | P2-5 |  | JPC | ELEC-2 |  | 5 |  |  |  |
| P2.L7.S.1200 |  | Firestop - Thru Wall - Priority Walls / L7 / South |  | 5d | 2026-01-22 A | 2026-04-03 | P2.L7.S.1150 | 40% | 3d | 2026-01-02 | 2026-01-08 | 13d | 0d | 80 | P2.B2.07.84.110 | FIRESTO | TA | P2-5 |  | JPC | FIRESTO | AT48 |  | O |  |  |
| P2.L7.S.1280 |  | OH - Insulate Plumbing / L7 / South |  | 10d | 2026-03-03 A | 2026-04-14 | P2.L7.S.1240 |  | 10d | 2026-03-02 | 2026-03-13 | 26d | 23d | 80 | P2.B2.22.07.510 | INSUL |  | P2-5 | Harris | JPC | INSUL-3 |  | 3 | O |  |  |
| P2.L7.S.1270 |  | OH - HVAC Piping - Test / L7 / South |  | 10d | 2026-03-04 A | 2026-03-06 A | P2.L7.S.1560, FRG.P2.L7.S.1740 | 100% |  | 2026-03-02 | 2026-03-13 |  |  | 80 | P2.B2.23.20.510 | FIT | TA | P2-5 | Harris | JPC | FIT-2 |  | 3 | O |  |  |
| P2.L7.S.1290 |  | OH - Insulate HP Duct / L7 / South |  | 10d | 2026-03-05 A | 2026-04-14 | P2.L7.S.1260 |  | 10d | 2026-03-02 | 2026-03-13 | 6d | 0d | 80 | P2.B2.23.07.310 | INSUL | TA | P2-5 | Harris | JPC | INSUL-3 |  | 3 | O |  |  |
| P2.L7.S.1340 |  | OH - Insulate HVAC Pipe / L7 / South |  | 10d | 2026-03-09 A | 2026-04-28 | P2.L7.S.1290, P2.L7.S.1270 |  | 10d | 2026-03-16 | 2026-03-27 | 6d | 0d | 80 | P2.B2.22.07.610 | INSUL | TA | P2-5 | Harris | JPC | INSUL-3 |  | 4 | O |  |  |
| P2.L7.S.1350 |  | OH - Insulate LP Duct / L7 / South |  | 10d | 2026-03-16 A | 2026-04-17 | P2.L7.S.1300, P2.L7.S.1200 |  | 10d | 2026-03-05 | 2026-03-18 | 13d | 0d | 80 | P2.B2.23.07.410 | INSUL | TA | P2-5 | Harris | JPC | INSUL-3 |  | 4 | O |  |  |
| P2.L7.S.1250 |  | Pull Wire - Electrical - 480/277v Distribution / L7 / South |  | 10d | 2026-04-01 | 2026-04-14 | P2.L7.S.1190, P2.7.HE.5959.1050 |  |  |  |  | 36d | 33d | 80 |  | ELEC | TA | P2-5 |  | JPC | ELEC-2 |  | To Trim Devices & Term Panel | O |  |  |
| P2.L7.S.1310 |  | OH - Set & Connect Mech Equipment / L7 / South |  | 10d | 2026-04-01 | 2026-04-14 | P2.L7.S.1260 |  |  |  |  | 6d | 0d | 80 | P2.B2.23.82.110 | HVAC | TA | P2-5 | Harris | JPC | HVAC |  | 3 | O |  |  |
| P2.L7.S.1460 |  | AHJ Inspections - Wall Close In / L7 / South |  | 5d | 2026-04-01 | 2026-04-07 | P2.L7.S.1440, P2.L7.S.1450, P2.L7.S.1430 |  |  |  |  | 9d | 13d | 40 | P2.B2.01.43.110 | FM |  | P2-5 |  | JPC | FM |  |  | O |  |  |
| P2.L7.S.1320 |  | OH - Electrical - Equip Tie In / L7 / South |  | 10d | 2026-04-15 | 2026-04-28 | P2.L7.S.1310 |  |  |  |  | 6d | 0d | 80 | P2.B2.26.05.410 | ELEC | TA | P2-5 |  | JPC | ELEC-2 |  | 4 | O |  |  |
| P2.L7.S.1380 |  | OH - Conduit - Low Volt - Fire Alarm / L7 / South |  | 10d | 2026-04-20 | 2026-05-01 | P2.L7.S.1310, P2.L7.S.1350 |  |  |  |  | 13d | 0d | 80 |  | FA | TA | P2-5 |  | JPC | FA-1 |  | 5 |  |  |  |
| P2.L7.S.1410 |  | OH - Conduit - Low Volt - Medical Services/Nurse Call (?) / L7 / South |  | 10d | 2026-04-20 | 2026-05-01 | P2.L7.S.1350 |  |  |  |  | 13d | 0d | 80 |  | ELEC | TA | P2-5 |  | JPC | ELEC-2 |  | 5 |  |  |  |
| P2.L7.S.1470 |  | Hang-Tape-Finish - Walls / L7 / South |  | 15d | 2026-04-27 | 2026-05-15 | P2.SUM.175, P2.L7.S.1460, P2.L8.N.1470, P2.L8.S.1470 |  |  |  |  | -4d | 0d | 80 | P2.B2.09.21.710 | GYP |  | P2-5 |  | JPC | GYP-1 |  |  |  |  | 1 |
| P2.L7.S.1330 |  | OH - HVAC Piping - Equip Tie In / L7 / South |  | 20d | 2026-04-29 | 2026-05-27 | P2.L7.S.1310, P2.L7.S.1270, CX.B2.HYDR.1000 |  |  |  |  | 6d | 3d | 80 | P2.B2.23.20.610 | FIT | TA | P2-5 | Harris | JPC | FIT-2 |  |  |  |  |  |
| P2.L7.S.1360 |  | Pull Wire - Electrical - 208/120v Branch & Equip / L7 / South |  | 20d | 2026-04-29 | 2026-05-27 | P2.L7.S.1230, P2.L7.S.1320, P2.L7.S.1440 |  |  |  |  | 6d | 3d | 80 |  | ELEC |  | P2-5 |  | JPC | ELEC-2 |  | To Trim Devices & Term Panel |  |  |  |
| P2.L7.S.1370 |  | OH - Conduit - Low Volt - BAS/Controls / L7 / South |  | 10d | 2026-04-29 | 2026-05-12 | P2.L7.S.1310, P2.L7.S.1340 |  |  |  |  | 6d | 0d | 80 |  | BAS | TA | P2-5 | Harris | JPC | BAS-1 |  | 5 |  |  |  |
| P2.L7.S.1400 |  | OH - Conduit - Low Volt - Security / L7 / South |  | 10d | 2026-04-29 | 2026-05-12 | P2.L7.S.1340 |  |  |  |  | 6d | 0d | 80 |  | ELEC | TA | P2-5 |  | JPC | ELEC-2 |  | 5 |  |  |  |
| P2.L7.S.1510 |  | Pull Wire - Low Volt - Fire Alarm / L7 / South |  | 10d | 2026-05-04 | 2026-05-15 | P2.L7.S.1380 |  |  |  |  | 13d | 10d | 80 |  | FA |  | P2-5 |  | JPC | FA-1 |  | To Trim Finishes |  |  |  |
| P2.L7.S.1520 |  | Pull Wire - Low Volt - Telecom / L7 / South |  | 10d | 2026-05-04 | 2026-05-15 | P2.L7.S.1390 |  |  |  |  | 13d | 10d | 80 |  | CIT |  | P2-5 |  | JPC | CIT |  | To Trim Finishes |  |  |  |
| P2.L7.S.1540 |  | Pull Wire - Low Volt - Medical Services/Nurse Call (?) / L7 / South |  | 10d | 2026-05-04 | 2026-05-15 | P2.L7.S.1410 |  |  |  |  | 13d | 10d | 80 |  | LOWVOLT |  | P2-5 |  | JPC | LOWVOLT-1 |  | To Trim Finishes |  |  |  |
| P2.L7.S.1500 |  | Pull Wire - Low Volt - BAS/Controls / L7 / South |  | 10d | 2026-05-13 | 2026-05-27 | P2.L7.S.1370 |  |  |  |  | 6d | 3d | 80 |  | BAS |  | P2-5 | Harris | JPC | BAS-1 |  | To Trim Finishes |  |  |  |
| P2.L7.S.1530 |  | Pull Wire - Low Volt - Security / L7 / South |  | 10d | 2026-05-13 | 2026-05-27 | P2.L7.S.1400 |  |  |  |  | 6d | 3d | 80 |  | LOWVOLT |  | P2-5 |  | JPC | LOWVOLT-1 |  | To Trim Finishes |  |  |  |
| P2.L7.S.1480 |  | Spray/Seal/Firestop - Head of Wall / L7 / South |  | 10d | 2026-05-18 | 2026-06-01 | P2.L7.S.1470 |  |  |  |  | 3d | 0d | 80 | P2.B2.07.84.310 | FIRSAFE |  | P2-5 |  | JPC | FIRSAFE | AT47 | To Finishes - Paint |  |  |  |
| P2.L7.S.1490 |  | Firestop - Thru Wall / L7 / South |  | 10d | 2026-05-18 | 2026-06-01 | P2.L7.S.1470, P2.L7.S.1280 |  |  |  |  | 3d | 0d | 80 | P2.B2.07.84.210 | FIRESTO |  | P2-5 |  | JPC | FIRESTO | AT48 | To Finishes - Paint |  |  |  |
| P2.L7.S.1550 |  | Trades Inspect & Verify R/I Work Completed to Specs / L7 / South |  | 5d | 2026-06-02 | 2026-06-08 | P2.L7.S.1360, P2.L7.S.1500, P2.L7.S.1510, P2.L7.S.1520, P2.L7.S.1530, P2.L7.S.1490, P2.L7.S.1480, P2.L7.S.1250, P2.L7.S.1540, P2.L7.S.1330 |  |  |  |  | 3d | 0d | 40 |  | T |  | P2-5 |  | JPC | T |  |  |  |  |  |
